Unnamed: 0,L2,L3,L4,L5,WBS Path,WBS Name,Activity ID,Activity Name,Planned Duration,Planned Units,Remaining Units,At Completion Units,Start,Finish,Predecessor Details,Successor Details,HE Req: Lab Identifier,Units % Complete,Resource ID Name,Resource Name,Resource Type,Actual Duration,Remaining Duration,At Completion Duration,Spreadsheet Field,BL1 Start,BL1 Finish,HE Req: Special Coding,Planned Labor Units,Remaining Labor Units,Activity % Complete,Planned Total Cost,Planned Nonlabor Units,Total Float,Resource IDs,At Completion Labor Cost,At Completion Nonlabor Cost,L2_Name,L3_Name,L4_Name,L5_Name,ID_and_Name,Trade,Level,Lab,Type
66729,1.03,1.03.01,1.03.01.01,1.03.01.01,1.03.01.01,AS Accelerator Systems Management & Integration,ACT_L_1030102,1030102 Labor Actuals,22.0,16.9,0.0,17.0,06-01-2020,06-30-2020,CM_M4_2010: FS,AS_PMINT_1001: FS,SLAC,100%,HISTL.HIST_ACTUAL Labor,HIST_ACTUAL Labor,Labor,22.0d,0.0,22.0,At Completion Units,nn,,0,0,0,0,0,0,0,0,0,0,1.03_Accelerator Systems (AS),1.03.01_AS Accelerator Systems Management & Integration,1.03.01.01_AS Accelerator Systems Management & Integration,,ACT_L_1030102_1030102 Labor Actuals,Financial,,SLAC,M&S
66730,1.03,1.03.01,1.03.01.01,1.03.01.01,1.03.01.01,AS Accelerator Systems Management & Integration,ACT_NL_1030101,1030101 Non Labor Actuals,22.0,2792.7,0.0,2793.0,06-01-2020,06-30-2020,CM_M4_2010: FS,AS_PMINT_1000: FS,SLAC,100%,HISTN.HIST_ACTUAL NonLabor,HIST_ACTUAL NonLabor,Nonlabor,22.0d,0.0,22.0,At Completion Units,nn,,0,0,0,0,0,0,0,0,0,0,1.03_Accelerator Systems (AS),1.03.01_AS Accelerator Systems Management & Integration,1.03.01.01_AS Accelerator Systems Management & Integration,,ACT_NL_1030101_1030101 Non Labor Actuals,Financial,,SLAC,M&S
66731,1.03,1.03.01,1.03.01.01,1.03.01.01,1.03.01.01,AS Accelerator Systems Management & Integration,ACT_L_1030101,1030101 Labor Actuals,22.0,812.0,0.0,812.0,06-01-2020,06-30-2020,CM_M4_2010: FS,AS_PMINT_1000: FS,SLAC,100%,HISTL.HIST_ACTUAL Labor,HIST_ACTUAL Labor,Labor,22.0d,0.0,22.0,At Completion Units,nn,,0,0,0,0,0,0,0,0,0,0,1.03_Accelerator Systems (AS),1.03.01_AS Accelerator Systems Management & Integration,1.03.01.01_AS Accelerator Systems Management & Integration,,ACT_L_1030101_1030101 Labor Actuals,Financial,,SLAC,M&S
67051,1.03,1.03.01,1.03.01.01,1.03.01.01.01,1.03.01.01.01,Accelerator Systems Management,AS_PMINT_1010,Accelerator Systems Mgmt Support - FY21,244.0,3264.0,0.0,3264.5,10-01-2020,10-15-2021,AS_PMINT_1000: FS,AS_PMINT_1020: FS,SLAC,100%,2003.2003_Research Technical Manager,2003_Research Technical Manager,Labor,255.2d,0.0,255.2,At Completion Units,10/1/2020,9/30/2021,0,0,0,0,0,0,0,0,0,0,1.03_Accelerator Systems (AS),1.03.01_AS Accelerator Systems Management & Integration,1.03.01.01_AS Accelerator Systems Management & Integration,1.03.01.01.01_Accelerator Systems Management,AS_PMINT_1010_Accelerator Systems Mgmt Support - FY21,Technical Manager,Engineer,SLAC,Labor
67052,1.03,1.03.01,1.03.01.01,1.03.01.01.01,1.03.01.01.01,Accelerator Systems Management,AS_PMINT_1010,Accelerator Systems Mgmt Support - FY21,244.0,435.0,0.0,434.4,10-01-2020,09-30-2021,AS_PMINT_1000: FS,AS_PMINT_1020: FS,SLAC,100%,0170_E4.0170_Engineer-Mechanical_E4,0170_Engineer-Mechanical_E4,Labor,244.0d,0.0,244.0,At Completion Units,10/1/2020,9/30/2021,0,0,0,0,0,0,0,0,0,0,1.03_Accelerator Systems (AS),1.03.01_AS Accelerator Systems Management & Integration,1.03.01.01_AS Accelerator Systems Management & Integration,1.03.01.01.01_Accelerator Systems Management,AS_PMINT_1010_Accelerator Systems Mgmt Support - FY21,Mechanical,,SLAC,Labor
67053,1.03,1.03.01,1.03.01.01,1.03.01.01.01,1.03.01.01.01,Accelerator Systems Management,AS_PMINT_1010,Accelerator Systems Mgmt Support - FY21,244.0,1740.0,0.0,1740.2,10-01-2020,09-30-2021,AS_PMINT_1000: FS,AS_PMINT_1020: FS,SLAC,100%,0170_E3.0170_Engineer-Mechanical_E3,0170_Engineer-Mechanical_E3,Labor,244.0d,0.0,244.0,At Completion Units,10/1/2020,9/30/2021,0,0,0,0,0,0,0,0,0,0,1.03_Accelerator Systems (AS),1.03.01_AS Accelerator Systems Management & Integration,1.03.01.01_AS Accelerator Systems Management & Integration,1.03.01.01.01_Accelerator Systems Management,AS_PMINT_1010_Accelerator Systems Mgmt Support - FY21,Mechanical,,SLAC,Labor
67054,1.03,1.03.01,1.03.01.01,1.03.01.01.01,1.03.01.01.01,Accelerator Systems Management,AS_PMINT_1000,Accelerator Systems Mgmt Support - FY20,64.0,45.0,0.0,200.0,07-01-2020,09-30-2020,"ACT_L_1030101: FS, ACT_NL_1030101: FS, MS_FY_2020a: FS",AS_PMINT_1010: FS,SLAC,100%,52156.52156_PROJMGR,52156_PROJMGR,Labor,63.0d,0.0,63.0,At Completion Units,7/1/2020,9/30/2020,0,0,0,0,0,0,0,0,0,0,1.03_Accelerator Systems (AS),1.03.01_AS Accelerator Systems Management & Integration,1.03.01.01_AS Accelerator Systems Management & Integration,1.03.01.01.01_Accelerator Systems Management,AS_PMINT_1000_Accelerator Systems Mgmt Support - FY20,Management,,SLAC,Labor
67055,1.03,1.03.01,1.03.01.01,1.03.01.01.01,1.03.01.01.01,Accelerator Systems Management,AS_PMINT_1000,Accelerator Systems Mgmt Support - FY20,64.0,146.0,0.0,200.0,07-01-2020,09-30-2020,"ACT_L_1030101: FS, ACT_NL_1030101: FS, MS_FY_2020a: FS",AS_PMINT_1010: FS,SLAC,100%,0170_E5.0170_Engineer-Mechanical_E5,0170_Engineer-Mechanical_E5,Labor,63.0d,0.0,63.0,At Completion Units,7/1/2020,9/30/2020,0,0,0,0,0,0,0,0,0,0,1.03_Accelerator Systems (AS),1.03.01_AS Accelerator Systems Management & Integration,1.03.01.01_AS Accelerator Systems Management & Integration,1.03.01.01.01_Accelerator Systems Management,AS_PMINT_1000_Accelerator Systems Mgmt Support - FY20,Mechanical,,SLAC,Labor
67056,1.03,1.03.01,1.03.01.01,1.03.01.01.01,1.03.01.01.01,Accelerator Systems Management,AS_PMINT_1000,Accelerator Systems Mgmt Support - FY20,64.0,174.0,0.0,200.0,07-01-2020,09-30-2020,"ACT_L_1030101: FS, ACT_NL_1030101: FS, MS_FY_2020a: FS",AS_PMINT_1010: FS,SLAC,100%,1999.1999_Technical Manager,1999_Technical Manager,Labor,63.0d,0.0,63.0,At Completion Units,7/1/2020,9/30/2020,0,0,0,0,0,0,0,0,0,0,1.03_Accelerator Systems (AS),1.03.01_AS Accelerator Systems Management & Integration,1.03.01.01_AS Accelerator Systems Management & Integration,1.03.01.01.01_Accelerator Systems Management,AS_PMINT_1000_Accelerator Systems Mgmt Support - FY20,Management,Engineer,SLAC,Labor
67057,1.03,1.03.01,1.03.01.01,1.03.01.01.01,1.03.01.01.01,Accelerator Systems Management,AS_PMINT_1000,Accelerator Systems Mgmt Support - FY20,64.0,435.0,0.0,200.0,07-01-2020,09-30-2020,"ACT_L_1030101: FS, ACT_NL_1030101: FS, MS_FY_2020a: FS",AS_PMINT_1010: FS,SLAC,100%,1999.1999_Technical Manager,1999_Technical Manager,Labor,63.0d,0.0,63.0,At Completion Units,7/1/2020,9/30/2020,0,0,0,0,0,0,0,0,0,0,1.03_Accelerator Systems (AS),1.03.01_AS Accelerator Systems Management & Integration,1.03.01.01_AS Accelerator Systems Management & Integration,1.03.01.01.01_Accelerator Systems Management,AS_PMINT_1000_Accelerator Systems Mgmt Support - FY20,Management,Engineer,SLAC,Labor
67058,1.03,1.03.01,1.03.01.01,1.03.01.01.01,1.03.01.01.01,Accelerator Systems Management,AS_PMINT_1060,Accelerator Systems Mgmt Support - FY26,244.0,1785.0,1785.0,1785.0,10-01-25,09-30-26,AS_PMINT_1050: FS,PM_M4_1090: FS,SLAC,0%,0170_E4.0170_Engineer-Mechanical_E4,0170_Engineer-Mechanical_E4,Labor,0.0d,244.0,244.0,At Completion Units,10/1/2025,9/30/2026,0,0,0,0,0,0,0,0,0,0,1.03_Accelerator Systems (AS),1.03.01_AS Accelerator Systems Management & Integration,1.03.01.01_AS Accelerator Systems Management & Integration,1.03.01.01.01_Accelerator Systems Management,AS_PMINT_1060_Accelerator Systems Mgmt Support - FY26,Mechanical,,SLAC,Labor
67059,1.03,1.03.01,1.03.01.01,1.03.01.01.01,1.03.01.01.01,Accelerator Systems Management,AS_PMINT_1050,Accelerator Systems Mgmt Support - FY25,244.0,1740.0,1740.0,1740.0,10-01-24,09-30-25,AS_PMINT_1040: FS,AS_PMINT_1060: FS,SLAC,0%,0170_E4.0170_Engineer-Mechanical_E4,0170_Engineer-Mechanical_E4,Labor,0.0d,244.0,244.0,At Completion Units,10/1/2024,9/30/2025,0,0,0,0,0,0,0,0,0,0,1.03_Accelerator Systems (AS),1.03.01_AS Accelerator Systems Management & Integration,1.03.01.01_AS Accelerator Systems Management & Integration,1.03.01.01.01_Accelerator Systems Management,AS_PMINT_1050_Accelerator Systems Mgmt Support - FY25,Mechanical,,SLAC,Labor
67060,1.03,1.03.01,1.03.01.01,1.03.01.01.01,1.03.01.01.01,Accelerator Systems Management,AS_PMINT_1040,Accelerator Systems Mgmt Support - FY24,243.0,1740.0,1740.0,1740.0,10-02-23,09-30-24,AS_PMINT_1030: FS,AS_PMINT_1050: FS,SLAC,0%,0170_E4.0170_Engineer-Mechanical_E4,0170_Engineer-Mechanical_E4,Labor,0.0d,243.0,243.0,At Completion Units,10/2/2023,9/30/2024,0,0,0,0,0,0,0,0,0,0,1.03_Accelerator Systems (AS),1.03.01_AS Accelerator Systems Management & Integration,1.03.01.01_AS Accelerator Systems Management & Integration,1.03.01.01.01_Accelerator Systems Management,AS_PMINT_1040_Accelerator Systems Mgmt Support - FY24,Mechanical,,SLAC,Labor
67061,1.03,1.03.01,1.03.01.01,1.03.01.01.01,1.03.01.01.01,Accelerator Systems Management,AS_PMINT_1030,Accelerator Systems Mgmt Support - FY23,243.0,1740.0,1740.0,1740.0,10-03-22,09-29-23,AS_PMINT_1020: FS,AS_PMINT_1040: FS,SLAC,0%,0170_E4.0170_Engineer-Mechanical_E4,0170_Engineer-Mechanical_E4,Labor,0.0d,243.0,243.0,At Completion Units,10/3/2022,9/29/2023,0,0,0,0,0,0,0,0,0,0,1.03_Accelerator Systems (AS),1.03.01_AS Accelerator Systems Management & Integration,1.03.01.01_AS Accelerator Systems Management & Integration,1.03.01.01.01_Accelerator Systems Management,AS_PMINT_1030_Accelerator Systems Mgmt Support - FY23,Mechanical,,SLAC,Labor
67062,1.03,1.03.01,1.03.01.01,1.03.01.01.01,1.03.01.01.01,Accelerator Systems Management,AS_PMINT_1020,Accelerator Systems Mgmt Support - FY22,244.0,1160.0,1160.0,1160.0,10-01-21,09-30-22,AS_PMINT_1010: FS,AS_PMINT_1030: FS,SLAC,0%,0170_E4.0170_Engineer-Mechanical_E4,0170_Engineer-Mechanical_E4,Labor,0.0d,244.0,244.0,At Completion Units,10/1/2021,9/30/2022,0,0,0,0,0,0,0,0,0,0,1.03_Accelerator Systems (AS),1.03.01_AS Accelerator Systems Management & Integration,1.03.01.01_AS Accelerator Systems Management & Integration,1.03.01.01.01_Accelerator Systems Management,AS_PMINT_1020_Accelerator Systems Mgmt Support - FY22,Mechanical,,SLAC,Labor
67063,1.03,1.03.01,1.03.01.01,1.03.01.01.01,1.03.01.01.01,Accelerator Systems Management,AS_PMINT_1050,Accelerator Systems Mgmt Support - FY25,244.0,1740.0,1740.0,1740.0,10-01-24,09-30-25,AS_PMINT_1040: FS,AS_PMINT_1060: FS,SLAC,0%,0170_E3.0170_Engineer-Mechanical_E3,0170_Engineer-Mechanical_E3,Labor,0.0d,244.0,244.0,At Completion Units,10/1/2024,9/30/2025,0,0,0,0,0,0,0,0,0,0,1.03_Accelerator Systems (AS),1.03.01_AS Accelerator Systems Management & Integration,1.03.01.01_AS Accelerator Systems Management & Integration,1.03.01.01.01_Accelerator Systems Management,AS_PMINT_1050_Accelerator Systems Mgmt Support - FY25,Mechanical,,SLAC,Labor
67064,1.03,1.03.01,1.03.01.01,1.03.01.01.01,1.03.01.01.01,Accelerator Systems Management,AS_PMINT_1060,Accelerator Systems Mgmt Support - FY26,244.0,1205.0,1205.0,1205.0,10-01-25,09-30-26,AS_PMINT_1050: FS,PM_M4_1090: FS,SLAC,0%,0170_E3.0170_Engineer-Mechanical_E3,0170_Engineer-Mechanical_E3,Labor,0.0d,244.0,244.0,At Completion Units,10/1/2025,9/30/2026,0,0,0,0,0,0,0,0,0,0,1.03_Accelerator Systems (AS),1.03.01_AS Accelerator Systems Management & Integration,1.03.01.01_AS Accelerator Systems Management & Integration,1.03.01.01.01_Accelerator Systems Management,AS_PMINT_1060_Accelerator Systems Mgmt Support - FY26,Mechanical,,SLAC,Labor
67065,1.03,1.03.01,1.03.01.01,1.03.01.01.01,1.03.01.01.01,Accelerator Systems Management,AS_PMINT_1040,Accelerator Systems Mgmt Support - FY24,243.0,1740.0,1740.0,1740.0,10-02-23,09-30-24,AS_PMINT_1030: FS,AS_PMINT_1050: FS,SLAC,0%,0170_E3.0170_Engineer-Mechanical_E3,0170_Engineer-Mechanical_E3,Labor,0.0d,243.0,243.0,At Completion Units,10/2/2023,9/30/2024,0,0,0,0,0,0,0,0,0,0,1.03_Accelerator Systems (AS),1.03.01_AS Accelerator Systems Management & Integration,1.03.01.01_AS Accelerator Systems Management & Integration,1.03.01.01.01_Accelerator Systems Management,AS_PMINT_1040_Accelerator Systems Mgmt Support - FY24,Mechanical,,SLAC,Labor
67066,1.03,1.03.01,1.03.01.01,1.03.01.01.01,1.03.01.01.01,Accelerator Systems Management,AS_PMINT_1030,Accelerator Systems Mgmt Support - FY23,243.0,1740.0,1740.0,1740.0,10-03-22,09-29-23,AS_PMINT_1020: FS,AS_PMINT_1040: FS,SLAC,0%,0170_E3.0170_Engineer-Mechanical_E3,0170_Engineer-Mechanical_E3,Labor,0.0d,243.0,243.0,At Completion Units,10/3/2022,9/29/2023,0,0,0,0,0,0,0,0,0,0,1.03_Accelerator Systems (AS),1.03.01_AS Accelerator Systems Management & Integration,1.03.01.01_AS Accelerator Systems Management & Integration,1.03.01.01.01_Accelerator Systems Management,AS_PMINT_1030_Accelerator Systems Mgmt Support - FY23,Mechanical,,SLAC,Labor
67067,1.03,1.03.01,1.03.01.01,1.03.01.01.01,1.03.01.01.01,Accelerator Systems Management,AS_PMINT_1020,Accelerator Systems Mgmt Support - FY22,244.0,1740.0,1740.0,1740.0,10-01-21,09-30-22,AS_PMINT_1010: FS,AS_PMINT_1030: FS,SLAC,0%,0170_E3.0170_Engineer-Mechanical_E3,0170_Engineer-Mechanical_E3,Labor,0.0d,244.0,244.0,At Completion Units,10/1/2021,9/30/2022,0,0,0,0,0,0,0,0,0,0,1.03_Accelerator Systems (AS),1.03.01_AS Accelerator Systems Management & Integration,1.03.01.01_AS Accelerator Systems Management & Integration,1.03.01.01.01_Accelerator Systems Management,AS_PMINT_1020_Accelerator Systems Mgmt Support - FY22,Mechanical,,SLAC,Labor
67068,1.03,1.03.01,1.03.01.01,1.03.01.01.01,1.03.01.01.01,Accelerator Systems Management,AS_PMINT_1060,Accelerator Systems Mgmt Support - FY26,244.0,2571.0,2571.0,2571.0,10-01-25,09-30-26,AS_PMINT_1050: FS,PM_M4_1090: FS,SLAC,0%,2003.2003_Research Technical Manager,2003_Research Technical Manager,Labor,0.0d,244.0,244.0,At Completion Units,10/1/2025,9/30/2026,0,0,0,0,0,0,0,0,0,0,1.03_Accelerator Systems (AS),1.03.01_AS Accelerator Systems Management & Integration,1.03.01.01_AS Accelerator Systems Management & Integration,1.03.01.01.01_Accelerator Systems Management,AS_PMINT_1060_Accelerator Systems Mgmt Support - FY26,Technical Manager,Engineer,SLAC,Labor
67069,1.03,1.03.01,1.03.01.01,1.03.01.01.01,1.03.01.01.01,Accelerator Systems Management,AS_PMINT_1020,Accelerator Systems Mgmt Support - FY22,244.0,3480.0,3480.0,3480.0,10-01-21,09-30-22,AS_PMINT_1010: FS,AS_PMINT_1030: FS,SLAC,0%,2003.2003_Research Technical Manager,2003_Research Technical Manager,Labor,0.0d,244.0,244.0,At Completion Units,10/1/2021,9/30/2022,0,0,0,0,0,0,0,0,0,0,1.03_Accelerator Systems (AS),1.03.01_AS Accelerator Systems Management & Integration,1.03.01.01_AS Accelerator Systems Management & Integration,1.03.01.01.01_Accelerator Systems Management,AS_PMINT_1020_Accelerator Systems Mgmt Support - FY22,Technical Manager,Engineer,SLAC,Labor
67070,1.03,1.03.01,1.03.01.01,1.03.01.01.01,1.03.01.01.01,Accelerator Systems Management,AS_PMINT_1030,Accelerator Systems Mgmt Support - FY23,243.0,3480.0,3480.0,3480.0,10-03-22,09-29-23,AS_PMINT_1020: FS,AS_PMINT_1040: FS,SLAC,0%,2003.2003_Research Technical Manager,2003_Research Technical Manager,Labor,0.0d,243.0,243.0,At Completion Units,10/3/2022,9/29/2023,0,0,0,0,0,0,0,0,0,0,1.03_Accelerator Systems (AS),1.03.01_AS Accelerator Systems Management & Integration,1.03.01.01_AS Accelerator Systems Management & Integration,1.03.01.01.01_Accelerator Systems Management,AS_PMINT_1030_Accelerator Systems Mgmt Support - FY23,Technical Manager,Engineer,SLAC,Labor
67071,1.03,1.03.01,1.03.01.01,1.03.01.01.01,1.03.01.01.01,Accelerator Systems Management,AS_PMINT_1040,Accelerator Systems Mgmt Support - FY24,243.0,3480.0,3480.0,3480.0,10-02-23,09-30-24,AS_PMINT_1030: FS,AS_PMINT_1050: FS,SLAC,0%,2003.2003_Research Technical Manager,2003_Research Technical Manager,Labor,0.0d,243.0,243.0,At Completion Units,10/2/2023,9/30/2024,0,0,0,0,0,0,0,0,0,0,1.03_Accelerator Systems (AS),1.03.01_AS Accelerator Systems Management & Integration,1.03.01.01_AS Accelerator Systems Management & Integration,1.03.01.01.01_Accelerator Systems Management,AS_PMINT_1040_Accelerator Systems Mgmt Support - FY24,Technical Manager,Engineer,SLAC,Labor
67072,1.03,1.03.01,1.03.01.01,1.03.01.01.01,1.03.01.01.01,Accelerator Systems Management,AS_PMINT_1050,Accelerator Systems Mgmt Support - FY25,244.0,3480.0,3480.0,3480.0,10-01-24,09-30-25,AS_PMINT_1040: FS,AS_PMINT_1060: FS,SLAC,0%,2003.2003_Research Technical Manager,2003_Research Technical Manager,Labor,0.0d,244.0,244.0,At Completion Units,10/1/2024,9/30/2025,0,0,0,0,0,0,0,0,0,0,1.03_Accelerator Systems (AS),1.03.01_AS Accelerator Systems Management & Integration,1.03.01.01_AS Accelerator Systems Management & Integration,1.03.01.01.01_Accelerator Systems Management,AS_PMINT_1050_Accelerator Systems Mgmt Support - FY25,Technical Manager,Engineer,SLAC,Labor
67392,1.03,1.03.01,1.03.01.01,1.03.01.01.02,1.03.01.01.02,Accelerator Systems Travel,AS_PMINT_1090,Travel for reviews and vendor visits - FY23,243.0,203084.0,203084.0,203084.0,10-03-22,09-29-23,AS_PMINT_1080: FS,AS_PMINT_1100: FS,SLAC,0%,SL_TRVL.SLAC Travel,SLAC Travel,Nonlabor,0.0d,243.0,243.0,At Completion Units,10/3/2022,9/29/2023,0,0,0,0,0,0,0,0,0,0,1.03_Accelerator Systems (AS),1.03.01_AS Accelerator Systems Management & Integration,1.03.01.01_AS Accelerator Systems Management & Integration,1.03.01.01.02_Accelerator Systems Travel,AS_PMINT_1090_Travel for reviews and vendor visits - FY23,SLAC_Travel,,SLAC,M&S
67393,1.03,1.03.01,1.03.01.01,1.03.01.01.02,1.03.01.01.02,Accelerator Systems Travel,AS_PMINT_1120,Travel for reviews and vendor visits - FY26,244.0,56617.0,56617.0,56617.0,10-01-25,09-30-26,AS_PMINT_1110: FS,PM_M4_1090: FS,SLAC,0%,SL_TRVL.SLAC Travel,SLAC Travel,Nonlabor,0.0d,244.0,244.0,At Completion Units,10/1/2025,9/30/2026,0,0,0,0,0,0,0,0,0,0,1.03_Accelerator Systems (AS),1.03.01_AS Accelerator Systems Management & Integration,1.03.01.01_AS Accelerator Systems Management & Integration,1.03.01.01.02_Accelerator Systems Travel,AS_PMINT_1120_Travel for reviews and vendor visits - FY26,SLAC_Travel,,SLAC,M&S
67394,1.03,1.03.01,1.03.01.01,1.03.01.01.02,1.03.01.01.02,Accelerator Systems Travel,AS_PMINT_1110,Travel for reviews and vendor visits - FY25,244.0,203084.0,203084.0,203084.0,10-01-24,09-30-25,AS_PMINT_1100: FS,AS_PMINT_1120: FS,SLAC,0%,SL_TRVL.SLAC Travel,SLAC Travel,Nonlabor,0.0d,244.0,244.0,At Completion Units,10/1/2024,9/30/2025,0,0,0,0,0,0,0,0,0,0,1.03_Accelerator Systems (AS),1.03.01_AS Accelerator Systems Management & Integration,1.03.01.01_AS Accelerator Systems Management & Integration,1.03.01.01.02_Accelerator Systems Travel,AS_PMINT_1110_Travel for reviews and vendor visits - FY25,SLAC_Travel,,SLAC,M&S
67395,1.03,1.03.01,1.03.01.01,1.03.01.01.02,1.03.01.01.02,Accelerator Systems Travel,AS_PMINT_1100,Travel for reviews and vendor visits - FY24,243.0,203084.0,203084.0,203084.0,10-02-23,09-30-24,AS_PMINT_1090: FS,AS_PMINT_1110: FS,SLAC,0%,SL_TRVL.SLAC Travel,SLAC Travel,Nonlabor,0.0d,243.0,243.0,At Completion Units,10/2/2023,9/30/2024,0,0,0,0,0,0,0,0,0,0,1.03_Accelerator Systems (AS),1.03.01_AS Accelerator Systems Management & Integration,1.03.01.01_AS Accelerator Systems Management & Integration,1.03.01.01.02_Accelerator Systems Travel,AS_PMINT_1100_Travel for reviews and vendor visits - FY24,SLAC_Travel,,SLAC,M&S
67396,1.03,1.03.01,1.03.01.01,1.03.01.01.02,1.03.01.01.02,Accelerator Systems Travel,AS_PMINT_1080,Travel for reviews and vendor visits - FY22,243.0,196712.0,196712.0,196712.0,10-04-21,09-30-22,MS_FY_2022_Q1: FS,AS_PMINT_1090: FS,SLAC,0%,SL_TRVL.SLAC Travel,SLAC Travel,Nonlabor,0.0d,243.0,243.0,At Completion Units,10/1/2021,9/30/2022,0,0,0,0,0,0,0,0,0,0,1.03_Accelerator Systems (AS),1.03.01_AS Accelerator Systems Management & Integration,1.03.01.01_AS Accelerator Systems Management & Integration,1.03.01.01.02_Accelerator Systems Travel,AS_PMINT_1080_Travel for reviews and vendor visits - FY22,SLAC_Travel,,SLAC,M&S
67716,1.03,1.03.01,1.03.01.01,1.03.01.01.03,1.03.01.01.03,Accelerator Systems Integration,AS_PMINT_1200,Accelerator Systems Integration Support - FY21,245.0,0.0,0.0,0.0,10-01-2020,09-30-2021,AS_PMINT_1001: FS,AS_PMINT_1210: FS,SLAC,0%,52168.52168_METS - Mechanical Design,52168_METS - Mechanical Design,Labor,244.0d,0.0,244.0,At Completion Units,10/1/2020,9/30/2021,0,0,0,0,0,0,0,0,0,0,1.03_Accelerator Systems (AS),1.03.01_AS Accelerator Systems Management & Integration,1.03.01.01_AS Accelerator Systems Management & Integration,1.03.01.01.03_Accelerator Systems Integration,AS_PMINT_1200_Accelerator Systems Integration Support - FY21,Mechanical,,SLAC,Labor
67717,1.03,1.03.01,1.03.01.01,1.03.01.01.03,1.03.01.01.03,Accelerator Systems Integration,AS_PMINT_1200,Accelerator Systems Integration Support - FY21,245.0,1218.0,0.0,1222.0,10-01-2020,09-30-2021,AS_PMINT_1001: FS,AS_PMINT_1210: FS,SLAC,100%,52169.52169_METS Mechanical Engineer,52169_METS Mechanical Engineer,Labor,244.0d,0.0,244.0,At Completion Units,10/1/2020,9/30/2021,0,0,0,0,0,0,0,0,0,0,1.03_Accelerator Systems (AS),1.03.01_AS Accelerator Systems Management & Integration,1.03.01.01_AS Accelerator Systems Management & Integration,1.03.01.01.03_Accelerator Systems Integration,AS_PMINT_1200_Accelerator Systems Integration Support - FY21,Mechanical,,SLAC,Labor
67718,1.03,1.03.01,1.03.01.01,1.03.01.01.03,1.03.01.01.03,Accelerator Systems Integration,AS_PMINT_1200,Accelerator Systems Integration Support - FY21,245.0,271.0,0.0,271.0,10-01-2020,09-30-2021,AS_PMINT_1001: FS,AS_PMINT_1210: FS,SLAC,100%,2003.2003_Research Technical Manager,2003_Research Technical Manager,Labor,244.0d,0.0,244.0,At Completion Units,10/1/2020,9/30/2021,0,0,0,0,0,0,0,0,0,0,1.03_Accelerator Systems (AS),1.03.01_AS Accelerator Systems Management & Integration,1.03.01.01_AS Accelerator Systems Management & Integration,1.03.01.01.03_Accelerator Systems Integration,AS_PMINT_1200_Accelerator Systems Integration Support - FY21,Technical Manager,Engineer,SLAC,Labor
67719,1.03,1.03.01,1.03.01.01,1.03.01.01.03,1.03.01.01.03,Accelerator Systems Integration,AS_PMINT_1200,Accelerator Systems Integration Support - FY21,245.0,63.0,0.0,62.0,10-01-2020,09-30-2021,AS_PMINT_1001: FS,AS_PMINT_1210: FS,SLAC,100%,52130.52130_Research Mechanical Technican,52130_Research Mechanical Technican,Labor,244.0d,0.0,244.0,At Completion Units,10/1/2020,9/30/2021,0,0,0,0,0,0,0,0,0,0,1.03_Accelerator Systems (AS),1.03.01_AS Accelerator Systems Management & Integration,1.03.01.01_AS Accelerator Systems Management & Integration,1.03.01.01.03_Accelerator Systems Integration,AS_PMINT_1200_Accelerator Systems Integration Support - FY21,Mechanical,Tech,SLAC,Labor
67720,1.03,1.03.01,1.03.01.01,1.03.01.01.03,1.03.01.01.03,Accelerator Systems Integration,AS_PMINT_1200,Accelerator Systems Integration Support - FY21,245.0,63.0,0.0,62.0,10-01-2020,09-30-2021,AS_PMINT_1001: FS,AS_PMINT_1210: FS,SLAC,100%,52129.52129_Research Mechanical Engineering,52129_Research Mechanical Engineering,Labor,244.0d,0.0,244.0,At Completion Units,10/1/2020,9/30/2021,0,0,0,0,0,0,0,0,0,0,1.03_Accelerator Systems (AS),1.03.01_AS Accelerator Systems Management & Integration,1.03.01.01_AS Accelerator Systems Management & Integration,1.03.01.01.03_Accelerator Systems Integration,AS_PMINT_1200_Accelerator Systems Integration Support - FY21,Mechanical,,SLAC,Labor
67721,1.03,1.03.01,1.03.01.01,1.03.01.01.03,1.03.01.01.03,Accelerator Systems Integration,AS_PMINT_1200,Accelerator Systems Integration Support - FY21,245.0,24.0,0.0,23.0,10-01-2020,09-30-2021,AS_PMINT_1001: FS,AS_PMINT_1210: FS,SLAC,100%,0113_E5.0113_Physicist-Engineering_E5,0113_Physicist-Engineering_E5,Labor,244.0d,0.0,244.0,At Completion Units,10/1/2020,9/30/2021,0,0,0,0,0,0,0,0,0,0,1.03_Accelerator Systems (AS),1.03.01_AS Accelerator Systems Management & Integration,1.03.01.01_AS Accelerator Systems Management & Integration,1.03.01.01.03_Accelerator Systems Integration,AS_PMINT_1200_Accelerator Systems Integration Support - FY21,Engineer Physicist,,SLAC,Labor
67722,1.03,1.03.01,1.03.01.01,1.03.01.01.03,1.03.01.01.03,Accelerator Systems Integration,AS_PMINT_1200,Accelerator Systems Integration Support - FY21,245.0,24.0,0.0,23.0,10-01-2020,09-30-2021,AS_PMINT_1001: FS,AS_PMINT_1210: FS,SLAC,100%,0113_E4.0113_Physicist-Engineering_E4,0113_Physicist-Engineering_E4,Labor,244.0d,0.0,244.0,At Completion Units,10/1/2020,9/30/2021,0,0,0,0,0,0,0,0,0,0,1.03_Accelerator Systems (AS),1.03.01_AS Accelerator Systems Management & Integration,1.03.01.01_AS Accelerator Systems Management & Integration,1.03.01.01.03_Accelerator Systems Integration,AS_PMINT_1200_Accelerator Systems Integration Support - FY21,Engineer Physicist,,SLAC,Labor
67723,1.03,1.03.01,1.03.01.01,1.03.01.01.03,1.03.01.01.03,Accelerator Systems Integration,AS_PMINT_1001,Accelerator Systems Integration Support - FY20,64.0,188.0,0.0,167.8,07-01-2020,09-30-2020,"ACT_L_1030102: FS, MS_FY_2020a: FS",AS_PMINT_1200: FS,SLAC,100%,0170_E5.0170_Engineer-Mechanical_E5,0170_Engineer-Mechanical_E5,Labor,63.0d,0.0,63.0,At Completion Units,7/1/2020,9/30/2020,0,0,0,0,0,0,0,0,0,0,1.03_Accelerator Systems (AS),1.03.01_AS Accelerator Systems Management & Integration,1.03.01.01_AS Accelerator Systems Management & Integration,1.03.01.01.03_Accelerator Systems Integration,AS_PMINT_1001_Accelerator Systems Integration Support - FY20,Mechanical,,SLAC,Labor
67724,1.03,1.03.01,1.03.01.01,1.03.01.01.03,1.03.01.01.03,Accelerator Systems Integration,AS_PMINT_1001,Accelerator Systems Integration Support - FY20,64.0,45.0,0.0,167.8,07-01-2020,09-30-2020,"ACT_L_1030102: FS, MS_FY_2020a: FS",AS_PMINT_1200: FS,SLAC,100%,1999.1999_Technical Manager,1999_Technical Manager,Labor,63.0d,0.0,63.0,At Completion Units,7/1/2020,9/30/2020,0,0,0,0,0,0,0,0,0,0,1.03_Accelerator Systems (AS),1.03.01_AS Accelerator Systems Management & Integration,1.03.01.01_AS Accelerator Systems Management & Integration,1.03.01.01.03_Accelerator Systems Integration,AS_PMINT_1001_Accelerator Systems Integration Support - FY20,Management,Engineer,SLAC,Labor
67725,1.03,1.03.01,1.03.01.01,1.03.01.01.03,1.03.01.01.03,Accelerator Systems Integration,AS_PMINT_1001,Accelerator Systems Integration Support - FY20,64.0,219.0,0.0,167.8,07-01-2020,09-30-2020,"ACT_L_1030102: FS, MS_FY_2020a: FS",AS_PMINT_1200: FS,SLAC,100%,52168.52168_METS - Mechanical Design,52168_METS - Mechanical Design,Labor,63.0d,0.0,63.0,At Completion Units,7/1/2020,9/30/2020,0,0,0,0,0,0,0,0,0,0,1.03_Accelerator Systems (AS),1.03.01_AS Accelerator Systems Management & Integration,1.03.01.01_AS Accelerator Systems Management & Integration,1.03.01.01.03_Accelerator Systems Integration,AS_PMINT_1001_Accelerator Systems Integration Support - FY20,Mechanical,,SLAC,Labor
67726,1.03,1.03.01,1.03.01.01,1.03.01.01.03,1.03.01.01.03,Accelerator Systems Integration,AS_PMINT_1001,Accelerator Systems Integration Support - FY20,64.0,219.0,0.0,167.8,07-01-2020,09-30-2020,"ACT_L_1030102: FS, MS_FY_2020a: FS",AS_PMINT_1200: FS,SLAC,100%,52169.52169_METS Mechanical Engineer,52169_METS Mechanical Engineer,Labor,63.0d,0.0,63.0,At Completion Units,7/1/2020,9/30/2020,0,0,0,0,0,0,0,0,0,0,1.03_Accelerator Systems (AS),1.03.01_AS Accelerator Systems Management & Integration,1.03.01.01_AS Accelerator Systems Management & Integration,1.03.01.01.03_Accelerator Systems Integration,AS_PMINT_1001_Accelerator Systems Integration Support - FY20,Mechanical,,SLAC,Labor
67727,1.03,1.03.01,1.03.01.01,1.03.01.01.03,1.03.01.01.03,Accelerator Systems Integration,AS_PMINT_1220,Accelerator Systems Integration Support - FY23,243.0,835.0,835.0,835.0,10-03-22,09-29-23,AS_PMINT_1210: FS,AS_PMINT_1230: FS,SLAC,0%,52191.52191_METSMET Metrology,52191_METSMET Metrology,Labor,0.0d,243.0,243.0,At Completion Units,10/3/2022,9/29/2023,0,0,0,0,0,0,0,0,0,0,1.03_Accelerator Systems (AS),1.03.01_AS Accelerator Systems Management & Integration,1.03.01.01_AS Accelerator Systems Management & Integration,1.03.01.01.03_Accelerator Systems Integration,AS_PMINT_1220_Accelerator Systems Integration Support - FY23,Metrology,,SLAC,Labor
67728,1.03,1.03.01,1.03.01.01,1.03.01.01.03,1.03.01.01.03,Accelerator Systems Integration,AS_PMINT_1210,Accelerator Systems Integration Support - FY22,244.0,461.0,461.0,461.0,10-01-21,09-30-22,AS_PMINT_1200: FS,AS_PMINT_1220: FS,SLAC,0%,52191.52191_METSMET Metrology,52191_METSMET Metrology,Labor,0.0d,244.0,244.0,At Completion Units,10/1/2021,9/30/2022,0,0,0,0,0,0,0,0,0,0,1.03_Accelerator Systems (AS),1.03.01_AS Accelerator Systems Management & Integration,1.03.01.01_AS Accelerator Systems Management & Integration,1.03.01.01.03_Accelerator Systems Integration,AS_PMINT_1210_Accelerator Systems Integration Support - FY22,Metrology,,SLAC,Labor
67729,1.03,1.03.01,1.03.01.01,1.03.01.01.03,1.03.01.01.03,Accelerator Systems Integration,AS_PMINT_1250,Accelerator Systems Integration Support - FY26,244.0,763.0,763.0,763.0,10-01-25,09-30-26,AS_PMINT_1240: FS,PM_M4_1090: FS,SLAC,0%,2003.2003_Research Technical Manager,2003_Research Technical Manager,Labor,0.0d,244.0,244.0,At Completion Units,10/1/2025,9/30/2026,0,0,0,0,0,0,0,0,0,0,1.03_Accelerator Systems (AS),1.03.01_AS Accelerator Systems Management & Integration,1.03.01.01_AS Accelerator Systems Management & Integration,1.03.01.01.03_Accelerator Systems Integration,AS_PMINT_1250_Accelerator Systems Integration Support - FY26,Technical Manager,Engineer,SLAC,Labor
67730,1.03,1.03.01,1.03.01.01,1.03.01.01.03,1.03.01.01.03,Accelerator Systems Integration,AS_PMINT_1210,Accelerator Systems Integration Support - FY22,244.0,0.0,0.0,0.0,10-01-21,09-30-22,AS_PMINT_1200: FS,AS_PMINT_1220: FS,SLAC,0%,0170_E4.0170_Engineer-Mechanical_E4,0170_Engineer-Mechanical_E4,Labor,0.0d,244.0,244.0,At Completion Units,10/1/2021,9/30/2022,0,0,0,0,0,0,0,0,0,0,1.03_Accelerator Systems (AS),1.03.01_AS Accelerator Systems Management & Integration,1.03.01.01_AS Accelerator Systems Management & Integration,1.03.01.01.03_Accelerator Systems Integration,AS_PMINT_1210_Accelerator Systems Integration Support - FY22,Mechanical,,SLAC,Labor
67731,1.03,1.03.01,1.03.01.01,1.03.01.01.03,1.03.01.01.03,Accelerator Systems Integration,AS_PMINT_1210,Accelerator Systems Integration Support - FY22,244.0,0.0,0.0,0.0,10-01-21,09-30-22,AS_PMINT_1200: FS,AS_PMINT_1220: FS,SLAC,0%,52168.52168_METS - Mechanical Design,52168_METS - Mechanical Design,Labor,0.0d,244.0,244.0,At Completion Units,10/1/2021,9/30/2022,0,0,0,0,0,0,0,0,0,0,1.03_Accelerator Systems (AS),1.03.01_AS Accelerator Systems Management & Integration,1.03.01.01_AS Accelerator Systems Management & Integration,1.03.01.01.03_Accelerator Systems Integration,AS_PMINT_1210_Accelerator Systems Integration Support - FY22,Mechanical,,SLAC,Labor
67732,1.03,1.03.01,1.03.01.01,1.03.01.01.03,1.03.01.01.03,Accelerator Systems Integration,AS_PMINT_1220,Accelerator Systems Integration Support - FY23,243.0,0.0,0.0,0.0,10-03-22,09-29-23,AS_PMINT_1210: FS,AS_PMINT_1230: FS,SLAC,0%,52168.52168_METS - Mechanical Design,52168_METS - Mechanical Design,Labor,0.0d,243.0,243.0,At Completion Units,10/3/2022,9/29/2023,0,0,0,0,0,0,0,0,0,0,1.03_Accelerator Systems (AS),1.03.01_AS Accelerator Systems Management & Integration,1.03.01.01_AS Accelerator Systems Management & Integration,1.03.01.01.03_Accelerator Systems Integration,AS_PMINT_1220_Accelerator Systems Integration Support - FY23,Mechanical,,SLAC,Labor
67733,1.03,1.03.01,1.03.01.01,1.03.01.01.03,1.03.01.01.03,Accelerator Systems Integration,AS_PMINT_1230,Accelerator Systems Integration Support - FY24,243.0,0.0,0.0,0.0,10-02-23,09-30-24,AS_PMINT_1220: FS,AS_PMINT_1240: FS,SLAC,0%,52168.52168_METS - Mechanical Design,52168_METS - Mechanical Design,Labor,0.0d,243.0,243.0,At Completion Units,10/2/2023,9/30/2024,0,0,0,0,0,0,0,0,0,0,1.03_Accelerator Systems (AS),1.03.01_AS Accelerator Systems Management & Integration,1.03.01.01_AS Accelerator Systems Management & Integration,1.03.01.01.03_Accelerator Systems Integration,AS_PMINT_1230_Accelerator Systems Integration Support - FY24,Mechanical,,SLAC,Labor
67734,1.03,1.03.01,1.03.01.01,1.03.01.01.03,1.03.01.01.03,Accelerator Systems Integration,AS_PMINT_1240,Accelerator Systems Integration Support - FY25,244.0,0.0,0.0,0.0,10-01-24,09-30-25,AS_PMINT_1230: FS,AS_PMINT_1250: FS,SLAC,0%,52168.52168_METS - Mechanical Design,52168_METS - Mechanical Design,Labor,0.0d,244.0,244.0,At Completion Units,10/1/2024,9/30/2025,0,0,0,0,0,0,0,0,0,0,1.03_Accelerator Systems (AS),1.03.01_AS Accelerator Systems Management & Integration,1.03.01.01_AS Accelerator Systems Management & Integration,1.03.01.01.03_Accelerator Systems Integration,AS_PMINT_1240_Accelerator Systems Integration Support - FY25,Mechanical,,SLAC,Labor
67735,1.03,1.03.01,1.03.01.01,1.03.01.01.03,1.03.01.01.03,Accelerator Systems Integration,AS_PMINT_1250,Accelerator Systems Integration Support - FY26,244.0,0.0,0.0,0.0,10-01-25,09-30-26,AS_PMINT_1240: FS,PM_M4_1090: FS,SLAC,0%,52168.52168_METS - Mechanical Design,52168_METS - Mechanical Design,Labor,0.0d,244.0,244.0,At Completion Units,10/1/2025,9/30/2026,0,0,0,0,0,0,0,0,0,0,1.03_Accelerator Systems (AS),1.03.01_AS Accelerator Systems Management & Integration,1.03.01.01_AS Accelerator Systems Management & Integration,1.03.01.01.03_Accelerator Systems Integration,AS_PMINT_1250_Accelerator Systems Integration Support - FY26,Mechanical,,SLAC,Labor
67736,1.03,1.03.01,1.03.01.01,1.03.01.01.03,1.03.01.01.03,Accelerator Systems Integration,AS_PMINT_1250,Accelerator Systems Integration Support - FY26,244.0,1000.0,1000.0,1000.0,10-01-25,09-30-26,AS_PMINT_1240: FS,PM_M4_1090: FS,SLAC,0%,52169.52169_METS Mechanical Engineer,52169_METS Mechanical Engineer,Labor,0.0d,244.0,244.0,At Completion Units,10/1/2025,9/30/2026,0,0,0,0,0,0,0,0,0,0,1.03_Accelerator Systems (AS),1.03.01_AS Accelerator Systems Management & Integration,1.03.01.01_AS Accelerator Systems Management & Integration,1.03.01.01.03_Accelerator Systems Integration,AS_PMINT_1250_Accelerator Systems Integration Support - FY26,Mechanical,,SLAC,Labor
67737,1.03,1.03.01,1.03.01.01,1.03.01.01.03,1.03.01.01.03,Accelerator Systems Integration,AS_PMINT_1240,Accelerator Systems Integration Support - FY25,244.0,1304.0,1304.0,1304.0,10-01-24,09-30-25,AS_PMINT_1230: FS,AS_PMINT_1250: FS,SLAC,0%,52169.52169_METS Mechanical Engineer,52169_METS Mechanical Engineer,Labor,0.0d,244.0,244.0,At Completion Units,10/1/2024,9/30/2025,0,0,0,0,0,0,0,0,0,0,1.03_Accelerator Systems (AS),1.03.01_AS Accelerator Systems Management & Integration,1.03.01.01_AS Accelerator Systems Management & Integration,1.03.01.01.03_Accelerator Systems Integration,AS_PMINT_1240_Accelerator Systems Integration Support - FY25,Mechanical,,SLAC,Labor
67738,1.03,1.03.01,1.03.01.01,1.03.01.01.03,1.03.01.01.03,Accelerator Systems Integration,AS_PMINT_1230,Accelerator Systems Integration Support - FY24,243.0,1252.0,1252.0,1252.0,10-02-23,09-30-24,AS_PMINT_1220: FS,AS_PMINT_1240: FS,SLAC,0%,52169.52169_METS Mechanical Engineer,52169_METS Mechanical Engineer,Labor,0.0d,243.0,243.0,At Completion Units,10/2/2023,9/30/2024,0,0,0,0,0,0,0,0,0,0,1.03_Accelerator Systems (AS),1.03.01_AS Accelerator Systems Management & Integration,1.03.01.01_AS Accelerator Systems Management & Integration,1.03.01.01.03_Accelerator Systems Integration,AS_PMINT_1230_Accelerator Systems Integration Support - FY24,Mechanical,,SLAC,Labor
67739,1.03,1.03.01,1.03.01.01,1.03.01.01.03,1.03.01.01.03,Accelerator Systems Integration,AS_PMINT_1220,Accelerator Systems Integration Support - FY23,243.0,1252.0,1252.0,1252.0,10-03-22,09-29-23,AS_PMINT_1210: FS,AS_PMINT_1230: FS,SLAC,0%,52169.52169_METS Mechanical Engineer,52169_METS Mechanical Engineer,Labor,0.0d,243.0,243.0,At Completion Units,10/3/2022,9/29/2023,0,0,0,0,0,0,0,0,0,0,1.03_Accelerator Systems (AS),1.03.01_AS Accelerator Systems Management & Integration,1.03.01.01_AS Accelerator Systems Management & Integration,1.03.01.01.03_Accelerator Systems Integration,AS_PMINT_1220_Accelerator Systems Integration Support - FY23,Mechanical,,SLAC,Labor
67740,1.03,1.03.01,1.03.01.01,1.03.01.01.03,1.03.01.01.03,Accelerator Systems Integration,AS_PMINT_1210,Accelerator Systems Integration Support - FY22,244.0,692.0,692.0,692.0,10-01-21,09-30-22,AS_PMINT_1200: FS,AS_PMINT_1220: FS,SLAC,0%,52169.52169_METS Mechanical Engineer,52169_METS Mechanical Engineer,Labor,0.0d,244.0,244.0,At Completion Units,10/1/2021,9/30/2022,0,0,0,0,0,0,0,0,0,0,1.03_Accelerator Systems (AS),1.03.01_AS Accelerator Systems Management & Integration,1.03.01.01_AS Accelerator Systems Management & Integration,1.03.01.01.03_Accelerator Systems Integration,AS_PMINT_1210_Accelerator Systems Integration Support - FY22,Mechanical,,SLAC,Labor
67741,1.03,1.03.01,1.03.01.01,1.03.01.01.03,1.03.01.01.03,Accelerator Systems Integration,AS_PMINT_1250,Accelerator Systems Integration Support - FY26,244.0,0.0,0.0,0.0,10-01-25,09-30-26,AS_PMINT_1240: FS,PM_M4_1090: FS,SLAC,0%,52130.52130_Research Mechanical Technican,52130_Research Mechanical Technican,Labor,0.0d,244.0,244.0,At Completion Units,10/1/2025,9/30/2026,0,0,0,0,0,0,0,0,0,0,1.03_Accelerator Systems (AS),1.03.01_AS Accelerator Systems Management & Integration,1.03.01.01_AS Accelerator Systems Management & Integration,1.03.01.01.03_Accelerator Systems Integration,AS_PMINT_1250_Accelerator Systems Integration Support - FY26,Mechanical,Tech,SLAC,Labor
67742,1.03,1.03.01,1.03.01.01,1.03.01.01.03,1.03.01.01.03,Accelerator Systems Integration,AS_PMINT_1250,Accelerator Systems Integration Support - FY26,244.0,704.0,704.0,704.0,10-01-25,09-30-26,AS_PMINT_1240: FS,PM_M4_1090: FS,SLAC,0%,52191.52191_METSMET Metrology,52191_METSMET Metrology,Labor,0.0d,244.0,244.0,At Completion Units,10/1/2025,9/30/2026,0,0,0,0,0,0,0,0,0,0,1.03_Accelerator Systems (AS),1.03.01_AS Accelerator Systems Management & Integration,1.03.01.01_AS Accelerator Systems Management & Integration,1.03.01.01.03_Accelerator Systems Integration,AS_PMINT_1250_Accelerator Systems Integration Support - FY26,Metrology,,SLAC,Labor
67743,1.03,1.03.01,1.03.01.01,1.03.01.01.03,1.03.01.01.03,Accelerator Systems Integration,AS_PMINT_1240,Accelerator Systems Integration Support - FY25,244.0,919.0,919.0,919.0,10-01-24,09-30-25,AS_PMINT_1230: FS,AS_PMINT_1250: FS,SLAC,0%,52191.52191_METSMET Metrology,52191_METSMET Metrology,Labor,0.0d,244.0,244.0,At Completion Units,10/1/2024,9/30/2025,0,0,0,0,0,0,0,0,0,0,1.03_Accelerator Systems (AS),1.03.01_AS Accelerator Systems Management & Integration,1.03.01.01_AS Accelerator Systems Management & Integration,1.03.01.01.03_Accelerator Systems Integration,AS_PMINT_1240_Accelerator Systems Integration Support - FY25,Metrology,,SLAC,Labor
67744,1.03,1.03.01,1.03.01.01,1.03.01.01.03,1.03.01.01.03,Accelerator Systems Integration,AS_PMINT_1230,Accelerator Systems Integration Support - FY24,243.0,889.0,889.0,889.0,10-02-23,09-30-24,AS_PMINT_1220: FS,AS_PMINT_1240: FS,SLAC,0%,52191.52191_METSMET Metrology,52191_METSMET Metrology,Labor,0.0d,243.0,243.0,At Completion Units,10/2/2023,9/30/2024,0,0,0,0,0,0,0,0,0,0,1.03_Accelerator Systems (AS),1.03.01_AS Accelerator Systems Management & Integration,1.03.01.01_AS Accelerator Systems Management & Integration,1.03.01.01.03_Accelerator Systems Integration,AS_PMINT_1230_Accelerator Systems Integration Support - FY24,Metrology,,SLAC,Labor
67745,1.03,1.03.01,1.03.01.01,1.03.01.01.03,1.03.01.01.03,Accelerator Systems Integration,AS_PMINT_1240,Accelerator Systems Integration Support - FY25,244.0,1272.0,1272.0,1272.0,10-01-24,09-30-25,AS_PMINT_1230: FS,AS_PMINT_1250: FS,SLAC,0%,2003.2003_Research Technical Manager,2003_Research Technical Manager,Labor,0.0d,244.0,244.0,At Completion Units,10/1/2024,9/30/2025,0,0,0,0,0,0,0,0,0,0,1.03_Accelerator Systems (AS),1.03.01_AS Accelerator Systems Management & Integration,1.03.01.01_AS Accelerator Systems Management & Integration,1.03.01.01.03_Accelerator Systems Integration,AS_PMINT_1240_Accelerator Systems Integration Support - FY25,Technical Manager,Engineer,SLAC,Labor
67746,1.03,1.03.01,1.03.01.01,1.03.01.01.03,1.03.01.01.03,Accelerator Systems Integration,AS_PMINT_1230,Accelerator Systems Integration Support - FY24,243.0,1058.0,1058.0,1058.0,10-02-23,09-30-24,AS_PMINT_1220: FS,AS_PMINT_1240: FS,SLAC,0%,2003.2003_Research Technical Manager,2003_Research Technical Manager,Labor,0.0d,243.0,243.0,At Completion Units,10/2/2023,9/30/2024,0,0,0,0,0,0,0,0,0,0,1.03_Accelerator Systems (AS),1.03.01_AS Accelerator Systems Management & Integration,1.03.01.01_AS Accelerator Systems Management & Integration,1.03.01.01.03_Accelerator Systems Integration,AS_PMINT_1230_Accelerator Systems Integration Support - FY24,Technical Manager,Engineer,SLAC,Labor
67747,1.03,1.03.01,1.03.01.01,1.03.01.01.03,1.03.01.01.03,Accelerator Systems Integration,AS_PMINT_1220,Accelerator Systems Integration Support - FY23,243.0,612.0,612.0,612.0,10-03-22,09-29-23,AS_PMINT_1210: FS,AS_PMINT_1230: FS,SLAC,0%,2003.2003_Research Technical Manager,2003_Research Technical Manager,Labor,0.0d,243.0,243.0,At Completion Units,10/3/2022,9/29/2023,0,0,0,0,0,0,0,0,0,0,1.03_Accelerator Systems (AS),1.03.01_AS Accelerator Systems Management & Integration,1.03.01.01_AS Accelerator Systems Management & Integration,1.03.01.01.03_Accelerator Systems Integration,AS_PMINT_1220_Accelerator Systems Integration Support - FY23,Technical Manager,Engineer,SLAC,Labor
67748,1.03,1.03.01,1.03.01.01,1.03.01.01.03,1.03.01.01.03,Accelerator Systems Integration,AS_PMINT_1210,Accelerator Systems Integration Support - FY22,244.0,467.0,467.0,467.0,10-01-21,09-30-22,AS_PMINT_1200: FS,AS_PMINT_1220: FS,SLAC,0%,2003.2003_Research Technical Manager,2003_Research Technical Manager,Labor,0.0d,244.0,244.0,At Completion Units,10/1/2021,9/30/2022,0,0,0,0,0,0,0,0,0,0,1.03_Accelerator Systems (AS),1.03.01_AS Accelerator Systems Management & Integration,1.03.01.01_AS Accelerator Systems Management & Integration,1.03.01.01.03_Accelerator Systems Integration,AS_PMINT_1210_Accelerator Systems Integration Support - FY22,Technical Manager,Engineer,SLAC,Labor
67749,1.03,1.03.01,1.03.01.01,1.03.01.01.03,1.03.01.01.03,Accelerator Systems Integration,AS_PMINT_1240,Accelerator Systems Integration Support - FY25,244.0,0.0,0.0,0.0,10-01-24,09-30-25,AS_PMINT_1230: FS,AS_PMINT_1250: FS,SLAC,0%,52130.52130_Research Mechanical Technican,52130_Research Mechanical Technican,Labor,0.0d,244.0,244.0,At Completion Units,10/1/2024,9/30/2025,0,0,0,0,0,0,0,0,0,0,1.03_Accelerator Systems (AS),1.03.01_AS Accelerator Systems Management & Integration,1.03.01.01_AS Accelerator Systems Management & Integration,1.03.01.01.03_Accelerator Systems Integration,AS_PMINT_1240_Accelerator Systems Integration Support - FY25,Mechanical,Tech,SLAC,Labor
67750,1.03,1.03.01,1.03.01.01,1.03.01.01.03,1.03.01.01.03,Accelerator Systems Integration,AS_PMINT_1230,Accelerator Systems Integration Support - FY24,243.0,54.0,54.0,54.0,10-02-23,09-30-24,AS_PMINT_1220: FS,AS_PMINT_1240: FS,SLAC,0%,52130.52130_Research Mechanical Technican,52130_Research Mechanical Technican,Labor,0.0d,243.0,243.0,At Completion Units,10/2/2023,9/30/2024,0,0,0,0,0,0,0,0,0,0,1.03_Accelerator Systems (AS),1.03.01_AS Accelerator Systems Management & Integration,1.03.01.01_AS Accelerator Systems Management & Integration,1.03.01.01.03_Accelerator Systems Integration,AS_PMINT_1230_Accelerator Systems Integration Support - FY24,Mechanical,Tech,SLAC,Labor
67751,1.03,1.03.01,1.03.01.01,1.03.01.01.03,1.03.01.01.03,Accelerator Systems Integration,AS_PMINT_1220,Accelerator Systems Integration Support - FY23,243.0,0.0,0.0,0.0,10-03-22,09-29-23,AS_PMINT_1210: FS,AS_PMINT_1230: FS,SLAC,0%,52130.52130_Research Mechanical Technican,52130_Research Mechanical Technican,Labor,0.0d,243.0,243.0,At Completion Units,10/3/2022,9/29/2023,0,0,0,0,0,0,0,0,0,0,1.03_Accelerator Systems (AS),1.03.01_AS Accelerator Systems Management & Integration,1.03.01.01_AS Accelerator Systems Management & Integration,1.03.01.01.03_Accelerator Systems Integration,AS_PMINT_1220_Accelerator Systems Integration Support - FY23,Mechanical,Tech,SLAC,Labor
67752,1.03,1.03.01,1.03.01.01,1.03.01.01.03,1.03.01.01.03,Accelerator Systems Integration,AS_PMINT_1210,Accelerator Systems Integration Support - FY22,244.0,0.0,0.0,0.0,10-01-21,09-30-22,AS_PMINT_1200: FS,AS_PMINT_1220: FS,SLAC,0%,52130.52130_Research Mechanical Technican,52130_Research Mechanical Technican,Labor,0.0d,244.0,244.0,At Completion Units,10/1/2021,9/30/2022,0,0,0,0,0,0,0,0,0,0,1.03_Accelerator Systems (AS),1.03.01_AS Accelerator Systems Management & Integration,1.03.01.01_AS Accelerator Systems Management & Integration,1.03.01.01.03_Accelerator Systems Integration,AS_PMINT_1210_Accelerator Systems Integration Support - FY22,Mechanical,Tech,SLAC,Labor
67753,1.03,1.03.01,1.03.01.01,1.03.01.01.03,1.03.01.01.03,Accelerator Systems Integration,AS_PMINT_1250,Accelerator Systems Integration Support - FY26,244.0,76.0,76.0,76.0,10-01-25,09-30-26,AS_PMINT_1240: FS,PM_M4_1090: FS,SLAC,0%,52129.52129_Research Mechanical Engineering,52129_Research Mechanical Engineering,Labor,0.0d,244.0,244.0,At Completion Units,10/1/2025,9/30/2026,0,0,0,0,0,0,0,0,0,0,1.03_Accelerator Systems (AS),1.03.01_AS Accelerator Systems Management & Integration,1.03.01.01_AS Accelerator Systems Management & Integration,1.03.01.01.03_Accelerator Systems Integration,AS_PMINT_1250_Accelerator Systems Integration Support - FY26,Mechanical,,SLAC,Labor
67754,1.03,1.03.01,1.03.01.01,1.03.01.01.03,1.03.01.01.03,Accelerator Systems Integration,AS_PMINT_1240,Accelerator Systems Integration Support - FY25,244.0,100.0,100.0,100.0,10-01-24,09-30-25,AS_PMINT_1230: FS,AS_PMINT_1250: FS,SLAC,0%,52129.52129_Research Mechanical Engineering,52129_Research Mechanical Engineering,Labor,0.0d,244.0,244.0,At Completion Units,10/1/2024,9/30/2025,0,0,0,0,0,0,0,0,0,0,1.03_Accelerator Systems (AS),1.03.01_AS Accelerator Systems Management & Integration,1.03.01.01_AS Accelerator Systems Management & Integration,1.03.01.01.03_Accelerator Systems Integration,AS_PMINT_1240_Accelerator Systems Integration Support - FY25,Mechanical,,SLAC,Labor
67755,1.03,1.03.01,1.03.01.01,1.03.01.01.03,1.03.01.01.03,Accelerator Systems Integration,AS_PMINT_1220,Accelerator Systems Integration Support - FY23,243.0,152.0,152.0,152.0,10-03-22,09-29-23,AS_PMINT_1210: FS,AS_PMINT_1230: FS,SLAC,0%,52129.52129_Research Mechanical Engineering,52129_Research Mechanical Engineering,Labor,0.0d,243.0,243.0,At Completion Units,10/3/2022,9/29/2023,0,0,0,0,0,0,0,0,0,0,1.03_Accelerator Systems (AS),1.03.01_AS Accelerator Systems Management & Integration,1.03.01.01_AS Accelerator Systems Management & Integration,1.03.01.01.03_Accelerator Systems Integration,AS_PMINT_1220_Accelerator Systems Integration Support - FY23,Mechanical,,SLAC,Labor
67756,1.03,1.03.01,1.03.01.01,1.03.01.01.03,1.03.01.01.03,Accelerator Systems Integration,AS_PMINT_1210,Accelerator Systems Integration Support - FY22,244.0,87.0,87.0,87.0,10-01-21,09-30-22,AS_PMINT_1200: FS,AS_PMINT_1220: FS,SLAC,0%,52129.52129_Research Mechanical Engineering,52129_Research Mechanical Engineering,Labor,0.0d,244.0,244.0,At Completion Units,10/1/2021,9/30/2022,0,0,0,0,0,0,0,0,0,0,1.03_Accelerator Systems (AS),1.03.01_AS Accelerator Systems Management & Integration,1.03.01.01_AS Accelerator Systems Management & Integration,1.03.01.01.03_Accelerator Systems Integration,AS_PMINT_1210_Accelerator Systems Integration Support - FY22,Mechanical,,SLAC,Labor
67757,1.03,1.03.01,1.03.01.01,1.03.01.01.03,1.03.01.01.03,Accelerator Systems Integration,AS_PMINT_1250,Accelerator Systems Integration Support - FY26,244.0,0.0,0.0,0.0,10-01-25,09-30-26,AS_PMINT_1240: FS,PM_M4_1090: FS,SLAC,0%,0170_E4.0170_Engineer-Mechanical_E4,0170_Engineer-Mechanical_E4,Labor,0.0d,244.0,244.0,At Completion Units,10/1/2025,9/30/2026,0,0,0,0,0,0,0,0,0,0,1.03_Accelerator Systems (AS),1.03.01_AS Accelerator Systems Management & Integration,1.03.01.01_AS Accelerator Systems Management & Integration,1.03.01.01.03_Accelerator Systems Integration,AS_PMINT_1250_Accelerator Systems Integration Support - FY26,Mechanical,,SLAC,Labor
67758,1.03,1.03.01,1.03.01.01,1.03.01.01.03,1.03.01.01.03,Accelerator Systems Integration,AS_PMINT_1240,Accelerator Systems Integration Support - FY25,244.0,0.0,0.0,0.0,10-01-24,09-30-25,AS_PMINT_1230: FS,AS_PMINT_1250: FS,SLAC,0%,0170_E4.0170_Engineer-Mechanical_E4,0170_Engineer-Mechanical_E4,Labor,0.0d,244.0,244.0,At Completion Units,10/1/2024,9/30/2025,0,0,0,0,0,0,0,0,0,0,1.03_Accelerator Systems (AS),1.03.01_AS Accelerator Systems Management & Integration,1.03.01.01_AS Accelerator Systems Management & Integration,1.03.01.01.03_Accelerator Systems Integration,AS_PMINT_1240_Accelerator Systems Integration Support - FY25,Mechanical,,SLAC,Labor
67759,1.03,1.03.01,1.03.01.01,1.03.01.01.03,1.03.01.01.03,Accelerator Systems Integration,AS_PMINT_1230,Accelerator Systems Integration Support - FY24,243.0,0.0,0.0,0.0,10-02-23,09-30-24,AS_PMINT_1220: FS,AS_PMINT_1240: FS,SLAC,0%,0170_E4.0170_Engineer-Mechanical_E4,0170_Engineer-Mechanical_E4,Labor,0.0d,243.0,243.0,At Completion Units,10/2/2023,9/30/2024,0,0,0,0,0,0,0,0,0,0,1.03_Accelerator Systems (AS),1.03.01_AS Accelerator Systems Management & Integration,1.03.01.01_AS Accelerator Systems Management & Integration,1.03.01.01.03_Accelerator Systems Integration,AS_PMINT_1230_Accelerator Systems Integration Support - FY24,Mechanical,,SLAC,Labor
67760,1.03,1.03.01,1.03.01.01,1.03.01.01.03,1.03.01.01.03,Accelerator Systems Integration,AS_PMINT_1220,Accelerator Systems Integration Support - FY23,243.0,0.0,0.0,0.0,10-03-22,09-29-23,AS_PMINT_1210: FS,AS_PMINT_1230: FS,SLAC,0%,0170_E4.0170_Engineer-Mechanical_E4,0170_Engineer-Mechanical_E4,Labor,0.0d,243.0,243.0,At Completion Units,10/3/2022,9/29/2023,0,0,0,0,0,0,0,0,0,0,1.03_Accelerator Systems (AS),1.03.01_AS Accelerator Systems Management & Integration,1.03.01.01_AS Accelerator Systems Management & Integration,1.03.01.01.03_Accelerator Systems Integration,AS_PMINT_1220_Accelerator Systems Integration Support - FY23,Mechanical,,SLAC,Labor
67761,1.03,1.03.01,1.03.01.01,1.03.01.01.03,1.03.01.01.03,Accelerator Systems Integration,AS_PMINT_1250,Accelerator Systems Integration Support - FY26,244.0,0.0,0.0,0.0,10-01-25,09-30-26,AS_PMINT_1240: FS,PM_M4_1090: FS,SLAC,0%,0113_E5.0113_Physicist-Engineering_E5,0113_Physicist-Engineering_E5,Labor,0.0d,244.0,244.0,At Completion Units,10/1/2025,9/30/2026,0,0,0,0,0,0,0,0,0,0,1.03_Accelerator Systems (AS),1.03.01_AS Accelerator Systems Management & Integration,1.03.01.01_AS Accelerator Systems Management & Integration,1.03.01.01.03_Accelerator Systems Integration,AS_PMINT_1250_Accelerator Systems Integration Support - FY26,Engineer Physicist,,SLAC,Labor
67762,1.03,1.03.01,1.03.01.01,1.03.01.01.03,1.03.01.01.03,Accelerator Systems Integration,AS_PMINT_1250,Accelerator Systems Integration Support - FY26,244.0,0.0,0.0,0.0,10-01-25,09-30-26,AS_PMINT_1240: FS,PM_M4_1090: FS,SLAC,0%,0113_E4.0113_Physicist-Engineering_E4,0113_Physicist-Engineering_E4,Labor,0.0d,244.0,244.0,At Completion Units,10/1/2025,9/30/2026,0,0,0,0,0,0,0,0,0,0,1.03_Accelerator Systems (AS),1.03.01_AS Accelerator Systems Management & Integration,1.03.01.01_AS Accelerator Systems Management & Integration,1.03.01.01.03_Accelerator Systems Integration,AS_PMINT_1250_Accelerator Systems Integration Support - FY26,Engineer Physicist,,SLAC,Labor
67763,1.03,1.03.01,1.03.01.01,1.03.01.01.03,1.03.01.01.03,Accelerator Systems Integration,AS_PMINT_1240,Accelerator Systems Integration Support - FY25,244.0,72.0,72.0,72.0,10-01-24,09-30-25,AS_PMINT_1230: FS,AS_PMINT_1250: FS,SLAC,0%,0113_E5.0113_Physicist-Engineering_E5,0113_Physicist-Engineering_E5,Labor,0.0d,244.0,244.0,At Completion Units,10/1/2024,9/30/2025,0,0,0,0,0,0,0,0,0,0,1.03_Accelerator Systems (AS),1.03.01_AS Accelerator Systems Management & Integration,1.03.01.01_AS Accelerator Systems Management & Integration,1.03.01.01.03_Accelerator Systems Integration,AS_PMINT_1240_Accelerator Systems Integration Support - FY25,Engineer Physicist,,SLAC,Labor
67764,1.03,1.03.01,1.03.01.01,1.03.01.01.03,1.03.01.01.03,Accelerator Systems Integration,AS_PMINT_1240,Accelerator Systems Integration Support - FY25,244.0,0.0,0.0,0.0,10-01-24,09-30-25,AS_PMINT_1230: FS,AS_PMINT_1250: FS,SLAC,0%,0113_E4.0113_Physicist-Engineering_E4,0113_Physicist-Engineering_E4,Labor,0.0d,244.0,244.0,At Completion Units,10/1/2024,9/30/2025,0,0,0,0,0,0,0,0,0,0,1.03_Accelerator Systems (AS),1.03.01_AS Accelerator Systems Management & Integration,1.03.01.01_AS Accelerator Systems Management & Integration,1.03.01.01.03_Accelerator Systems Integration,AS_PMINT_1240_Accelerator Systems Integration Support - FY25,Engineer Physicist,,SLAC,Labor
67765,1.03,1.03.01,1.03.01.01,1.03.01.01.03,1.03.01.01.03,Accelerator Systems Integration,AS_PMINT_1230,Accelerator Systems Integration Support - FY24,243.0,0.0,0.0,0.0,10-02-23,09-30-24,AS_PMINT_1220: FS,AS_PMINT_1240: FS,SLAC,0%,0113_E4.0113_Physicist-Engineering_E4,0113_Physicist-Engineering_E4,Labor,0.0d,243.0,243.0,At Completion Units,10/2/2023,9/30/2024,0,0,0,0,0,0,0,0,0,0,1.03_Accelerator Systems (AS),1.03.01_AS Accelerator Systems Management & Integration,1.03.01.01_AS Accelerator Systems Management & Integration,1.03.01.01.03_Accelerator Systems Integration,AS_PMINT_1230_Accelerator Systems Integration Support - FY24,Engineer Physicist,,SLAC,Labor
67766,1.03,1.03.01,1.03.01.01,1.03.01.01.03,1.03.01.01.03,Accelerator Systems Integration,AS_PMINT_1230,Accelerator Systems Integration Support - FY24,243.0,72.0,72.0,72.0,10-02-23,09-30-24,AS_PMINT_1220: FS,AS_PMINT_1240: FS,SLAC,0%,0113_E5.0113_Physicist-Engineering_E5,0113_Physicist-Engineering_E5,Labor,0.0d,243.0,243.0,At Completion Units,10/2/2023,9/30/2024,0,0,0,0,0,0,0,0,0,0,1.03_Accelerator Systems (AS),1.03.01_AS Accelerator Systems Management & Integration,1.03.01.01_AS Accelerator Systems Management & Integration,1.03.01.01.03_Accelerator Systems Integration,AS_PMINT_1230_Accelerator Systems Integration Support - FY24,Engineer Physicist,,SLAC,Labor
67767,1.03,1.03.01,1.03.01.01,1.03.01.01.03,1.03.01.01.03,Accelerator Systems Integration,AS_PMINT_1220,Accelerator Systems Integration Support - FY23,243.0,48.0,48.0,48.0,10-03-22,09-29-23,AS_PMINT_1210: FS,AS_PMINT_1230: FS,SLAC,0%,0113_E5.0113_Physicist-Engineering_E5,0113_Physicist-Engineering_E5,Labor,0.0d,243.0,243.0,At Completion Units,10/3/2022,9/29/2023,0,0,0,0,0,0,0,0,0,0,1.03_Accelerator Systems (AS),1.03.01_AS Accelerator Systems Management & Integration,1.03.01.01_AS Accelerator Systems Management & Integration,1.03.01.01.03_Accelerator Systems Integration,AS_PMINT_1220_Accelerator Systems Integration Support - FY23,Engineer Physicist,,SLAC,Labor
67768,1.03,1.03.01,1.03.01.01,1.03.01.01.03,1.03.01.01.03,Accelerator Systems Integration,AS_PMINT_1220,Accelerator Systems Integration Support - FY23,243.0,0.0,0.0,0.0,10-03-22,09-29-23,AS_PMINT_1210: FS,AS_PMINT_1230: FS,SLAC,0%,0113_E4.0113_Physicist-Engineering_E4,0113_Physicist-Engineering_E4,Labor,0.0d,243.0,243.0,At Completion Units,10/3/2022,9/29/2023,0,0,0,0,0,0,0,0,0,0,1.03_Accelerator Systems (AS),1.03.01_AS Accelerator Systems Management & Integration,1.03.01.01_AS Accelerator Systems Management & Integration,1.03.01.01.03_Accelerator Systems Integration,AS_PMINT_1220_Accelerator Systems Integration Support - FY23,Engineer Physicist,,SLAC,Labor
67769,1.03,1.03.01,1.03.01.01,1.03.01.01.03,1.03.01.01.03,Accelerator Systems Integration,AS_PMINT_1210,Accelerator Systems Integration Support - FY22,244.0,0.0,0.0,0.0,10-01-21,09-30-22,AS_PMINT_1200: FS,AS_PMINT_1220: FS,SLAC,0%,0113_E4.0113_Physicist-Engineering_E4,0113_Physicist-Engineering_E4,Labor,0.0d,244.0,244.0,At Completion Units,10/1/2021,9/30/2022,0,0,0,0,0,0,0,0,0,0,1.03_Accelerator Systems (AS),1.03.01_AS Accelerator Systems Management & Integration,1.03.01.01_AS Accelerator Systems Management & Integration,1.03.01.01.03_Accelerator Systems Integration,AS_PMINT_1210_Accelerator Systems Integration Support - FY22,Engineer Physicist,,SLAC,Labor
67770,1.03,1.03.01,1.03.01.01,1.03.01.01.03,1.03.01.01.03,Accelerator Systems Integration,AS_PMINT_1210,Accelerator Systems Integration Support - FY22,244.0,33.0,33.0,33.0,10-01-21,09-30-22,AS_PMINT_1200: FS,AS_PMINT_1220: FS,SLAC,0%,0113_E5.0113_Physicist-Engineering_E5,0113_Physicist-Engineering_E5,Labor,0.0d,244.0,244.0,At Completion Units,10/1/2021,9/30/2022,0,0,0,0,0,0,0,0,0,0,1.03_Accelerator Systems (AS),1.03.01_AS Accelerator Systems Management & Integration,1.03.01.01_AS Accelerator Systems Management & Integration,1.03.01.01.03_Accelerator Systems Integration,AS_PMINT_1210_Accelerator Systems Integration Support - FY22,Engineer Physicist,,SLAC,Labor
68409,1.03,1.03.01,1.03.01.05,1.03.01.05.01,1.03.01.05.01,Accelerator Systems - Integrated CAD Modeling,AS_CAD_2301,"Define Envelopes for gallery and housing, populate in CAD Model - 60%",44.0,145.0,0.0,333.5,06-01-2021,09-01-2021,AS_CAD_2300: FS,AS_CAD_2302: SS,SLAC,100%,52169.52169_METS Mechanical Engineer,52169_METS Mechanical Engineer,Labor,65.0d,0.0,65.0,At Completion Units,6/1/2021,7/29/2021,0,0,0,0,0,0,0,0,0,0,1.03_Accelerator Systems (AS),1.03.01_AS Accelerator Systems Management & Integration,1.03.01.05_Accelerator Systems - Integrated CAD Modeling,1.03.01.05.01_Accelerator Systems - Integrated CAD Modeling,"AS_CAD_2301_Define Envelopes for gallery and housing, populate in CAD Model - 60%",Mechanical,,SLAC,Labor
68410,1.03,1.03.01,1.03.01.05,1.03.01.05.01,1.03.01.05.01,Accelerator Systems - Integrated CAD Modeling,AS_CAD_2301,"Define Envelopes for gallery and housing, populate in CAD Model - 60%",44.0,522.0,0.0,333.5,06-01-2021,09-01-2021,AS_CAD_2300: FS,AS_CAD_2302: SS,SLAC,100%,52168.52168_METS - Mechanical Design,52168_METS - Mechanical Design,Labor,65.0d,0.0,65.0,At Completion Units,6/1/2021,7/29/2021,0,0,0,0,0,0,0,0,0,0,1.03_Accelerator Systems (AS),1.03.01_AS Accelerator Systems Management & Integration,1.03.01.05_Accelerator Systems - Integrated CAD Modeling,1.03.01.05.01_Accelerator Systems - Integrated CAD Modeling,"AS_CAD_2301_Define Envelopes for gallery and housing, populate in CAD Model - 60%",Mechanical,,SLAC,Labor
68411,1.03,1.03.01,1.03.01.05,1.03.01.05.01,1.03.01.05.01,Accelerator Systems - Integrated CAD Modeling,AS_CAD_2300,"Define Envelopes for gallery and housing, populate in CAD Model - 30%",22.0,145.0,0.0,333.5,04-02-2021,05-28-2021,MS_FY_2021_Q3: FS,AS_CAD_2301: FS,SLAC,100%,52169.52169_METS Mechanical Engineer,52169_METS Mechanical Engineer,Labor,40.0d,0.0,40.0,At Completion Units,4/2/2021,5/28/2021,0,0,0,0,0,0,0,0,0,0,1.03_Accelerator Systems (AS),1.03.01_AS Accelerator Systems Management & Integration,1.03.01.05_Accelerator Systems - Integrated CAD Modeling,1.03.01.05.01_Accelerator Systems - Integrated CAD Modeling,"AS_CAD_2300_Define Envelopes for gallery and housing, populate in CAD Model - 30%",Mechanical,,SLAC,Labor
68412,1.03,1.03.01,1.03.01.05,1.03.01.05.01,1.03.01.05.01,Accelerator Systems - Integrated CAD Modeling,AS_CAD_2300,"Define Envelopes for gallery and housing, populate in CAD Model - 30%",22.0,522.0,0.0,333.5,04-02-2021,05-28-2021,MS_FY_2021_Q3: FS,AS_CAD_2301: FS,SLAC,100%,52168.52168_METS - Mechanical Design,52168_METS - Mechanical Design,Labor,40.0d,0.0,40.0,At Completion Units,4/2/2021,5/28/2021,0,0,0,0,0,0,0,0,0,0,1.03_Accelerator Systems (AS),1.03.01_AS Accelerator Systems Management & Integration,1.03.01.05_Accelerator Systems - Integrated CAD Modeling,1.03.01.05.01_Accelerator Systems - Integrated CAD Modeling,"AS_CAD_2300_Define Envelopes for gallery and housing, populate in CAD Model - 30%",Mechanical,,SLAC,Labor
68413,1.03,1.03.01,1.03.01.05,1.03.01.05.01,1.03.01.05.01,Accelerator Systems - Integrated CAD Modeling,AS_CAD_2302,"Define Envelopes for gallery and housing, populate in CAD Model - 90%",19.0,145.0,0.0,319.0,08-16-2021,09-15-2021,AS_CAD_2301: SS,AS_CAD_2303: FS,SLAC,100%,52169.52169_METS Mechanical Engineer,52169_METS Mechanical Engineer,Labor,21.0d,0.0,21.0,At Completion Units,7/30/2021,8/27/2021,0,0,0,0,0,0,0,0,0,0,1.03_Accelerator Systems (AS),1.03.01_AS Accelerator Systems Management & Integration,1.03.01.05_Accelerator Systems - Integrated CAD Modeling,1.03.01.05.01_Accelerator Systems - Integrated CAD Modeling,"AS_CAD_2302_Define Envelopes for gallery and housing, populate in CAD Model - 90%",Mechanical,,SLAC,Labor
68414,1.03,1.03.01,1.03.01.05,1.03.01.05.01,1.03.01.05.01,Accelerator Systems - Integrated CAD Modeling,AS_CAD_2302,"Define Envelopes for gallery and housing, populate in CAD Model - 90%",19.0,493.0,0.0,319.0,08-16-2021,09-15-2021,AS_CAD_2301: SS,AS_CAD_2303: FS,SLAC,100%,52168.52168_METS - Mechanical Design,52168_METS - Mechanical Design,Labor,21.0d,0.0,21.0,At Completion Units,7/30/2021,8/27/2021,0,0,0,0,0,0,0,0,0,0,1.03_Accelerator Systems (AS),1.03.01_AS Accelerator Systems Management & Integration,1.03.01.05_Accelerator Systems - Integrated CAD Modeling,1.03.01.05.01_Accelerator Systems - Integrated CAD Modeling,"AS_CAD_2302_Define Envelopes for gallery and housing, populate in CAD Model - 90%",Mechanical,,SLAC,Labor
68415,1.03,1.03.01,1.03.01.05,1.03.01.05.01,1.03.01.05.01,Accelerator Systems - Integrated CAD Modeling,AS_CAD_2303,"Define Envelopes for gallery and housing, populate in CAD Model 100%",11.0,73.0,42.5,73.0,09-16-2021,10-08-21,AS_CAD_2302: FS,AS_CAD_2306: FS,SLAC,41.78%,52169.52169_METS Mechanical Engineer,52169_METS Mechanical Engineer,Labor,11.0d,6.0,17.0,At Completion Units,8/30/2021,9/30/2021,0,0,0,0,0,0,0,0,0,0,1.03_Accelerator Systems (AS),1.03.01_AS Accelerator Systems Management & Integration,1.03.01.05_Accelerator Systems - Integrated CAD Modeling,1.03.01.05.01_Accelerator Systems - Integrated CAD Modeling,"AS_CAD_2303_Define Envelopes for gallery and housing, populate in CAD Model 100%",Mechanical,,SLAC,Labor
68416,1.03,1.03.01,1.03.01.05,1.03.01.05.01,1.03.01.05.01,Accelerator Systems - Integrated CAD Modeling,AS_CAD_2303,"Define Envelopes for gallery and housing, populate in CAD Model 100%",11.0,232.0,201.5,232.0,09-16-2021,10-08-21,AS_CAD_2302: FS,AS_CAD_2306: FS,SLAC,13.15%,52168.52168_METS - Mechanical Design,52168_METS - Mechanical Design,Labor,11.0d,6.0,17.0,At Completion Units,8/30/2021,9/30/2021,0,0,0,0,0,0,0,0,0,0,1.03_Accelerator Systems (AS),1.03.01_AS Accelerator Systems Management & Integration,1.03.01.05_Accelerator Systems - Integrated CAD Modeling,1.03.01.05.01_Accelerator Systems - Integrated CAD Modeling,"AS_CAD_2303_Define Envelopes for gallery and housing, populate in CAD Model 100%",Mechanical,,SLAC,Labor
68417,1.03,1.03.01,1.03.01.05,1.03.01.05.01,1.03.01.05.01,Accelerator Systems - Integrated CAD Modeling,AS_CAD_2312,"Develop LCLS-II-HE overall 3D CAD Model - Integrate model, maintain gallery and housing systems - 100%",28.0,0.0,0.0,0.0,08-31-22,10-10-22,AS_CAD_2311: FS,AS_CAD_2320: FS,SLAC,0%,52168.52168_METS - Mechanical Design,52168_METS - Mechanical Design,Labor,0.0d,28.0,28.0,At Completion Units,8/23/2022,9/30/2022,0,0,0,0,0,0,0,0,0,0,1.03_Accelerator Systems (AS),1.03.01_AS Accelerator Systems Management & Integration,1.03.01.05_Accelerator Systems - Integrated CAD Modeling,1.03.01.05.01_Accelerator Systems - Integrated CAD Modeling,"AS_CAD_2312_Develop LCLS-II-HE overall 3D CAD Model - Integrate model, maintain gallery and housing systems - 100%",Mechanical,,SLAC,Labor
68418,1.03,1.03.01,1.03.01.05,1.03.01.05.01,1.03.01.05.01,Accelerator Systems - Integrated CAD Modeling,AS_CAD_2312,"Develop LCLS-II-HE overall 3D CAD Model - Integrate model, maintain gallery and housing systems - 100%",28.0,90.0,90.0,90.0,08-31-22,10-10-22,AS_CAD_2311: FS,AS_CAD_2320: FS,SLAC,0%,52169.52169_METS Mechanical Engineer,52169_METS Mechanical Engineer,Labor,0.0d,28.0,28.0,At Completion Units,8/23/2022,9/30/2022,0,0,0,0,0,0,0,0,0,0,1.03_Accelerator Systems (AS),1.03.01_AS Accelerator Systems Management & Integration,1.03.01.05_Accelerator Systems - Integrated CAD Modeling,1.03.01.05.01_Accelerator Systems - Integrated CAD Modeling,"AS_CAD_2312_Develop LCLS-II-HE overall 3D CAD Model - Integrate model, maintain gallery and housing systems - 100%",Mechanical,,SLAC,Labor
68419,1.03,1.03.01,1.03.01.05,1.03.01.05.01,1.03.01.05.01,Accelerator Systems - Integrated CAD Modeling,AS_CAD_2311,"Develop LCLS-II-HE overall 3D CAD Model - Integrate model, maintain gallery and housing systems - 90%",36.0,0.0,0.0,0.0,07-12-22,08-30-22,AS_CAD_2310: FS,AS_CAD_2312: FS,SLAC,0%,52168.52168_METS - Mechanical Design,52168_METS - Mechanical Design,Labor,0.0d,36.0,36.0,At Completion Units,7/1/2022,8/22/2022,0,0,0,0,0,0,0,0,0,0,1.03_Accelerator Systems (AS),1.03.01_AS Accelerator Systems Management & Integration,1.03.01.05_Accelerator Systems - Integrated CAD Modeling,1.03.01.05.01_Accelerator Systems - Integrated CAD Modeling,"AS_CAD_2311_Develop LCLS-II-HE overall 3D CAD Model - Integrate model, maintain gallery and housing systems - 90%",Mechanical,,SLAC,Labor
68420,1.03,1.03.01,1.03.01.05,1.03.01.05.01,1.03.01.05.01,Accelerator Systems - Integrated CAD Modeling,AS_CAD_2311,"Develop LCLS-II-HE overall 3D CAD Model - Integrate model, maintain gallery and housing systems - 90%",36.0,130.0,130.0,130.0,07-12-22,08-30-22,AS_CAD_2310: FS,AS_CAD_2312: FS,SLAC,0%,52169.52169_METS Mechanical Engineer,52169_METS Mechanical Engineer,Labor,0.0d,36.0,36.0,At Completion Units,7/1/2022,8/22/2022,0,0,0,0,0,0,0,0,0,0,1.03_Accelerator Systems (AS),1.03.01_AS Accelerator Systems Management & Integration,1.03.01.05_Accelerator Systems - Integrated CAD Modeling,1.03.01.05.01_Accelerator Systems - Integrated CAD Modeling,"AS_CAD_2311_Develop LCLS-II-HE overall 3D CAD Model - Integrate model, maintain gallery and housing systems - 90%",Mechanical,,SLAC,Labor
68421,1.03,1.03.01,1.03.01.05,1.03.01.05.01,1.03.01.05.01,Accelerator Systems - Integrated CAD Modeling,AS_CAD_2309,"Develop LCLS-II-HE overall 3D CAD Model - Integrate model, maintain gallery and housing systems - 60%",36.0,0.0,0.0,0.0,03-30-22,05-18-22,AS_CAD_2308: FS,AS_CAD_2310: FS,SLAC,0%,52168.52168_METS - Mechanical Design,52168_METS - Mechanical Design,Labor,0.0d,36.0,36.0,At Completion Units,3/22/2022,5/10/2022,0,0,0,0,0,0,0,0,0,0,1.03_Accelerator Systems (AS),1.03.01_AS Accelerator Systems Management & Integration,1.03.01.05_Accelerator Systems - Integrated CAD Modeling,1.03.01.05.01_Accelerator Systems - Integrated CAD Modeling,"AS_CAD_2309_Develop LCLS-II-HE overall 3D CAD Model - Integrate model, maintain gallery and housing systems - 60%",Mechanical,,SLAC,Labor
68422,1.03,1.03.01,1.03.01.05,1.03.01.05.01,1.03.01.05.01,Accelerator Systems - Integrated CAD Modeling,AS_CAD_2309,"Develop LCLS-II-HE overall 3D CAD Model - Integrate model, maintain gallery and housing systems - 60%",36.0,130.0,130.0,130.0,03-30-22,05-18-22,AS_CAD_2308: FS,AS_CAD_2310: FS,SLAC,0%,52169.52169_METS Mechanical Engineer,52169_METS Mechanical Engineer,Labor,0.0d,36.0,36.0,At Completion Units,3/22/2022,5/10/2022,0,0,0,0,0,0,0,0,0,0,1.03_Accelerator Systems (AS),1.03.01_AS Accelerator Systems Management & Integration,1.03.01.05_Accelerator Systems - Integrated CAD Modeling,1.03.01.05.01_Accelerator Systems - Integrated CAD Modeling,"AS_CAD_2309_Develop LCLS-II-HE overall 3D CAD Model - Integrate model, maintain gallery and housing systems - 60%",Mechanical,,SLAC,Labor
68423,1.03,1.03.01,1.03.01.05,1.03.01.05.01,1.03.01.05.01,Accelerator Systems - Integrated CAD Modeling,AS_CAD_2308,"Develop LCLS-II-HE overall 3D CAD Model - Integrate model, maintain gallery and housing systems- 45%",36.0,0.0,0.0,0.0,02-07-22,03-29-22,AS_CAD_2307: FS,AS_CAD_2309: FS,SLAC,0%,52168.52168_METS - Mechanical Design,52168_METS - Mechanical Design,Labor,0.0d,36.0,36.0,At Completion Units,1/28/2022,3/21/2022,0,0,0,0,0,0,0,0,0,0,1.03_Accelerator Systems (AS),1.03.01_AS Accelerator Systems Management & Integration,1.03.01.05_Accelerator Systems - Integrated CAD Modeling,1.03.01.05.01_Accelerator Systems - Integrated CAD Modeling,"AS_CAD_2308_Develop LCLS-II-HE overall 3D CAD Model - Integrate model, maintain gallery and housing systems- 45%",Mechanical,,SLAC,Labor
68424,1.03,1.03.01,1.03.01.05,1.03.01.05.01,1.03.01.05.01,Accelerator Systems - Integrated CAD Modeling,AS_CAD_2308,"Develop LCLS-II-HE overall 3D CAD Model - Integrate model, maintain gallery and housing systems- 45%",36.0,130.0,130.0,130.0,02-07-22,03-29-22,AS_CAD_2307: FS,AS_CAD_2309: FS,SLAC,0%,52169.52169_METS Mechanical Engineer,52169_METS Mechanical Engineer,Labor,0.0d,36.0,36.0,At Completion Units,1/28/2022,3/21/2022,0,0,0,0,0,0,0,0,0,0,1.03_Accelerator Systems (AS),1.03.01_AS Accelerator Systems Management & Integration,1.03.01.05_Accelerator Systems - Integrated CAD Modeling,1.03.01.05.01_Accelerator Systems - Integrated CAD Modeling,"AS_CAD_2308_Develop LCLS-II-HE overall 3D CAD Model - Integrate model, maintain gallery and housing systems- 45%",Mechanical,,SLAC,Labor
68425,1.03,1.03.01,1.03.01.05,1.03.01.05.01,1.03.01.05.01,Accelerator Systems - Integrated CAD Modeling,AS_CAD_2307,"Develop LCLS-II-HE overall 3D CAD Model - Integrate model, maintain gallery and housing systems - 30%",36.0,0.0,0.0,0.0,12-02-21,02-04-22,AS_CAD_2306: FS,AS_CAD_2308: FS,SLAC,0%,52168.52168_METS - Mechanical Design,52168_METS - Mechanical Design,Labor,0.0d,36.0,36.0,At Completion Units,11/22/2021,1/27/2022,0,0,0,0,0,0,0,0,0,0,1.03_Accelerator Systems (AS),1.03.01_AS Accelerator Systems Management & Integration,1.03.01.05_Accelerator Systems - Integrated CAD Modeling,1.03.01.05.01_Accelerator Systems - Integrated CAD Modeling,"AS_CAD_2307_Develop LCLS-II-HE overall 3D CAD Model - Integrate model, maintain gallery and housing systems - 30%",Mechanical,,SLAC,Labor
68426,1.03,1.03.01,1.03.01.05,1.03.01.05.01,1.03.01.05.01,Accelerator Systems - Integrated CAD Modeling,AS_CAD_2307,"Develop LCLS-II-HE overall 3D CAD Model - Integrate model, maintain gallery and housing systems - 30%",36.0,130.0,130.0,130.0,12-02-21,02-04-22,AS_CAD_2306: FS,AS_CAD_2308: FS,SLAC,0%,52169.52169_METS Mechanical Engineer,52169_METS Mechanical Engineer,Labor,0.0d,36.0,36.0,At Completion Units,11/22/2021,1/27/2022,0,0,0,0,0,0,0,0,0,0,1.03_Accelerator Systems (AS),1.03.01_AS Accelerator Systems Management & Integration,1.03.01.05_Accelerator Systems - Integrated CAD Modeling,1.03.01.05.01_Accelerator Systems - Integrated CAD Modeling,"AS_CAD_2307_Develop LCLS-II-HE overall 3D CAD Model - Integrate model, maintain gallery and housing systems - 30%",Mechanical,,SLAC,Labor
68427,1.03,1.03.01,1.03.01.05,1.03.01.05.01,1.03.01.05.01,Accelerator Systems - Integrated CAD Modeling,AS_CAD_2306,"Develop LCLS-II-HE overall 3D CAD Model - Integrate model, maintain gallery and housing systems - 15%",36.0,0.0,0.0,0.0,10-11-21,12-01-21,AS_CAD_2303: FS,AS_CAD_2307: FS,SLAC,0%,52168.52168_METS - Mechanical Design,52168_METS - Mechanical Design,Labor,0.0d,36.0,36.0,At Completion Units,10/1/2021,11/19/2021,0,0,0,0,0,0,0,0,0,0,1.03_Accelerator Systems (AS),1.03.01_AS Accelerator Systems Management & Integration,1.03.01.05_Accelerator Systems - Integrated CAD Modeling,1.03.01.05.01_Accelerator Systems - Integrated CAD Modeling,"AS_CAD_2306_Develop LCLS-II-HE overall 3D CAD Model - Integrate model, maintain gallery and housing systems - 15%",Mechanical,,SLAC,Labor
68428,1.03,1.03.01,1.03.01.05,1.03.01.05.01,1.03.01.05.01,Accelerator Systems - Integrated CAD Modeling,AS_CAD_2306,"Develop LCLS-II-HE overall 3D CAD Model - Integrate model, maintain gallery and housing systems - 15%",36.0,130.0,130.0,130.0,10-11-21,12-01-21,AS_CAD_2303: FS,AS_CAD_2307: FS,SLAC,0%,52169.52169_METS Mechanical Engineer,52169_METS Mechanical Engineer,Labor,0.0d,36.0,36.0,At Completion Units,10/1/2021,11/19/2021,0,0,0,0,0,0,0,0,0,0,1.03_Accelerator Systems (AS),1.03.01_AS Accelerator Systems Management & Integration,1.03.01.05_Accelerator Systems - Integrated CAD Modeling,1.03.01.05.01_Accelerator Systems - Integrated CAD Modeling,"AS_CAD_2306_Develop LCLS-II-HE overall 3D CAD Model - Integrate model, maintain gallery and housing systems - 15%",Mechanical,,SLAC,Labor
68429,1.03,1.03.01,1.03.01.05,1.03.01.05.01,1.03.01.05.01,Accelerator Systems - Integrated CAD Modeling,AS_CAD_2310,"Develop LCLS-II-HE overall 3D CAD Model - Integrate model, maintain gallery and housing systems - 75%",36.0,0.0,0.0,0.0,05-19-22,07-11-22,AS_CAD_2309: FS,AS_CAD_2311: FS,SLAC,0%,52168.52168_METS - Mechanical Design,52168_METS - Mechanical Design,Labor,0.0d,36.0,36.0,At Completion Units,5/11/2022,6/30/2022,0,0,0,0,0,0,0,0,0,0,1.03_Accelerator Systems (AS),1.03.01_AS Accelerator Systems Management & Integration,1.03.01.05_Accelerator Systems - Integrated CAD Modeling,1.03.01.05.01_Accelerator Systems - Integrated CAD Modeling,"AS_CAD_2310_Develop LCLS-II-HE overall 3D CAD Model - Integrate model, maintain gallery and housing systems - 75%",Mechanical,,SLAC,Labor
68430,1.03,1.03.01,1.03.01.05,1.03.01.05.01,1.03.01.05.01,Accelerator Systems - Integrated CAD Modeling,AS_CAD_2320,Develop LCLS-II-HE overall 3D CAD Model (PP) - FY23,1.0,174.0,174.0,174.0,10-09-23,10-09-23,AS_CAD_2312: FS,AS_CAD_2330: FS,SLAC,0%,52168.52168_METS - Mechanical Design,52168_METS - Mechanical Design,Labor,0.0d,1.0,1.0,At Completion Units,10/3/2022,9/29/2023,0,0,0,0,0,0,0,0,0,0,1.03_Accelerator Systems (AS),1.03.01_AS Accelerator Systems Management & Integration,1.03.01.05_Accelerator Systems - Integrated CAD Modeling,1.03.01.05.01_Accelerator Systems - Integrated CAD Modeling,AS_CAD_2320_Develop LCLS-II-HE overall 3D CAD Model (PP) - FY23,Mechanical,,SLAC,Labor
68431,1.03,1.03.01,1.03.01.05,1.03.01.05.01,1.03.01.05.01,Accelerator Systems - Integrated CAD Modeling,AS_CAD_2330,Develop LCLS-II-HE overall 3D CAD Model and support installation plan studies (PP) - FY24,243.0,967.0,967.0,967.0,10-10-23,10-08-24,AS_CAD_2320: FS,AS_CAD_2340: FS,SLAC,0%,52168.52168_METS - Mechanical Design,52168_METS - Mechanical Design,Labor,0.0d,243.0,243.0,At Completion Units,10/2/2023,9/30/2024,0,0,0,0,0,0,0,0,0,0,1.03_Accelerator Systems (AS),1.03.01_AS Accelerator Systems Management & Integration,1.03.01.05_Accelerator Systems - Integrated CAD Modeling,1.03.01.05.01_Accelerator Systems - Integrated CAD Modeling,AS_CAD_2330_Develop LCLS-II-HE overall 3D CAD Model and support installation plan studies (PP) - FY24,Mechanical,,SLAC,Labor
68432,1.03,1.03.01,1.03.01.05,1.03.01.05.01,1.03.01.05.01,Accelerator Systems - Integrated CAD Modeling,AS_CAD_2340,Develop as-built CAD Models (PP) - FY25,244.0,967.0,967.0,967.0,10-09-24,10-08-25,AS_CAD_2330: FS,AS_CAD_2350: FS,SLAC,0%,52168.52168_METS - Mechanical Design,52168_METS - Mechanical Design,Labor,0.0d,244.0,244.0,At Completion Units,10/1/2024,9/30/2025,0,0,0,0,0,0,0,0,0,0,1.03_Accelerator Systems (AS),1.03.01_AS Accelerator Systems Management & Integration,1.03.01.05_Accelerator Systems - Integrated CAD Modeling,1.03.01.05.01_Accelerator Systems - Integrated CAD Modeling,AS_CAD_2340_Develop as-built CAD Models (PP) - FY25,Mechanical,,SLAC,Labor
68433,1.03,1.03.01,1.03.01.05,1.03.01.05.01,1.03.01.05.01,Accelerator Systems - Integrated CAD Modeling,AS_CAD_2350,Develop as-built CAD Models (PP) - FY26,244.0,966.0,966.0,966.0,10-09-25,10-08-26,AS_CAD_2340: FS,PM_M4_1090: FS,SLAC,0%,52168.52168_METS - Mechanical Design,52168_METS - Mechanical Design,Labor,0.0d,244.0,244.0,At Completion Units,10/1/2025,9/30/2026,0,0,0,0,0,0,0,0,0,0,1.03_Accelerator Systems (AS),1.03.01_AS Accelerator Systems Management & Integration,1.03.01.05_Accelerator Systems - Integrated CAD Modeling,1.03.01.05.01_Accelerator Systems - Integrated CAD Modeling,AS_CAD_2350_Develop as-built CAD Models (PP) - FY26,Mechanical,,SLAC,Labor
68434,1.03,1.03.01,1.03.01.05,1.03.01.05.01,1.03.01.05.01,Accelerator Systems - Integrated CAD Modeling,AS_CAD_2350,Develop as-built CAD Models (PP) - FY26,244.0,348.0,348.0,348.0,10-09-25,10-08-26,AS_CAD_2340: FS,PM_M4_1090: FS,SLAC,0%,52169.52169_METS Mechanical Engineer,52169_METS Mechanical Engineer,Labor,0.0d,244.0,244.0,At Completion Units,10/1/2025,9/30/2026,0,0,0,0,0,0,0,0,0,0,1.03_Accelerator Systems (AS),1.03.01_AS Accelerator Systems Management & Integration,1.03.01.05_Accelerator Systems - Integrated CAD Modeling,1.03.01.05.01_Accelerator Systems - Integrated CAD Modeling,AS_CAD_2350_Develop as-built CAD Models (PP) - FY26,Mechanical,,SLAC,Labor
68435,1.03,1.03.01,1.03.01.05,1.03.01.05.01,1.03.01.05.01,Accelerator Systems - Integrated CAD Modeling,AS_CAD_2340,Develop as-built CAD Models (PP) - FY25,244.0,348.0,348.0,348.0,10-09-24,10-08-25,AS_CAD_2330: FS,AS_CAD_2350: FS,SLAC,0%,52169.52169_METS Mechanical Engineer,52169_METS Mechanical Engineer,Labor,0.0d,244.0,244.0,At Completion Units,10/1/2024,9/30/2025,0,0,0,0,0,0,0,0,0,0,1.03_Accelerator Systems (AS),1.03.01_AS Accelerator Systems Management & Integration,1.03.01.05_Accelerator Systems - Integrated CAD Modeling,1.03.01.05.01_Accelerator Systems - Integrated CAD Modeling,AS_CAD_2340_Develop as-built CAD Models (PP) - FY25,Mechanical,,SLAC,Labor
68436,1.03,1.03.01,1.03.01.05,1.03.01.05.01,1.03.01.05.01,Accelerator Systems - Integrated CAD Modeling,AS_CAD_2330,Develop LCLS-II-HE overall 3D CAD Model and support installation plan studies (PP) - FY24,243.0,348.0,348.0,348.0,10-10-23,10-08-24,AS_CAD_2320: FS,AS_CAD_2340: FS,SLAC,0%,52169.52169_METS Mechanical Engineer,52169_METS Mechanical Engineer,Labor,0.0d,243.0,243.0,At Completion Units,10/2/2023,9/30/2024,0,0,0,0,0,0,0,0,0,0,1.03_Accelerator Systems (AS),1.03.01_AS Accelerator Systems Management & Integration,1.03.01.05_Accelerator Systems - Integrated CAD Modeling,1.03.01.05.01_Accelerator Systems - Integrated CAD Modeling,AS_CAD_2330_Develop LCLS-II-HE overall 3D CAD Model and support installation plan studies (PP) - FY24,Mechanical,,SLAC,Labor
68437,1.03,1.03.01,1.03.01.05,1.03.01.05.01,1.03.01.05.01,Accelerator Systems - Integrated CAD Modeling,AS_CAD_2320,Develop LCLS-II-HE overall 3D CAD Model (PP) - FY23,1.0,348.0,348.0,348.0,10-09-23,10-09-23,AS_CAD_2312: FS,AS_CAD_2330: FS,SLAC,0%,52169.52169_METS Mechanical Engineer,52169_METS Mechanical Engineer,Labor,0.0d,1.0,1.0,At Completion Units,10/3/2022,9/29/2023,0,0,0,0,0,0,0,0,0,0,1.03_Accelerator Systems (AS),1.03.01_AS Accelerator Systems Management & Integration,1.03.01.05_Accelerator Systems - Integrated CAD Modeling,1.03.01.05.01_Accelerator Systems - Integrated CAD Modeling,AS_CAD_2320_Develop LCLS-II-HE overall 3D CAD Model (PP) - FY23,Mechanical,,SLAC,Labor
68438,1.03,1.03.01,1.03.01.05,1.03.01.05.01,1.03.01.05.01,Accelerator Systems - Integrated CAD Modeling,AS_CAD_2310,"Develop LCLS-II-HE overall 3D CAD Model - Integrate model, maintain gallery and housing systems - 75%",36.0,130.0,130.0,130.0,05-19-22,07-11-22,AS_CAD_2309: FS,AS_CAD_2311: FS,SLAC,0%,52169.52169_METS Mechanical Engineer,52169_METS Mechanical Engineer,Labor,0.0d,36.0,36.0,At Completion Units,5/11/2022,6/30/2022,0,0,0,0,0,0,0,0,0,0,1.03_Accelerator Systems (AS),1.03.01_AS Accelerator Systems Management & Integration,1.03.01.05_Accelerator Systems - Integrated CAD Modeling,1.03.01.05.01_Accelerator Systems - Integrated CAD Modeling,"AS_CAD_2310_Develop LCLS-II-HE overall 3D CAD Model - Integrate model, maintain gallery and housing systems - 75%",Mechanical,,SLAC,Labor
68758,1.03,1.03.01,1.03.01.05,1.03.01.05.02,1.03.01.05.02,Accelerator Systems - Integrated Design Review,AS_DES_1070,"Respond to Recommendations - FDR - Integrated Design Review (AS,CS, IF) for (CP, KG, housing)",5.0,43.0,43.0,43.0,10-02-23,10-06-23,AS_DES_1060: FS,AS_DES_1080: FS,SLAC,0%,52213.52213_EEDHW (Electronics & Engineering Div - HW Engr),52213_EEDHW (Electronics & Engineering Div - HW Engr),Labor,0.0d,5.0,5.0,At Completion Units,9/15/2022,9/21/2022,0,0,0,0,0,0,0,0,0,0,1.03_Accelerator Systems (AS),1.03.01_AS Accelerator Systems Management & Integration,1.03.01.05_Accelerator Systems - Integrated CAD Modeling,1.03.01.05.02_Accelerator Systems - Integrated Design Review,"AS_DES_1070_Respond to Recommendations - FDR - Integrated Design Review (AS,CS, IF) for (CP, KG, housing)",Electrical,,SLAC,Labor
68759,1.03,1.03.01,1.03.01.05,1.03.01.05.02,1.03.01.05.02,Accelerator Systems - Integrated Design Review,AS_DES_1060,"R_FDR: Final Design Review - Integrated Design Review (AS,CS, IF) for (CP, KG, housing)",1.0,6.0,6.0,6.0,09-29-23,09-29-23,"AS_DES_1050: FS, IF_LPI_D0_5150: FS, CS_CPLT_ED_5280: FS, CS_CPLT_ED_5300: FS","AS_DES_1070: FS, AS_M4_3060: FS",SLAC,0%,52213.52213_EEDHW (Electronics & Engineering Div - HW Engr),52213_EEDHW (Electronics & Engineering Div - HW Engr),Labor,0.0d,1.0,1.0,At Completion Units,9/14/2022,9/14/2022,DM-A09-30%,0,0,0,0,0,0,0,0,0,1.03_Accelerator Systems (AS),1.03.01_AS Accelerator Systems Management & Integration,1.03.01.05_Accelerator Systems - Integrated CAD Modeling,1.03.01.05.02_Accelerator Systems - Integrated Design Review,"AS_DES_1060_R_FDR: Final Design Review - Integrated Design Review (AS,CS, IF) for (CP, KG, housing)",Electrical,,SLAC,Labor
68760,1.03,1.03.01,1.03.01.05,1.03.01.05.02,1.03.01.05.02,Accelerator Systems - Integrated Design Review,AS_DES_1050,"Prepare Final Design Review - Integrated Design Review (AS,CS, IF) for (CP, KG, housing)",20.0,71.0,71.0,71.0,04-11-23,05-08-23,"AS_DES_1040: FS, AS_ScL_L3B_5090: FS, AS_ScL_L34_5090: FS, AS_ScL_L4_5090: FS, AS_ScL_L4EDG_5090: FS, AS_HPRF_WAV_5190: FS",AS_DES_1060: FS,SLAC,0%,52213.52213_EEDHW (Electronics & Engineering Div - HW Engr),52213_EEDHW (Electronics & Engineering Div - HW Engr),Labor,0.0d,20.0,20.0,At Completion Units,6/8/2022,7/6/2022,0,0,0,0,0,0,0,0,0,0,1.03_Accelerator Systems (AS),1.03.01_AS Accelerator Systems Management & Integration,1.03.01.05_Accelerator Systems - Integrated CAD Modeling,1.03.01.05.02_Accelerator Systems - Integrated Design Review,"AS_DES_1050_Prepare Final Design Review - Integrated Design Review (AS,CS, IF) for (CP, KG, housing)",Electrical,,SLAC,Labor
68761,1.03,1.03.01,1.03.01.05,1.03.01.05.02,1.03.01.05.02,Accelerator Systems - Integrated Design Review,AS_DES_1030,"Respond to Recommendations - PDR - Integrated Design Review (AS,CS, IF) for (CP, KG, housing)",5.0,43.0,43.0,43.0,03-21-23,03-27-23,AS_DES_1020: FS,AS_DES_1040: FS,SLAC,0%,52213.52213_EEDHW (Electronics & Engineering Div - HW Engr),52213_EEDHW (Electronics & Engineering Div - HW Engr),Labor,0.0d,5.0,5.0,At Completion Units,5/24/2022,5/31/2022,0,0,0,0,0,0,0,0,0,0,1.03_Accelerator Systems (AS),1.03.01_AS Accelerator Systems Management & Integration,1.03.01.05_Accelerator Systems - Integrated CAD Modeling,1.03.01.05.02_Accelerator Systems - Integrated Design Review,"AS_DES_1030_Respond to Recommendations - PDR - Integrated Design Review (AS,CS, IF) for (CP, KG, housing)",Electrical,,SLAC,Labor
68762,1.03,1.03.01,1.03.01.05,1.03.01.05.02,1.03.01.05.02,Accelerator Systems - Integrated Design Review,AS_DES_1020,"R_PDR: Prelim. Design Review - Integrated Design Review (AS,CS, IF) for (CP, KG, housing)",1.0,6.0,6.0,6.0,03-20-23,03-20-23,"AS_DES_1010: FS, AS_DES_1000: FS, IF_LPI_D0_5100: FS, CS_CPLT_ED_5230: FS",AS_DES_1030: FS,SLAC,0%,52213.52213_EEDHW (Electronics & Engineering Div - HW Engr),52213_EEDHW (Electronics & Engineering Div - HW Engr),Labor,0.0d,1.0,1.0,At Completion Units,5/23/2022,5/23/2022,DM-A08-60%,0,0,0,0,0,0,0,0,0,1.03_Accelerator Systems (AS),1.03.01_AS Accelerator Systems Management & Integration,1.03.01.05_Accelerator Systems - Integrated CAD Modeling,1.03.01.05.02_Accelerator Systems - Integrated Design Review,"AS_DES_1020_R_PDR: Prelim. Design Review - Integrated Design Review (AS,CS, IF) for (CP, KG, housing)",Electrical,,SLAC,Labor
68763,1.03,1.03.01,1.03.01.05,1.03.01.05.02,1.03.01.05.02,Accelerator Systems - Integrated Design Review,AS_DES_1010,"Prepare Prelim. Design Review - Integrated Design Review (AS,CS, IF) for (CP, KG, housing)",20.0,71.0,71.0,71.0,02-17-23,03-17-23,AS_DES_1000: FS,AS_DES_1020: FS,SLAC,0%,52213.52213_EEDHW (Electronics & Engineering Div - HW Engr),52213_EEDHW (Electronics & Engineering Div - HW Engr),Labor,0.0d,20.0,20.0,At Completion Units,4/25/2022,5/20/2022,0,0,0,0,0,0,0,0,0,0,1.03_Accelerator Systems (AS),1.03.01_AS Accelerator Systems Management & Integration,1.03.01.05_Accelerator Systems - Integrated CAD Modeling,1.03.01.05.02_Accelerator Systems - Integrated Design Review,"AS_DES_1010_Prepare Prelim. Design Review - Integrated Design Review (AS,CS, IF) for (CP, KG, housing)",Electrical,,SLAC,Labor
68764,1.03,1.03.01,1.03.01.05,1.03.01.05.02,1.03.01.05.02,Accelerator Systems - Integrated Design Review,AS_DES_1070,"Respond to Recommendations - FDR - Integrated Design Review (AS,CS, IF) for (CP, KG, housing)",5.0,42.0,42.0,42.0,10-02-23,10-06-23,AS_DES_1060: FS,AS_DES_1080: FS,SLAC,0%,52148.52148_FAC Engineering & Construction,52148_FAC Engineering & Construction,Labor,0.0d,5.0,5.0,At Completion Units,9/15/2022,9/21/2022,0,0,0,0,0,0,0,0,0,0,1.03_Accelerator Systems (AS),1.03.01_AS Accelerator Systems Management & Integration,1.03.01.05_Accelerator Systems - Integrated CAD Modeling,1.03.01.05.02_Accelerator Systems - Integrated Design Review,"AS_DES_1070_Respond to Recommendations - FDR - Integrated Design Review (AS,CS, IF) for (CP, KG, housing)",FAC,,SLAC,Labor
68765,1.03,1.03.01,1.03.01.05,1.03.01.05.02,1.03.01.05.02,Accelerator Systems - Integrated Design Review,AS_DES_1060,"R_FDR: Final Design Review - Integrated Design Review (AS,CS, IF) for (CP, KG, housing)",1.0,6.0,6.0,6.0,09-29-23,09-29-23,"AS_DES_1050: FS, IF_LPI_D0_5150: FS, CS_CPLT_ED_5280: FS, CS_CPLT_ED_5300: FS","AS_DES_1070: FS, AS_M4_3060: FS",SLAC,0%,52148.52148_FAC Engineering & Construction,52148_FAC Engineering & Construction,Labor,0.0d,1.0,1.0,At Completion Units,9/14/2022,9/14/2022,DM-A09-30%,0,0,0,0,0,0,0,0,0,1.03_Accelerator Systems (AS),1.03.01_AS Accelerator Systems Management & Integration,1.03.01.05_Accelerator Systems - Integrated CAD Modeling,1.03.01.05.02_Accelerator Systems - Integrated Design Review,"AS_DES_1060_R_FDR: Final Design Review - Integrated Design Review (AS,CS, IF) for (CP, KG, housing)",FAC,,SLAC,Labor
68766,1.03,1.03.01,1.03.01.05,1.03.01.05.02,1.03.01.05.02,Accelerator Systems - Integrated Design Review,AS_DES_1050,"Prepare Final Design Review - Integrated Design Review (AS,CS, IF) for (CP, KG, housing)",20.0,70.0,70.0,70.0,04-11-23,05-08-23,"AS_DES_1040: FS, AS_ScL_L3B_5090: FS, AS_ScL_L34_5090: FS, AS_ScL_L4_5090: FS, AS_ScL_L4EDG_5090: FS, AS_HPRF_WAV_5190: FS",AS_DES_1060: FS,SLAC,0%,52148.52148_FAC Engineering & Construction,52148_FAC Engineering & Construction,Labor,0.0d,20.0,20.0,At Completion Units,6/8/2022,7/6/2022,0,0,0,0,0,0,0,0,0,0,1.03_Accelerator Systems (AS),1.03.01_AS Accelerator Systems Management & Integration,1.03.01.05_Accelerator Systems - Integrated CAD Modeling,1.03.01.05.02_Accelerator Systems - Integrated Design Review,"AS_DES_1050_Prepare Final Design Review - Integrated Design Review (AS,CS, IF) for (CP, KG, housing)",FAC,,SLAC,Labor
68767,1.03,1.03.01,1.03.01.05,1.03.01.05.02,1.03.01.05.02,Accelerator Systems - Integrated Design Review,AS_DES_1030,"Respond to Recommendations - PDR - Integrated Design Review (AS,CS, IF) for (CP, KG, housing)",5.0,43.0,43.0,43.0,03-21-23,03-27-23,AS_DES_1020: FS,AS_DES_1040: FS,SLAC,0%,52148.52148_FAC Engineering & Construction,52148_FAC Engineering & Construction,Labor,0.0d,5.0,5.0,At Completion Units,5/24/2022,5/31/2022,0,0,0,0,0,0,0,0,0,0,1.03_Accelerator Systems (AS),1.03.01_AS Accelerator Systems Management & Integration,1.03.01.05_Accelerator Systems - Integrated CAD Modeling,1.03.01.05.02_Accelerator Systems - Integrated Design Review,"AS_DES_1030_Respond to Recommendations - PDR - Integrated Design Review (AS,CS, IF) for (CP, KG, housing)",FAC,,SLAC,Labor
68768,1.03,1.03.01,1.03.01.05,1.03.01.05.02,1.03.01.05.02,Accelerator Systems - Integrated Design Review,AS_DES_1020,"R_PDR: Prelim. Design Review - Integrated Design Review (AS,CS, IF) for (CP, KG, housing)",1.0,6.0,6.0,6.0,03-20-23,03-20-23,"AS_DES_1010: FS, AS_DES_1000: FS, IF_LPI_D0_5100: FS, CS_CPLT_ED_5230: FS",AS_DES_1030: FS,SLAC,0%,52148.52148_FAC Engineering & Construction,52148_FAC Engineering & Construction,Labor,0.0d,1.0,1.0,At Completion Units,5/23/2022,5/23/2022,DM-A08-60%,0,0,0,0,0,0,0,0,0,1.03_Accelerator Systems (AS),1.03.01_AS Accelerator Systems Management & Integration,1.03.01.05_Accelerator Systems - Integrated CAD Modeling,1.03.01.05.02_Accelerator Systems - Integrated Design Review,"AS_DES_1020_R_PDR: Prelim. Design Review - Integrated Design Review (AS,CS, IF) for (CP, KG, housing)",FAC,,SLAC,Labor
68769,1.03,1.03.01,1.03.01.05,1.03.01.05.02,1.03.01.05.02,Accelerator Systems - Integrated Design Review,AS_DES_1020,"R_PDR: Prelim. Design Review - Integrated Design Review (AS,CS, IF) for (CP, KG, housing)",1.0,6.0,6.0,6.0,03-20-23,03-20-23,"AS_DES_1010: FS, AS_DES_1000: FS, IF_LPI_D0_5100: FS, CS_CPLT_ED_5230: FS",AS_DES_1030: FS,SLAC,0%,52165.52165_EEDSW (Electronics & Engineering Div - Ctrl Software)_FORMERLY I&C Software,52165_EEDSW (Electronics & Engineering Div - Ctrl Software)_FORMERLY I&C Software,Labor,0.0d,1.0,1.0,At Completion Units,5/23/2022,5/23/2022,DM-A08-60%,0,0,0,0,0,0,0,0,0,1.03_Accelerator Systems (AS),1.03.01_AS Accelerator Systems Management & Integration,1.03.01.05_Accelerator Systems - Integrated CAD Modeling,1.03.01.05.02_Accelerator Systems - Integrated Design Review,"AS_DES_1020_R_PDR: Prelim. Design Review - Integrated Design Review (AS,CS, IF) for (CP, KG, housing)",Electrical,,SLAC,Labor
68770,1.03,1.03.01,1.03.01.05,1.03.01.05.02,1.03.01.05.02,Accelerator Systems - Integrated Design Review,AS_DES_1030,"Respond to Recommendations - PDR - Integrated Design Review (AS,CS, IF) for (CP, KG, housing)",5.0,42.0,42.0,42.0,03-21-23,03-27-23,AS_DES_1020: FS,AS_DES_1040: FS,SLAC,0%,52165.52165_EEDSW (Electronics & Engineering Div - Ctrl Software)_FORMERLY I&C Software,52165_EEDSW (Electronics & Engineering Div - Ctrl Software)_FORMERLY I&C Software,Labor,0.0d,5.0,5.0,At Completion Units,5/24/2022,5/31/2022,0,0,0,0,0,0,0,0,0,0,1.03_Accelerator Systems (AS),1.03.01_AS Accelerator Systems Management & Integration,1.03.01.05_Accelerator Systems - Integrated CAD Modeling,1.03.01.05.02_Accelerator Systems - Integrated Design Review,"AS_DES_1030_Respond to Recommendations - PDR - Integrated Design Review (AS,CS, IF) for (CP, KG, housing)",Electrical,,SLAC,Labor
68771,1.03,1.03.01,1.03.01.05,1.03.01.05.02,1.03.01.05.02,Accelerator Systems - Integrated Design Review,AS_DES_1050,"Prepare Final Design Review - Integrated Design Review (AS,CS, IF) for (CP, KG, housing)",20.0,71.0,71.0,71.0,04-11-23,05-08-23,"AS_DES_1040: FS, AS_ScL_L3B_5090: FS, AS_ScL_L34_5090: FS, AS_ScL_L4_5090: FS, AS_ScL_L4EDG_5090: FS, AS_HPRF_WAV_5190: FS",AS_DES_1060: FS,SLAC,0%,52165.52165_EEDSW (Electronics & Engineering Div - Ctrl Software)_FORMERLY I&C Software,52165_EEDSW (Electronics & Engineering Div - Ctrl Software)_FORMERLY I&C Software,Labor,0.0d,20.0,20.0,At Completion Units,6/8/2022,7/6/2022,0,0,0,0,0,0,0,0,0,0,1.03_Accelerator Systems (AS),1.03.01_AS Accelerator Systems Management & Integration,1.03.01.05_Accelerator Systems - Integrated CAD Modeling,1.03.01.05.02_Accelerator Systems - Integrated Design Review,"AS_DES_1050_Prepare Final Design Review - Integrated Design Review (AS,CS, IF) for (CP, KG, housing)",Electrical,,SLAC,Labor
68772,1.03,1.03.01,1.03.01.05,1.03.01.05.02,1.03.01.05.02,Accelerator Systems - Integrated Design Review,AS_DES_1060,"R_FDR: Final Design Review - Integrated Design Review (AS,CS, IF) for (CP, KG, housing)",1.0,6.0,6.0,6.0,09-29-23,09-29-23,"AS_DES_1050: FS, IF_LPI_D0_5150: FS, CS_CPLT_ED_5280: FS, CS_CPLT_ED_5300: FS","AS_DES_1070: FS, AS_M4_3060: FS",SLAC,0%,52165.52165_EEDSW (Electronics & Engineering Div - Ctrl Software)_FORMERLY I&C Software,52165_EEDSW (Electronics & Engineering Div - Ctrl Software)_FORMERLY I&C Software,Labor,0.0d,1.0,1.0,At Completion Units,9/14/2022,9/14/2022,DM-A09-30%,0,0,0,0,0,0,0,0,0,1.03_Accelerator Systems (AS),1.03.01_AS Accelerator Systems Management & Integration,1.03.01.05_Accelerator Systems - Integrated CAD Modeling,1.03.01.05.02_Accelerator Systems - Integrated Design Review,"AS_DES_1060_R_FDR: Final Design Review - Integrated Design Review (AS,CS, IF) for (CP, KG, housing)",Electrical,,SLAC,Labor
68773,1.03,1.03.01,1.03.01.05,1.03.01.05.02,1.03.01.05.02,Accelerator Systems - Integrated Design Review,AS_DES_1070,"Respond to Recommendations - FDR - Integrated Design Review (AS,CS, IF) for (CP, KG, housing)",5.0,43.0,43.0,43.0,10-02-23,10-06-23,AS_DES_1060: FS,AS_DES_1080: FS,SLAC,0%,52165.52165_EEDSW (Electronics & Engineering Div - Ctrl Software)_FORMERLY I&C Software,52165_EEDSW (Electronics & Engineering Div - Ctrl Software)_FORMERLY I&C Software,Labor,0.0d,5.0,5.0,At Completion Units,9/15/2022,9/21/2022,0,0,0,0,0,0,0,0,0,0,1.03_Accelerator Systems (AS),1.03.01_AS Accelerator Systems Management & Integration,1.03.01.05_Accelerator Systems - Integrated CAD Modeling,1.03.01.05.02_Accelerator Systems - Integrated Design Review,"AS_DES_1070_Respond to Recommendations - FDR - Integrated Design Review (AS,CS, IF) for (CP, KG, housing)",Electrical,,SLAC,Labor
68774,1.03,1.03.01,1.03.01.05,1.03.01.05.02,1.03.01.05.02,Accelerator Systems - Integrated Design Review,AS_DES_1070,"Respond to Recommendations - FDR - Integrated Design Review (AS,CS, IF) for (CP, KG, housing)",5.0,43.0,43.0,43.0,10-02-23,10-06-23,AS_DES_1060: FS,AS_DES_1080: FS,SLAC,0%,52127.52127_Research Electrical & SW Engineer,52127_Research Electrical & SW Engineer,Labor,0.0d,5.0,5.0,At Completion Units,9/15/2022,9/21/2022,0,0,0,0,0,0,0,0,0,0,1.03_Accelerator Systems (AS),1.03.01_AS Accelerator Systems Management & Integration,1.03.01.05_Accelerator Systems - Integrated CAD Modeling,1.03.01.05.02_Accelerator Systems - Integrated Design Review,"AS_DES_1070_Respond to Recommendations - FDR - Integrated Design Review (AS,CS, IF) for (CP, KG, housing)",Electrical,,SLAC,Labor
68775,1.03,1.03.01,1.03.01.05,1.03.01.05.02,1.03.01.05.02,Accelerator Systems - Integrated Design Review,AS_DES_1060,"R_FDR: Final Design Review - Integrated Design Review (AS,CS, IF) for (CP, KG, housing)",1.0,7.0,7.0,7.0,09-29-23,09-29-23,"AS_DES_1050: FS, IF_LPI_D0_5150: FS, CS_CPLT_ED_5280: FS, CS_CPLT_ED_5300: FS","AS_DES_1070: FS, AS_M4_3060: FS",SLAC,0%,52127.52127_Research Electrical & SW Engineer,52127_Research Electrical & SW Engineer,Labor,0.0d,1.0,1.0,At Completion Units,9/14/2022,9/14/2022,DM-A09-30%,0,0,0,0,0,0,0,0,0,1.03_Accelerator Systems (AS),1.03.01_AS Accelerator Systems Management & Integration,1.03.01.05_Accelerator Systems - Integrated CAD Modeling,1.03.01.05.02_Accelerator Systems - Integrated Design Review,"AS_DES_1060_R_FDR: Final Design Review - Integrated Design Review (AS,CS, IF) for (CP, KG, housing)",Electrical,,SLAC,Labor
68776,1.03,1.03.01,1.03.01.05,1.03.01.05.02,1.03.01.05.02,Accelerator Systems - Integrated Design Review,AS_DES_1050,"Prepare Final Design Review - Integrated Design Review (AS,CS, IF) for (CP, KG, housing)",20.0,71.0,71.0,71.0,04-11-23,05-08-23,"AS_DES_1040: FS, AS_ScL_L3B_5090: FS, AS_ScL_L34_5090: FS, AS_ScL_L4_5090: FS, AS_ScL_L4EDG_5090: FS, AS_HPRF_WAV_5190: FS",AS_DES_1060: FS,SLAC,0%,52127.52127_Research Electrical & SW Engineer,52127_Research Electrical & SW Engineer,Labor,0.0d,20.0,20.0,At Completion Units,6/8/2022,7/6/2022,0,0,0,0,0,0,0,0,0,0,1.03_Accelerator Systems (AS),1.03.01_AS Accelerator Systems Management & Integration,1.03.01.05_Accelerator Systems - Integrated CAD Modeling,1.03.01.05.02_Accelerator Systems - Integrated Design Review,"AS_DES_1050_Prepare Final Design Review - Integrated Design Review (AS,CS, IF) for (CP, KG, housing)",Electrical,,SLAC,Labor
68777,1.03,1.03.01,1.03.01.05,1.03.01.05.02,1.03.01.05.02,Accelerator Systems - Integrated Design Review,AS_DES_1030,"Respond to Recommendations - PDR - Integrated Design Review (AS,CS, IF) for (CP, KG, housing)",5.0,42.0,42.0,42.0,03-21-23,03-27-23,AS_DES_1020: FS,AS_DES_1040: FS,SLAC,0%,52127.52127_Research Electrical & SW Engineer,52127_Research Electrical & SW Engineer,Labor,0.0d,5.0,5.0,At Completion Units,5/24/2022,5/31/2022,0,0,0,0,0,0,0,0,0,0,1.03_Accelerator Systems (AS),1.03.01_AS Accelerator Systems Management & Integration,1.03.01.05_Accelerator Systems - Integrated CAD Modeling,1.03.01.05.02_Accelerator Systems - Integrated Design Review,"AS_DES_1030_Respond to Recommendations - PDR - Integrated Design Review (AS,CS, IF) for (CP, KG, housing)",Electrical,,SLAC,Labor
68778,1.03,1.03.01,1.03.01.05,1.03.01.05.02,1.03.01.05.02,Accelerator Systems - Integrated Design Review,AS_DES_1020,"R_PDR: Prelim. Design Review - Integrated Design Review (AS,CS, IF) for (CP, KG, housing)",1.0,7.0,7.0,7.0,03-20-23,03-20-23,"AS_DES_1010: FS, AS_DES_1000: FS, IF_LPI_D0_5100: FS, CS_CPLT_ED_5230: FS",AS_DES_1030: FS,SLAC,0%,52127.52127_Research Electrical & SW Engineer,52127_Research Electrical & SW Engineer,Labor,0.0d,1.0,1.0,At Completion Units,5/23/2022,5/23/2022,DM-A08-60%,0,0,0,0,0,0,0,0,0,1.03_Accelerator Systems (AS),1.03.01_AS Accelerator Systems Management & Integration,1.03.01.05_Accelerator Systems - Integrated CAD Modeling,1.03.01.05.02_Accelerator Systems - Integrated Design Review,"AS_DES_1020_R_PDR: Prelim. Design Review - Integrated Design Review (AS,CS, IF) for (CP, KG, housing)",Electrical,,SLAC,Labor
68779,1.03,1.03.01,1.03.01.05,1.03.01.05.02,1.03.01.05.02,Accelerator Systems - Integrated Design Review,AS_DES_1010,"Prepare Prelim. Design Review - Integrated Design Review (AS,CS, IF) for (CP, KG, housing)",20.0,71.0,71.0,71.0,02-17-23,03-17-23,AS_DES_1000: FS,AS_DES_1020: FS,SLAC,0%,52148.52148_FAC Engineering & Construction,52148_FAC Engineering & Construction,Labor,0.0d,20.0,20.0,At Completion Units,4/25/2022,5/20/2022,0,0,0,0,0,0,0,0,0,0,1.03_Accelerator Systems (AS),1.03.01_AS Accelerator Systems Management & Integration,1.03.01.05_Accelerator Systems - Integrated CAD Modeling,1.03.01.05.02_Accelerator Systems - Integrated Design Review,"AS_DES_1010_Prepare Prelim. Design Review - Integrated Design Review (AS,CS, IF) for (CP, KG, housing)",FAC,,SLAC,Labor
68780,1.03,1.03.01,1.03.01.05,1.03.01.05.02,1.03.01.05.02,Accelerator Systems - Integrated Design Review,AS_DES_1010,"Prepare Prelim. Design Review - Integrated Design Review (AS,CS, IF) for (CP, KG, housing)",20.0,71.0,71.0,71.0,02-17-23,03-17-23,AS_DES_1000: FS,AS_DES_1020: FS,SLAC,0%,52165.52165_EEDSW (Electronics & Engineering Div - Ctrl Software)_FORMERLY I&C Software,52165_EEDSW (Electronics & Engineering Div - Ctrl Software)_FORMERLY I&C Software,Labor,0.0d,20.0,20.0,At Completion Units,4/25/2022,5/20/2022,0,0,0,0,0,0,0,0,0,0,1.03_Accelerator Systems (AS),1.03.01_AS Accelerator Systems Management & Integration,1.03.01.05_Accelerator Systems - Integrated CAD Modeling,1.03.01.05.02_Accelerator Systems - Integrated Design Review,"AS_DES_1010_Prepare Prelim. Design Review - Integrated Design Review (AS,CS, IF) for (CP, KG, housing)",Electrical,,SLAC,Labor
68781,1.03,1.03.01,1.03.01.05,1.03.01.05.02,1.03.01.05.02,Accelerator Systems - Integrated Design Review,AS_DES_1010,"Prepare Prelim. Design Review - Integrated Design Review (AS,CS, IF) for (CP, KG, housing)",20.0,70.0,70.0,70.0,02-17-23,03-17-23,AS_DES_1000: FS,AS_DES_1020: FS,SLAC,0%,52127.52127_Research Electrical & SW Engineer,52127_Research Electrical & SW Engineer,Labor,0.0d,20.0,20.0,At Completion Units,4/25/2022,5/20/2022,0,0,0,0,0,0,0,0,0,0,1.03_Accelerator Systems (AS),1.03.01_AS Accelerator Systems Management & Integration,1.03.01.05_Accelerator Systems - Integrated CAD Modeling,1.03.01.05.02_Accelerator Systems - Integrated Design Review,"AS_DES_1010_Prepare Prelim. Design Review - Integrated Design Review (AS,CS, IF) for (CP, KG, housing)",Electrical,,SLAC,Labor
68782,1.03,1.03.01,1.03.01.05,1.03.01.05.02,1.03.01.05.02,Accelerator Systems - Integrated Design Review,AS_DES_1030,"Respond to Recommendations - PDR - Integrated Design Review (AS,CS, IF) for (CP, KG, housing)",5.0,43.0,43.0,43.0,03-21-23,03-27-23,AS_DES_1020: FS,AS_DES_1040: FS,SLAC,0%,52169.52169_METS Mechanical Engineer,52169_METS Mechanical Engineer,Labor,0.0d,5.0,5.0,At Completion Units,5/24/2022,5/31/2022,0,0,0,0,0,0,0,0,0,0,1.03_Accelerator Systems (AS),1.03.01_AS Accelerator Systems Management & Integration,1.03.01.05_Accelerator Systems - Integrated CAD Modeling,1.03.01.05.02_Accelerator Systems - Integrated Design Review,"AS_DES_1030_Respond to Recommendations - PDR - Integrated Design Review (AS,CS, IF) for (CP, KG, housing)",Mechanical,,SLAC,Labor
68783,1.03,1.03.01,1.03.01.05,1.03.01.05.02,1.03.01.05.02,Accelerator Systems - Integrated Design Review,AS_DES_1070,"Respond to Recommendations - FDR - Integrated Design Review (AS,CS, IF) for (CP, KG, housing)",5.0,42.0,42.0,42.0,10-02-23,10-06-23,AS_DES_1060: FS,AS_DES_1080: FS,SLAC,0%,52169.52169_METS Mechanical Engineer,52169_METS Mechanical Engineer,Labor,0.0d,5.0,5.0,At Completion Units,9/15/2022,9/21/2022,0,0,0,0,0,0,0,0,0,0,1.03_Accelerator Systems (AS),1.03.01_AS Accelerator Systems Management & Integration,1.03.01.05_Accelerator Systems - Integrated CAD Modeling,1.03.01.05.02_Accelerator Systems - Integrated Design Review,"AS_DES_1070_Respond to Recommendations - FDR - Integrated Design Review (AS,CS, IF) for (CP, KG, housing)",Mechanical,,SLAC,Labor
68784,1.03,1.03.01,1.03.01.05,1.03.01.05.02,1.03.01.05.02,Accelerator Systems - Integrated Design Review,AS_DES_1060,"R_FDR: Final Design Review - Integrated Design Review (AS,CS, IF) for (CP, KG, housing)",1.0,7.0,7.0,7.0,09-29-23,09-29-23,"AS_DES_1050: FS, IF_LPI_D0_5150: FS, CS_CPLT_ED_5280: FS, CS_CPLT_ED_5300: FS","AS_DES_1070: FS, AS_M4_3060: FS",SLAC,0%,52169.52169_METS Mechanical Engineer,52169_METS Mechanical Engineer,Labor,0.0d,1.0,1.0,At Completion Units,9/14/2022,9/14/2022,DM-A09-30%,0,0,0,0,0,0,0,0,0,1.03_Accelerator Systems (AS),1.03.01_AS Accelerator Systems Management & Integration,1.03.01.05_Accelerator Systems - Integrated CAD Modeling,1.03.01.05.02_Accelerator Systems - Integrated Design Review,"AS_DES_1060_R_FDR: Final Design Review - Integrated Design Review (AS,CS, IF) for (CP, KG, housing)",Mechanical,,SLAC,Labor
68785,1.03,1.03.01,1.03.01.05,1.03.01.05.02,1.03.01.05.02,Accelerator Systems - Integrated Design Review,AS_DES_1050,"Prepare Final Design Review - Integrated Design Review (AS,CS, IF) for (CP, KG, housing)",20.0,70.0,70.0,70.0,04-11-23,05-08-23,"AS_DES_1040: FS, AS_ScL_L3B_5090: FS, AS_ScL_L34_5090: FS, AS_ScL_L4_5090: FS, AS_ScL_L4EDG_5090: FS, AS_HPRF_WAV_5190: FS",AS_DES_1060: FS,SLAC,0%,52169.52169_METS Mechanical Engineer,52169_METS Mechanical Engineer,Labor,0.0d,20.0,20.0,At Completion Units,6/8/2022,7/6/2022,0,0,0,0,0,0,0,0,0,0,1.03_Accelerator Systems (AS),1.03.01_AS Accelerator Systems Management & Integration,1.03.01.05_Accelerator Systems - Integrated CAD Modeling,1.03.01.05.02_Accelerator Systems - Integrated Design Review,"AS_DES_1050_Prepare Final Design Review - Integrated Design Review (AS,CS, IF) for (CP, KG, housing)",Mechanical,,SLAC,Labor
68786,1.03,1.03.01,1.03.01.05,1.03.01.05.02,1.03.01.05.02,Accelerator Systems - Integrated Design Review,AS_DES_1020,"R_PDR: Prelim. Design Review - Integrated Design Review (AS,CS, IF) for (CP, KG, housing)",1.0,7.0,7.0,7.0,03-20-23,03-20-23,"AS_DES_1010: FS, AS_DES_1000: FS, IF_LPI_D0_5100: FS, CS_CPLT_ED_5230: FS",AS_DES_1030: FS,SLAC,0%,52169.52169_METS Mechanical Engineer,52169_METS Mechanical Engineer,Labor,0.0d,1.0,1.0,At Completion Units,5/23/2022,5/23/2022,DM-A08-60%,0,0,0,0,0,0,0,0,0,1.03_Accelerator Systems (AS),1.03.01_AS Accelerator Systems Management & Integration,1.03.01.05_Accelerator Systems - Integrated CAD Modeling,1.03.01.05.02_Accelerator Systems - Integrated Design Review,"AS_DES_1020_R_PDR: Prelim. Design Review - Integrated Design Review (AS,CS, IF) for (CP, KG, housing)",Mechanical,,SLAC,Labor
68787,1.03,1.03.01,1.03.01.05,1.03.01.05.02,1.03.01.05.02,Accelerator Systems - Integrated Design Review,AS_DES_1010,"Prepare Prelim. Design Review - Integrated Design Review (AS,CS, IF) for (CP, KG, housing)",20.0,71.0,71.0,71.0,02-17-23,03-17-23,AS_DES_1000: FS,AS_DES_1020: FS,SLAC,0%,52169.52169_METS Mechanical Engineer,52169_METS Mechanical Engineer,Labor,0.0d,20.0,20.0,At Completion Units,4/25/2022,5/20/2022,0,0,0,0,0,0,0,0,0,0,1.03_Accelerator Systems (AS),1.03.01_AS Accelerator Systems Management & Integration,1.03.01.05_Accelerator Systems - Integrated CAD Modeling,1.03.01.05.02_Accelerator Systems - Integrated Design Review,"AS_DES_1010_Prepare Prelim. Design Review - Integrated Design Review (AS,CS, IF) for (CP, KG, housing)",Mechanical,,SLAC,Labor
69426,1.03,1.03.03,1.03.03.05,1.03.03.05,1.03.03.05,AS Superconducting Linac System Engineering and Design,ACT_NL_1030405_AS,1030405 Non Labor Actuals,22.0,212691.2,0.0,0.0,06-01-2020,06-30-2020,0,0,SLAC,0%,HISTN.HIST_ACTUAL NonLabor,HIST_ACTUAL NonLabor,Nonlabor,22.0d,0.0,22.0,At Completion Units,nn,,0,0,0,0,0,0,0,0,0,0,1.03_Accelerator Systems (AS),1.03.03_AS Superconducting Linac System (ScL),1.03.03.05_AS Superconducting Linac System Engineering and Design,,ACT_NL_1030405_AS_1030405 Non Labor Actuals,Financial,,SLAC,M&S
69427,1.03,1.03.03,1.03.03.05,1.03.03.05,1.03.03.05,AS Superconducting Linac System Engineering and Design,ACT_L_1030405_AS,1030405 Labor Actuals,22.0,625.5,0.0,625.0,06-01-2020,06-30-2020,0,0,SLAC,100%,HISTL.HIST_ACTUAL Labor,HIST_ACTUAL Labor,Labor,22.0d,0.0,22.0,At Completion Units,nn,,0,0,0,0,0,0,0,0,0,0,1.03_Accelerator Systems (AS),1.03.03_AS Superconducting Linac System (ScL),1.03.03.05_AS Superconducting Linac System Engineering and Design,,ACT_L_1030405_AS_1030405 Labor Actuals,Financial,,SLAC,M&S
69747,1.03,1.03.03,1.03.03.05,1.03.03.05.05,1.03.03.05.05,ScL Design L3B Linac Modification,AS_ScL_L3B_5000,Develop and Update Cost and Schedule - L3B Linac Modification,85.0,25.0,0.0,17.5,04-01-2021,09-01-2021,MS_FY_2021_Q3: FS,AS_ScL_L4EDG_5020: FF,SLAC,100%,52169.52169_METS Mechanical Engineer,52169_METS Mechanical Engineer,Labor,107.0d,0.0,107.0,At Completion Units,4/2/2021,7/30/2021,0,0,0,0,0,0,0,0,0,0,1.03_Accelerator Systems (AS),1.03.03_AS Superconducting Linac System (ScL),1.03.03.05_AS Superconducting Linac System Engineering and Design,1.03.03.05.05_ScL Design L3B Linac Modification,AS_ScL_L3B_5000_Develop and Update Cost and Schedule - L3B Linac Modification,Mechanical,,SLAC,Labor
69748,1.03,1.03.03,1.03.03.05,1.03.03.05.05,1.03.03.05.05,ScL Design L3B Linac Modification,AS_ScL_L3B_5000,Develop and Update Cost and Schedule - L3B Linac Modification,85.0,10.0,0.0,17.5,04-01-2021,09-01-2021,MS_FY_2021_Q3: FS,AS_ScL_L4EDG_5020: FF,SLAC,100%,52168.52168_METS - Mechanical Design,52168_METS - Mechanical Design,Labor,107.0d,0.0,107.0,At Completion Units,4/2/2021,7/30/2021,0,0,0,0,0,0,0,0,0,0,1.03_Accelerator Systems (AS),1.03.03_AS Superconducting Linac System (ScL),1.03.03.05_AS Superconducting Linac System Engineering and Design,1.03.03.05.05_ScL Design L3B Linac Modification,AS_ScL_L3B_5000_Develop and Update Cost and Schedule - L3B Linac Modification,Mechanical,,SLAC,Labor
69749,1.03,1.03.03,1.03.03.05,1.03.03.05.05,1.03.03.05.05,ScL Design L3B Linac Modification,AS_ScL_L3B_5080,Prepare Final Design Review - L3B Linac Modification,5.0,12.0,12.0,12.0,04-03-23,04-07-23,AS_ScL_L3B_5070: FS,AS_ScL_L3B_5090: FS,SLAC,0%,52168.52168_METS - Mechanical Design,52168_METS - Mechanical Design,Labor,0.0d,5.0,5.0,At Completion Units,5/31/2022,6/6/2022,0,0,0,0,0,0,0,0,0,0,1.03_Accelerator Systems (AS),1.03.03_AS Superconducting Linac System (ScL),1.03.03.05_AS Superconducting Linac System Engineering and Design,1.03.03.05.05_ScL Design L3B Linac Modification,AS_ScL_L3B_5080_Prepare Final Design Review - L3B Linac Modification,Mechanical,,SLAC,Labor
69750,1.03,1.03.03,1.03.03.05,1.03.03.05.05,1.03.03.05.05,ScL Design L3B Linac Modification,AS_ScL_L3B_5040,R_PDR: Prelim. Design Review - L3B Linac Modification,1.0,14.0,14.0,14.0,02-16-23,02-16-23,AS_ScL_L3B_5030: FS,"AS_ScL_L3B_5050: FS, AS_DES_1000: FS",SLAC,0%,52168.52168_METS - Mechanical Design,52168_METS - Mechanical Design,Labor,0.0d,1.0,1.0,At Completion Units,4/22/2022,4/22/2022,Review,0,0,0,0,0,0,0,0,0,1.03_Accelerator Systems (AS),1.03.03_AS Superconducting Linac System (ScL),1.03.03.05_AS Superconducting Linac System Engineering and Design,1.03.03.05.05_ScL Design L3B Linac Modification,AS_ScL_L3B_5040_R_PDR: Prelim. Design Review - L3B Linac Modification,Mechanical,,SLAC,Labor
69751,1.03,1.03.03,1.03.03.05,1.03.03.05.05,1.03.03.05.05,ScL Design L3B Linac Modification,AS_ScL_L3B_5050,Respond to Recommendations - PDR - L3B Linac Modification,10.0,28.0,28.0,28.0,02-17-23,03-03-23,AS_ScL_L3B_5040: FS,AS_ScL_L3B_5060: FS,SLAC,0%,52169.52169_METS Mechanical Engineer,52169_METS Mechanical Engineer,Labor,0.0d,10.0,10.0,At Completion Units,4/25/2022,4/29/2022,0,0,0,0,0,0,0,0,0,0,1.03_Accelerator Systems (AS),1.03.03_AS Superconducting Linac System (ScL),1.03.03.05_AS Superconducting Linac System Engineering and Design,1.03.03.05.05_ScL Design L3B Linac Modification,AS_ScL_L3B_5050_Respond to Recommendations - PDR - L3B Linac Modification,Mechanical,,SLAC,Labor
69752,1.03,1.03.03,1.03.03.05,1.03.03.05.05,1.03.03.05.05,ScL Design L3B Linac Modification,AS_ScL_L3B_5050,Respond to Recommendations - PDR - L3B Linac Modification,10.0,12.0,12.0,12.0,02-17-23,03-03-23,AS_ScL_L3B_5040: FS,AS_ScL_L3B_5060: FS,SLAC,0%,52168.52168_METS - Mechanical Design,52168_METS - Mechanical Design,Labor,0.0d,10.0,10.0,At Completion Units,4/25/2022,4/29/2022,0,0,0,0,0,0,0,0,0,0,1.03_Accelerator Systems (AS),1.03.03_AS Superconducting Linac System (ScL),1.03.03.05_AS Superconducting Linac System Engineering and Design,1.03.03.05.05_ScL Design L3B Linac Modification,AS_ScL_L3B_5050_Respond to Recommendations - PDR - L3B Linac Modification,Mechanical,,SLAC,Labor
69753,1.03,1.03.03,1.03.03.05,1.03.03.05.05,1.03.03.05.05,ScL Design L3B Linac Modification,AS_ScL_L3B_5100,Respond to Recommendations - FDR - L3B Linac Modification,10.0,28.0,28.0,28.0,04-11-23,04-24-23,AS_ScL_L3B_5090: FS,AS_ScL_L3B_5110: FS,SLAC,0%,52169.52169_METS Mechanical Engineer,52169_METS Mechanical Engineer,Labor,0.0d,10.0,10.0,At Completion Units,6/8/2022,6/14/2022,0,0,0,0,0,0,0,0,0,0,1.03_Accelerator Systems (AS),1.03.03_AS Superconducting Linac System (ScL),1.03.03.05_AS Superconducting Linac System Engineering and Design,1.03.03.05.05_ScL Design L3B Linac Modification,AS_ScL_L3B_5100_Respond to Recommendations - FDR - L3B Linac Modification,Mechanical,,SLAC,Labor
69754,1.03,1.03.03,1.03.03.05,1.03.03.05.05,1.03.03.05.05,ScL Design L3B Linac Modification,AS_ScL_L3B_5100,Respond to Recommendations - FDR - L3B Linac Modification,10.0,12.0,12.0,12.0,04-11-23,04-24-23,AS_ScL_L3B_5090: FS,AS_ScL_L3B_5110: FS,SLAC,0%,52168.52168_METS - Mechanical Design,52168_METS - Mechanical Design,Labor,0.0d,10.0,10.0,At Completion Units,6/8/2022,6/14/2022,0,0,0,0,0,0,0,0,0,0,1.03_Accelerator Systems (AS),1.03.03_AS Superconducting Linac System (ScL),1.03.03.05_AS Superconducting Linac System Engineering and Design,1.03.03.05.05_ScL Design L3B Linac Modification,AS_ScL_L3B_5100_Respond to Recommendations - FDR - L3B Linac Modification,Mechanical,,SLAC,Labor
69755,1.03,1.03.03,1.03.03.05,1.03.03.05.05,1.03.03.05.05,ScL Design L3B Linac Modification,AS_ScL_L3B_5090,R_FDR: Final Design Review - L3B Linac Modification,1.0,14.0,14.0,14.0,04-10-23,04-10-23,AS_ScL_L3B_5080: FS,"AS_ScL_L3B_5100: FS, AS_DES_1050: FS, AS_M4_3060: FS, AS_M4_3090: FS",SLAC,0%,52168.52168_METS - Mechanical Design,52168_METS - Mechanical Design,Labor,0.0d,1.0,1.0,At Completion Units,6/7/2022,6/7/2022,DM-A09-30%,0,0,0,0,0,0,0,0,0,1.03_Accelerator Systems (AS),1.03.03_AS Superconducting Linac System (ScL),1.03.03.05_AS Superconducting Linac System Engineering and Design,1.03.03.05.05_ScL Design L3B Linac Modification,AS_ScL_L3B_5090_R_FDR: Final Design Review - L3B Linac Modification,Mechanical,,SLAC,Labor
69756,1.03,1.03.03,1.03.03.05,1.03.03.05.05,1.03.03.05.05,ScL Design L3B Linac Modification,AS_ScL_L3B_5090,R_FDR: Final Design Review - L3B Linac Modification,1.0,34.0,34.0,34.0,04-10-23,04-10-23,AS_ScL_L3B_5080: FS,"AS_ScL_L3B_5100: FS, AS_DES_1050: FS, AS_M4_3060: FS, AS_M4_3090: FS",SLAC,0%,52169.52169_METS Mechanical Engineer,52169_METS Mechanical Engineer,Labor,0.0d,1.0,1.0,At Completion Units,6/7/2022,6/7/2022,DM-A09-30%,0,0,0,0,0,0,0,0,0,1.03_Accelerator Systems (AS),1.03.03_AS Superconducting Linac System (ScL),1.03.03.05_AS Superconducting Linac System Engineering and Design,1.03.03.05.05_ScL Design L3B Linac Modification,AS_ScL_L3B_5090_R_FDR: Final Design Review - L3B Linac Modification,Mechanical,,SLAC,Labor
69757,1.03,1.03.03,1.03.03.05,1.03.03.05.05,1.03.03.05.05,ScL Design L3B Linac Modification,AS_ScL_L3B_5080,Prepare Final Design Review - L3B Linac Modification,5.0,28.0,28.0,28.0,04-03-23,04-07-23,AS_ScL_L3B_5070: FS,AS_ScL_L3B_5090: FS,SLAC,0%,52169.52169_METS Mechanical Engineer,52169_METS Mechanical Engineer,Labor,0.0d,5.0,5.0,At Completion Units,5/31/2022,6/6/2022,0,0,0,0,0,0,0,0,0,0,1.03_Accelerator Systems (AS),1.03.03_AS Superconducting Linac System (ScL),1.03.03.05_AS Superconducting Linac System Engineering and Design,1.03.03.05.05_ScL Design L3B Linac Modification,AS_ScL_L3B_5080_Prepare Final Design Review - L3B Linac Modification,Mechanical,,SLAC,Labor
69758,1.03,1.03.03,1.03.03.05,1.03.03.05.05,1.03.03.05.05,ScL Design L3B Linac Modification,AS_ScL_L3B_5070,Develop Final Design - L3B Linac Modification,20.0,72.0,72.0,72.0,03-06-23,03-31-23,AS_ScL_L3B_5060: FS,AS_ScL_L3B_5080: FS,SLAC,0%,52168.52168_METS - Mechanical Design,52168_METS - Mechanical Design,Labor,0.0d,20.0,20.0,At Completion Units,5/2/2022,5/27/2022,0,0,0,0,0,0,0,0,0,0,1.03_Accelerator Systems (AS),1.03.03_AS Superconducting Linac System (ScL),1.03.03.05_AS Superconducting Linac System Engineering and Design,1.03.03.05.05_ScL Design L3B Linac Modification,AS_ScL_L3B_5070_Develop Final Design - L3B Linac Modification,Mechanical,,SLAC,Labor
69759,1.03,1.03.03,1.03.03.05,1.03.03.05.05,1.03.03.05.05,ScL Design L3B Linac Modification,AS_ScL_L3B_5070,Develop Final Design - L3B Linac Modification,20.0,168.0,168.0,168.0,03-06-23,03-31-23,AS_ScL_L3B_5060: FS,AS_ScL_L3B_5080: FS,SLAC,0%,52169.52169_METS Mechanical Engineer,52169_METS Mechanical Engineer,Labor,0.0d,20.0,20.0,At Completion Units,5/2/2022,5/27/2022,0,0,0,0,0,0,0,0,0,0,1.03_Accelerator Systems (AS),1.03.03_AS Superconducting Linac System (ScL),1.03.03.05_AS Superconducting Linac System Engineering and Design,1.03.03.05.05_ScL Design L3B Linac Modification,AS_ScL_L3B_5070_Develop Final Design - L3B Linac Modification,Mechanical,,SLAC,Labor
69760,1.03,1.03.03,1.03.03.05,1.03.03.05.05,1.03.03.05.05,ScL Design L3B Linac Modification,AS_ScL_L3B_5040,R_PDR: Prelim. Design Review - L3B Linac Modification,1.0,34.0,34.0,34.0,02-16-23,02-16-23,AS_ScL_L3B_5030: FS,"AS_ScL_L3B_5050: FS, AS_DES_1000: FS",SLAC,0%,52169.52169_METS Mechanical Engineer,52169_METS Mechanical Engineer,Labor,0.0d,1.0,1.0,At Completion Units,4/22/2022,4/22/2022,Review,0,0,0,0,0,0,0,0,0,1.03_Accelerator Systems (AS),1.03.03_AS Superconducting Linac System (ScL),1.03.03.05_AS Superconducting Linac System Engineering and Design,1.03.03.05.05_ScL Design L3B Linac Modification,AS_ScL_L3B_5040_R_PDR: Prelim. Design Review - L3B Linac Modification,Mechanical,,SLAC,Labor
69761,1.03,1.03.03,1.03.03.05,1.03.03.05.05,1.03.03.05.05,ScL Design L3B Linac Modification,AS_ScL_L3B_5030,Prepare Prelim. Design Review - L3B Linac Modification,5.0,28.0,28.0,28.0,02-09-23,02-15-23,AS_ScL_L3B_5020: FS,AS_ScL_L3B_5040: FS,SLAC,0%,52169.52169_METS Mechanical Engineer,52169_METS Mechanical Engineer,Labor,0.0d,5.0,5.0,At Completion Units,4/15/2022,4/21/2022,0,0,0,0,0,0,0,0,0,0,1.03_Accelerator Systems (AS),1.03.03_AS Superconducting Linac System (ScL),1.03.03.05_AS Superconducting Linac System Engineering and Design,1.03.03.05.05_ScL Design L3B Linac Modification,AS_ScL_L3B_5030_Prepare Prelim. Design Review - L3B Linac Modification,Mechanical,,SLAC,Labor
69762,1.03,1.03.03,1.03.03.05,1.03.03.05.05,1.03.03.05.05,ScL Design L3B Linac Modification,AS_ScL_L3B_5030,Prepare Prelim. Design Review - L3B Linac Modification,5.0,12.0,12.0,12.0,02-09-23,02-15-23,AS_ScL_L3B_5020: FS,AS_ScL_L3B_5040: FS,SLAC,0%,52168.52168_METS - Mechanical Design,52168_METS - Mechanical Design,Labor,0.0d,5.0,5.0,At Completion Units,4/15/2022,4/21/2022,0,0,0,0,0,0,0,0,0,0,1.03_Accelerator Systems (AS),1.03.03_AS Superconducting Linac System (ScL),1.03.03.05_AS Superconducting Linac System Engineering and Design,1.03.03.05.05_ScL Design L3B Linac Modification,AS_ScL_L3B_5030_Prepare Prelim. Design Review - L3B Linac Modification,Mechanical,,SLAC,Labor
69763,1.03,1.03.03,1.03.03.05,1.03.03.05.05,1.03.03.05.05,ScL Design L3B Linac Modification,AS_ScL_L3B_5020,Develop Prelim. Design - L3B Linac Modification,20.0,102.0,102.0,102.0,01-11-23,02-08-23,AS_ScL_L3B_5010: FS,AS_ScL_L3B_5030: FS,SLAC,0%,52168.52168_METS - Mechanical Design,52168_METS - Mechanical Design,Labor,0.0d,20.0,20.0,At Completion Units,3/4/2022,4/14/2022,0,0,0,0,0,0,0,0,0,0,1.03_Accelerator Systems (AS),1.03.03_AS Superconducting Linac System (ScL),1.03.03.05_AS Superconducting Linac System Engineering and Design,1.03.03.05.05_ScL Design L3B Linac Modification,AS_ScL_L3B_5020_Develop Prelim. Design - L3B Linac Modification,Mechanical,,SLAC,Labor
69764,1.03,1.03.03,1.03.03.05,1.03.03.05.05,1.03.03.05.05,ScL Design L3B Linac Modification,AS_ScL_L3B_5020,Develop Prelim. Design - L3B Linac Modification,20.0,238.0,238.0,238.0,01-11-23,02-08-23,AS_ScL_L3B_5010: FS,AS_ScL_L3B_5030: FS,SLAC,0%,52169.52169_METS Mechanical Engineer,52169_METS Mechanical Engineer,Labor,0.0d,20.0,20.0,At Completion Units,3/4/2022,4/14/2022,0,0,0,0,0,0,0,0,0,0,1.03_Accelerator Systems (AS),1.03.03_AS Superconducting Linac System (ScL),1.03.03.05_AS Superconducting Linac System Engineering and Design,1.03.03.05.05_ScL Design L3B Linac Modification,AS_ScL_L3B_5020_Develop Prelim. Design - L3B Linac Modification,Mechanical,,SLAC,Labor
70084,1.03,1.03.03,1.03.03.05,1.03.03.05.10,1.03.03.05.10,ScL Design L3/L4 Transition,AS_ScL_L34_5000,Develop and Update Cost and Schedule - L3/L4 Transition,5.0,25.0,0.0,17.5,04-01-2021,09-01-2021,MS_FY_2021_Q3: FS,AS_ScL_L4EDG_5020: FF,SLAC,100%,52169.52169_METS Mechanical Engineer,52169_METS Mechanical Engineer,Labor,107.0d,0.0,107.0,At Completion Units,4/2/2021,7/30/2021,0,0,0,0,0,0,0,0,0,0,1.03_Accelerator Systems (AS),1.03.03_AS Superconducting Linac System (ScL),1.03.03.05_AS Superconducting Linac System Engineering and Design,1.03.03.05.10_ScL Design L3/L4 Transition,AS_ScL_L34_5000_Develop and Update Cost and Schedule - L3/L4 Transition,Mechanical,,SLAC,Labor
70085,1.03,1.03.03,1.03.03.05,1.03.03.05.10,1.03.03.05.10,ScL Design L3/L4 Transition,AS_ScL_L34_5000,Develop and Update Cost and Schedule - L3/L4 Transition,5.0,10.0,0.0,17.5,04-01-2021,09-01-2021,MS_FY_2021_Q3: FS,AS_ScL_L4EDG_5020: FF,SLAC,100%,52168.52168_METS - Mechanical Design,52168_METS - Mechanical Design,Labor,107.0d,0.0,107.0,At Completion Units,4/2/2021,7/30/2021,0,0,0,0,0,0,0,0,0,0,1.03_Accelerator Systems (AS),1.03.03_AS Superconducting Linac System (ScL),1.03.03.05_AS Superconducting Linac System Engineering and Design,1.03.03.05.10_ScL Design L3/L4 Transition,AS_ScL_L34_5000_Develop and Update Cost and Schedule - L3/L4 Transition,Mechanical,,SLAC,Labor
70086,1.03,1.03.03,1.03.03.05,1.03.03.05.10,1.03.03.05.10,ScL Design L3/L4 Transition,AS_ScL_L34_5080,Prepare Final Design Review - L3/L4 Transition,5.0,12.0,12.0,12.0,12-14-22,01-03-23,AS_ScL_L34_5070: FS,AS_ScL_L34_5090: FS,SLAC,0%,52168.52168_METS - Mechanical Design,52168_METS - Mechanical Design,Labor,0.0d,5.0,5.0,At Completion Units,5/16/2022,5/20/2022,0,0,0,0,0,0,0,0,0,0,1.03_Accelerator Systems (AS),1.03.03_AS Superconducting Linac System (ScL),1.03.03.05_AS Superconducting Linac System Engineering and Design,1.03.03.05.10_ScL Design L3/L4 Transition,AS_ScL_L34_5080_Prepare Final Design Review - L3/L4 Transition,Mechanical,,SLAC,Labor
70087,1.03,1.03.03,1.03.03.05,1.03.03.05.10,1.03.03.05.10,ScL Design L3/L4 Transition,AS_ScL_L34_5100,Respond to Recommendations - FDR - L3/L4 Transition,10.0,56.0,56.0,56.0,01-05-23,01-19-23,AS_ScL_L34_5090: FS,AS_ScL_L34_5110: FS,SLAC,0%,52169.52169_METS Mechanical Engineer,52169_METS Mechanical Engineer,Labor,0.0d,10.0,10.0,At Completion Units,5/24/2022,5/31/2022,0,0,0,0,0,0,0,0,0,0,1.03_Accelerator Systems (AS),1.03.03_AS Superconducting Linac System (ScL),1.03.03.05_AS Superconducting Linac System Engineering and Design,1.03.03.05.10_ScL Design L3/L4 Transition,AS_ScL_L34_5100_Respond to Recommendations - FDR - L3/L4 Transition,Mechanical,,SLAC,Labor
70088,1.03,1.03.03,1.03.03.05,1.03.03.05.10,1.03.03.05.10,ScL Design L3/L4 Transition,AS_ScL_L34_5100,Respond to Recommendations - FDR - L3/L4 Transition,10.0,24.0,24.0,24.0,01-05-23,01-19-23,AS_ScL_L34_5090: FS,AS_ScL_L34_5110: FS,SLAC,0%,52168.52168_METS - Mechanical Design,52168_METS - Mechanical Design,Labor,0.0d,10.0,10.0,At Completion Units,5/24/2022,5/31/2022,0,0,0,0,0,0,0,0,0,0,1.03_Accelerator Systems (AS),1.03.03_AS Superconducting Linac System (ScL),1.03.03.05_AS Superconducting Linac System Engineering and Design,1.03.03.05.10_ScL Design L3/L4 Transition,AS_ScL_L34_5100_Respond to Recommendations - FDR - L3/L4 Transition,Mechanical,,SLAC,Labor
70089,1.03,1.03.03,1.03.03.05,1.03.03.05.10,1.03.03.05.10,ScL Design L3/L4 Transition,AS_ScL_L34_5050,Respond to Recommendations - PDR - L3/L4 Transition,10.0,90.0,90.0,90.0,10-17-22,10-28-22,AS_ScL_L34_5040: FS,AS_ScL_L34_5060: FS,SLAC,0%,52169.52169_METS Mechanical Engineer,52169_METS Mechanical Engineer,Labor,0.0d,10.0,10.0,At Completion Units,3/14/2022,3/18/2022,0,0,0,0,0,0,0,0,0,0,1.03_Accelerator Systems (AS),1.03.03_AS Superconducting Linac System (ScL),1.03.03.05_AS Superconducting Linac System Engineering and Design,1.03.03.05.10_ScL Design L3/L4 Transition,AS_ScL_L34_5050_Respond to Recommendations - PDR - L3/L4 Transition,Mechanical,,SLAC,Labor
70090,1.03,1.03.03,1.03.03.05,1.03.03.05.10,1.03.03.05.10,ScL Design L3/L4 Transition,AS_ScL_L34_5050,Respond to Recommendations - PDR - L3/L4 Transition,10.0,38.0,38.0,38.0,10-17-22,10-28-22,AS_ScL_L34_5040: FS,AS_ScL_L34_5060: FS,SLAC,0%,52168.52168_METS - Mechanical Design,52168_METS - Mechanical Design,Labor,0.0d,10.0,10.0,At Completion Units,3/14/2022,3/18/2022,0,0,0,0,0,0,0,0,0,0,1.03_Accelerator Systems (AS),1.03.03_AS Superconducting Linac System (ScL),1.03.03.05_AS Superconducting Linac System Engineering and Design,1.03.03.05.10_ScL Design L3/L4 Transition,AS_ScL_L34_5050_Respond to Recommendations - PDR - L3/L4 Transition,Mechanical,,SLAC,Labor
70091,1.03,1.03.03,1.03.03.05,1.03.03.05.10,1.03.03.05.10,ScL Design L3/L4 Transition,AS_ScL_L34_5090,R_FDR: Final Design Review - L3/L4 Transition,1.0,14.0,14.0,14.0,01-04-23,01-04-23,AS_ScL_L34_5080: FS,"AS_ScL_L34_5100: FS, AS_DES_1050: FS, AS_M4_3060: FS, AS_M4_3090: FS",SLAC,0%,52168.52168_METS - Mechanical Design,52168_METS - Mechanical Design,Labor,0.0d,1.0,1.0,At Completion Units,5/23/2022,5/23/2022,DM-A09-30%,0,0,0,0,0,0,0,0,0,1.03_Accelerator Systems (AS),1.03.03_AS Superconducting Linac System (ScL),1.03.03.05_AS Superconducting Linac System Engineering and Design,1.03.03.05.10_ScL Design L3/L4 Transition,AS_ScL_L34_5090_R_FDR: Final Design Review - L3/L4 Transition,Mechanical,,SLAC,Labor
70092,1.03,1.03.03,1.03.03.05,1.03.03.05.10,1.03.03.05.10,ScL Design L3/L4 Transition,AS_ScL_L34_5090,R_FDR: Final Design Review - L3/L4 Transition,1.0,34.0,34.0,34.0,01-04-23,01-04-23,AS_ScL_L34_5080: FS,"AS_ScL_L34_5100: FS, AS_DES_1050: FS, AS_M4_3060: FS, AS_M4_3090: FS",SLAC,0%,52169.52169_METS Mechanical Engineer,52169_METS Mechanical Engineer,Labor,0.0d,1.0,1.0,At Completion Units,5/23/2022,5/23/2022,DM-A09-30%,0,0,0,0,0,0,0,0,0,1.03_Accelerator Systems (AS),1.03.03_AS Superconducting Linac System (ScL),1.03.03.05_AS Superconducting Linac System Engineering and Design,1.03.03.05.10_ScL Design L3/L4 Transition,AS_ScL_L34_5090_R_FDR: Final Design Review - L3/L4 Transition,Mechanical,,SLAC,Labor
70093,1.03,1.03.03,1.03.03.05,1.03.03.05.10,1.03.03.05.10,ScL Design L3/L4 Transition,AS_ScL_L34_5080,Prepare Final Design Review - L3/L4 Transition,5.0,28.0,28.0,28.0,12-14-22,01-03-23,AS_ScL_L34_5070: FS,AS_ScL_L34_5090: FS,SLAC,0%,52169.52169_METS Mechanical Engineer,52169_METS Mechanical Engineer,Labor,0.0d,5.0,5.0,At Completion Units,5/16/2022,5/20/2022,0,0,0,0,0,0,0,0,0,0,1.03_Accelerator Systems (AS),1.03.03_AS Superconducting Linac System (ScL),1.03.03.05_AS Superconducting Linac System Engineering and Design,1.03.03.05.10_ScL Design L3/L4 Transition,AS_ScL_L34_5080_Prepare Final Design Review - L3/L4 Transition,Mechanical,,SLAC,Labor
70094,1.03,1.03.03,1.03.03.05,1.03.03.05.10,1.03.03.05.10,ScL Design L3/L4 Transition,AS_ScL_L34_5070,Develop Final Design - L3/L4 Transition,30.0,336.0,336.0,336.0,10-31-22,12-13-22,AS_ScL_L34_5060: FS,AS_ScL_L34_5080: FS,SLAC,0%,52169.52169_METS Mechanical Engineer,52169_METS Mechanical Engineer,Labor,0.0d,30.0,30.0,At Completion Units,3/21/2022,5/13/2022,0,0,0,0,0,0,0,0,0,0,1.03_Accelerator Systems (AS),1.03.03_AS Superconducting Linac System (ScL),1.03.03.05_AS Superconducting Linac System Engineering and Design,1.03.03.05.10_ScL Design L3/L4 Transition,AS_ScL_L34_5070_Develop Final Design - L3/L4 Transition,Mechanical,,SLAC,Labor
70095,1.03,1.03.03,1.03.03.05,1.03.03.05.10,1.03.03.05.10,ScL Design L3/L4 Transition,AS_ScL_L34_5070,Develop Final Design - L3/L4 Transition,30.0,144.0,144.0,144.0,10-31-22,12-13-22,AS_ScL_L34_5060: FS,AS_ScL_L34_5080: FS,SLAC,0%,52168.52168_METS - Mechanical Design,52168_METS - Mechanical Design,Labor,0.0d,30.0,30.0,At Completion Units,3/21/2022,5/13/2022,0,0,0,0,0,0,0,0,0,0,1.03_Accelerator Systems (AS),1.03.03_AS Superconducting Linac System (ScL),1.03.03.05_AS Superconducting Linac System Engineering and Design,1.03.03.05.10_ScL Design L3/L4 Transition,AS_ScL_L34_5070_Develop Final Design - L3/L4 Transition,Mechanical,,SLAC,Labor
70096,1.03,1.03.03,1.03.03.05,1.03.03.05.10,1.03.03.05.10,ScL Design L3/L4 Transition,AS_ScL_L34_5040,R_PDR: Prelim. Design Review - L3/L4 Transition,1.0,12.0,12.0,12.0,10-14-22,10-14-22,AS_ScL_L34_5030: FS,"AS_ScL_L34_5050: FS, AS_DES_1000: FS",SLAC,0%,52168.52168_METS - Mechanical Design,52168_METS - Mechanical Design,Labor,0.0d,1.0,1.0,At Completion Units,3/11/2022,3/11/2022,DM-A08-60%,0,0,0,0,0,0,0,0,0,1.03_Accelerator Systems (AS),1.03.03_AS Superconducting Linac System (ScL),1.03.03.05_AS Superconducting Linac System Engineering and Design,1.03.03.05.10_ScL Design L3/L4 Transition,AS_ScL_L34_5040_R_PDR: Prelim. Design Review - L3/L4 Transition,Mechanical,,SLAC,Labor
70097,1.03,1.03.03,1.03.03.05,1.03.03.05.10,1.03.03.05.10,ScL Design L3/L4 Transition,AS_ScL_L34_5040,R_PDR: Prelim. Design Review - L3/L4 Transition,1.0,28.0,28.0,28.0,10-14-22,10-14-22,AS_ScL_L34_5030: FS,"AS_ScL_L34_5050: FS, AS_DES_1000: FS",SLAC,0%,52169.52169_METS Mechanical Engineer,52169_METS Mechanical Engineer,Labor,0.0d,1.0,1.0,At Completion Units,3/11/2022,3/11/2022,DM-A08-60%,0,0,0,0,0,0,0,0,0,1.03_Accelerator Systems (AS),1.03.03_AS Superconducting Linac System (ScL),1.03.03.05_AS Superconducting Linac System Engineering and Design,1.03.03.05.10_ScL Design L3/L4 Transition,AS_ScL_L34_5040_R_PDR: Prelim. Design Review - L3/L4 Transition,Mechanical,,SLAC,Labor
70098,1.03,1.03.03,1.03.03.05,1.03.03.05.10,1.03.03.05.10,ScL Design L3/L4 Transition,AS_ScL_L34_5030,Prepare Prelim. Design Review - L3/L4 Transition,5.0,28.0,28.0,28.0,10-07-22,10-13-22,AS_ScL_L34_5020: FS,AS_ScL_L34_5040: FS,SLAC,0%,52169.52169_METS Mechanical Engineer,52169_METS Mechanical Engineer,Labor,0.0d,5.0,5.0,At Completion Units,3/4/2022,3/10/2022,0,0,0,0,0,0,0,0,0,0,1.03_Accelerator Systems (AS),1.03.03_AS Superconducting Linac System (ScL),1.03.03.05_AS Superconducting Linac System Engineering and Design,1.03.03.05.10_ScL Design L3/L4 Transition,AS_ScL_L34_5030_Prepare Prelim. Design Review - L3/L4 Transition,Mechanical,,SLAC,Labor
70099,1.03,1.03.03,1.03.03.05,1.03.03.05.10,1.03.03.05.10,ScL Design L3/L4 Transition,AS_ScL_L34_5030,Prepare Prelim. Design Review - L3/L4 Transition,5.0,12.0,12.0,12.0,10-07-22,10-13-22,AS_ScL_L34_5020: FS,AS_ScL_L34_5040: FS,SLAC,0%,52168.52168_METS - Mechanical Design,52168_METS - Mechanical Design,Labor,0.0d,5.0,5.0,At Completion Units,3/4/2022,3/10/2022,0,0,0,0,0,0,0,0,0,0,1.03_Accelerator Systems (AS),1.03.03_AS Superconducting Linac System (ScL),1.03.03.05_AS Superconducting Linac System Engineering and Design,1.03.03.05.10_ScL Design L3/L4 Transition,AS_ScL_L34_5030_Prepare Prelim. Design Review - L3/L4 Transition,Mechanical,,SLAC,Labor
70100,1.03,1.03.03,1.03.03.05,1.03.03.05.10,1.03.03.05.10,ScL Design L3/L4 Transition,AS_ScL_L34_5020,Develop Prelim. Design - L3/L4 Transition,40.0,204.0,204.0,204.0,08-11-22,10-06-22,AS_ScL_L34_5010: FS,"AS_ScL_L34_5030: FS, AS_ScL_L3B_5010: FF",SLAC,0%,52168.52168_METS - Mechanical Design,52168_METS - Mechanical Design,Labor,0.0d,40.0,40.0,At Completion Units,1/5/2022,3/3/2022,0,0,0,0,0,0,0,0,0,0,1.03_Accelerator Systems (AS),1.03.03_AS Superconducting Linac System (ScL),1.03.03.05_AS Superconducting Linac System Engineering and Design,1.03.03.05.10_ScL Design L3/L4 Transition,AS_ScL_L34_5020_Develop Prelim. Design - L3/L4 Transition,Mechanical,,SLAC,Labor
70101,1.03,1.03.03,1.03.03.05,1.03.03.05.10,1.03.03.05.10,ScL Design L3/L4 Transition,AS_ScL_L34_5020,Develop Prelim. Design - L3/L4 Transition,40.0,476.0,476.0,476.0,08-11-22,10-06-22,AS_ScL_L34_5010: FS,"AS_ScL_L34_5030: FS, AS_ScL_L3B_5010: FF",SLAC,0%,52169.52169_METS Mechanical Engineer,52169_METS Mechanical Engineer,Labor,0.0d,40.0,40.0,At Completion Units,1/5/2022,3/3/2022,0,0,0,0,0,0,0,0,0,0,1.03_Accelerator Systems (AS),1.03.03_AS Superconducting Linac System (ScL),1.03.03.05_AS Superconducting Linac System Engineering and Design,1.03.03.05.10_ScL Design L3/L4 Transition,AS_ScL_L34_5020_Develop Prelim. Design - L3/L4 Transition,Mechanical,,SLAC,Labor
70421,1.03,1.03.03,1.03.03.05,1.03.03.05.20,1.03.03.05.20,ScL Design L4 Linac,AS_ScL_L4_5000,"Develop and Update Cost and Schedule - L4 Linac (CM,PF,VAC tools and procedures)",5.0,25.0,0.0,17.5,04-01-2021,09-01-2021,MS_FY_2021_Q3: FS,AS_ScL_L4EDG_5020: FF,SLAC,100%,52169.52169_METS Mechanical Engineer,52169_METS Mechanical Engineer,Labor,107.0d,0.0,107.0,At Completion Units,4/2/2021,7/30/2021,0,0,0,0,0,0,0,0,0,0,1.03_Accelerator Systems (AS),1.03.03_AS Superconducting Linac System (ScL),1.03.03.05_AS Superconducting Linac System Engineering and Design,1.03.03.05.20_ScL Design L4 Linac,"AS_ScL_L4_5000_Develop and Update Cost and Schedule - L4 Linac (CM,PF,VAC tools and procedures)",Mechanical,,SLAC,Labor
70422,1.03,1.03.03,1.03.03.05,1.03.03.05.20,1.03.03.05.20,ScL Design L4 Linac,AS_ScL_L4_5000,"Develop and Update Cost and Schedule - L4 Linac (CM,PF,VAC tools and procedures)",5.0,10.0,0.0,17.5,04-01-2021,09-01-2021,MS_FY_2021_Q3: FS,AS_ScL_L4EDG_5020: FF,SLAC,100%,52168.52168_METS - Mechanical Design,52168_METS - Mechanical Design,Labor,107.0d,0.0,107.0,At Completion Units,4/2/2021,7/30/2021,0,0,0,0,0,0,0,0,0,0,1.03_Accelerator Systems (AS),1.03.03_AS Superconducting Linac System (ScL),1.03.03.05_AS Superconducting Linac System Engineering and Design,1.03.03.05.20_ScL Design L4 Linac,"AS_ScL_L4_5000_Develop and Update Cost and Schedule - L4 Linac (CM,PF,VAC tools and procedures)",Mechanical,,SLAC,Labor
70423,1.03,1.03.03,1.03.03.05,1.03.03.05.20,1.03.03.05.20,ScL Design L4 Linac,AS_ScL_L4_5080,Prepare Final Design Review - L4 Linac,5.0,12.0,12.0,12.0,04-03-23,04-07-23,AS_ScL_L4_5070: FS,AS_ScL_L4_5090: FS,SLAC,0%,52168.52168_METS - Mechanical Design,52168_METS - Mechanical Design,Labor,0.0d,5.0,5.0,At Completion Units,4/11/2022,4/15/2022,0,0,0,0,0,0,0,0,0,0,1.03_Accelerator Systems (AS),1.03.03_AS Superconducting Linac System (ScL),1.03.03.05_AS Superconducting Linac System Engineering and Design,1.03.03.05.20_ScL Design L4 Linac,AS_ScL_L4_5080_Prepare Final Design Review - L4 Linac,Mechanical,,SLAC,Labor
70424,1.03,1.03.03,1.03.03.05,1.03.03.05.20,1.03.03.05.20,ScL Design L4 Linac,AS_ScL_L4_5100,Respond to Recommendations - FDR - L4 Linac,10.0,28.0,28.0,28.0,04-11-23,04-24-23,AS_ScL_L4_5090: FS,AS_ScL_L4_5110: FS,SLAC,0%,52169.52169_METS Mechanical Engineer,52169_METS Mechanical Engineer,Labor,0.0d,10.0,10.0,At Completion Units,4/19/2022,4/25/2022,0,0,0,0,0,0,0,0,0,0,1.03_Accelerator Systems (AS),1.03.03_AS Superconducting Linac System (ScL),1.03.03.05_AS Superconducting Linac System Engineering and Design,1.03.03.05.20_ScL Design L4 Linac,AS_ScL_L4_5100_Respond to Recommendations - FDR - L4 Linac,Mechanical,,SLAC,Labor
70425,1.03,1.03.03,1.03.03.05,1.03.03.05.20,1.03.03.05.20,ScL Design L4 Linac,AS_ScL_L4_5100,Respond to Recommendations - FDR - L4 Linac,10.0,12.0,12.0,12.0,04-11-23,04-24-23,AS_ScL_L4_5090: FS,AS_ScL_L4_5110: FS,SLAC,0%,52168.52168_METS - Mechanical Design,52168_METS - Mechanical Design,Labor,0.0d,10.0,10.0,At Completion Units,4/19/2022,4/25/2022,0,0,0,0,0,0,0,0,0,0,1.03_Accelerator Systems (AS),1.03.03_AS Superconducting Linac System (ScL),1.03.03.05_AS Superconducting Linac System Engineering and Design,1.03.03.05.20_ScL Design L4 Linac,AS_ScL_L4_5100_Respond to Recommendations - FDR - L4 Linac,Mechanical,,SLAC,Labor
70426,1.03,1.03.03,1.03.03.05,1.03.03.05.20,1.03.03.05.20,ScL Design L4 Linac,AS_ScL_L4_5050,Respond to Recommendations - PDR - L4 Linac,10.0,28.0,28.0,28.0,01-20-23,02-02-23,AS_ScL_L4_5040: FS,AS_ScL_L4_5060: FS,SLAC,0%,52169.52169_METS Mechanical Engineer,52169_METS Mechanical Engineer,Labor,0.0d,10.0,10.0,At Completion Units,3/7/2022,3/11/2022,0,0,0,0,0,0,0,0,0,0,1.03_Accelerator Systems (AS),1.03.03_AS Superconducting Linac System (ScL),1.03.03.05_AS Superconducting Linac System Engineering and Design,1.03.03.05.20_ScL Design L4 Linac,AS_ScL_L4_5050_Respond to Recommendations - PDR - L4 Linac,Mechanical,,SLAC,Labor
70427,1.03,1.03.03,1.03.03.05,1.03.03.05.20,1.03.03.05.20,ScL Design L4 Linac,AS_ScL_L4_5050,Respond to Recommendations - PDR - L4 Linac,10.0,12.0,12.0,12.0,01-20-23,02-02-23,AS_ScL_L4_5040: FS,AS_ScL_L4_5060: FS,SLAC,0%,52168.52168_METS - Mechanical Design,52168_METS - Mechanical Design,Labor,0.0d,10.0,10.0,At Completion Units,3/7/2022,3/11/2022,0,0,0,0,0,0,0,0,0,0,1.03_Accelerator Systems (AS),1.03.03_AS Superconducting Linac System (ScL),1.03.03.05_AS Superconducting Linac System Engineering and Design,1.03.03.05.20_ScL Design L4 Linac,AS_ScL_L4_5050_Respond to Recommendations - PDR - L4 Linac,Mechanical,,SLAC,Labor
70428,1.03,1.03.03,1.03.03.05,1.03.03.05.20,1.03.03.05.20,ScL Design L4 Linac,AS_ScL_L4_5090,"R_FDR: Final Design Review - L4 Linac (CM,PF,VAC tools and procedures)",1.0,14.0,14.0,14.0,04-10-23,04-10-23,AS_ScL_L4_5080: FS,"AS_ScL_L4_5100: FS, AS_DES_1050: FS, AS_M4_3060: FS, AS_M4_3090: FS",SLAC,0%,52168.52168_METS - Mechanical Design,52168_METS - Mechanical Design,Labor,0.0d,1.0,1.0,At Completion Units,4/18/2022,4/18/2022,DM-A06-30%,0,0,0,0,0,0,0,0,0,1.03_Accelerator Systems (AS),1.03.03_AS Superconducting Linac System (ScL),1.03.03.05_AS Superconducting Linac System Engineering and Design,1.03.03.05.20_ScL Design L4 Linac,"AS_ScL_L4_5090_R_FDR: Final Design Review - L4 Linac (CM,PF,VAC tools and procedures)",Mechanical,,SLAC,Labor
70429,1.03,1.03.03,1.03.03.05,1.03.03.05.20,1.03.03.05.20,ScL Design L4 Linac,AS_ScL_L4_5090,"R_FDR: Final Design Review - L4 Linac (CM,PF,VAC tools and procedures)",1.0,34.0,34.0,34.0,04-10-23,04-10-23,AS_ScL_L4_5080: FS,"AS_ScL_L4_5100: FS, AS_DES_1050: FS, AS_M4_3060: FS, AS_M4_3090: FS",SLAC,0%,52169.52169_METS Mechanical Engineer,52169_METS Mechanical Engineer,Labor,0.0d,1.0,1.0,At Completion Units,4/18/2022,4/18/2022,DM-A06-30%,0,0,0,0,0,0,0,0,0,1.03_Accelerator Systems (AS),1.03.03_AS Superconducting Linac System (ScL),1.03.03.05_AS Superconducting Linac System Engineering and Design,1.03.03.05.20_ScL Design L4 Linac,"AS_ScL_L4_5090_R_FDR: Final Design Review - L4 Linac (CM,PF,VAC tools and procedures)",Mechanical,,SLAC,Labor
70430,1.03,1.03.03,1.03.03.05,1.03.03.05.20,1.03.03.05.20,ScL Design L4 Linac,AS_ScL_L4_5080,Prepare Final Design Review - L4 Linac,5.0,28.0,28.0,28.0,04-03-23,04-07-23,AS_ScL_L4_5070: FS,AS_ScL_L4_5090: FS,SLAC,0%,52169.52169_METS Mechanical Engineer,52169_METS Mechanical Engineer,Labor,0.0d,5.0,5.0,At Completion Units,4/11/2022,4/15/2022,0,0,0,0,0,0,0,0,0,0,1.03_Accelerator Systems (AS),1.03.03_AS Superconducting Linac System (ScL),1.03.03.05_AS Superconducting Linac System Engineering and Design,1.03.03.05.20_ScL Design L4 Linac,AS_ScL_L4_5080_Prepare Final Design Review - L4 Linac,Mechanical,,SLAC,Labor
70431,1.03,1.03.03,1.03.03.05,1.03.03.05.20,1.03.03.05.20,ScL Design L4 Linac,AS_ScL_L4_5070,Develop Final Design - L4 Linac,40.0,72.0,72.0,72.0,02-03-23,03-31-23,AS_ScL_L4_5060: FS,AS_ScL_L4_5080: FS,SLAC,0%,52168.52168_METS - Mechanical Design,52168_METS - Mechanical Design,Labor,0.0d,40.0,40.0,At Completion Units,3/14/2022,4/8/2022,0,0,0,0,0,0,0,0,0,0,1.03_Accelerator Systems (AS),1.03.03_AS Superconducting Linac System (ScL),1.03.03.05_AS Superconducting Linac System Engineering and Design,1.03.03.05.20_ScL Design L4 Linac,AS_ScL_L4_5070_Develop Final Design - L4 Linac,Mechanical,,SLAC,Labor
70432,1.03,1.03.03,1.03.03.05,1.03.03.05.20,1.03.03.05.20,ScL Design L4 Linac,AS_ScL_L4_5070,Develop Final Design - L4 Linac,40.0,168.0,168.0,168.0,02-03-23,03-31-23,AS_ScL_L4_5060: FS,AS_ScL_L4_5080: FS,SLAC,0%,52169.52169_METS Mechanical Engineer,52169_METS Mechanical Engineer,Labor,0.0d,40.0,40.0,At Completion Units,3/14/2022,4/8/2022,0,0,0,0,0,0,0,0,0,0,1.03_Accelerator Systems (AS),1.03.03_AS Superconducting Linac System (ScL),1.03.03.05_AS Superconducting Linac System Engineering and Design,1.03.03.05.20_ScL Design L4 Linac,AS_ScL_L4_5070_Develop Final Design - L4 Linac,Mechanical,,SLAC,Labor
70433,1.03,1.03.03,1.03.03.05,1.03.03.05.20,1.03.03.05.20,ScL Design L4 Linac,AS_ScL_L4_5040,"R_PDR: Prelim. Design Review - L4 Linac (CM,PF,VAC tools and procedures)",1.0,34.0,34.0,34.0,01-19-23,01-19-23,AS_ScL_L4_5030: FS,"AS_ScL_L4_5050: FS, AS_DES_1000: FS",SLAC,0%,52169.52169_METS Mechanical Engineer,52169_METS Mechanical Engineer,Labor,0.0d,1.0,1.0,At Completion Units,3/4/2022,3/4/2022,DM-A08-60%,0,0,0,0,0,0,0,0,0,1.03_Accelerator Systems (AS),1.03.03_AS Superconducting Linac System (ScL),1.03.03.05_AS Superconducting Linac System Engineering and Design,1.03.03.05.20_ScL Design L4 Linac,"AS_ScL_L4_5040_R_PDR: Prelim. Design Review - L4 Linac (CM,PF,VAC tools and procedures)",Mechanical,,SLAC,Labor
70434,1.03,1.03.03,1.03.03.05,1.03.03.05.20,1.03.03.05.20,ScL Design L4 Linac,AS_ScL_L4_5040,"R_PDR: Prelim. Design Review - L4 Linac (CM,PF,VAC tools and procedures)",1.0,14.0,14.0,14.0,01-19-23,01-19-23,AS_ScL_L4_5030: FS,"AS_ScL_L4_5050: FS, AS_DES_1000: FS",SLAC,0%,52168.52168_METS - Mechanical Design,52168_METS - Mechanical Design,Labor,0.0d,1.0,1.0,At Completion Units,3/4/2022,3/4/2022,DM-A08-60%,0,0,0,0,0,0,0,0,0,1.03_Accelerator Systems (AS),1.03.03_AS Superconducting Linac System (ScL),1.03.03.05_AS Superconducting Linac System Engineering and Design,1.03.03.05.20_ScL Design L4 Linac,"AS_ScL_L4_5040_R_PDR: Prelim. Design Review - L4 Linac (CM,PF,VAC tools and procedures)",Mechanical,,SLAC,Labor
70435,1.03,1.03.03,1.03.03.05,1.03.03.05.20,1.03.03.05.20,ScL Design L4 Linac,AS_ScL_L4_5030,Prepare Prelim. Design Review - L4 Linac,5.0,12.0,12.0,12.0,01-11-23,01-18-23,AS_ScL_L4_5020: FS,AS_ScL_L4_5040: FS,SLAC,0%,52168.52168_METS - Mechanical Design,52168_METS - Mechanical Design,Labor,0.0d,5.0,5.0,At Completion Units,2/25/2022,3/3/2022,0,0,0,0,0,0,0,0,0,0,1.03_Accelerator Systems (AS),1.03.03_AS Superconducting Linac System (ScL),1.03.03.05_AS Superconducting Linac System Engineering and Design,1.03.03.05.20_ScL Design L4 Linac,AS_ScL_L4_5030_Prepare Prelim. Design Review - L4 Linac,Mechanical,,SLAC,Labor
70436,1.03,1.03.03,1.03.03.05,1.03.03.05.20,1.03.03.05.20,ScL Design L4 Linac,AS_ScL_L4_5030,Prepare Prelim. Design Review - L4 Linac,5.0,28.0,28.0,28.0,01-11-23,01-18-23,AS_ScL_L4_5020: FS,AS_ScL_L4_5040: FS,SLAC,0%,52169.52169_METS Mechanical Engineer,52169_METS Mechanical Engineer,Labor,0.0d,5.0,5.0,At Completion Units,2/25/2022,3/3/2022,0,0,0,0,0,0,0,0,0,0,1.03_Accelerator Systems (AS),1.03.03_AS Superconducting Linac System (ScL),1.03.03.05_AS Superconducting Linac System Engineering and Design,1.03.03.05.20_ScL Design L4 Linac,AS_ScL_L4_5030_Prepare Prelim. Design Review - L4 Linac,Mechanical,,SLAC,Labor
70437,1.03,1.03.03,1.03.03.05,1.03.03.05.20,1.03.03.05.20,ScL Design L4 Linac,AS_ScL_L4_5020,Develop Prelim. Design - L4 Linac,40.0,102.0,102.0,102.0,10-31-22,01-10-23,"AS_ScL_L4_5010: FS, AS_ScL_L34_5060: FS","AS_ScL_L4_5030: FS, AS_ScL_L3B_5010: FS",SLAC,0%,52168.52168_METS - Mechanical Design,52168_METS - Mechanical Design,Labor,0.0d,40.0,40.0,At Completion Units,1/5/2022,2/24/2022,0,0,0,0,0,0,0,0,0,0,1.03_Accelerator Systems (AS),1.03.03_AS Superconducting Linac System (ScL),1.03.03.05_AS Superconducting Linac System Engineering and Design,1.03.03.05.20_ScL Design L4 Linac,AS_ScL_L4_5020_Develop Prelim. Design - L4 Linac,Mechanical,,SLAC,Labor
70438,1.03,1.03.03,1.03.03.05,1.03.03.05.20,1.03.03.05.20,ScL Design L4 Linac,AS_ScL_L4_5020,Develop Prelim. Design - L4 Linac,40.0,238.0,238.0,238.0,10-31-22,01-10-23,"AS_ScL_L4_5010: FS, AS_ScL_L34_5060: FS","AS_ScL_L4_5030: FS, AS_ScL_L3B_5010: FS",SLAC,0%,52169.52169_METS Mechanical Engineer,52169_METS Mechanical Engineer,Labor,0.0d,40.0,40.0,At Completion Units,1/5/2022,2/24/2022,0,0,0,0,0,0,0,0,0,0,1.03_Accelerator Systems (AS),1.03.03_AS Superconducting Linac System (ScL),1.03.03.05_AS Superconducting Linac System Engineering and Design,1.03.03.05.20_ScL Design L4 Linac,AS_ScL_L4_5020_Develop Prelim. Design - L4 Linac,Mechanical,,SLAC,Labor
70758,1.03,1.03.03,1.03.03.05,1.03.03.05.30,1.03.03.05.30,ScL Design L4E & DogLeg,AS_ScL_L4EDG_5020,Develop Prelim. Design - L4E & Dogleg,55.0,406.0,246.5,290.0,03-02-2021,03-31-22,"AS_ScL_L3B_5000: FF, AS_ScL_L34_5000: FF, AS_ScL_L4_5000: FF, AS_ScL_L4EDG_5000: FF, AS_ScL_L4EDG_5010: FS","AS_ScL_L34_5010: FS, AS_ScL_L4EDG_5030: FS",SLAC,15%,52169.52169_METS Mechanical Engineer,52169_METS Mechanical Engineer,Labor,150.0d,116.0,266.0,At Completion Units,10/4/2021,1/4/2022,0,0,0,0,0,0,0,0,0,0,1.03_Accelerator Systems (AS),1.03.03_AS Superconducting Linac System (ScL),1.03.03.05_AS Superconducting Linac System Engineering and Design,1.03.03.05.30_ScL Design L4E & DogLeg,AS_ScL_L4EDG_5020_Develop Prelim. Design - L4E & Dogleg,Mechanical,,SLAC,Labor
70759,1.03,1.03.03,1.03.03.05,1.03.03.05.30,1.03.03.05.30,ScL Design L4E & DogLeg,AS_ScL_L4EDG_5020,Develop Prelim. Design - L4E & Dogleg,55.0,174.0,246.5,290.0,03-02-2021,03-31-22,"AS_ScL_L3B_5000: FF, AS_ScL_L34_5000: FF, AS_ScL_L4_5000: FF, AS_ScL_L4EDG_5000: FF, AS_ScL_L4EDG_5010: FS","AS_ScL_L34_5010: FS, AS_ScL_L4EDG_5030: FS",SLAC,15%,52168.52168_METS - Mechanical Design,52168_METS - Mechanical Design,Labor,150.0d,116.0,266.0,At Completion Units,10/4/2021,1/4/2022,0,0,0,0,0,0,0,0,0,0,1.03_Accelerator Systems (AS),1.03.03_AS Superconducting Linac System (ScL),1.03.03.05_AS Superconducting Linac System Engineering and Design,1.03.03.05.30_ScL Design L4E & DogLeg,AS_ScL_L4EDG_5020_Develop Prelim. Design - L4E & Dogleg,Mechanical,,SLAC,Labor
70760,1.03,1.03.03,1.03.03.05,1.03.03.05.30,1.03.03.05.30,ScL Design L4E & DogLeg,AS_ScL_L4EDG_5000,Develop and Update Cost and Schedule - L4E & Dogleg,5.0,25.0,0.0,17.5,04-01-2021,09-01-2021,MS_FY_2021_Q3: FS,AS_ScL_L4EDG_5020: FF,SLAC,100%,52169.52169_METS Mechanical Engineer,52169_METS Mechanical Engineer,Labor,107.0d,0.0,107.0,At Completion Units,4/2/2021,7/30/2021,0,0,0,0,0,0,0,0,0,0,1.03_Accelerator Systems (AS),1.03.03_AS Superconducting Linac System (ScL),1.03.03.05_AS Superconducting Linac System Engineering and Design,1.03.03.05.30_ScL Design L4E & DogLeg,AS_ScL_L4EDG_5000_Develop and Update Cost and Schedule - L4E & Dogleg,Mechanical,,SLAC,Labor
70761,1.03,1.03.03,1.03.03.05,1.03.03.05.30,1.03.03.05.30,ScL Design L4E & DogLeg,AS_ScL_L4EDG_5000,Develop and Update Cost and Schedule - L4E & Dogleg,5.0,10.0,0.0,17.5,04-01-2021,09-01-2021,MS_FY_2021_Q3: FS,AS_ScL_L4EDG_5020: FF,SLAC,100%,52168.52168_METS - Mechanical Design,52168_METS - Mechanical Design,Labor,107.0d,0.0,107.0,At Completion Units,4/2/2021,7/30/2021,0,0,0,0,0,0,0,0,0,0,1.03_Accelerator Systems (AS),1.03.03_AS Superconducting Linac System (ScL),1.03.03.05_AS Superconducting Linac System Engineering and Design,1.03.03.05.30_ScL Design L4E & DogLeg,AS_ScL_L4EDG_5000_Develop and Update Cost and Schedule - L4E & Dogleg,Mechanical,,SLAC,Labor
70762,1.03,1.03.03,1.03.03.05,1.03.03.05.30,1.03.03.05.30,ScL Design L4E & DogLeg,AS_ScL_L4EDG_5100,Respond to Recommendations - FDR - L4E & Dogleg,10.0,12.0,12.0,12.0,07-28-22,08-10-22,AS_ScL_L4EDG_5090: FS,AS_ScL_L4EDG_5110: FS,SLAC,0%,52168.52168_METS - Mechanical Design,52168_METS - Mechanical Design,Labor,0.0d,10.0,10.0,At Completion Units,5/2/2022,5/6/2022,0,0,0,0,0,0,0,0,0,0,1.03_Accelerator Systems (AS),1.03.03_AS Superconducting Linac System (ScL),1.03.03.05_AS Superconducting Linac System Engineering and Design,1.03.03.05.30_ScL Design L4E & DogLeg,AS_ScL_L4EDG_5100_Respond to Recommendations - FDR - L4E & Dogleg,Mechanical,,SLAC,Labor
70763,1.03,1.03.03,1.03.03.05,1.03.03.05.30,1.03.03.05.30,ScL Design L4E & DogLeg,AS_ScL_L4EDG_5070,Develop Final Design - L4E & Dogleg,40.0,144.0,144.0,144.0,05-02-22,06-27-22,AS_ScL_L4EDG_5060: FS,AS_ScL_L4EDG_5080: FS,SLAC,0%,52168.52168_METS - Mechanical Design,52168_METS - Mechanical Design,Labor,0.0d,40.0,40.0,At Completion Units,1/28/2022,3/25/2022,0,0,0,0,0,0,0,0,0,0,1.03_Accelerator Systems (AS),1.03.03_AS Superconducting Linac System (ScL),1.03.03.05_AS Superconducting Linac System Engineering and Design,1.03.03.05.30_ScL Design L4E & DogLeg,AS_ScL_L4EDG_5070_Develop Final Design - L4E & Dogleg,Mechanical,,SLAC,Labor
70764,1.03,1.03.03,1.03.03.05,1.03.03.05.30,1.03.03.05.30,ScL Design L4E & DogLeg,AS_ScL_L4EDG_5050,Respond to Recommendations - PDR - Vacuum L4E & Dogleg,10.0,12.0,12.0,12.0,04-18-22,04-29-22,AS_ScL_L4EDG_5040: FS,AS_ScL_L4EDG_5060: FF,SLAC,0%,52168.52168_METS - Mechanical Design,52168_METS - Mechanical Design,Labor,0.0d,10.0,10.0,At Completion Units,1/21/2022,1/27/2022,0,0,0,0,0,0,0,0,0,0,1.03_Accelerator Systems (AS),1.03.03_AS Superconducting Linac System (ScL),1.03.03.05_AS Superconducting Linac System Engineering and Design,1.03.03.05.30_ScL Design L4E & DogLeg,AS_ScL_L4EDG_5050_Respond to Recommendations - PDR - Vacuum L4E & Dogleg,Mechanical,,SLAC,Labor
70765,1.03,1.03.03,1.03.03.05,1.03.03.05.30,1.03.03.05.30,ScL Design L4E & DogLeg,AS_ScL_L4EDG_5100,Respond to Recommendations - FDR - L4E & Dogleg,10.0,28.0,28.0,28.0,07-28-22,08-10-22,AS_ScL_L4EDG_5090: FS,AS_ScL_L4EDG_5110: FS,SLAC,0%,52169.52169_METS Mechanical Engineer,52169_METS Mechanical Engineer,Labor,0.0d,10.0,10.0,At Completion Units,5/2/2022,5/6/2022,0,0,0,0,0,0,0,0,0,0,1.03_Accelerator Systems (AS),1.03.03_AS Superconducting Linac System (ScL),1.03.03.05_AS Superconducting Linac System Engineering and Design,1.03.03.05.30_ScL Design L4E & DogLeg,AS_ScL_L4EDG_5100_Respond to Recommendations - FDR - L4E & Dogleg,Mechanical,,SLAC,Labor
70766,1.03,1.03.03,1.03.03.05,1.03.03.05.30,1.03.03.05.30,ScL Design L4E & DogLeg,AS_ScL_L4EDG_5090,R_FDR: Final Design Review - L4E & Dogleg,1.0,14.0,14.0,14.0,07-27-22,07-27-22,AS_ScL_L4EDG_5080: FS,"AS_ScL_L4EDG_5100: FS, AS_DES_1050: FS, AS_M4_3060: FS, AS_M4_3090: FS",SLAC,0%,52168.52168_METS - Mechanical Design,52168_METS - Mechanical Design,Labor,0.0d,1.0,1.0,At Completion Units,4/29/2022,4/29/2022,DM-A06-30%,0,0,0,0,0,0,0,0,0,1.03_Accelerator Systems (AS),1.03.03_AS Superconducting Linac System (ScL),1.03.03.05_AS Superconducting Linac System Engineering and Design,1.03.03.05.30_ScL Design L4E & DogLeg,AS_ScL_L4EDG_5090_R_FDR: Final Design Review - L4E & Dogleg,Mechanical,,SLAC,Labor
70767,1.03,1.03.03,1.03.03.05,1.03.03.05.30,1.03.03.05.30,ScL Design L4E & DogLeg,AS_ScL_L4EDG_5090,R_FDR: Final Design Review - L4E & Dogleg,1.0,34.0,34.0,34.0,07-27-22,07-27-22,AS_ScL_L4EDG_5080: FS,"AS_ScL_L4EDG_5100: FS, AS_DES_1050: FS, AS_M4_3060: FS, AS_M4_3090: FS",SLAC,0%,52169.52169_METS Mechanical Engineer,52169_METS Mechanical Engineer,Labor,0.0d,1.0,1.0,At Completion Units,4/29/2022,4/29/2022,DM-A06-30%,0,0,0,0,0,0,0,0,0,1.03_Accelerator Systems (AS),1.03.03_AS Superconducting Linac System (ScL),1.03.03.05_AS Superconducting Linac System Engineering and Design,1.03.03.05.30_ScL Design L4E & DogLeg,AS_ScL_L4EDG_5090_R_FDR: Final Design Review - L4E & Dogleg,Mechanical,,SLAC,Labor
70768,1.03,1.03.03,1.03.03.05,1.03.03.05.30,1.03.03.05.30,ScL Design L4E & DogLeg,AS_ScL_L4EDG_5080,Prepare Final Design Review - L4E & Dogleg,20.0,12.0,12.0,12.0,06-28-22,07-26-22,AS_ScL_L4EDG_5070: FS,AS_ScL_L4EDG_5090: FS,SLAC,0%,52168.52168_METS - Mechanical Design,52168_METS - Mechanical Design,Labor,0.0d,20.0,20.0,At Completion Units,3/28/2022,4/28/2022,0,0,0,0,0,0,0,0,0,0,1.03_Accelerator Systems (AS),1.03.03_AS Superconducting Linac System (ScL),1.03.03.05_AS Superconducting Linac System Engineering and Design,1.03.03.05.30_ScL Design L4E & DogLeg,AS_ScL_L4EDG_5080_Prepare Final Design Review - L4E & Dogleg,Mechanical,,SLAC,Labor
70769,1.03,1.03.03,1.03.03.05,1.03.03.05.30,1.03.03.05.30,ScL Design L4E & DogLeg,AS_ScL_L4EDG_5080,Prepare Final Design Review - L4E & Dogleg,20.0,28.0,28.0,28.0,06-28-22,07-26-22,AS_ScL_L4EDG_5070: FS,AS_ScL_L4EDG_5090: FS,SLAC,0%,52169.52169_METS Mechanical Engineer,52169_METS Mechanical Engineer,Labor,0.0d,20.0,20.0,At Completion Units,3/28/2022,4/28/2022,0,0,0,0,0,0,0,0,0,0,1.03_Accelerator Systems (AS),1.03.03_AS Superconducting Linac System (ScL),1.03.03.05_AS Superconducting Linac System Engineering and Design,1.03.03.05.30_ScL Design L4E & DogLeg,AS_ScL_L4EDG_5080_Prepare Final Design Review - L4E & Dogleg,Mechanical,,SLAC,Labor
70770,1.03,1.03.03,1.03.03.05,1.03.03.05.30,1.03.03.05.30,ScL Design L4E & DogLeg,AS_ScL_L4EDG_5070,Develop Final Design - L4E & Dogleg,40.0,336.0,336.0,336.0,05-02-22,06-27-22,AS_ScL_L4EDG_5060: FS,AS_ScL_L4EDG_5080: FS,SLAC,0%,52169.52169_METS Mechanical Engineer,52169_METS Mechanical Engineer,Labor,0.0d,40.0,40.0,At Completion Units,1/28/2022,3/25/2022,0,0,0,0,0,0,0,0,0,0,1.03_Accelerator Systems (AS),1.03.03_AS Superconducting Linac System (ScL),1.03.03.05_AS Superconducting Linac System Engineering and Design,1.03.03.05.30_ScL Design L4E & DogLeg,AS_ScL_L4EDG_5070_Develop Final Design - L4E & Dogleg,Mechanical,,SLAC,Labor
70771,1.03,1.03.03,1.03.03.05,1.03.03.05.30,1.03.03.05.30,ScL Design L4E & DogLeg,AS_ScL_L4EDG_5050,Respond to Recommendations - PDR - Vacuum L4E & Dogleg,10.0,28.0,28.0,28.0,04-18-22,04-29-22,AS_ScL_L4EDG_5040: FS,AS_ScL_L4EDG_5060: FF,SLAC,0%,52169.52169_METS Mechanical Engineer,52169_METS Mechanical Engineer,Labor,0.0d,10.0,10.0,At Completion Units,1/21/2022,1/27/2022,0,0,0,0,0,0,0,0,0,0,1.03_Accelerator Systems (AS),1.03.03_AS Superconducting Linac System (ScL),1.03.03.05_AS Superconducting Linac System Engineering and Design,1.03.03.05.30_ScL Design L4E & DogLeg,AS_ScL_L4EDG_5050_Respond to Recommendations - PDR - Vacuum L4E & Dogleg,Mechanical,,SLAC,Labor
70772,1.03,1.03.03,1.03.03.05,1.03.03.05.30,1.03.03.05.30,ScL Design L4E & DogLeg,AS_ScL_L4EDG_5040,R_PDR: Prelim. Design Review - L4E & Dogleg,1.0,14.0,14.0,14.0,04-15-22,04-15-22,AS_ScL_L4EDG_5030: FS,"AS_ScL_L4EDG_5050: FS, AS_DES_1000: FS",SLAC,0%,52168.52168_METS - Mechanical Design,52168_METS - Mechanical Design,Labor,0.0d,1.0,1.0,At Completion Units,1/20/2022,1/20/2022,DM-A08-60%,0,0,0,0,0,0,0,0,0,1.03_Accelerator Systems (AS),1.03.03_AS Superconducting Linac System (ScL),1.03.03.05_AS Superconducting Linac System Engineering and Design,1.03.03.05.30_ScL Design L4E & DogLeg,AS_ScL_L4EDG_5040_R_PDR: Prelim. Design Review - L4E & Dogleg,Mechanical,,SLAC,Labor
70773,1.03,1.03.03,1.03.03.05,1.03.03.05.30,1.03.03.05.30,ScL Design L4E & DogLeg,AS_ScL_L4EDG_5040,R_PDR: Prelim. Design Review - L4E & Dogleg,1.0,34.0,34.0,34.0,04-15-22,04-15-22,AS_ScL_L4EDG_5030: FS,"AS_ScL_L4EDG_5050: FS, AS_DES_1000: FS",SLAC,0%,52169.52169_METS Mechanical Engineer,52169_METS Mechanical Engineer,Labor,0.0d,1.0,1.0,At Completion Units,1/20/2022,1/20/2022,DM-A08-60%,0,0,0,0,0,0,0,0,0,1.03_Accelerator Systems (AS),1.03.03_AS Superconducting Linac System (ScL),1.03.03.05_AS Superconducting Linac System Engineering and Design,1.03.03.05.30_ScL Design L4E & DogLeg,AS_ScL_L4EDG_5040_R_PDR: Prelim. Design Review - L4E & Dogleg,Mechanical,,SLAC,Labor
70774,1.03,1.03.03,1.03.03.05,1.03.03.05.30,1.03.03.05.30,ScL Design L4E & DogLeg,AS_ScL_L4EDG_5030,Prepare Prelim. Design Review - L4E & Dogleg,10.0,12.0,12.0,12.0,04-01-22,04-14-22,AS_ScL_L4EDG_5020: FS,AS_ScL_L4EDG_5040: FS,SLAC,0%,52168.52168_METS - Mechanical Design,52168_METS - Mechanical Design,Labor,0.0d,10.0,10.0,At Completion Units,1/5/2022,1/19/2022,0,0,0,0,0,0,0,0,0,0,1.03_Accelerator Systems (AS),1.03.03_AS Superconducting Linac System (ScL),1.03.03.05_AS Superconducting Linac System Engineering and Design,1.03.03.05.30_ScL Design L4E & DogLeg,AS_ScL_L4EDG_5030_Prepare Prelim. Design Review - L4E & Dogleg,Mechanical,,SLAC,Labor
70775,1.03,1.03.03,1.03.03.05,1.03.03.05.30,1.03.03.05.30,ScL Design L4E & DogLeg,AS_ScL_L4EDG_5030,Prepare Prelim. Design Review - L4E & Dogleg,10.0,28.0,28.0,28.0,04-01-22,04-14-22,AS_ScL_L4EDG_5020: FS,AS_ScL_L4EDG_5040: FS,SLAC,0%,52169.52169_METS Mechanical Engineer,52169_METS Mechanical Engineer,Labor,0.0d,10.0,10.0,At Completion Units,1/5/2022,1/19/2022,0,0,0,0,0,0,0,0,0,0,1.03_Accelerator Systems (AS),1.03.03_AS Superconducting Linac System (ScL),1.03.03.05_AS Superconducting Linac System Engineering and Design,1.03.03.05.30_ScL Design L4E & DogLeg,AS_ScL_L4EDG_5030_Prepare Prelim. Design Review - L4E & Dogleg,Mechanical,,SLAC,Labor
71095,1.03,1.03.03,1.03.03.05,1.03.03.05.51,1.03.03.05.51,HPRF - Overall Design,AS_HPRF_LYT_5010,Prepare Layout - Overall Design HPRF,33.0,240.0,174.0,174.0,02-01-2021,11-30-21,MS_FY_2021_Q2: FS,"AS_HPRF_LYT_5020: FS, AS_HPRF_CAP_5020: SS, AS_HPRF_WAV_5010: FS, AS_HPRF_LYT_5030: SS",SLAC,0%,52169.52169_METS Mechanical Engineer,52169_METS Mechanical Engineer,Labor,170.0d,41.0,211.0,At Completion Units,1/5/2021,10/1/2021,0,0,0,0,0,0,0,0,0,0,1.03_Accelerator Systems (AS),1.03.03_AS Superconducting Linac System (ScL),1.03.03.05_AS Superconducting Linac System Engineering and Design,1.03.03.05.51_HPRF - Overall Design,AS_HPRF_LYT_5010_Prepare Layout - Overall Design HPRF,Mechanical,,SLAC,Labor
71096,1.03,1.03.03,1.03.03.05,1.03.03.05.51,1.03.03.05.51,HPRF - Overall Design,AS_HPRF_LYT_5010,Prepare Layout - Overall Design HPRF,33.0,360.0,276.0,426.0,02-01-2021,11-30-21,MS_FY_2021_Q2: FS,"AS_HPRF_LYT_5020: FS, AS_HPRF_CAP_5020: SS, AS_HPRF_WAV_5010: FS, AS_HPRF_LYT_5030: SS",SLAC,35.21%,52178.52178_RF Vacuum Tube Fab,52178_RF Vacuum Tube Fab,Labor,170.0d,41.0,211.0,At Completion Units,1/5/2021,10/1/2021,0,0,0,0,0,0,0,0,0,0,1.03_Accelerator Systems (AS),1.03.03_AS Superconducting Linac System (ScL),1.03.03.05_AS Superconducting Linac System Engineering and Design,1.03.03.05.51_HPRF - Overall Design,AS_HPRF_LYT_5010_Prepare Layout - Overall Design HPRF,RF Fab,,SLAC,Labor
71097,1.03,1.03.03,1.03.03.05,1.03.03.05.51,1.03.03.05.51,HPRF - Overall Design,AS_HPRF_LYT_5040,Prepare Estimate and BOE - HPRF,40.0,160.0,0.0,160.0,01-04-2021,09-01-2021,"AS_HPRF_LYT_5030: FF, MS_FY_2021_Q2: FS",AS_HPRF_CAP_6130: FS,SLAC,100%,52178.52178_RF Vacuum Tube Fab,52178_RF Vacuum Tube Fab,Labor,169.0d,0.0,169.0,At Completion Units,1/5/2021,9/27/2021,0,0,0,0,0,0,0,0,0,0,1.03_Accelerator Systems (AS),1.03.03_AS Superconducting Linac System (ScL),1.03.03.05_AS Superconducting Linac System Engineering and Design,1.03.03.05.51_HPRF - Overall Design,AS_HPRF_LYT_5040_Prepare Estimate and BOE - HPRF,RF Fab,,SLAC,Labor
71098,1.03,1.03.03,1.03.03.05,1.03.03.05.51,1.03.03.05.51,HPRF - Overall Design,AS_HPRF_LYT_5030,Prepare Room Data Sheet - Overall Design HPRF,40.0,160.0,0.0,160.0,04-01-2021,09-01-2021,AS_HPRF_LYT_5010: SS,AS_HPRF_LYT_5040: FF,SLAC,100%,52178.52178_RF Vacuum Tube Fab,52178_RF Vacuum Tube Fab,Labor,107.0d,0.0,107.0,At Completion Units,1/5/2021,9/27/2021,0,0,0,0,0,0,0,0,0,0,1.03_Accelerator Systems (AS),1.03.03_AS Superconducting Linac System (ScL),1.03.03.05_AS Superconducting Linac System Engineering and Design,1.03.03.05.51_HPRF - Overall Design,AS_HPRF_LYT_5030_Prepare Room Data Sheet - Overall Design HPRF,RF Fab,,SLAC,Labor
71099,1.03,1.03.03,1.03.03.05,1.03.03.05.51,1.03.03.05.51,HPRF - Overall Design,AS_HPRF_LYT_5020,Prepare General Arrangement Drawings - Overall Design HPRF,90.0,300.0,300.0,300.0,12-01-21,04-21-22,AS_HPRF_LYT_5010: FS,AS_HPRF_WAV_5110: FS,SLAC,0%,52178.52178_RF Vacuum Tube Fab,52178_RF Vacuum Tube Fab,Labor,0.0d,90.0,90.0,At Completion Units,10/4/2021,12/14/2021,0,0,0,0,0,0,0,0,0,0,1.03_Accelerator Systems (AS),1.03.03_AS Superconducting Linac System (ScL),1.03.03.05_AS Superconducting Linac System Engineering and Design,1.03.03.05.51_HPRF - Overall Design,AS_HPRF_LYT_5020_Prepare General Arrangement Drawings - Overall Design HPRF,RF Fab,,SLAC,Labor
71419,1.03,1.03.03,1.03.03.05,1.03.03.05.60,1.03.03.05.60,HPRF - Solid State Amplifiers Design,AS_HPRF_SSA_5005,Develop SLAC Test Strategy,40.0,40.0,40.0,40.0,12-02-21,02-10-22,AS_HPRF_SSA_5420: FS,AS_HPRF_SSA_5010: FS,SLAC,0%,52178.52178_RF Vacuum Tube Fab,52178_RF Vacuum Tube Fab,Labor,0.0d,40.0,40.0,At Completion Units,10/4/2021,11/30/2021,0,0,0,0,0,0,0,0,0,0,1.03_Accelerator Systems (AS),1.03.03_AS Superconducting Linac System (ScL),1.03.03.05_AS Superconducting Linac System Engineering and Design,1.03.03.05.60_HPRF - Solid State Amplifiers Design,AS_HPRF_SSA_5005_Develop SLAC Test Strategy,RF Fab,,SLAC,Labor
71420,1.03,1.03.03,1.03.03.05,1.03.03.05.60,1.03.03.05.60,HPRF - Solid State Amplifiers Design,AS_HPRF_SSA_5030,Request for Information - SSA following 1st Article,20.0,40.0,40.0,40.0,04-11-22,05-06-22,AS_HPRF_SSA_5020: FS,AS_HPRF_SSA_6010: FS,SLAC,0%,52178.52178_RF Vacuum Tube Fab,52178_RF Vacuum Tube Fab,Labor,0.0d,20.0,20.0,At Completion Units,2/10/2022,3/10/2022,0,0,0,0,0,0,0,0,0,0,1.03_Accelerator Systems (AS),1.03.03_AS Superconducting Linac System (ScL),1.03.03.05_AS Superconducting Linac System Engineering and Design,1.03.03.05.60_HPRF - Solid State Amplifiers Design,AS_HPRF_SSA_5030_Request for Information - SSA following 1st Article,RF Fab,,SLAC,Labor
71421,1.03,1.03.03,1.03.03.05,1.03.03.05.60,1.03.03.05.60,HPRF - Solid State Amplifiers Design,AS_HPRF_SSA_5020,Update SOW SSA following 1st Article,20.0,40.0,40.0,40.0,03-14-22,04-08-22,AS_HPRF_SSA_5010: FS,AS_HPRF_SSA_5030: FS,SLAC,0%,52178.52178_RF Vacuum Tube Fab,52178_RF Vacuum Tube Fab,Labor,0.0d,20.0,20.0,At Completion Units,1/12/2022,2/9/2022,0,0,0,0,0,0,0,0,0,0,1.03_Accelerator Systems (AS),1.03.03_AS Superconducting Linac System (ScL),1.03.03.05_AS Superconducting Linac System Engineering and Design,1.03.03.05.60_HPRF - Solid State Amplifiers Design,AS_HPRF_SSA_5020_Update SOW SSA following 1st Article,RF Fab,,SLAC,Labor
71422,1.03,1.03.03,1.03.03.05,1.03.03.05.60,1.03.03.05.60,HPRF - Solid State Amplifiers Design,AS_HPRF_SSA_5010,Update ESD SSA following 1st Article,20.0,40.0,40.0,40.0,02-11-22,03-11-22,"AS_HPRF_SSA_5005: FS, AS_HPRF_SSA_5480: FS","AS_HPRF_WAV_5180: FS, AS_HPRF_SSA_5020: FS, AS_HPRF_SSA_5050: FS",SLAC,0%,52178.52178_RF Vacuum Tube Fab,52178_RF Vacuum Tube Fab,Labor,0.0d,20.0,20.0,At Completion Units,12/1/2021,1/11/2022,0,0,0,0,0,0,0,0,0,0,1.03_Accelerator Systems (AS),1.03.03_AS Superconducting Linac System (ScL),1.03.03.05_AS Superconducting Linac System Engineering and Design,1.03.03.05.60_HPRF - Solid State Amplifiers Design,AS_HPRF_SSA_5010_Update ESD SSA following 1st Article,RF Fab,,SLAC,Labor
71742,1.03,1.03.03,1.03.03.05,1.03.03.05.65,1.03.03.05.65,HPRF - Penetration and Shield Caps,AS_HPRF_CAP_5010,Prepare Shielding Design of the Waveguide Penetrations,5.0,270.0,0.0,192.5,02-01-2021,05-26-2021,MS_FY_2021_Q2: FS,"AS_HPRF_CAP_5020: FS, AS_HPRF_WAV_5030: FS",SLAC,100%,52169.52169_METS Mechanical Engineer,52169_METS Mechanical Engineer,Labor,81.0d,0.0,81.0,At Completion Units,1/5/2021,5/26/2021,0,0,0,0,0,0,0,0,0,0,1.03_Accelerator Systems (AS),1.03.03_AS Superconducting Linac System (ScL),1.03.03.05_AS Superconducting Linac System Engineering and Design,1.03.03.05.65_HPRF - Penetration and Shield Caps,AS_HPRF_CAP_5010_Prepare Shielding Design of the Waveguide Penetrations,Mechanical,,SLAC,Labor
71743,1.03,1.03.03,1.03.03.05,1.03.03.05.65,1.03.03.05.65,HPRF - Penetration and Shield Caps,AS_HPRF_CAP_5010,Prepare Shielding Design of the Waveguide Penetrations,5.0,115.0,0.0,192.5,02-01-2021,05-26-2021,MS_FY_2021_Q2: FS,"AS_HPRF_CAP_5020: FS, AS_HPRF_WAV_5030: FS",SLAC,100%,52168.52168_METS - Mechanical Design,52168_METS - Mechanical Design,Labor,81.0d,0.0,81.0,At Completion Units,1/5/2021,5/26/2021,0,0,0,0,0,0,0,0,0,0,1.03_Accelerator Systems (AS),1.03.03_AS Superconducting Linac System (ScL),1.03.03.05_AS Superconducting Linac System Engineering and Design,1.03.03.05.65_HPRF - Penetration and Shield Caps,AS_HPRF_CAP_5010_Prepare Shielding Design of the Waveguide Penetrations,Mechanical,,SLAC,Labor
71744,1.03,1.03.03,1.03.03.05,1.03.03.05.65,1.03.03.05.65,HPRF - Penetration and Shield Caps,AS_HPRF_CAP_5020,Perform Survey Existing Penetration,2.5,20.0,0.0,100.0,06-15-2021,09-01-2021,"AS_HPRF_LYT_5010: SS, AS_HPRF_CAP_5010: FS, MS_FY_2021_Q3: FS",AS_HPRF_WAV_5170: FF,SLAC,100%,52178.52178_RF Vacuum Tube Fab,52178_RF Vacuum Tube Fab,Labor,55.0d,0.0,55.0,At Completion Units,5/27/2021,7/15/2021,0,0,0,0,0,0,0,0,0,0,1.03_Accelerator Systems (AS),1.03.03_AS Superconducting Linac System (ScL),1.03.03.05_AS Superconducting Linac System Engineering and Design,1.03.03.05.65_HPRF - Penetration and Shield Caps,AS_HPRF_CAP_5020_Perform Survey Existing Penetration,RF Fab,,SLAC,Labor
71745,1.03,1.03.03,1.03.03.05,1.03.03.05.65,1.03.03.05.65,HPRF - Penetration and Shield Caps,AS_HPRF_CAP_5020,Perform Survey Existing Penetration,71.4,180.0,0.0,100.0,06-15-2021,09-01-2021,"AS_HPRF_LYT_5010: SS, AS_HPRF_CAP_5010: FS, MS_FY_2021_Q3: FS",AS_HPRF_WAV_5170: FF,SLAC,100%,52191.52191_METSMET Metrology,52191_METSMET Metrology,Labor,55.0d,0.0,55.0,At Completion Units,5/27/2021,7/15/2021,0,0,0,0,0,0,0,0,0,0,1.03_Accelerator Systems (AS),1.03.03_AS Superconducting Linac System (ScL),1.03.03.05_AS Superconducting Linac System Engineering and Design,1.03.03.05.65_HPRF - Penetration and Shield Caps,AS_HPRF_CAP_5020_Perform Survey Existing Penetration,Metrology,,SLAC,Labor
72065,1.03,1.03.03,1.03.03.05,1.03.03.05.67,1.03.03.05.67,HPRF - Frames and Structure,AS_HPRF_ST_5040,Prepare ESD Specification - NIRP Brackets & Supports - Frames and Structure,5.0,40.0,40.0,40.0,12-05-22,12-09-22,AS_HPRF_ST_5030: FS,AS_HPRF_WAV_5210: FS,SLAC,0%,52178.52178_RF Vacuum Tube Fab,52178_RF Vacuum Tube Fab,Labor,0.0d,5.0,5.0,At Completion Units,1/10/2022,1/14/2022,0,0,0,0,0,0,0,0,0,0,1.03_Accelerator Systems (AS),1.03.03_AS Superconducting Linac System (ScL),1.03.03.05_AS Superconducting Linac System Engineering and Design,1.03.03.05.67_HPRF - Frames and Structure,AS_HPRF_ST_5040_Prepare ESD Specification - NIRP Brackets & Supports - Frames and Structure,RF Fab,,SLAC,Labor
72066,1.03,1.03.03,1.03.03.05,1.03.03.05.67,1.03.03.05.67,HPRF - Frames and Structure,AS_HPRF_ST_5030,Prepare ESD Specification - NIRP Unistrut Frames - Frames and Structure,5.0,40.0,40.0,40.0,11-28-22,12-02-22,AS_HPRF_ST_5020: FS,AS_HPRF_ST_5040: FS,SLAC,0%,52178.52178_RF Vacuum Tube Fab,52178_RF Vacuum Tube Fab,Labor,0.0d,5.0,5.0,At Completion Units,1/3/2022,1/7/2022,0,0,0,0,0,0,0,0,0,0,1.03_Accelerator Systems (AS),1.03.03_AS Superconducting Linac System (ScL),1.03.03.05_AS Superconducting Linac System Engineering and Design,1.03.03.05.67_HPRF - Frames and Structure,AS_HPRF_ST_5030_Prepare ESD Specification - NIRP Unistrut Frames - Frames and Structure,RF Fab,,SLAC,Labor
72067,1.03,1.03.03,1.03.03.05,1.03.03.05.67,1.03.03.05.67,HPRF - Frames and Structure,AS_HPRF_ST_5020,Prepare ESD Housing Ceiling - Brackets & Supports - Frames and Structure,40.0,80.0,80.0,80.0,09-29-22,11-23-22,AS_HPRF_ST_5010: FS,AS_HPRF_ST_5030: FS,SLAC,0%,52178.52178_RF Vacuum Tube Fab,52178_RF Vacuum Tube Fab,Labor,0.0d,40.0,40.0,At Completion Units,12/6/2021,12/17/2021,0,0,0,0,0,0,0,0,0,0,1.03_Accelerator Systems (AS),1.03.03_AS Superconducting Linac System (ScL),1.03.03.05_AS Superconducting Linac System Engineering and Design,1.03.03.05.67_HPRF - Frames and Structure,AS_HPRF_ST_5020_Prepare ESD Housing Ceiling - Brackets & Supports - Frames and Structure,RF Fab,,SLAC,Labor
72068,1.03,1.03.03,1.03.03.05,1.03.03.05.67,1.03.03.05.67,HPRF - Frames and Structure,AS_HPRF_ST_5010,Prepare ESD Gallery Brackets & Supports + Bottom Cover - Frames and Structure,20.0,160.0,160.0,160.0,08-31-22,09-28-22,AS_HPRF_NP_5010: FS,"AS_HPRF_ST_5020: FS, AS_HPRF_INS_5010: FS",SLAC,0%,52178.52178_RF Vacuum Tube Fab,52178_RF Vacuum Tube Fab,Labor,0.0d,20.0,20.0,At Completion Units,11/4/2021,12/3/2021,0,0,0,0,0,0,0,0,0,0,1.03_Accelerator Systems (AS),1.03.03_AS Superconducting Linac System (ScL),1.03.03.05_AS Superconducting Linac System Engineering and Design,1.03.03.05.67_HPRF - Frames and Structure,AS_HPRF_ST_5010_Prepare ESD Gallery Brackets & Supports + Bottom Cover - Frames and Structure,RF Fab,,SLAC,Labor
72388,1.03,1.03.03,1.03.03.05,1.03.03.05.70,1.03.03.05.70,HPRF - Waveguide - Design,AS_HPRF_WAV_5030,Develop Penetration Waveguide Specification,4.0,40.0,20.0,40.0,09-27-2021,11-03-21,AS_HPRF_CAP_5010: FS,"AS_HPRF_WAV_5060: FS, AS_HPRF_WAV_5035: FS",SLAC,50%,52178.52178_RF Vacuum Tube Fab,52178_RF Vacuum Tube Fab,Labor,4.0d,24.0,28.0,At Completion Units,11/1/2021,11/30/2021,0,0,0,0,0,0,0,0,0,0,1.03_Accelerator Systems (AS),1.03.03_AS Superconducting Linac System (ScL),1.03.03.05_AS Superconducting Linac System Engineering and Design,1.03.03.05.70_HPRF - Waveguide - Design,AS_HPRF_WAV_5030_Develop Penetration Waveguide Specification,RF Fab,,SLAC,Labor
72389,1.03,1.03.03,1.03.03.05,1.03.03.05.70,1.03.03.05.70,HPRF - Waveguide - Design,AS_HPRF_ISL_5000,R_EPR - ScL HPRF Isolators,2.0,8.0,8.0,8.0,12-06-21,12-07-21,"AS_HPRF_SSA_5420: FS, AS_HPRF_SSA_5040: FS",AS_HPRF_ISL_5010: FS,SLAC,0%,52178.52178_RF Vacuum Tube Fab,52178_RF Vacuum Tube Fab,Labor,0.0d,2.0,2.0,At Completion Units,nn,,DM-B05-5%,0,0,0,0,0,0,0,0,0,1.03_Accelerator Systems (AS),1.03.03_AS Superconducting Linac System (ScL),1.03.03.05_AS Superconducting Linac System Engineering and Design,1.03.03.05.70_HPRF - Waveguide - Design,AS_HPRF_ISL_5000_R_EPR - ScL HPRF Isolators,RF Fab,,SLAC,Labor
72390,1.03,1.03.03,1.03.03.05,1.03.03.05.70,1.03.03.05.70,HPRF - Waveguide - Design,AS_HPRF_ISL_5020,Close-Out - ScL HPRF Isolators,10.0,8.0,8.0,8.0,12-17-21,01-14-22,AS_HPRF_ISL_5010: FS,AS_HPRF_WAV_5140: FS,SLAC,0%,52178.52178_RF Vacuum Tube Fab,52178_RF Vacuum Tube Fab,Labor,0.0d,10.0,10.0,At Completion Units,nn,,DM-B06-10%,0,0,0,0,0,0,0,0,0,1.03_Accelerator Systems (AS),1.03.03_AS Superconducting Linac System (ScL),1.03.03.05_AS Superconducting Linac System Engineering and Design,1.03.03.05.70_HPRF - Waveguide - Design,AS_HPRF_ISL_5020_Close-Out - ScL HPRF Isolators,RF Fab,,SLAC,Labor
72391,1.03,1.03.03,1.03.03.05,1.03.03.05.70,1.03.03.05.70,HPRF - Waveguide - Design,AS_HPRF_WAV_5055,Close-Out - Scl HPRF Waveguides,10.0,10.0,10.0,10.0,05-10-22,05-23-22,"AS_HPRF_WAV_5040: FS, AS_HPRF_WAV_5050: FS",AS_HPRF_WAV_5140: FS,SLAC,0%,52178.52178_RF Vacuum Tube Fab,52178_RF Vacuum Tube Fab,Labor,0.0d,10.0,10.0,At Completion Units,nn,,DM-B06-10%,0,0,0,0,0,0,0,0,0,1.03_Accelerator Systems (AS),1.03.03_AS Superconducting Linac System (ScL),1.03.03.05_AS Superconducting Linac System Engineering and Design,1.03.03.05.70_HPRF - Waveguide - Design,AS_HPRF_WAV_5055_Close-Out - Scl HPRF Waveguides,RF Fab,,SLAC,Labor
72392,1.03,1.03.03,1.03.03.05,1.03.03.05.70,1.03.03.05.70,HPRF - Waveguide - Design,AS_HPRF_WAV_5300,HPRF Integrated Model Coordination Effort,60.0,600.0,600.0,600.0,08-31-22,11-23-22,"AS_HPRF_NP_5010: FS, AS_HPRF_WAV_5050: FS, AS_HPRF_WAV_5090: FS",AS_HPRF_WAV_5210: FS,SLAC,0%,52178.52178_RF Vacuum Tube Fab,52178_RF Vacuum Tube Fab,Labor,0.0d,60.0,60.0,At Completion Units,nn,,0,0,0,0,0,0,0,0,0,0,1.03_Accelerator Systems (AS),1.03.03_AS Superconducting Linac System (ScL),1.03.03.05_AS Superconducting Linac System Engineering and Design,1.03.03.05.70_HPRF - Waveguide - Design,AS_HPRF_WAV_5300_HPRF Integrated Model Coordination Effort,RF Fab,,SLAC,Labor
72393,1.03,1.03.03,1.03.03.05,1.03.03.05.70,1.03.03.05.70,HPRF - Waveguide - Design,AS_HPRF_SSA_5040,R_EPR - ScL Solid-State Amplifier,2.0,8.0,8.0,8.0,12-02-21,12-03-21,AS_HPRF_SSA_5420: FS,"AS_HPRF_SSA_5050: FS, AS_HPRF_ISL_5000: FS",SLAC,0%,52178.52178_RF Vacuum Tube Fab,52178_RF Vacuum Tube Fab,Labor,0.0d,2.0,2.0,At Completion Units,nn,,DM-B05-5%,0,0,0,0,0,0,0,0,0,1.03_Accelerator Systems (AS),1.03.03_AS Superconducting Linac System (ScL),1.03.03.05_AS Superconducting Linac System Engineering and Design,1.03.03.05.70_HPRF - Waveguide - Design,AS_HPRF_SSA_5040_R_EPR - ScL Solid-State Amplifier,RF Fab,,SLAC,Labor
72394,1.03,1.03.03,1.03.03.05,1.03.03.05.70,1.03.03.05.70,HPRF - Waveguide - Design,AS_HPRF_SSA_5050,Close-Out - ScL Solid-State Amplifier,10.0,8.0,8.0,8.0,03-14-22,03-25-22,"AS_HPRF_SSA_5040: FS, AS_HPRF_SSA_5010: FS",AS_HPRF_WAV_5140: FS,SLAC,0%,52178.52178_RF Vacuum Tube Fab,52178_RF Vacuum Tube Fab,Labor,0.0d,10.0,10.0,At Completion Units,nn,,DM-B06-10%,0,0,0,0,0,0,0,0,0,1.03_Accelerator Systems (AS),1.03.03_AS Superconducting Linac System (ScL),1.03.03.05_AS Superconducting Linac System Engineering and Design,1.03.03.05.70_HPRF - Waveguide - Design,AS_HPRF_SSA_5050_Close-Out - ScL Solid-State Amplifier,RF Fab,,SLAC,Labor
72395,1.03,1.03.03,1.03.03.05,1.03.03.05.70,1.03.03.05.70,HPRF - Waveguide - Design,AS_HPRF_WAV_5035,R_EPR - Scl HPRF Waveguides,2.0,8.0,8.0,8.0,02-10-22,02-11-22,"AS_HPRF_WAV_5010: FS, AS_HPRF_WAV_5030: FS","AS_HPRF_WAV_5040: FS, AS_HPRF_WAV_5050: FS",SLAC,0%,52178.52178_RF Vacuum Tube Fab,52178_RF Vacuum Tube Fab,Labor,0.0d,2.0,2.0,At Completion Units,nn,,DM-B05-5%,0,0,0,0,0,0,0,0,0,1.03_Accelerator Systems (AS),1.03.03_AS Superconducting Linac System (ScL),1.03.03.05_AS Superconducting Linac System Engineering and Design,1.03.03.05.70_HPRF - Waveguide - Design,AS_HPRF_WAV_5035_R_EPR - Scl HPRF Waveguides,RF Fab,,SLAC,Labor
72396,1.03,1.03.03,1.03.03.05,1.03.03.05.70,1.03.03.05.70,HPRF - Waveguide - Design,AS_HPRF_WAV_5020,Develop Caps Specification,10.0,20.0,20.0,20.0,02-10-22,02-24-22,AS_HPRF_WAV_5010: FS,AS_HPRF_WAV_5040: FF,SLAC,0%,52178.52178_RF Vacuum Tube Fab,52178_RF Vacuum Tube Fab,Labor,0.0d,10.0,10.0,At Completion Units,11/1/2021,11/12/2021,0,0,0,0,0,0,0,0,0,0,1.03_Accelerator Systems (AS),1.03.03_AS Superconducting Linac System (ScL),1.03.03.05_AS Superconducting Linac System Engineering and Design,1.03.03.05.70_HPRF - Waveguide - Design,AS_HPRF_WAV_5020_Develop Caps Specification,RF Fab,,SLAC,Labor
72397,1.03,1.03.03,1.03.03.05,1.03.03.05.70,1.03.03.05.70,HPRF - Waveguide - Design,AS_HPRF_WAV_5080,Develop Klystron Gallery ID Drawings - Waveguide,10.0,30.0,30.0,30.0,02-10-22,02-24-22,AS_HPRF_WAV_5010: FS,AS_HPRF_WAV_5090: FF,SLAC,0%,52178.52178_RF Vacuum Tube Fab,52178_RF Vacuum Tube Fab,Labor,0.0d,10.0,10.0,At Completion Units,11/1/2021,11/12/2021,0,0,0,0,0,0,0,0,0,0,1.03_Accelerator Systems (AS),1.03.03_AS Superconducting Linac System (ScL),1.03.03.05_AS Superconducting Linac System Engineering and Design,1.03.03.05.70_HPRF - Waveguide - Design,AS_HPRF_WAV_5080_Develop Klystron Gallery ID Drawings - Waveguide,RF Fab,,SLAC,Labor
72398,1.03,1.03.03,1.03.03.05,1.03.03.05.70,1.03.03.05.70,HPRF - Waveguide - Design,AS_HPRF_WAV_5060,"Develop Components (Bend, jogs, flex, purge spacers, gaskets, connectors) Specification - Waveguide",40.0,200.0,200.0,200.0,11-04-21,01-14-22,AS_HPRF_WAV_5030: FS,AS_HPRF_WAV_5070: FF,SLAC,0%,52178.52178_RF Vacuum Tube Fab,52178_RF Vacuum Tube Fab,Labor,0.0d,40.0,40.0,At Completion Units,1/12/2022,2/9/2022,0,0,0,0,0,0,0,0,0,0,1.03_Accelerator Systems (AS),1.03.03_AS Superconducting Linac System (ScL),1.03.03.05_AS Superconducting Linac System Engineering and Design,1.03.03.05.70_HPRF - Waveguide - Design,"AS_HPRF_WAV_5060_Develop Components (Bend, jogs, flex, purge spacers, gaskets, connectors) Specification - Waveguide",RF Fab,,SLAC,Labor
72399,1.03,1.03.03,1.03.03.05,1.03.03.05.70,1.03.03.05.70,HPRF - Waveguide - Design,AS_HPRF_NP_5010,Prepare ESD Specification - NIRP System,4.0,150.0,150.0,150.0,08-25-22,08-30-22,"AS_HPRF_SSA_5440: FS, AS_HPRF_WAV_5090: FS","AS_HPRF_ST_5010: FS, AS_HPRF_WAV_5300: FS",SLAC,0%,52178.52178_RF Vacuum Tube Fab,52178_RF Vacuum Tube Fab,Labor,0.0d,4.0,4.0,At Completion Units,9/30/2021,11/3/2021,0,0,0,0,0,0,0,0,0,0,1.03_Accelerator Systems (AS),1.03.03_AS Superconducting Linac System (ScL),1.03.03.05_AS Superconducting Linac System Engineering and Design,1.03.03.05.70_HPRF - Waveguide - Design,AS_HPRF_NP_5010_Prepare ESD Specification - NIRP System,RF Fab,,SLAC,Labor
72400,1.03,1.03.03,1.03.03.05,1.03.03.05.70,1.03.03.05.70,HPRF - Waveguide - Design,AS_HPRF_WAV_5100,Develop Components Spools and Specific Parts Specification - Waveguide,10.0,140.0,140.0,140.0,01-18-22,01-31-22,AS_HPRF_WAV_5070: FS,AS_HPRF_WAV_5210: FS,SLAC,0%,52178.52178_RF Vacuum Tube Fab,52178_RF Vacuum Tube Fab,Labor,0.0d,10.0,10.0,At Completion Units,4/29/2022,5/12/2022,0,0,0,0,0,0,0,0,0,0,1.03_Accelerator Systems (AS),1.03.03_AS Superconducting Linac System (ScL),1.03.03.05_AS Superconducting Linac System Engineering and Design,1.03.03.05.70_HPRF - Waveguide - Design,AS_HPRF_WAV_5100_Develop Components Spools and Specific Parts Specification - Waveguide,RF Fab,,SLAC,Labor
72401,1.03,1.03.03,1.03.03.05,1.03.03.05.70,1.03.03.05.70,HPRF - Waveguide - Design,AS_HPRF_WAV_5090,Develop Housing Ceiling Waveguides ID Drawings - Waveguide,75.0,300.0,300.0,300.0,05-10-22,08-24-22,"AS_HPRF_WAV_5050: FS, AS_HPRF_WAV_5070: FF, AS_HPRF_WAV_5080: FF, AS_HPRF_WAV_5040: FF","AS_HPRF_NP_5010: FS, AS_HPRF_WAV_5300: FS, AS_HPRF_WAV_5210: FS",SLAC,0%,52178.52178_RF Vacuum Tube Fab,52178_RF Vacuum Tube Fab,Labor,0.0d,75.0,75.0,At Completion Units,1/12/2022,4/28/2022,0,0,0,0,0,0,0,0,0,0,1.03_Accelerator Systems (AS),1.03.03_AS Superconducting Linac System (ScL),1.03.03.05_AS Superconducting Linac System Engineering and Design,1.03.03.05.70_HPRF - Waveguide - Design,AS_HPRF_WAV_5090_Develop Housing Ceiling Waveguides ID Drawings - Waveguide,RF Fab,,SLAC,Labor
72402,1.03,1.03.03,1.03.03.05,1.03.03.05.70,1.03.03.05.70,HPRF - Waveguide - Design,AS_HPRF_WAV_5050,Develop Housing Ceiling Waveguides Layout - Waveguide,60.0,100.0,100.0,100.0,02-14-22,05-09-22,"AS_HPRF_WAV_5010: FS, AS_HPRF_WAV_5035: FS","AS_HPRF_WAV_5090: FS, AS_HPRF_WAV_5300: FS, AS_HPRF_WAV_5055: FS",SLAC,0%,52178.52178_RF Vacuum Tube Fab,52178_RF Vacuum Tube Fab,Labor,0.0d,60.0,60.0,At Completion Units,11/1/2021,1/11/2022,0,0,0,0,0,0,0,0,0,0,1.03_Accelerator Systems (AS),1.03.03_AS Superconducting Linac System (ScL),1.03.03.05_AS Superconducting Linac System Engineering and Design,1.03.03.05.70_HPRF - Waveguide - Design,AS_HPRF_WAV_5050_Develop Housing Ceiling Waveguides Layout - Waveguide,RF Fab,,SLAC,Labor
72403,1.03,1.03.03,1.03.03.05,1.03.03.05.70,1.03.03.05.70,HPRF - Waveguide - Design,AS_HPRF_WAV_5040,Develop Penetration Cooling Specification - Waveguide,40.0,100.0,100.0,100.0,02-14-22,04-11-22,"AS_HPRF_WAV_5035: FS, AS_HPRF_WAV_5020: FF","AS_HPRF_WAV_5090: FF, AS_HPRF_WAV_5055: FS",SLAC,0%,52178.52178_RF Vacuum Tube Fab,52178_RF Vacuum Tube Fab,Labor,0.0d,40.0,40.0,At Completion Units,11/1/2021,1/11/2022,0,0,0,0,0,0,0,0,0,0,1.03_Accelerator Systems (AS),1.03.03_AS Superconducting Linac System (ScL),1.03.03.05_AS Superconducting Linac System Engineering and Design,1.03.03.05.70_HPRF - Waveguide - Design,AS_HPRF_WAV_5040_Develop Penetration Cooling Specification - Waveguide,RF Fab,,SLAC,Labor
72404,1.03,1.03.03,1.03.03.05,1.03.03.05.70,1.03.03.05.70,HPRF - Waveguide - Design,AS_HPRF_WAV_5070,Prepare ESD Directional Couplers - Waveguide,10.0,32.0,32.0,32.0,01-03-22,01-14-22,AS_HPRF_WAV_5060: FF,"AS_HPRF_WAV_5090: FF, AS_HPRF_WAV_5100: FS",SLAC,0%,52178.52178_RF Vacuum Tube Fab,52178_RF Vacuum Tube Fab,Labor,0.0d,10.0,10.0,At Completion Units,1/27/2022,2/9/2022,0,0,0,0,0,0,0,0,0,0,1.03_Accelerator Systems (AS),1.03.03_AS Superconducting Linac System (ScL),1.03.03.05_AS Superconducting Linac System Engineering and Design,1.03.03.05.70_HPRF - Waveguide - Design,AS_HPRF_WAV_5070_Prepare ESD Directional Couplers - Waveguide,RF Fab,,SLAC,Labor
72405,1.03,1.03.03,1.03.03.05,1.03.03.05.70,1.03.03.05.70,HPRF - Waveguide - Design,AS_HPRF_WAV_5010,Develop Klystron Gallery Waveguides Layout,40.0,60.0,60.0,60.0,12-01-21,02-09-22,AS_HPRF_LYT_5010: FS,"AS_HPRF_WAV_5020: FS, AS_HPRF_WAV_5050: FS, AS_HPRF_WAV_5080: FS, AS_HPRF_WAV_5035: FS",SLAC,0%,52178.52178_RF Vacuum Tube Fab,52178_RF Vacuum Tube Fab,Labor,0.0d,40.0,40.0,At Completion Units,10/4/2021,10/29/2021,0,0,0,0,0,0,0,0,0,0,1.03_Accelerator Systems (AS),1.03.03_AS Superconducting Linac System (ScL),1.03.03.05_AS Superconducting Linac System Engineering and Design,1.03.03.05.70_HPRF - Waveguide - Design,AS_HPRF_WAV_5010_Develop Klystron Gallery Waveguides Layout,RF Fab,,SLAC,Labor
72406,1.03,1.03.03,1.03.03.05,1.03.03.05.70,1.03.03.05.70,HPRF - Waveguide - Design,AS_HPRF_ISL_5010,Prepare ESD Specification - Isolators Design,7.5,60.0,60.0,60.0,12-08-21,12-17-21,AS_HPRF_ISL_5000: FS,AS_HPRF_ISL_5020: FS,SLAC,0%,52178.52178_RF Vacuum Tube Fab,52178_RF Vacuum Tube Fab,Labor,0.0d,7.5,7.5,At Completion Units,9/30/2021,10/11/2021,0,0,0,0,0,0,0,0,0,0,1.03_Accelerator Systems (AS),1.03.03_AS Superconducting Linac System (ScL),1.03.03.05_AS Superconducting Linac System Engineering and Design,1.03.03.05.70_HPRF - Waveguide - Design,AS_HPRF_ISL_5010_Prepare ESD Specification - Isolators Design,RF Fab,,SLAC,Labor
72726,1.03,1.03.03,1.03.03.05,1.03.03.05.80,1.03.03.05.80,HPRF - Installation Procedures,AS_HPRF_INS_5010,"Prepare Documentation (Procedures, JSAs, Check Lists Etc.) - Installation Procedures",110.0,80.0,80.0,80.0,01-03-23,06-08-23,"AS_HPRF_ST_5010: FS, MS_FY_2023_Q2: FS",AS_HPRF_CAP_9000: FS,SLAC,0%,8706.8706_Health & Safety Specialist,8706_Health & Safety Specialist,Labor,0.0d,110.0,110.0,At Completion Units,12/6/2021,5/24/2022,0,0,0,0,0,0,0,0,0,0,1.03_Accelerator Systems (AS),1.03.03_AS Superconducting Linac System (ScL),1.03.03.05_AS Superconducting Linac System Engineering and Design,1.03.03.05.80_HPRF - Installation Procedures,"AS_HPRF_INS_5010_Prepare Documentation (Procedures, JSAs, Check Lists Etc.) - Installation Procedures",ESH,,SLAC,Labor
72727,1.03,1.03.03,1.03.03.05,1.03.03.05.80,1.03.03.05.80,HPRF - Installation Procedures,AS_HPRF_INS_5010,"Prepare Documentation (Procedures, JSAs, Check Lists Etc.) - Installation Procedures",110.0,800.0,800.0,800.0,01-03-23,06-08-23,"AS_HPRF_ST_5010: FS, MS_FY_2023_Q2: FS",AS_HPRF_CAP_9000: FS,SLAC,0%,52178.52178_RF Vacuum Tube Fab,52178_RF Vacuum Tube Fab,Labor,0.0d,110.0,110.0,At Completion Units,12/6/2021,5/24/2022,0,0,0,0,0,0,0,0,0,0,1.03_Accelerator Systems (AS),1.03.03_AS Superconducting Linac System (ScL),1.03.03.05_AS Superconducting Linac System Engineering and Design,1.03.03.05.80_HPRF - Installation Procedures,"AS_HPRF_INS_5010_Prepare Documentation (Procedures, JSAs, Check Lists Etc.) - Installation Procedures",RF Fab,,SLAC,Labor
73047,1.03,1.03.03,1.03.03.05,1.03.03.05.90,1.03.03.05.90,HPRF - System Design Reviews,AS_HPRF_WAV_5200,Respond to Recommendations - FDR - HPRF System,10.0,32.0,32.0,32.0,08-25-22,09-08-22,AS_HPRF_WAV_5190: FS,AS_HPRF_WAV_5210: FS,SLAC,0%,52178.52178_RF Vacuum Tube Fab,52178_RF Vacuum Tube Fab,Labor,0.0d,10.0,10.0,At Completion Units,5/17/2022,5/31/2022,0,0,0,0,0,0,0,0,0,0,1.03_Accelerator Systems (AS),1.03.03_AS Superconducting Linac System (ScL),1.03.03.05_AS Superconducting Linac System Engineering and Design,1.03.03.05.90_HPRF - System Design Reviews,AS_HPRF_WAV_5200_Respond to Recommendations - FDR - HPRF System,RF Fab,,SLAC,Labor
73048,1.03,1.03.03,1.03.03.05,1.03.03.05.90,1.03.03.05.90,HPRF - System Design Reviews,AS_HPRF_WAV_5190,R_FDR: Final Design Review - HPRF System,1.0,32.0,32.0,32.0,08-24-22,08-24-22,AS_HPRF_WAV_5180: FS,"AS_HPRF_WAV_5200: FS, AS_DES_1050: FS, AS_M4_3060: FS, AS_M4_3090: FS",SLAC,0%,52178.52178_RF Vacuum Tube Fab,52178_RF Vacuum Tube Fab,Labor,0.0d,1.0,1.0,At Completion Units,5/16/2022,5/16/2022,DM-A09-30%,0,0,0,0,0,0,0,0,0,1.03_Accelerator Systems (AS),1.03.03_AS Superconducting Linac System (ScL),1.03.03.05_AS Superconducting Linac System Engineering and Design,1.03.03.05.90_HPRF - System Design Reviews,AS_HPRF_WAV_5190_R_FDR: Final Design Review - HPRF System,RF Fab,,SLAC,Labor
73049,1.03,1.03.03,1.03.03.05,1.03.03.05.90,1.03.03.05.90,HPRF - System Design Reviews,AS_HPRF_WAV_5180,Prepare Final Design Review - HPRF System,15.0,70.0,70.0,70.0,08-03-22,08-23-22,"AS_HPRF_WAV_5170: FS, AS_HPRF_SSA_5010: FS",AS_HPRF_WAV_5190: FS,SLAC,0%,52178.52178_RF Vacuum Tube Fab,52178_RF Vacuum Tube Fab,Labor,0.0d,15.0,15.0,At Completion Units,4/25/2022,5/13/2022,0,0,0,0,0,0,0,0,0,0,1.03_Accelerator Systems (AS),1.03.03_AS Superconducting Linac System (ScL),1.03.03.05_AS Superconducting Linac System Engineering and Design,1.03.03.05.90_HPRF - System Design Reviews,AS_HPRF_WAV_5180_Prepare Final Design Review - HPRF System,RF Fab,,SLAC,Labor
73050,1.03,1.03.03,1.03.03.05,1.03.03.05.90,1.03.03.05.90,HPRF - System Design Reviews,AS_HPRF_WAV_5170,Develop Final Design - HPRF System,30.0,500.0,500.0,500.0,06-21-22,08-02-22,"AS_HPRF_WAV_5160: FS, AS_HPRF_CAP_5020: FF",AS_HPRF_WAV_5180: FS,SLAC,0%,52178.52178_RF Vacuum Tube Fab,52178_RF Vacuum Tube Fab,Labor,0.0d,30.0,30.0,At Completion Units,2/28/2022,4/22/2022,0,0,0,0,0,0,0,0,0,0,1.03_Accelerator Systems (AS),1.03.03_AS Superconducting Linac System (ScL),1.03.03.05_AS Superconducting Linac System Engineering and Design,1.03.03.05.90_HPRF - System Design Reviews,AS_HPRF_WAV_5170_Develop Final Design - HPRF System,RF Fab,,SLAC,Labor
73051,1.03,1.03.03,1.03.03.05,1.03.03.05.90,1.03.03.05.90,HPRF - System Design Reviews,AS_HPRF_WAV_5150,Respond to Recommendations - PDR - HPRF System,10.0,32.0,32.0,32.0,06-07-22,06-20-22,AS_HPRF_WAV_5140: FS,AS_HPRF_WAV_5160: FS,SLAC,0%,52178.52178_RF Vacuum Tube Fab,52178_RF Vacuum Tube Fab,Labor,0.0d,10.0,10.0,At Completion Units,2/11/2022,2/25/2022,0,0,0,0,0,0,0,0,0,0,1.03_Accelerator Systems (AS),1.03.03_AS Superconducting Linac System (ScL),1.03.03.05_AS Superconducting Linac System Engineering and Design,1.03.03.05.90_HPRF - System Design Reviews,AS_HPRF_WAV_5150_Respond to Recommendations - PDR - HPRF System,RF Fab,,SLAC,Labor
73052,1.03,1.03.03,1.03.03.05,1.03.03.05.90,1.03.03.05.90,HPRF - System Design Reviews,AS_HPRF_WAV_5140,R_PDR: Prelim. Design Review - HPRF System,1.0,32.0,32.0,32.0,06-06-22,06-06-22,"AS_HPRF_WAV_5130: FS, AS_HPRF_ISL_5020: FS, AS_HPRF_SSA_5050: FS, AS_HPRF_WAV_5055: FS","AS_HPRF_WAV_5150: FS, AS_DES_1000: FS",SLAC,0%,52178.52178_RF Vacuum Tube Fab,52178_RF Vacuum Tube Fab,Labor,0.0d,1.0,1.0,At Completion Units,2/10/2022,2/10/2022,DM-A08-60%,0,0,0,0,0,0,0,0,0,1.03_Accelerator Systems (AS),1.03.03_AS Superconducting Linac System (ScL),1.03.03.05_AS Superconducting Linac System Engineering and Design,1.03.03.05.90_HPRF - System Design Reviews,AS_HPRF_WAV_5140_R_PDR: Prelim. Design Review - HPRF System,RF Fab,,SLAC,Labor
73053,1.03,1.03.03,1.03.03.05,1.03.03.05.90,1.03.03.05.90,HPRF - System Design Reviews,AS_HPRF_WAV_5130,Prepare Prelim. Design Review - HPRF System,15.0,80.0,80.0,80.0,05-13-22,06-03-22,AS_HPRF_WAV_5120: FF,AS_HPRF_WAV_5140: FS,SLAC,0%,52178.52178_RF Vacuum Tube Fab,52178_RF Vacuum Tube Fab,Labor,0.0d,15.0,15.0,At Completion Units,1/31/2022,2/9/2022,0,0,0,0,0,0,0,0,0,0,1.03_Accelerator Systems (AS),1.03.03_AS Superconducting Linac System (ScL),1.03.03.05_AS Superconducting Linac System Engineering and Design,1.03.03.05.90_HPRF - System Design Reviews,AS_HPRF_WAV_5130_Prepare Prelim. Design Review - HPRF System,RF Fab,,SLAC,Labor
73054,1.03,1.03.03,1.03.03.05,1.03.03.05.90,1.03.03.05.90,HPRF - System Design Reviews,AS_HPRF_WAV_5120,Develop Prelim. Design - HPRF System,30.0,320.0,320.0,320.0,04-22-22,06-03-22,AS_HPRF_WAV_5110: FS,AS_HPRF_WAV_5130: FF,SLAC,0%,52178.52178_RF Vacuum Tube Fab,52178_RF Vacuum Tube Fab,Labor,0.0d,30.0,30.0,At Completion Units,1/12/2022,2/9/2022,0,0,0,0,0,0,0,0,0,0,1.03_Accelerator Systems (AS),1.03.03_AS Superconducting Linac System (ScL),1.03.03.05_AS Superconducting Linac System Engineering and Design,1.03.03.05.90_HPRF - System Design Reviews,AS_HPRF_WAV_5120_Develop Prelim. Design - HPRF System,RF Fab,,SLAC,Labor
73693,1.03,1.03.03,1.03.03.06,1.03.03.06.20,1.03.03.06.20,ScL - Warm Beamline Accelerator Components - Procurement,AS_ScL_VAC_DOG_6320,Cleaning - Vacuum Dog Leg,40.0,1645.0,1645.0,1645.0,04-15-24,06-10-24,AS_ScL_VAC_DOG_6310: FS,AS_ScL_EXT_9100: FS,SLAC,0%,52169.52169_METS Mechanical Engineer,52169_METS Mechanical Engineer,Labor,0.0d,40.0,40.0,At Completion Units,9/29/2023,11/27/2023,0,0,0,0,0,0,0,0,0,0,1.03_Accelerator Systems (AS),1.03.03_AS Superconducting Linac System (ScL),1.03.03.06_AS Superconducting Linac System Procurement and Fabrication,1.03.03.06.20_ScL - Warm Beamline Accelerator Components - Procurement,AS_ScL_VAC_DOG_6320_Cleaning - Vacuum Dog Leg,Mechanical,,SLAC,Labor
73694,1.03,1.03.03,1.03.03.06,1.03.03.06.20,1.03.03.06.20,ScL - Warm Beamline Accelerator Components - Procurement,AS_ScL_VAC_DOG_6290,Vendor Effort - Vacuum Dog Leg,60.0,100.0,100.0,100.0,01-18-24,04-11-24,AS_ScL_VAC_DOG_6280: FS,AS_ScL_VAC_DOG_6300: FS,SLAC,0%,52169.52169_METS Mechanical Engineer,52169_METS Mechanical Engineer,Labor,0.0d,60.0,60.0,At Completion Units,7/5/2023,9/27/2023,0,0,0,0,0,0,0,0,0,0,1.03_Accelerator Systems (AS),1.03.03_AS Superconducting Linac System (ScL),1.03.03.06_AS Superconducting Linac System Procurement and Fabrication,1.03.03.06.20_ScL - Warm Beamline Accelerator Components - Procurement,AS_ScL_VAC_DOG_6290_Vendor Effort - Vacuum Dog Leg,Mechanical,,SLAC,Labor
73695,1.03,1.03.03,1.03.03.06,1.03.03.06.20,1.03.03.06.20,ScL - Warm Beamline Accelerator Components - Procurement,AS_ScL_VAC_DOG_6270,Prepare Award Documents - Vacuum Dog Leg,5.0,20.0,20.0,20.0,01-09-24,01-16-24,AS_ScL_VAC_DOG_6260: FS,AS_ScL_VAC_DOG_6280: FS,SLAC,0%,52169.52169_METS Mechanical Engineer,52169_METS Mechanical Engineer,Labor,0.0d,5.0,5.0,At Completion Units,6/26/2023,6/30/2023,0,0,0,0,0,0,0,0,0,0,1.03_Accelerator Systems (AS),1.03.03_AS Superconducting Linac System (ScL),1.03.03.06_AS Superconducting Linac System Procurement and Fabrication,1.03.03.06.20_ScL - Warm Beamline Accelerator Components - Procurement,AS_ScL_VAC_DOG_6270_Prepare Award Documents - Vacuum Dog Leg,Mechanical,,SLAC,Labor
73696,1.03,1.03.03,1.03.03.06,1.03.03.06.20,1.03.03.06.20,ScL - Warm Beamline Accelerator Components - Procurement,AS_ScL_VAC_DOG_6200,Prepare Requisition (Specs/SOW/ETC) - Vacuum Dog Leg,15.0,30.0,30.0,30.0,10-02-23,10-20-23,"AS_M4_3010: FS, AS_ScL_L4EDG_5110: FS, MS_FY_2023_Q3: FS",AS_ScL_VAC_DOG_6210: FS,SLAC,0%,52169.52169_METS Mechanical Engineer,52169_METS Mechanical Engineer,Labor,0.0d,15.0,15.0,At Completion Units,4/4/2023,4/24/2023,0,0,0,0,0,0,0,0,0,0,1.03_Accelerator Systems (AS),1.03.03_AS Superconducting Linac System (ScL),1.03.03.06_AS Superconducting Linac System Procurement and Fabrication,1.03.03.06.20_ScL - Warm Beamline Accelerator Components - Procurement,AS_ScL_VAC_DOG_6200_Prepare Requisition (Specs/SOW/ETC) - Vacuum Dog Leg,Mechanical,,SLAC,Labor
73697,1.03,1.03.03,1.03.03.06,1.03.03.06.20,1.03.03.06.20,ScL - Warm Beamline Accelerator Components - Procurement,AS_ScL_VAC_DOG_6280,AWARD: Procurement - Vacuum Dog Leg,1.0,227667.0,227667.0,227667.0,01-17-24,01-17-24,AS_ScL_VAC_DOG_6270: FS,AS_ScL_VAC_DOG_6290: FS,SLAC,0%,AWARD_USE.AWARD - Use this AWARD,AWARD - Use this AWARD,Nonlabor,0.0d,1.0,1.0,At Completion Units,7/3/2023,7/3/2023,AWARD < $500K,0,0,0,0,0,0,0,0,0,1.03_Accelerator Systems (AS),1.03.03_AS Superconducting Linac System (ScL),1.03.03.06_AS Superconducting Linac System Procurement and Fabrication,1.03.03.06.20_ScL - Warm Beamline Accelerator Components - Procurement,AS_ScL_VAC_DOG_6280_AWARD: Procurement - Vacuum Dog Leg,Material,,SLAC,M&S
73698,1.03,1.03.03,1.03.03.06,1.03.03.06.20,1.03.03.06.20,ScL - Warm Beamline Accelerator Components - Procurement,AS_ScL_VAC_DOG_6210,RQN: Approval of Requisition - Vacuum Dog Leg,1.0,227667.0,227667.0,227667.0,10-23-23,10-23-23,AS_ScL_VAC_DOG_6200: FS,AS_ScL_VAC_DOG_6220: FS,SLAC,0%,REQ.Requisition,Requisition,Nonlabor,0.0d,1.0,1.0,At Completion Units,4/25/2023,4/25/2023,RQN,0,0,0,0,0,0,0,0,0,1.03_Accelerator Systems (AS),1.03.03_AS Superconducting Linac System (ScL),1.03.03.06_AS Superconducting Linac System Procurement and Fabrication,1.03.03.06.20_ScL - Warm Beamline Accelerator Components - Procurement,AS_ScL_VAC_DOG_6210_RQN: Approval of Requisition - Vacuum Dog Leg,Material,,SLAC,M&S
73699,1.03,1.03.03,1.03.03.06,1.03.03.06.20,1.03.03.06.20,ScL - Warm Beamline Accelerator Components - Procurement,AS_ScL_VAC_DOG_6300,RCV: Vacuum Dog Leg,1.0,227667.0,227667.0,227667.0,04-12-24,04-12-24,AS_ScL_VAC_DOG_6290: FS,AS_ScL_VAC_DOG_6310: FS,SLAC,0%,SL_MSSC.SLAC M&S (<$500K) (gets G&A) (gets ESC),SLAC M&S (<$500K) (gets G&A) (gets ESC),Nonlabor,0.0d,1.0,1.0,At Completion Units,9/28/2023,9/28/2023,0,0,0,0,0,0,0,0,0,0,1.03_Accelerator Systems (AS),1.03.03_AS Superconducting Linac System (ScL),1.03.03.06_AS Superconducting Linac System Procurement and Fabrication,1.03.03.06.20_ScL - Warm Beamline Accelerator Components - Procurement,AS_ScL_VAC_DOG_6300_RCV: Vacuum Dog Leg,Material,,SLAC,M&S
73700,1.03,1.03.03,1.03.03.06,1.03.03.06.20,1.03.03.06.20,ScL - Warm Beamline Accelerator Components - Procurement,AS_ScL_VAC_L34_6320,Cleaning - Vacuum L3/L4,40.0,1082.0,1082.0,1082.0,04-15-24,06-10-24,AS_ScL_VAC_L34_6310: FS,AS_ScL_EXT_9100: FS,SLAC,0%,52169.52169_METS Mechanical Engineer,52169_METS Mechanical Engineer,Labor,0.0d,40.0,40.0,At Completion Units,9/29/2023,11/27/2023,0,0,0,0,0,0,0,0,0,0,1.03_Accelerator Systems (AS),1.03.03_AS Superconducting Linac System (ScL),1.03.03.06_AS Superconducting Linac System Procurement and Fabrication,1.03.03.06.20_ScL - Warm Beamline Accelerator Components - Procurement,AS_ScL_VAC_L34_6320_Cleaning - Vacuum L3/L4,Mechanical,,SLAC,Labor
73701,1.03,1.03.03,1.03.03.06,1.03.03.06.20,1.03.03.06.20,ScL - Warm Beamline Accelerator Components - Procurement,AS_ScL_VAC_SCP_6130,"Processing, Assembly and Testing Helium Scavaging Pumps + Hardware",40.0,800.0,800.0,800.0,04-15-24,06-10-24,AS_ScL_VAC_SCP_6120: FS,AS_ScL_L4_SPI_9010: FS,SLAC,0%,52198.52198_METSMANF (METSD Manufacturing),52198_METSMANF (METSD Manufacturing),Labor,0.0d,40.0,40.0,At Completion Units,9/29/2023,11/27/2023,0,0,0,0,0,0,0,0,0,0,1.03_Accelerator Systems (AS),1.03.03_AS Superconducting Linac System (ScL),1.03.03.06_AS Superconducting Linac System Procurement and Fabrication,1.03.03.06.20_ScL - Warm Beamline Accelerator Components - Procurement,"AS_ScL_VAC_SCP_6130_Processing, Assembly and Testing Helium Scavaging Pumps + Hardware",Manufacturing,,SLAC,Labor
73702,1.03,1.03.03,1.03.03.06,1.03.03.06.20,1.03.03.06.20,ScL - Warm Beamline Accelerator Components - Procurement,AS_ScL_VAC_SCP_6100,Vendor Effort - Procure / Fab Helium Scavaging Pumps + Hardware,60.0,3.0,3.0,3.0,01-18-24,04-11-24,AS_ScL_VAC_SCP_6090: FS,AS_ScL_VAC_SCP_6110: FS,SLAC,0%,52169.52169_METS Mechanical Engineer,52169_METS Mechanical Engineer,Labor,0.0d,60.0,60.0,At Completion Units,7/5/2023,9/27/2023,0,0,0,0,0,0,0,0,0,0,1.03_Accelerator Systems (AS),1.03.03_AS Superconducting Linac System (ScL),1.03.03.06_AS Superconducting Linac System Procurement and Fabrication,1.03.03.06.20_ScL - Warm Beamline Accelerator Components - Procurement,AS_ScL_VAC_SCP_6100_Vendor Effort - Procure / Fab Helium Scavaging Pumps + Hardware,Mechanical,,SLAC,Labor
73703,1.03,1.03.03,1.03.03.06,1.03.03.06.20,1.03.03.06.20,ScL - Warm Beamline Accelerator Components - Procurement,AS_ScL_VAC_SCP_6010,Prepare Requisition (Specs/SOW/ETC) - Procure / Fab Helium Scavaging Pumps + Hardware,15.0,9.5,9.5,9.5,10-02-23,10-20-23,"AS_M4_3010: FS, AS_ScL_L4_5110: FS, MS_FY_2023_Q3: FS",AS_ScL_VAC_SCP_6020: FS,SLAC,0%,52169.52169_METS Mechanical Engineer,52169_METS Mechanical Engineer,Labor,0.0d,15.0,15.0,At Completion Units,4/4/2023,4/24/2023,0,0,0,0,0,0,0,0,0,0,1.03_Accelerator Systems (AS),1.03.03_AS Superconducting Linac System (ScL),1.03.03.06_AS Superconducting Linac System Procurement and Fabrication,1.03.03.06.20_ScL - Warm Beamline Accelerator Components - Procurement,AS_ScL_VAC_SCP_6010_Prepare Requisition (Specs/SOW/ETC) - Procure / Fab Helium Scavaging Pumps + Hardware,Mechanical,,SLAC,Labor
73704,1.03,1.03.03,1.03.03.06,1.03.03.06.20,1.03.03.06.20,ScL - Warm Beamline Accelerator Components - Procurement,AS_ScL_VAC_SCP_6100,Vendor Effort - Procure / Fab Helium Scavaging Pumps + Hardware,60.0,10.0,10.0,10.0,01-18-24,04-11-24,AS_ScL_VAC_SCP_6090: FS,AS_ScL_VAC_SCP_6110: FS,SLAC,0%,52190.52190_METSTP Tech Planning - Reinstated FY16,52190_METSTP Tech Planning - Reinstated FY16,Labor,0.0d,60.0,60.0,At Completion Units,7/5/2023,9/27/2023,0,0,0,0,0,0,0,0,0,0,1.03_Accelerator Systems (AS),1.03.03_AS Superconducting Linac System (ScL),1.03.03.06_AS Superconducting Linac System Procurement and Fabrication,1.03.03.06.20_ScL - Warm Beamline Accelerator Components - Procurement,AS_ScL_VAC_SCP_6100_Vendor Effort - Procure / Fab Helium Scavaging Pumps + Hardware,METSTPT Tech Planning,Tech,SLAC,Labor
73705,1.03,1.03.03,1.03.03.06,1.03.03.06.20,1.03.03.06.20,ScL - Warm Beamline Accelerator Components - Procurement,AS_ScL_VAC_SCP_6010,Prepare Requisition (Specs/SOW/ETC) - Procure / Fab Helium Scavaging Pumps + Hardware,15.0,9.5,9.5,9.5,10-02-23,10-20-23,"AS_M4_3010: FS, AS_ScL_L4_5110: FS, MS_FY_2023_Q3: FS",AS_ScL_VAC_SCP_6020: FS,SLAC,0%,52190.52190_METSTP Tech Planning - Reinstated FY16,52190_METSTP Tech Planning - Reinstated FY16,Labor,0.0d,15.0,15.0,At Completion Units,4/4/2023,4/24/2023,0,0,0,0,0,0,0,0,0,0,1.03_Accelerator Systems (AS),1.03.03_AS Superconducting Linac System (ScL),1.03.03.06_AS Superconducting Linac System Procurement and Fabrication,1.03.03.06.20_ScL - Warm Beamline Accelerator Components - Procurement,AS_ScL_VAC_SCP_6010_Prepare Requisition (Specs/SOW/ETC) - Procure / Fab Helium Scavaging Pumps + Hardware,METSTPT Tech Planning,Tech,SLAC,Labor
73706,1.03,1.03.03,1.03.03.06,1.03.03.06.20,1.03.03.06.20,ScL - Warm Beamline Accelerator Components - Procurement,AS_ScL_VAC_L34_6290,Vendor Effort - Vacuum L3/L4,60.0,100.0,100.0,100.0,01-18-24,04-11-24,AS_ScL_VAC_L34_6280: FS,AS_ScL_VAC_L34_6300: FS,SLAC,0%,52169.52169_METS Mechanical Engineer,52169_METS Mechanical Engineer,Labor,0.0d,60.0,60.0,At Completion Units,7/5/2023,9/27/2023,0,0,0,0,0,0,0,0,0,0,1.03_Accelerator Systems (AS),1.03.03_AS Superconducting Linac System (ScL),1.03.03.06_AS Superconducting Linac System Procurement and Fabrication,1.03.03.06.20_ScL - Warm Beamline Accelerator Components - Procurement,AS_ScL_VAC_L34_6290_Vendor Effort - Vacuum L3/L4,Mechanical,,SLAC,Labor
73707,1.03,1.03.03,1.03.03.06,1.03.03.06.20,1.03.03.06.20,ScL - Warm Beamline Accelerator Components - Procurement,AS_ScL_VAC_L34_6270,Prepare Award Documents - Vacuum L3/L4,5.0,20.0,20.0,20.0,01-09-24,01-16-24,AS_ScL_VAC_L34_6260: FS,AS_ScL_VAC_L34_6280: FS,SLAC,0%,52169.52169_METS Mechanical Engineer,52169_METS Mechanical Engineer,Labor,0.0d,5.0,5.0,At Completion Units,6/26/2023,6/30/2023,0,0,0,0,0,0,0,0,0,0,1.03_Accelerator Systems (AS),1.03.03_AS Superconducting Linac System (ScL),1.03.03.06_AS Superconducting Linac System Procurement and Fabrication,1.03.03.06.20_ScL - Warm Beamline Accelerator Components - Procurement,AS_ScL_VAC_L34_6270_Prepare Award Documents - Vacuum L3/L4,Mechanical,,SLAC,Labor
73708,1.03,1.03.03,1.03.03.06,1.03.03.06.20,1.03.03.06.20,ScL - Warm Beamline Accelerator Components - Procurement,AS_ScL_VAC_L34_6200,Prepare Requisition (Specs/SOW/ETC) - Vacuum L3/L4,15.0,30.0,30.0,30.0,10-02-23,10-20-23,"AS_M4_3010: FS, MS_FY_2023_Q3: FS, AS_ScL_L34_5110: FS",AS_ScL_VAC_L34_6210: FS,SLAC,0%,52169.52169_METS Mechanical Engineer,52169_METS Mechanical Engineer,Labor,0.0d,15.0,15.0,At Completion Units,4/4/2023,4/24/2023,0,0,0,0,0,0,0,0,0,0,1.03_Accelerator Systems (AS),1.03.03_AS Superconducting Linac System (ScL),1.03.03.06_AS Superconducting Linac System Procurement and Fabrication,1.03.03.06.20_ScL - Warm Beamline Accelerator Components - Procurement,AS_ScL_VAC_L34_6200_Prepare Requisition (Specs/SOW/ETC) - Vacuum L3/L4,Mechanical,,SLAC,Labor
73709,1.03,1.03.03,1.03.03.06,1.03.03.06.20,1.03.03.06.20,ScL - Warm Beamline Accelerator Components - Procurement,AS_ScL_VAC_SCP_6090,AWARD: Procurement - Procure / Fab Helium Scavaging Pumps + Hardware,1.0,199140.0,199140.0,199140.0,01-17-24,01-17-24,AS_ScL_VAC_SCP_6080: FS,AS_ScL_VAC_SCP_6100: FS,SLAC,0%,AWARD_USE.AWARD - Use this AWARD,AWARD - Use this AWARD,Nonlabor,0.0d,1.0,1.0,At Completion Units,7/3/2023,7/3/2023,AWARD < $500K,0,0,0,0,0,0,0,0,0,1.03_Accelerator Systems (AS),1.03.03_AS Superconducting Linac System (ScL),1.03.03.06_AS Superconducting Linac System Procurement and Fabrication,1.03.03.06.20_ScL - Warm Beamline Accelerator Components - Procurement,AS_ScL_VAC_SCP_6090_AWARD: Procurement - Procure / Fab Helium Scavaging Pumps + Hardware,Material,,SLAC,M&S
73710,1.03,1.03.03,1.03.03.06,1.03.03.06.20,1.03.03.06.20,ScL - Warm Beamline Accelerator Components - Procurement,AS_ScL_VAC_SCP_6020,RQN: Approval of Requisition - Procure / Fab Helium Scavaging Pumps + Hardware,1.0,199140.0,199140.0,199140.0,10-23-23,10-23-23,AS_ScL_VAC_SCP_6010: FS,AS_ScL_VAC_SCP_6030: FS,SLAC,0%,REQ.Requisition,Requisition,Nonlabor,0.0d,1.0,1.0,At Completion Units,4/25/2023,4/25/2023,RQN,0,0,0,0,0,0,0,0,0,1.03_Accelerator Systems (AS),1.03.03_AS Superconducting Linac System (ScL),1.03.03.06_AS Superconducting Linac System Procurement and Fabrication,1.03.03.06.20_ScL - Warm Beamline Accelerator Components - Procurement,AS_ScL_VAC_SCP_6020_RQN: Approval of Requisition - Procure / Fab Helium Scavaging Pumps + Hardware,Material,,SLAC,M&S
73711,1.03,1.03.03,1.03.03.06,1.03.03.06.20,1.03.03.06.20,ScL - Warm Beamline Accelerator Components - Procurement,AS_ScL_VAC_SCP_6110,RCV: Procure / Fab Helium Scavaging Pumps + Hardware,1.0,199140.0,199140.0,199140.0,04-12-24,04-12-24,AS_ScL_VAC_SCP_6100: FS,AS_ScL_VAC_SCP_6120: FS,SLAC,0%,SL_MSSC.SLAC M&S (<$500K) (gets G&A) (gets ESC),SLAC M&S (<$500K) (gets G&A) (gets ESC),Nonlabor,0.0d,1.0,1.0,At Completion Units,9/28/2023,9/28/2023,0,0,0,0,0,0,0,0,0,0,1.03_Accelerator Systems (AS),1.03.03_AS Superconducting Linac System (ScL),1.03.03.06_AS Superconducting Linac System Procurement and Fabrication,1.03.03.06.20_ScL - Warm Beamline Accelerator Components - Procurement,AS_ScL_VAC_SCP_6110_RCV: Procure / Fab Helium Scavaging Pumps + Hardware,Material,,SLAC,M&S
73712,1.03,1.03.03,1.03.03.06,1.03.03.06.20,1.03.03.06.20,ScL - Warm Beamline Accelerator Components - Procurement,AS_ScL_VAC_L34_6280,AWARD: Procurement - Vacuum L3/L4,1.0,192492.0,192492.0,192492.0,01-17-24,01-17-24,AS_ScL_VAC_L34_6270: FS,AS_ScL_VAC_L34_6290: FS,SLAC,0%,AWARD_USE.AWARD - Use this AWARD,AWARD - Use this AWARD,Nonlabor,0.0d,1.0,1.0,At Completion Units,7/3/2023,7/3/2023,AWARD < $500K,0,0,0,0,0,0,0,0,0,1.03_Accelerator Systems (AS),1.03.03_AS Superconducting Linac System (ScL),1.03.03.06_AS Superconducting Linac System Procurement and Fabrication,1.03.03.06.20_ScL - Warm Beamline Accelerator Components - Procurement,AS_ScL_VAC_L34_6280_AWARD: Procurement - Vacuum L3/L4,Material,,SLAC,M&S
73713,1.03,1.03.03,1.03.03.06,1.03.03.06.20,1.03.03.06.20,ScL - Warm Beamline Accelerator Components - Procurement,AS_ScL_VAC_L34_6210,RQN: Approval of Requisition - Vacuum L3/L4,1.0,192492.0,192492.0,192492.0,10-23-23,10-23-23,AS_ScL_VAC_L34_6200: FS,AS_ScL_VAC_L34_6220: FS,SLAC,0%,REQ.Requisition,Requisition,Nonlabor,0.0d,1.0,1.0,At Completion Units,4/25/2023,4/25/2023,RQN,0,0,0,0,0,0,0,0,0,1.03_Accelerator Systems (AS),1.03.03_AS Superconducting Linac System (ScL),1.03.03.06_AS Superconducting Linac System Procurement and Fabrication,1.03.03.06.20_ScL - Warm Beamline Accelerator Components - Procurement,AS_ScL_VAC_L34_6210_RQN: Approval of Requisition - Vacuum L3/L4,Material,,SLAC,M&S
73714,1.03,1.03.03,1.03.03.06,1.03.03.06.20,1.03.03.06.20,ScL - Warm Beamline Accelerator Components - Procurement,AS_ScL_VAC_L34_6300,RCV: Vacuum L3/L4,1.0,192492.0,192492.0,192492.0,04-12-24,04-12-24,AS_ScL_VAC_L34_6290: FS,AS_ScL_VAC_L34_6310: FS,SLAC,0%,SL_MSSC.SLAC M&S (<$500K) (gets G&A) (gets ESC),SLAC M&S (<$500K) (gets G&A) (gets ESC),Nonlabor,0.0d,1.0,1.0,At Completion Units,9/28/2023,9/28/2023,0,0,0,0,0,0,0,0,0,0,1.03_Accelerator Systems (AS),1.03.03_AS Superconducting Linac System (ScL),1.03.03.06_AS Superconducting Linac System Procurement and Fabrication,1.03.03.06.20_ScL - Warm Beamline Accelerator Components - Procurement,AS_ScL_VAC_L34_6300_RCV: Vacuum L3/L4,Material,,SLAC,M&S
74034,1.03,1.03.03,1.03.03.06,1.03.03.06.40,1.03.03.06.40,ScL - Tooling - Procurement,AS_ScL_TOO_WLD_6100,Vendor Effort - CM_Tooling for Welding,60.0,4.0,4.0,4.0,01-18-24,04-11-24,AS_ScL_TOO_WLD_6090: FS,AS_ScL_TOO_WLD_6110: FS,SLAC,0%,52169.52169_METS Mechanical Engineer,52169_METS Mechanical Engineer,Labor,0.0d,60.0,60.0,At Completion Units,12/5/2022,3/14/2023,0,0,0,0,0,0,0,0,0,0,1.03_Accelerator Systems (AS),1.03.03_AS Superconducting Linac System (ScL),1.03.03.06_AS Superconducting Linac System Procurement and Fabrication,1.03.03.06.40_ScL - Tooling - Procurement,AS_ScL_TOO_WLD_6100_Vendor Effort - CM_Tooling for Welding,Mechanical,,SLAC,Labor
74035,1.03,1.03.03,1.03.03.06,1.03.03.06.40,1.03.03.06.40,ScL - Tooling - Procurement,AS_ScL_TOO_WLD_6100,Vendor Effort - CM_Tooling for Welding,60.0,14.0,14.0,14.0,01-18-24,04-11-24,AS_ScL_TOO_WLD_6090: FS,AS_ScL_TOO_WLD_6110: FS,SLAC,0%,52190.52190_METSTP Tech Planning - Reinstated FY16,52190_METSTP Tech Planning - Reinstated FY16,Labor,0.0d,60.0,60.0,At Completion Units,12/5/2022,3/14/2023,0,0,0,0,0,0,0,0,0,0,1.03_Accelerator Systems (AS),1.03.03_AS Superconducting Linac System (ScL),1.03.03.06_AS Superconducting Linac System Procurement and Fabrication,1.03.03.06.40_ScL - Tooling - Procurement,AS_ScL_TOO_WLD_6100_Vendor Effort - CM_Tooling for Welding,METSTPT Tech Planning,Tech,SLAC,Labor
74036,1.03,1.03.03,1.03.03.06,1.03.03.06.40,1.03.03.06.40,ScL - Tooling - Procurement,AS_ScL_TOO_WLD_6080,Prepare Award Documents - CM_Tooling for Welding,5.0,3.0,3.0,3.0,01-09-24,01-16-24,AS_ScL_TOO_WLD_6070: FS,AS_ScL_TOO_WLD_6090: FS,SLAC,0%,52169.52169_METS Mechanical Engineer,52169_METS Mechanical Engineer,Labor,0.0d,5.0,5.0,At Completion Units,11/23/2022,12/1/2022,0,0,0,0,0,0,0,0,0,0,1.03_Accelerator Systems (AS),1.03.03_AS Superconducting Linac System (ScL),1.03.03.06_AS Superconducting Linac System Procurement and Fabrication,1.03.03.06.40_ScL - Tooling - Procurement,AS_ScL_TOO_WLD_6080_Prepare Award Documents - CM_Tooling for Welding,Mechanical,,SLAC,Labor
74037,1.03,1.03.03,1.03.03.06,1.03.03.06.40,1.03.03.06.40,ScL - Tooling - Procurement,AS_ScL_TOO_WLD_6080,Prepare Award Documents - CM_Tooling for Welding,5.0,11.0,11.0,11.0,01-09-24,01-16-24,AS_ScL_TOO_WLD_6070: FS,AS_ScL_TOO_WLD_6090: FS,SLAC,0%,52190.52190_METSTP Tech Planning - Reinstated FY16,52190_METSTP Tech Planning - Reinstated FY16,Labor,0.0d,5.0,5.0,At Completion Units,11/23/2022,12/1/2022,0,0,0,0,0,0,0,0,0,0,1.03_Accelerator Systems (AS),1.03.03_AS Superconducting Linac System (ScL),1.03.03.06_AS Superconducting Linac System Procurement and Fabrication,1.03.03.06.40_ScL - Tooling - Procurement,AS_ScL_TOO_WLD_6080_Prepare Award Documents - CM_Tooling for Welding,METSTPT Tech Planning,Tech,SLAC,Labor
74038,1.03,1.03.03,1.03.03.06,1.03.03.06.40,1.03.03.06.40,ScL - Tooling - Procurement,AS_ScL_TOO_VAC_6100,Vendor Effort - CM_Tooling for Vacuum,60.0,4.0,4.0,4.0,01-18-24,04-11-24,AS_ScL_TOO_VAC_6090: FS,AS_ScL_TOO_VAC_6110: FS,SLAC,0%,52169.52169_METS Mechanical Engineer,52169_METS Mechanical Engineer,Labor,0.0d,60.0,60.0,At Completion Units,12/5/2022,3/14/2023,0,0,0,0,0,0,0,0,0,0,1.03_Accelerator Systems (AS),1.03.03_AS Superconducting Linac System (ScL),1.03.03.06_AS Superconducting Linac System Procurement and Fabrication,1.03.03.06.40_ScL - Tooling - Procurement,AS_ScL_TOO_VAC_6100_Vendor Effort - CM_Tooling for Vacuum,Mechanical,,SLAC,Labor
74039,1.03,1.03.03,1.03.03.06,1.03.03.06.40,1.03.03.06.40,ScL - Tooling - Procurement,AS_ScL_TOO_VAC_6100,Vendor Effort - CM_Tooling for Vacuum,60.0,14.0,14.0,14.0,01-18-24,04-11-24,AS_ScL_TOO_VAC_6090: FS,AS_ScL_TOO_VAC_6110: FS,SLAC,0%,52190.52190_METSTP Tech Planning - Reinstated FY16,52190_METSTP Tech Planning - Reinstated FY16,Labor,0.0d,60.0,60.0,At Completion Units,12/5/2022,3/14/2023,0,0,0,0,0,0,0,0,0,0,1.03_Accelerator Systems (AS),1.03.03_AS Superconducting Linac System (ScL),1.03.03.06_AS Superconducting Linac System Procurement and Fabrication,1.03.03.06.40_ScL - Tooling - Procurement,AS_ScL_TOO_VAC_6100_Vendor Effort - CM_Tooling for Vacuum,METSTPT Tech Planning,Tech,SLAC,Labor
74040,1.03,1.03.03,1.03.03.06,1.03.03.06.40,1.03.03.06.40,ScL - Tooling - Procurement,AS_ScL_TOO_VAC_6080,Prepare Award Documents - CM_Tooling for Vacuum,5.0,11.0,11.0,11.0,01-09-24,01-16-24,AS_ScL_TOO_VAC_6070: FS,AS_ScL_TOO_VAC_6090: FS,SLAC,0%,52190.52190_METSTP Tech Planning - Reinstated FY16,52190_METSTP Tech Planning - Reinstated FY16,Labor,0.0d,5.0,5.0,At Completion Units,11/23/2022,12/1/2022,0,0,0,0,0,0,0,0,0,0,1.03_Accelerator Systems (AS),1.03.03_AS Superconducting Linac System (ScL),1.03.03.06_AS Superconducting Linac System Procurement and Fabrication,1.03.03.06.40_ScL - Tooling - Procurement,AS_ScL_TOO_VAC_6080_Prepare Award Documents - CM_Tooling for Vacuum,METSTPT Tech Planning,Tech,SLAC,Labor
74041,1.03,1.03.03,1.03.03.06,1.03.03.06.40,1.03.03.06.40,ScL - Tooling - Procurement,AS_ScL_TOO_VAC_6080,Prepare Award Documents - CM_Tooling for Vacuum,5.0,3.0,3.0,3.0,01-09-24,01-16-24,AS_ScL_TOO_VAC_6070: FS,AS_ScL_TOO_VAC_6090: FS,SLAC,0%,52169.52169_METS Mechanical Engineer,52169_METS Mechanical Engineer,Labor,0.0d,5.0,5.0,At Completion Units,11/23/2022,12/1/2022,0,0,0,0,0,0,0,0,0,0,1.03_Accelerator Systems (AS),1.03.03_AS Superconducting Linac System (ScL),1.03.03.06_AS Superconducting Linac System Procurement and Fabrication,1.03.03.06.40_ScL - Tooling - Procurement,AS_ScL_TOO_VAC_6080_Prepare Award Documents - CM_Tooling for Vacuum,Mechanical,,SLAC,Labor
74042,1.03,1.03.03,1.03.03.06,1.03.03.06.40,1.03.03.06.40,ScL - Tooling - Procurement,AS_ScL_TOO_CMx_6100,Vendor Effort - CM_Tooling for CM Install / Transport,60.0,4.0,4.0,4.0,01-18-24,04-11-24,AS_ScL_TOO_CMx_6090: FS,AS_ScL_TOO_CMx_6110: FS,SLAC,0%,52169.52169_METS Mechanical Engineer,52169_METS Mechanical Engineer,Labor,0.0d,60.0,60.0,At Completion Units,12/5/2022,3/14/2023,0,0,0,0,0,0,0,0,0,0,1.03_Accelerator Systems (AS),1.03.03_AS Superconducting Linac System (ScL),1.03.03.06_AS Superconducting Linac System Procurement and Fabrication,1.03.03.06.40_ScL - Tooling - Procurement,AS_ScL_TOO_CMx_6100_Vendor Effort - CM_Tooling for CM Install / Transport,Mechanical,,SLAC,Labor
74043,1.03,1.03.03,1.03.03.06,1.03.03.06.40,1.03.03.06.40,ScL - Tooling - Procurement,AS_ScL_TOO_CMx_6100,Vendor Effort - CM_Tooling for CM Install / Transport,60.0,14.0,14.0,14.0,01-18-24,04-11-24,AS_ScL_TOO_CMx_6090: FS,AS_ScL_TOO_CMx_6110: FS,SLAC,0%,52190.52190_METSTP Tech Planning - Reinstated FY16,52190_METSTP Tech Planning - Reinstated FY16,Labor,0.0d,60.0,60.0,At Completion Units,12/5/2022,3/14/2023,0,0,0,0,0,0,0,0,0,0,1.03_Accelerator Systems (AS),1.03.03_AS Superconducting Linac System (ScL),1.03.03.06_AS Superconducting Linac System Procurement and Fabrication,1.03.03.06.40_ScL - Tooling - Procurement,AS_ScL_TOO_CMx_6100_Vendor Effort - CM_Tooling for CM Install / Transport,METSTPT Tech Planning,Tech,SLAC,Labor
74044,1.03,1.03.03,1.03.03.06,1.03.03.06.40,1.03.03.06.40,ScL - Tooling - Procurement,AS_ScL_TOO_CMx_6080,Prepare Award Documents - CM_Tooling for CM Install / Transport,5.0,11.0,11.0,11.0,01-09-24,01-16-24,AS_ScL_TOO_CMx_6070: FS,AS_ScL_TOO_CMx_6090: FS,SLAC,0%,52190.52190_METSTP Tech Planning - Reinstated FY16,52190_METSTP Tech Planning - Reinstated FY16,Labor,0.0d,5.0,5.0,At Completion Units,11/23/2022,12/1/2022,0,0,0,0,0,0,0,0,0,0,1.03_Accelerator Systems (AS),1.03.03_AS Superconducting Linac System (ScL),1.03.03.06_AS Superconducting Linac System Procurement and Fabrication,1.03.03.06.40_ScL - Tooling - Procurement,AS_ScL_TOO_CMx_6080_Prepare Award Documents - CM_Tooling for CM Install / Transport,METSTPT Tech Planning,Tech,SLAC,Labor
74045,1.03,1.03.03,1.03.03.06,1.03.03.06.40,1.03.03.06.40,ScL - Tooling - Procurement,AS_ScL_TOO_CMx_6080,Prepare Award Documents - CM_Tooling for CM Install / Transport,5.0,3.0,3.0,3.0,01-09-24,01-16-24,AS_ScL_TOO_CMx_6070: FS,AS_ScL_TOO_CMx_6090: FS,SLAC,0%,52169.52169_METS Mechanical Engineer,52169_METS Mechanical Engineer,Labor,0.0d,5.0,5.0,At Completion Units,11/23/2022,12/1/2022,0,0,0,0,0,0,0,0,0,0,1.03_Accelerator Systems (AS),1.03.03_AS Superconducting Linac System (ScL),1.03.03.06_AS Superconducting Linac System Procurement and Fabrication,1.03.03.06.40_ScL - Tooling - Procurement,AS_ScL_TOO_CMx_6080_Prepare Award Documents - CM_Tooling for CM Install / Transport,Mechanical,,SLAC,Labor
74046,1.03,1.03.03,1.03.03.06,1.03.03.06.40,1.03.03.06.40,ScL - Tooling - Procurement,AS_ScL_TOO_WLD_6010,Prepare Requisition (Specs/SOW/ETC) - CM_Tooling for Welding,15.0,6.0,6.0,6.0,10-02-23,10-20-23,AS_M4_3010: FS,AS_ScL_TOO_WLD_6020: FS,SLAC,0%,52190.52190_METSTP Tech Planning - Reinstated FY16,52190_METSTP Tech Planning - Reinstated FY16,Labor,0.0d,15.0,15.0,At Completion Units,9/1/2022,9/22/2022,0,0,0,0,0,0,0,0,0,0,1.03_Accelerator Systems (AS),1.03.03_AS Superconducting Linac System (ScL),1.03.03.06_AS Superconducting Linac System Procurement and Fabrication,1.03.03.06.40_ScL - Tooling - Procurement,AS_ScL_TOO_WLD_6010_Prepare Requisition (Specs/SOW/ETC) - CM_Tooling for Welding,METSTPT Tech Planning,Tech,SLAC,Labor
74047,1.03,1.03.03,1.03.03.06,1.03.03.06.40,1.03.03.06.40,ScL - Tooling - Procurement,AS_ScL_TOO_WLD_6010,Prepare Requisition (Specs/SOW/ETC) - CM_Tooling for Welding,15.0,2.0,2.0,2.0,10-02-23,10-20-23,AS_M4_3010: FS,AS_ScL_TOO_WLD_6020: FS,SLAC,0%,52169.52169_METS Mechanical Engineer,52169_METS Mechanical Engineer,Labor,0.0d,15.0,15.0,At Completion Units,9/1/2022,9/22/2022,0,0,0,0,0,0,0,0,0,0,1.03_Accelerator Systems (AS),1.03.03_AS Superconducting Linac System (ScL),1.03.03.06_AS Superconducting Linac System Procurement and Fabrication,1.03.03.06.40_ScL - Tooling - Procurement,AS_ScL_TOO_WLD_6010_Prepare Requisition (Specs/SOW/ETC) - CM_Tooling for Welding,Mechanical,,SLAC,Labor
74048,1.03,1.03.03,1.03.03.06,1.03.03.06.40,1.03.03.06.40,ScL - Tooling - Procurement,AS_ScL_TOO_WLD_6090,AWARD: Procurement - CM_Tooling for Welding,1.0,104448.0,104448.0,104448.0,01-17-24,01-17-24,AS_ScL_TOO_WLD_6080: FS,AS_ScL_TOO_WLD_6100: FS,SLAC,0%,AWARD_USE.AWARD - Use this AWARD,AWARD - Use this AWARD,Nonlabor,0.0d,1.0,1.0,At Completion Units,12/2/2022,12/2/2022,AWARD < $500K,0,0,0,0,0,0,0,0,0,1.03_Accelerator Systems (AS),1.03.03_AS Superconducting Linac System (ScL),1.03.03.06_AS Superconducting Linac System Procurement and Fabrication,1.03.03.06.40_ScL - Tooling - Procurement,AS_ScL_TOO_WLD_6090_AWARD: Procurement - CM_Tooling for Welding,Material,,SLAC,M&S
74049,1.03,1.03.03,1.03.03.06,1.03.03.06.40,1.03.03.06.40,ScL - Tooling - Procurement,AS_ScL_TOO_WLD_6020,RQN: Approval of Requisition - CM_Tooling for Welding,1.0,104448.0,104448.0,104448.0,10-23-23,10-23-23,AS_ScL_TOO_WLD_6010: FS,AS_ScL_TOO_WLD_6030: FS,SLAC,0%,REQ.Requisition,Requisition,Nonlabor,0.0d,1.0,1.0,At Completion Units,9/23/2022,9/23/2022,RQN,0,0,0,0,0,0,0,0,0,1.03_Accelerator Systems (AS),1.03.03_AS Superconducting Linac System (ScL),1.03.03.06_AS Superconducting Linac System Procurement and Fabrication,1.03.03.06.40_ScL - Tooling - Procurement,AS_ScL_TOO_WLD_6020_RQN: Approval of Requisition - CM_Tooling for Welding,Material,,SLAC,M&S
74050,1.03,1.03.03,1.03.03.06,1.03.03.06.40,1.03.03.06.40,ScL - Tooling - Procurement,AS_ScL_TOO_WLD_6110,RCV: CM_Tooling for Welding,1.0,104448.0,104448.0,104448.0,04-12-24,04-12-24,AS_ScL_TOO_WLD_6100: FS,AS_ScL_TOO_WLD_6120: FS,SLAC,0%,SL_MSSC.SLAC M&S (<$500K) (gets G&A) (gets ESC),SLAC M&S (<$500K) (gets G&A) (gets ESC),Nonlabor,0.0d,1.0,1.0,At Completion Units,3/15/2023,3/15/2023,0,0,0,0,0,0,0,0,0,0,1.03_Accelerator Systems (AS),1.03.03_AS Superconducting Linac System (ScL),1.03.03.06_AS Superconducting Linac System Procurement and Fabrication,1.03.03.06.40_ScL - Tooling - Procurement,AS_ScL_TOO_WLD_6110_RCV: CM_Tooling for Welding,Material,,SLAC,M&S
74051,1.03,1.03.03,1.03.03.06,1.03.03.06.40,1.03.03.06.40,ScL - Tooling - Procurement,AS_ScL_TOO_VAC_6010,Prepare Requisition (Specs/SOW/ETC) - CM_Tooling for Vacuum,15.0,6.0,6.0,6.0,10-02-23,10-20-23,AS_M4_3010: FS,AS_ScL_TOO_VAC_6020: FS,SLAC,0%,52190.52190_METSTP Tech Planning - Reinstated FY16,52190_METSTP Tech Planning - Reinstated FY16,Labor,0.0d,15.0,15.0,At Completion Units,9/1/2022,9/22/2022,0,0,0,0,0,0,0,0,0,0,1.03_Accelerator Systems (AS),1.03.03_AS Superconducting Linac System (ScL),1.03.03.06_AS Superconducting Linac System Procurement and Fabrication,1.03.03.06.40_ScL - Tooling - Procurement,AS_ScL_TOO_VAC_6010_Prepare Requisition (Specs/SOW/ETC) - CM_Tooling for Vacuum,METSTPT Tech Planning,Tech,SLAC,Labor
74052,1.03,1.03.03,1.03.03.06,1.03.03.06.40,1.03.03.06.40,ScL - Tooling - Procurement,AS_ScL_TOO_VAC_6010,Prepare Requisition (Specs/SOW/ETC) - CM_Tooling for Vacuum,15.0,2.0,2.0,2.0,10-02-23,10-20-23,AS_M4_3010: FS,AS_ScL_TOO_VAC_6020: FS,SLAC,0%,52169.52169_METS Mechanical Engineer,52169_METS Mechanical Engineer,Labor,0.0d,15.0,15.0,At Completion Units,9/1/2022,9/22/2022,0,0,0,0,0,0,0,0,0,0,1.03_Accelerator Systems (AS),1.03.03_AS Superconducting Linac System (ScL),1.03.03.06_AS Superconducting Linac System Procurement and Fabrication,1.03.03.06.40_ScL - Tooling - Procurement,AS_ScL_TOO_VAC_6010_Prepare Requisition (Specs/SOW/ETC) - CM_Tooling for Vacuum,Mechanical,,SLAC,Labor
74053,1.03,1.03.03,1.03.03.06,1.03.03.06.40,1.03.03.06.40,ScL - Tooling - Procurement,AS_ScL_TOO_VAC_6090,AWARD: Procurement - CM_Tooling for Vacuum,1.0,230951.0,230951.0,230951.0,01-17-24,01-17-24,AS_ScL_TOO_VAC_6080: FS,AS_ScL_TOO_VAC_6100: FS,SLAC,0%,AWARD_USE.AWARD - Use this AWARD,AWARD - Use this AWARD,Nonlabor,0.0d,1.0,1.0,At Completion Units,12/2/2022,12/2/2022,AWARD < $500K,0,0,0,0,0,0,0,0,0,1.03_Accelerator Systems (AS),1.03.03_AS Superconducting Linac System (ScL),1.03.03.06_AS Superconducting Linac System Procurement and Fabrication,1.03.03.06.40_ScL - Tooling - Procurement,AS_ScL_TOO_VAC_6090_AWARD: Procurement - CM_Tooling for Vacuum,Material,,SLAC,M&S
74054,1.03,1.03.03,1.03.03.06,1.03.03.06.40,1.03.03.06.40,ScL - Tooling - Procurement,AS_ScL_TOO_VAC_6020,RQN: Approval of Requisition - CM_Tooling for Vacuum,1.0,230951.0,230951.0,230951.0,10-23-23,10-23-23,AS_ScL_TOO_VAC_6010: FS,AS_ScL_TOO_VAC_6030: FS,SLAC,0%,REQ.Requisition,Requisition,Nonlabor,0.0d,1.0,1.0,At Completion Units,9/23/2022,9/23/2022,RQN,0,0,0,0,0,0,0,0,0,1.03_Accelerator Systems (AS),1.03.03_AS Superconducting Linac System (ScL),1.03.03.06_AS Superconducting Linac System Procurement and Fabrication,1.03.03.06.40_ScL - Tooling - Procurement,AS_ScL_TOO_VAC_6020_RQN: Approval of Requisition - CM_Tooling for Vacuum,Material,,SLAC,M&S
74055,1.03,1.03.03,1.03.03.06,1.03.03.06.40,1.03.03.06.40,ScL - Tooling - Procurement,AS_ScL_TOO_VAC_6110,RCV: CM_Tooling for Vacuum,1.0,230951.0,230951.0,230951.0,04-12-24,04-12-24,AS_ScL_TOO_VAC_6100: FS,AS_ScL_TOO_VAC_6120: FS,SLAC,0%,SL_MSSC.SLAC M&S (<$500K) (gets G&A) (gets ESC),SLAC M&S (<$500K) (gets G&A) (gets ESC),Nonlabor,0.0d,1.0,1.0,At Completion Units,3/15/2023,3/15/2023,0,0,0,0,0,0,0,0,0,0,1.03_Accelerator Systems (AS),1.03.03_AS Superconducting Linac System (ScL),1.03.03.06_AS Superconducting Linac System Procurement and Fabrication,1.03.03.06.40_ScL - Tooling - Procurement,AS_ScL_TOO_VAC_6110_RCV: CM_Tooling for Vacuum,Material,,SLAC,M&S
74056,1.03,1.03.03,1.03.03.06,1.03.03.06.40,1.03.03.06.40,ScL - Tooling - Procurement,AS_ScL_TOO_CMx_6010,Prepare Requisition (Specs/SOW/ETC) - CM_Tooling for CM Install / Transport,15.0,6.0,6.0,6.0,10-02-23,10-20-23,AS_M4_3010: FS,AS_ScL_TOO_CMx_6020: FS,SLAC,0%,52190.52190_METSTP Tech Planning - Reinstated FY16,52190_METSTP Tech Planning - Reinstated FY16,Labor,0.0d,15.0,15.0,At Completion Units,9/1/2022,9/22/2022,0,0,0,0,0,0,0,0,0,0,1.03_Accelerator Systems (AS),1.03.03_AS Superconducting Linac System (ScL),1.03.03.06_AS Superconducting Linac System Procurement and Fabrication,1.03.03.06.40_ScL - Tooling - Procurement,AS_ScL_TOO_CMx_6010_Prepare Requisition (Specs/SOW/ETC) - CM_Tooling for CM Install / Transport,METSTPT Tech Planning,Tech,SLAC,Labor
74057,1.03,1.03.03,1.03.03.06,1.03.03.06.40,1.03.03.06.40,ScL - Tooling - Procurement,AS_ScL_TOO_CMx_6010,Prepare Requisition (Specs/SOW/ETC) - CM_Tooling for CM Install / Transport,15.0,2.0,2.0,2.0,10-02-23,10-20-23,AS_M4_3010: FS,AS_ScL_TOO_CMx_6020: FS,SLAC,0%,52169.52169_METS Mechanical Engineer,52169_METS Mechanical Engineer,Labor,0.0d,15.0,15.0,At Completion Units,9/1/2022,9/22/2022,0,0,0,0,0,0,0,0,0,0,1.03_Accelerator Systems (AS),1.03.03_AS Superconducting Linac System (ScL),1.03.03.06_AS Superconducting Linac System Procurement and Fabrication,1.03.03.06.40_ScL - Tooling - Procurement,AS_ScL_TOO_CMx_6010_Prepare Requisition (Specs/SOW/ETC) - CM_Tooling for CM Install / Transport,Mechanical,,SLAC,Labor
74058,1.03,1.03.03,1.03.03.06,1.03.03.06.40,1.03.03.06.40,ScL - Tooling - Procurement,AS_ScL_TOO_CMx_6090,AWARD: Procurement - CM_Tooling for CM Install / Transport,1.0,67773.0,67773.0,67773.0,01-17-24,01-17-24,AS_ScL_TOO_CMx_6080: FS,AS_ScL_TOO_CMx_6100: FS,SLAC,0%,AWARD_USE.AWARD - Use this AWARD,AWARD - Use this AWARD,Nonlabor,0.0d,1.0,1.0,At Completion Units,12/2/2022,12/2/2022,AWARD < $500K,0,0,0,0,0,0,0,0,0,1.03_Accelerator Systems (AS),1.03.03_AS Superconducting Linac System (ScL),1.03.03.06_AS Superconducting Linac System Procurement and Fabrication,1.03.03.06.40_ScL - Tooling - Procurement,AS_ScL_TOO_CMx_6090_AWARD: Procurement - CM_Tooling for CM Install / Transport,Material,,SLAC,M&S
74059,1.03,1.03.03,1.03.03.06,1.03.03.06.40,1.03.03.06.40,ScL - Tooling - Procurement,AS_ScL_TOO_CMx_6020,RQN: Approval of Requisition - CM_Tooling for CM Install / Transport,1.0,67773.0,67773.0,67773.0,10-23-23,10-23-23,AS_ScL_TOO_CMx_6010: FS,AS_ScL_TOO_CMx_6030: FS,SLAC,0%,REQ.Requisition,Requisition,Nonlabor,0.0d,1.0,1.0,At Completion Units,9/23/2022,9/23/2022,RQN,0,0,0,0,0,0,0,0,0,1.03_Accelerator Systems (AS),1.03.03_AS Superconducting Linac System (ScL),1.03.03.06_AS Superconducting Linac System Procurement and Fabrication,1.03.03.06.40_ScL - Tooling - Procurement,AS_ScL_TOO_CMx_6020_RQN: Approval of Requisition - CM_Tooling for CM Install / Transport,Material,,SLAC,M&S
74060,1.03,1.03.03,1.03.03.06,1.03.03.06.40,1.03.03.06.40,ScL - Tooling - Procurement,AS_ScL_TOO_CMx_6110,RCV: Goods/Services/Final Report - CM_Tooling for CM Install / Transport,1.0,67773.0,67773.0,67773.0,04-12-24,04-12-24,AS_ScL_TOO_CMx_6100: FS,AS_ScL_TOO_CMx_6120: FS,SLAC,0%,SL_MSSC.SLAC M&S (<$500K) (gets G&A) (gets ESC),SLAC M&S (<$500K) (gets G&A) (gets ESC),Nonlabor,0.0d,1.0,1.0,At Completion Units,3/15/2023,3/15/2023,0,0,0,0,0,0,0,0,0,0,1.03_Accelerator Systems (AS),1.03.03_AS Superconducting Linac System (ScL),1.03.03.06_AS Superconducting Linac System Procurement and Fabrication,1.03.03.06.40_ScL - Tooling - Procurement,AS_ScL_TOO_CMx_6110_RCV: Goods/Services/Final Report - CM_Tooling for CM Install / Transport,Material,,SLAC,M&S
74380,1.03,1.03.03,1.03.03.06,1.03.03.06.60,1.03.03.06.60,HPRF - First Article SSAs - Procurement,AS_HPRF_SSA_5420,1st Art SSA Evaluation Labor,191.0,362.5,36.5,362.5,12-17-2020,12-01-21,"AS_HPRF_SSA_5400: FS, AS_HPRF_SSA_5450: FS, AS_HPRF_SSA_5410: FS","AS_HPRF_SSA_5440: FS, AS_HPRF_ISL_5000: FS, AS_HPRF_SSA_5040: FS, AS_HPRF_SSA_5005: FS",SLAC,89.93%,52211.52211_EEDOPSE (Electronics & Engineering Div - Ops & PSE),52211_EEDOPSE (Electronics & Engineering Div - Ops & PSE),Labor,192.0d,42.0,234.0,At Completion Units,12/18/2020,9/29/2021,0,0,0,0,0,0,0,0,0,0,1.03_Accelerator Systems (AS),1.03.03_AS Superconducting Linac System (ScL),1.03.03.06_AS Superconducting Linac System Procurement and Fabrication,1.03.03.06.60_HPRF - First Article SSAs - Procurement,AS_HPRF_SSA_5420_1st Art SSA Evaluation Labor,Electrical,,SLAC,Labor
74381,1.03,1.03.03,1.03.03.06,1.03.03.06.60,1.03.03.06.60,HPRF - First Article SSAs - Procurement,AS_HPRF_SSA_5420,1st Art SSA Evaluation Labor,191.0,362.5,36.5,362.5,12-17-2020,12-01-21,"AS_HPRF_SSA_5400: FS, AS_HPRF_SSA_5450: FS, AS_HPRF_SSA_5410: FS","AS_HPRF_SSA_5440: FS, AS_HPRF_ISL_5000: FS, AS_HPRF_SSA_5040: FS, AS_HPRF_SSA_5005: FS",SLAC,89.93%,52168.52168_METS - Mechanical Design,52168_METS - Mechanical Design,Labor,192.0d,42.0,234.0,At Completion Units,12/18/2020,9/29/2021,0,0,0,0,0,0,0,0,0,0,1.03_Accelerator Systems (AS),1.03.03_AS Superconducting Linac System (ScL),1.03.03.06_AS Superconducting Linac System Procurement and Fabrication,1.03.03.06.60_HPRF - First Article SSAs - Procurement,AS_HPRF_SSA_5420_1st Art SSA Evaluation Labor,Mechanical,,SLAC,Labor
74382,1.03,1.03.03,1.03.03.06,1.03.03.06.60,1.03.03.06.60,HPRF - First Article SSAs - Procurement,AS_HPRF_SSA_5480,1st Art SSA First Article Evaluation - M&S,191.0,10000.0,9000.0,10000.0,12-17-2020,10-29-21,"AS_HPRF_SSA_5400: FS, AS_HPRF_SSA_5450: FS, AS_HPRF_SSA_5410: FS","AS_HPRF_SSA_5440: FS, AS_HPRF_SSA_5010: FS",SLAC,10%,SL_MSSC.SLAC M&S (<$500K) (gets G&A) (gets ESC),SLAC M&S (<$500K) (gets G&A) (gets ESC),Nonlabor,192.0d,21.0,213.0,At Completion Units,12/18/2020,9/29/2021,0,0,0,0,0,0,0,0,0,0,1.03_Accelerator Systems (AS),1.03.03_AS Superconducting Linac System (ScL),1.03.03.06_AS Superconducting Linac System Procurement and Fabrication,1.03.03.06.60_HPRF - First Article SSAs - Procurement,AS_HPRF_SSA_5480_1st Art SSA First Article Evaluation - M&S,Material,,SLAC,M&S
74383,1.03,1.03.03,1.03.03.06,1.03.03.06.60,1.03.03.06.60,HPRF - First Article SSAs - Procurement,AS_HPRF_SSA_5430,SLAC suport during Testing 1st Art SSA - Labor,119.0,165.0,0.0,165.0,07-01-2020,12-31-2020,AS_HPRF_SSA_5390: SS,"AS_HPRF_SSA_5450: SS, AS_HPRF_SSA_5440: FS",SLAC,100%,52211.52211_EEDOPSE (Electronics & Engineering Div - Ops & PSE),52211_EEDOPSE (Electronics & Engineering Div - Ops & PSE),Labor,119.0d,0.0,119.0,At Completion Units,11/9/2020,5/11/2021,0,0,0,0,0,0,0,0,0,0,1.03_Accelerator Systems (AS),1.03.03_AS Superconducting Linac System (ScL),1.03.03.06_AS Superconducting Linac System Procurement and Fabrication,1.03.03.06.60_HPRF - First Article SSAs - Procurement,AS_HPRF_SSA_5430_SLAC suport during Testing 1st Art SSA - Labor,Electrical,,SLAC,Labor
74384,1.03,1.03.03,1.03.03.06,1.03.03.06.60,1.03.03.06.60,HPRF - First Article SSAs - Procurement,AS_HPRF_SSA_5430,SLAC suport during Testing 1st Art SSA - Labor,119.0,165.0,0.0,165.0,07-01-2020,12-31-2020,AS_HPRF_SSA_5390: SS,"AS_HPRF_SSA_5450: SS, AS_HPRF_SSA_5440: FS",SLAC,100%,52168.52168_METS - Mechanical Design,52168_METS - Mechanical Design,Labor,119.0d,0.0,119.0,At Completion Units,11/9/2020,5/11/2021,0,0,0,0,0,0,0,0,0,0,1.03_Accelerator Systems (AS),1.03.03_AS Superconducting Linac System (ScL),1.03.03.06_AS Superconducting Linac System Procurement and Fabrication,1.03.03.06.60_HPRF - First Article SSAs - Procurement,AS_HPRF_SSA_5430_SLAC suport during Testing 1st Art SSA - Labor,Mechanical,,SLAC,Labor
74385,1.03,1.03.03,1.03.03.06,1.03.03.06.60,1.03.03.06.60,HPRF - First Article SSAs - Procurement,AS_HPRF_SSA_5300,Prepare SOW and requisition for 1st Art SSA (qty 18),21.0,0.0,0.0,0.0,05-01-2019,06-27-2019,"AS_HPRF_SSA_5460: FF, AS_HPRF_SSA_5470: FF",AS_HPRF_SSA_5310: FS,SLAC,0%,52168.52168_METS - Mechanical Design,52168_METS - Mechanical Design,Labor,41.0d,0.0,41.0,At Completion Units,nn,,0,0,0,0,0,0,0,0,0,0,1.03_Accelerator Systems (AS),1.03.03_AS Superconducting Linac System (ScL),1.03.03.06_AS Superconducting Linac System Procurement and Fabrication,1.03.03.06.60_HPRF - First Article SSAs - Procurement,AS_HPRF_SSA_5300_Prepare SOW and requisition for 1st Art SSA (qty 18),Mechanical,,SLAC,Labor
74386,1.03,1.03.03,1.03.03.06,1.03.03.06.60,1.03.03.06.60,HPRF - First Article SSAs - Procurement,AS_HPRF_SSA_5300,Prepare SOW and requisition for 1st Art SSA (qty 18),21.0,0.0,0.0,0.0,05-01-2019,06-27-2019,"AS_HPRF_SSA_5460: FF, AS_HPRF_SSA_5470: FF",AS_HPRF_SSA_5310: FS,SLAC,0%,52211.52211_EEDOPSE (Electronics & Engineering Div - Ops & PSE),52211_EEDOPSE (Electronics & Engineering Div - Ops & PSE),Labor,41.0d,0.0,41.0,At Completion Units,nn,,0,0,0,0,0,0,0,0,0,0,1.03_Accelerator Systems (AS),1.03.03_AS Superconducting Linac System (ScL),1.03.03.06_AS Superconducting Linac System Procurement and Fabrication,1.03.03.06.60_HPRF - First Article SSAs - Procurement,AS_HPRF_SSA_5300_Prepare SOW and requisition for 1st Art SSA (qty 18),Electrical,,SLAC,Labor
74387,1.03,1.03.03,1.03.03.06,1.03.03.06.60,1.03.03.06.60,HPRF - First Article SSAs - Procurement,AS_HPRF_SSA_5410,Delivery JLAB (qty 8) - 1st Art SSA,1.0,148888.0,0.0,0.0,11-09-2020,12-17-2020,"AS_HPRF_SSA_5390: SS, AS_HPRF_SSA_5380: FS","AS_HPRF_SSA_5420: FS, AS_HPRF_SSA_5480: FS",SLAC,0%,SL_MSSY.SLAC M&S (>$500K) (NO G&A) (gets ESC),SLAC M&S (>$500K) (NO G&A) (gets ESC),Nonlabor,26.0d,0.0,26.0,At Completion Units,11/9/2020,12/17/2020,0,0,0,0,0,0,0,0,0,0,1.03_Accelerator Systems (AS),1.03.03_AS Superconducting Linac System (ScL),1.03.03.06_AS Superconducting Linac System Procurement and Fabrication,1.03.03.06.60_HPRF - First Article SSAs - Procurement,AS_HPRF_SSA_5410_Delivery JLAB (qty 8) - 1st Art SSA,Material,,SLAC,M&S
74388,1.03,1.03.03,1.03.03.06,1.03.03.06.60,1.03.03.06.60,HPRF - First Article SSAs - Procurement,AS_HPRF_SSA_5410,Delivery JLAB (qty 8) - 1st Art SSA,1.0,500000.0,0.0,0.0,11-09-2020,12-17-2020,"AS_HPRF_SSA_5390: SS, AS_HPRF_SSA_5380: FS","AS_HPRF_SSA_5420: FS, AS_HPRF_SSA_5480: FS",SLAC,0%,SL_MSSC.SLAC M&S (<$500K) (gets G&A) (gets ESC),SLAC M&S (<$500K) (gets G&A) (gets ESC),Nonlabor,26.0d,0.0,26.0,At Completion Units,11/9/2020,12/17/2020,0,0,0,0,0,0,0,0,0,0,1.03_Accelerator Systems (AS),1.03.03_AS Superconducting Linac System (ScL),1.03.03.06_AS Superconducting Linac System Procurement and Fabrication,1.03.03.06.60_HPRF - First Article SSAs - Procurement,AS_HPRF_SSA_5410_Delivery JLAB (qty 8) - 1st Art SSA,Material,,SLAC,M&S
74389,1.03,1.03.03,1.03.03.06,1.03.03.06.60,1.03.03.06.60,HPRF - First Article SSAs - Procurement,AS_HPRF_SSA_5390,SLAC support during Fabrication 1st Art SSA - M&S,119.0,0.0,0.0,0.0,11-09-2020,11-09-2020,AS_HPRF_SSA_5380: FS,"AS_HPRF_SSA_5400: SS, AS_HPRF_SSA_5410: SS, AS_HPRF_SSA_5450: SS, AS_HPRF_SSA_5430: SS",SLAC,0%,SL_MSSC.SLAC M&S (<$500K) (gets G&A) (gets ESC),SLAC M&S (<$500K) (gets G&A) (gets ESC),Nonlabor,0.0d,0.0,0.0,At Completion Units,11/9/2020,11/9/2020,0,0,0,0,0,0,0,0,0,0,1.03_Accelerator Systems (AS),1.03.03_AS Superconducting Linac System (ScL),1.03.03.06_AS Superconducting Linac System Procurement and Fabrication,1.03.03.06.60_HPRF - First Article SSAs - Procurement,AS_HPRF_SSA_5390_SLAC support during Fabrication 1st Art SSA - M&S,Material,,SLAC,M&S
74390,1.03,1.03.03,1.03.03.06,1.03.03.06.60,1.03.03.06.60,HPRF - First Article SSAs - Procurement,AS_HPRF_SSA_5450,Delivery SLAC (qty 2) - 1st Art SSA,1.0,162224.0,0.0,0.0,11-09-2020,11-09-2020,"AS_HPRF_SSA_5390: SS, AS_HPRF_SSA_5430: SS","AS_HPRF_SSA_5420: FS, AS_HPRF_SSA_5480: FS",SLAC,0%,SL_MSSC.SLAC M&S (<$500K) (gets G&A) (gets ESC),SLAC M&S (<$500K) (gets G&A) (gets ESC),Nonlabor,0.0d,0.0,0.0,At Completion Units,11/9/2020,11/9/2020,0,0,0,0,0,0,0,0,0,0,1.03_Accelerator Systems (AS),1.03.03_AS Superconducting Linac System (ScL),1.03.03.06_AS Superconducting Linac System Procurement and Fabrication,1.03.03.06.60_HPRF - First Article SSAs - Procurement,AS_HPRF_SSA_5450_Delivery SLAC (qty 2) - 1st Art SSA,Material,,SLAC,M&S
74391,1.03,1.03.03,1.03.03.06,1.03.03.06.60,1.03.03.06.60,HPRF - First Article SSAs - Procurement,AS_HPRF_SSA_5400,Delivery FNL (qty 8) - 1st Art SSA,1.0,500000.0,0.0,0.0,11-09-2020,11-09-2020,"AS_HPRF_SSA_5390: SS, AS_HPRF_SSA_5380: FS","AS_HPRF_SSA_5420: FS, AS_HPRF_SSA_5480: FS",SLAC,0%,SL_MSSY.SLAC M&S (>$500K) (NO G&A) (gets ESC),SLAC M&S (>$500K) (NO G&A) (gets ESC),Nonlabor,0.0d,0.0,0.0,At Completion Units,11/9/2020,11/9/2020,0,0,0,0,0,0,0,0,0,0,1.03_Accelerator Systems (AS),1.03.03_AS Superconducting Linac System (ScL),1.03.03.06_AS Superconducting Linac System Procurement and Fabrication,1.03.03.06.60_HPRF - First Article SSAs - Procurement,AS_HPRF_SSA_5400_Delivery FNL (qty 8) - 1st Art SSA,Material,,SLAC,M&S
74392,1.03,1.03.03,1.03.03.06,1.03.03.06.60,1.03.03.06.60,HPRF - First Article SSAs - Procurement,AS_HPRF_SSA_5400,Delivery FNL (qty 8) - 1st Art SSA,1.0,148888.0,0.0,0.0,11-09-2020,11-09-2020,"AS_HPRF_SSA_5390: SS, AS_HPRF_SSA_5380: FS","AS_HPRF_SSA_5420: FS, AS_HPRF_SSA_5480: FS",SLAC,0%,SL_MSSC.SLAC M&S (<$500K) (gets G&A) (gets ESC),SLAC M&S (<$500K) (gets G&A) (gets ESC),Nonlabor,0.0d,0.0,0.0,At Completion Units,11/9/2020,11/9/2020,0,0,0,0,0,0,0,0,0,0,1.03_Accelerator Systems (AS),1.03.03_AS Superconducting Linac System (ScL),1.03.03.06_AS Superconducting Linac System Procurement and Fabrication,1.03.03.06.60_HPRF - First Article SSAs - Procurement,AS_HPRF_SSA_5400_Delivery FNL (qty 8) - 1st Art SSA,Material,,SLAC,M&S
74393,1.03,1.03.03,1.03.03.06,1.03.03.06.60,1.03.03.06.60,HPRF - First Article SSAs - Procurement,AS_HPRF_SSA_5370,AWARD:1st Art SSA Contract,1.0,1460000.0,0.0,0.0,09-25-2019,09-25-2019,AS_HPRF_SSA_5360: FS,AS_HPRF_SSA_5380: FS,SLAC,0%,AWARD_USE.AWARD - Use this AWARD,AWARD - Use this AWARD,Nonlabor,0.0d,0.0,0.0,At Completion Units,nn,,AWARD > $500K,0,0,0,0,0,0,0,0,0,1.03_Accelerator Systems (AS),1.03.03_AS Superconducting Linac System (ScL),1.03.03.06_AS Superconducting Linac System Procurement and Fabrication,1.03.03.06.60_HPRF - First Article SSAs - Procurement,AS_HPRF_SSA_5370_AWARD:1st Art SSA Contract,Material,,SLAC,M&S
74713,1.03,1.03.03,1.03.03.06,1.03.03.06.61,1.03.03.06.61,HPRF - SSAs - Procurement,AS_HPRF_SSA_6210,SSA Characteraization (repeat of FAT at Diff. powers) - SSAs,87.5,321.0,321.0,321.0,12-05-25,04-23-26,AS_HPRF_SSA_6200: SS,CS_M4_1050: FS,SLAC,0%,52210.52210_EEDRF,52210_EEDRF,Labor,0.0d,87.5,87.5,At Completion Units,11/5/2024,3/26/2025,0,0,0,0,0,0,0,0,0,0,1.03_Accelerator Systems (AS),1.03.03_AS Superconducting Linac System (ScL),1.03.03.06_AS Superconducting Linac System Procurement and Fabrication,1.03.03.06.61_HPRF - SSAs - Procurement,AS_HPRF_SSA_6210_SSA Characteraization (repeat of FAT at Diff. powers) - SSAs,RF,,SLAC,Labor
74714,1.03,1.03.03,1.03.03.06,1.03.03.06.61,1.03.03.06.61,HPRF - SSAs - Procurement,AS_HPRF_SSA_6210,SSA Characteraization (repeat of FAT at Diff. powers) - SSAs,87.5,53.0,53.0,53.0,12-05-25,04-23-26,AS_HPRF_SSA_6200: SS,CS_M4_1050: FS,SLAC,0%,52178.52178_RF Vacuum Tube Fab,52178_RF Vacuum Tube Fab,Labor,0.0d,87.5,87.5,At Completion Units,11/5/2024,3/26/2025,0,0,0,0,0,0,0,0,0,0,1.03_Accelerator Systems (AS),1.03.03_AS Superconducting Linac System (ScL),1.03.03.06_AS Superconducting Linac System Procurement and Fabrication,1.03.03.06.61_HPRF - SSAs - Procurement,AS_HPRF_SSA_6210_SSA Characteraization (repeat of FAT at Diff. powers) - SSAs,RF Fab,,SLAC,Labor
74715,1.03,1.03.03,1.03.03.06,1.03.03.06.61,1.03.03.06.61,HPRF - SSAs - Procurement,AS_HPRF_SSA_6200,25% Acceptance Test on Test Stand - SSAs,85.0,356.0,356.0,356.0,12-05-25,04-20-26,AS_HPRF_SSA_6190: FS,AS_HPRF_SSA_6210: SS,SLAC,0%,52210.52210_EEDRF,52210_EEDRF,Labor,0.0d,85.0,85.0,At Completion Units,11/5/2024,3/21/2025,0,0,0,0,0,0,0,0,0,0,1.03_Accelerator Systems (AS),1.03.03_AS Superconducting Linac System (ScL),1.03.03.06_AS Superconducting Linac System Procurement and Fabrication,1.03.03.06.61_HPRF - SSAs - Procurement,AS_HPRF_SSA_6200_25% Acceptance Test on Test Stand - SSAs,RF,,SLAC,Labor
74716,1.03,1.03.03,1.03.03.06,1.03.03.06.61,1.03.03.06.61,HPRF - SSAs - Procurement,AS_HPRF_SSA_6200,25% Acceptance Test on Test Stand - SSAs,85.0,48.0,48.0,48.0,12-05-25,04-20-26,AS_HPRF_SSA_6190: FS,AS_HPRF_SSA_6210: SS,SLAC,0%,52178.52178_RF Vacuum Tube Fab,52178_RF Vacuum Tube Fab,Labor,0.0d,85.0,85.0,At Completion Units,11/5/2024,3/21/2025,0,0,0,0,0,0,0,0,0,0,1.03_Accelerator Systems (AS),1.03.03_AS Superconducting Linac System (ScL),1.03.03.06_AS Superconducting Linac System Procurement and Fabrication,1.03.03.06.61_HPRF - SSAs - Procurement,AS_HPRF_SSA_6200_25% Acceptance Test on Test Stand - SSAs,RF Fab,,SLAC,Labor
74717,1.03,1.03.03,1.03.03.06,1.03.03.06.61,1.03.03.06.61,HPRF - SSAs - Procurement,AS_HPRF_SSA_6190,Inventory - SSAs,20.0,43.0,43.0,43.0,11-05-25,12-04-25,AS_HPRF_SSA_6180: FS,AS_HPRF_SSA_6200: FS,SLAC,0%,52178.52178_RF Vacuum Tube Fab,52178_RF Vacuum Tube Fab,Labor,0.0d,20.0,20.0,At Completion Units,10/8/2024,11/4/2024,0,0,0,0,0,0,0,0,0,0,1.03_Accelerator Systems (AS),1.03.03_AS Superconducting Linac System (ScL),1.03.03.06_AS Superconducting Linac System Procurement and Fabrication,1.03.03.06.61_HPRF - SSAs - Procurement,AS_HPRF_SSA_6190_Inventory - SSAs,RF Fab,,SLAC,Labor
74718,1.03,1.03.03,1.03.03.06,1.03.03.06.61,1.03.03.06.61,HPRF - SSAs - Procurement,AS_HPRF_SSA_6180,Shipping Crate Disposal - SSAs,10.0,374.0,374.0,374.0,10-22-25,11-04-25,AS_HPRF_SSA_6170: FS,AS_HPRF_SSA_6190: FS,SLAC,0%,52152.52152_FAC Fleet,52152_FAC Fleet,Labor,0.0d,10.0,10.0,At Completion Units,9/24/2024,10/7/2024,0,0,0,0,0,0,0,0,0,0,1.03_Accelerator Systems (AS),1.03.03_AS Superconducting Linac System (ScL),1.03.03.06_AS Superconducting Linac System Procurement and Fabrication,1.03.03.06.61_HPRF - SSAs - Procurement,AS_HPRF_SSA_6180_Shipping Crate Disposal - SSAs,Support System,,SLAC,Labor
74719,1.03,1.03.03,1.03.03.06,1.03.03.06.61,1.03.03.06.61,HPRF - SSAs - Procurement,AS_HPRF_SSA_6170,Unpack and EEIP - SSAs,40.0,873.0,873.0,873.0,08-26-25,10-21-25,AS_HPRF_SSA_6160: FS,AS_HPRF_SSA_6180: FS,SLAC,0%,52210.52210_EEDRF,52210_EEDRF,Labor,0.0d,40.0,40.0,At Completion Units,7/29/2024,9/23/2024,0,0,0,0,0,0,0,0,0,0,1.03_Accelerator Systems (AS),1.03.03_AS Superconducting Linac System (ScL),1.03.03.06_AS Superconducting Linac System Procurement and Fabrication,1.03.03.06.61_HPRF - SSAs - Procurement,AS_HPRF_SSA_6170_Unpack and EEIP - SSAs,RF,,SLAC,Labor
74720,1.03,1.03.03,1.03.03.06,1.03.03.06.61,1.03.03.06.61,HPRF - SSAs - Procurement,AS_HPRF_SSA_6170,Unpack and EEIP - SSAs,40.0,107.0,107.0,107.0,08-26-25,10-21-25,AS_HPRF_SSA_6160: FS,AS_HPRF_SSA_6180: FS,SLAC,0%,52178.52178_RF Vacuum Tube Fab,52178_RF Vacuum Tube Fab,Labor,0.0d,40.0,40.0,At Completion Units,7/29/2024,9/23/2024,0,0,0,0,0,0,0,0,0,0,1.03_Accelerator Systems (AS),1.03.03_AS Superconducting Linac System (ScL),1.03.03.06_AS Superconducting Linac System Procurement and Fabrication,1.03.03.06.61_HPRF - SSAs - Procurement,AS_HPRF_SSA_6170_Unpack and EEIP - SSAs,RF Fab,,SLAC,Labor
74721,1.03,1.03.03,1.03.03.06,1.03.03.06.61,1.03.03.06.61,HPRF - SSAs - Procurement,AS_HPRF_SSA_6160,Rigger Transport - SSAs,40.0,267.0,267.0,267.0,06-30-25,08-25-25,AS_HPRF_SSA_6150: FS,AS_HPRF_SSA_6170: FS,SLAC,0%,52152.52152_FAC Fleet,52152_FAC Fleet,Labor,0.0d,40.0,40.0,At Completion Units,5/31/2024,7/26/2024,0,0,0,0,0,0,0,0,0,0,1.03_Accelerator Systems (AS),1.03.03_AS Superconducting Linac System (ScL),1.03.03.06_AS Superconducting Linac System Procurement and Fabrication,1.03.03.06.61_HPRF - SSAs - Procurement,AS_HPRF_SSA_6160_Rigger Transport - SSAs,Support System,,SLAC,Labor
74722,1.03,1.03.03,1.03.03.06,1.03.03.06.61,1.03.03.06.61,HPRF - SSAs - Procurement,AS_HPRF_SSA_6130,Vendor Support - SSAs,240.0,21.0,21.0,21.0,07-03-24,06-26-25,AS_HPRF_SSA_6120: FS,AS_HPRF_SSA_6140: FS,SLAC,0%,8706.8706_Health & Safety Specialist,8706_Health & Safety Specialist,Labor,0.0d,240.0,240.0,At Completion Units,6/5/2023,5/29/2024,0,0,0,0,0,0,0,0,0,0,1.03_Accelerator Systems (AS),1.03.03_AS Superconducting Linac System (ScL),1.03.03.06_AS Superconducting Linac System Procurement and Fabrication,1.03.03.06.61_HPRF - SSAs - Procurement,AS_HPRF_SSA_6130_Vendor Support - SSAs,ESH,,SLAC,Labor
74723,1.03,1.03.03,1.03.03.06,1.03.03.06.61,1.03.03.06.61,HPRF - SSAs - Procurement,AS_HPRF_SSA_6130,Vendor Support - SSAs,240.0,22.0,22.0,22.0,07-03-24,06-26-25,AS_HPRF_SSA_6120: FS,AS_HPRF_SSA_6140: FS,SLAC,0%,52210.52210_EEDRF,52210_EEDRF,Labor,0.0d,240.0,240.0,At Completion Units,6/5/2023,5/29/2024,0,0,0,0,0,0,0,0,0,0,1.03_Accelerator Systems (AS),1.03.03_AS Superconducting Linac System (ScL),1.03.03.06_AS Superconducting Linac System Procurement and Fabrication,1.03.03.06.61_HPRF - SSAs - Procurement,AS_HPRF_SSA_6130_Vendor Support - SSAs,RF,,SLAC,Labor
74724,1.03,1.03.03,1.03.03.06,1.03.03.06.61,1.03.03.06.61,HPRF - SSAs - Procurement,AS_HPRF_SSA_6130,Vendor Support - SSAs,240.0,154.0,154.0,154.0,07-03-24,06-26-25,AS_HPRF_SSA_6120: FS,AS_HPRF_SSA_6140: FS,SLAC,0%,52178.52178_RF Vacuum Tube Fab,52178_RF Vacuum Tube Fab,Labor,0.0d,240.0,240.0,At Completion Units,6/5/2023,5/29/2024,0,0,0,0,0,0,0,0,0,0,1.03_Accelerator Systems (AS),1.03.03_AS Superconducting Linac System (ScL),1.03.03.06_AS Superconducting Linac System Procurement and Fabrication,1.03.03.06.61_HPRF - SSAs - Procurement,AS_HPRF_SSA_6130_Vendor Support - SSAs,RF Fab,,SLAC,Labor
74725,1.03,1.03.03,1.03.03.06,1.03.03.06.61,1.03.03.06.61,HPRF - SSAs - Procurement,AS_HPRF_SSA_6090,Prepare Award Documents - SSAs,5.0,8.0,8.0,8.0,05-29-24,06-04-24,AS_HPRF_SSA_6080: FS,AS_HPRF_SSA_6100: FS,SLAC,0%,52178.52178_RF Vacuum Tube Fab,52178_RF Vacuum Tube Fab,Labor,0.0d,5.0,5.0,At Completion Units,4/28/2023,5/4/2023,0,0,0,0,0,0,0,0,0,0,1.03_Accelerator Systems (AS),1.03.03_AS Superconducting Linac System (ScL),1.03.03.06_AS Superconducting Linac System Procurement and Fabrication,1.03.03.06.61_HPRF - SSAs - Procurement,AS_HPRF_SSA_6090_Prepare Award Documents - SSAs,RF Fab,,SLAC,Labor
74726,1.03,1.03.03,1.03.03.06,1.03.03.06.61,1.03.03.06.61,HPRF - SSAs - Procurement,AS_HPRF_SSA_6010,Prepare Requisition (Specs/SOW/ETC) - SSAs,20.0,43.0,43.0,43.0,10-02-23,10-27-23,"AS_HPRF_SSA_5030: FS, AS_M4_3010: FS","AS_HPRF_SSA_6020: FS, AS_HPRF_ISL_6010: FS",SLAC,0%,52178.52178_RF Vacuum Tube Fab,52178_RF Vacuum Tube Fab,Labor,0.0d,20.0,20.0,At Completion Units,9/1/2022,9/29/2022,0,0,0,0,0,0,0,0,0,0,1.03_Accelerator Systems (AS),1.03.03_AS Superconducting Linac System (ScL),1.03.03.06_AS Superconducting Linac System Procurement and Fabrication,1.03.03.06.61_HPRF - SSAs - Procurement,AS_HPRF_SSA_6010_Prepare Requisition (Specs/SOW/ETC) - SSAs,RF Fab,,SLAC,Labor
74727,1.03,1.03.03,1.03.03.06,1.03.03.06.61,1.03.03.06.61,HPRF - SSAs - Procurement,AS_HPRF_SSA_6140,RCV: Goods/Services/Final Report - SSAs,1.0,13412920.0,13412920.0,13412920.0,06-27-25,06-27-25,AS_HPRF_SSA_6130: FS,AS_HPRF_SSA_6150: FS,SLAC,0%,SL_MSSY.SLAC M&S (>$500K) (NO G&A) (gets ESC),SLAC M&S (>$500K) (NO G&A) (gets ESC),Nonlabor,0.0d,1.0,1.0,At Completion Units,5/30/2024,5/30/2024,0,0,0,0,0,0,0,0,0,0,1.03_Accelerator Systems (AS),1.03.03_AS Superconducting Linac System (ScL),1.03.03.06_AS Superconducting Linac System Procurement and Fabrication,1.03.03.06.61_HPRF - SSAs - Procurement,AS_HPRF_SSA_6140_RCV: Goods/Services/Final Report - SSAs,Material,,SLAC,M&S
74728,1.03,1.03.03,1.03.03.06,1.03.03.06.61,1.03.03.06.61,HPRF - SSAs - Procurement,AS_HPRF_SSA_6120,AWARD: Procurement - SSAs,5.0,13912920.0,13912920.0,13912920.0,06-26-24,07-02-24,AS_HPRF_SSA_6110: FS,AS_HPRF_SSA_6130: FS,SLAC,0%,AWARD_USE.AWARD - Use this AWARD,AWARD - Use this AWARD,Nonlabor,0.0d,5.0,5.0,At Completion Units,5/26/2023,6/2/2023,AWARD > $500K,0,0,0,0,0,0,0,0,0,1.03_Accelerator Systems (AS),1.03.03_AS Superconducting Linac System (ScL),1.03.03.06_AS Superconducting Linac System Procurement and Fabrication,1.03.03.06.61_HPRF - SSAs - Procurement,AS_HPRF_SSA_6120_AWARD: Procurement - SSAs,Material,,SLAC,M&S
74729,1.03,1.03.03,1.03.03.06,1.03.03.06.61,1.03.03.06.61,HPRF - SSAs - Procurement,AS_HPRF_SSA_6020,RQN: Approval of Requisition - SSAs,1.0,13912920.0,13912920.0,13912920.0,10-30-23,10-30-23,AS_HPRF_SSA_6010: FS,AS_HPRF_SSA_6030: FS,SLAC,0%,REQ.Requisition,Requisition,Nonlabor,0.0d,1.0,1.0,At Completion Units,9/30/2022,9/30/2022,RQN,0,0,0,0,0,0,0,0,0,1.03_Accelerator Systems (AS),1.03.03_AS Superconducting Linac System (ScL),1.03.03.06_AS Superconducting Linac System Procurement and Fabrication,1.03.03.06.61_HPRF - SSAs - Procurement,AS_HPRF_SSA_6020_RQN: Approval of Requisition - SSAs,Material,,SLAC,M&S
74730,1.03,1.03.03,1.03.03.06,1.03.03.06.61,1.03.03.06.61,HPRF - SSAs - Procurement,AS_HPRF_SSA_6140,RCV: Goods/Services/Final Report - SSAs,1.0,500000.0,500000.0,500000.0,06-27-25,06-27-25,AS_HPRF_SSA_6130: FS,AS_HPRF_SSA_6150: FS,SLAC,0%,SL_MSSC.SLAC M&S (<$500K) (gets G&A) (gets ESC),SLAC M&S (<$500K) (gets G&A) (gets ESC),Nonlabor,0.0d,1.0,1.0,At Completion Units,5/30/2024,5/30/2024,0,0,0,0,0,0,0,0,0,0,1.03_Accelerator Systems (AS),1.03.03_AS Superconducting Linac System (ScL),1.03.03.06_AS Superconducting Linac System Procurement and Fabrication,1.03.03.06.61_HPRF - SSAs - Procurement,AS_HPRF_SSA_6140_RCV: Goods/Services/Final Report - SSAs,Material,,SLAC,M&S
75050,1.03,1.03.03,1.03.03.06,1.03.03.06.65,1.03.03.06.65,HPRF - Radiation Caps - Procurement,AS_HPRF_CAP_6250,Inventory - Radiation Caps,20.0,52.0,52.0,52.0,04-15-24,05-10-24,AS_HPRF_CAP_6240: FS,AS_HPRF_CAP_9100: FS,SLAC,0%,52178.52178_RF Vacuum Tube Fab,52178_RF Vacuum Tube Fab,Labor,0.0d,20.0,20.0,At Completion Units,3/16/2023,4/12/2023,0,0,0,0,0,0,0,0,0,0,1.03_Accelerator Systems (AS),1.03.03_AS Superconducting Linac System (ScL),1.03.03.06_AS Superconducting Linac System Procurement and Fabrication,1.03.03.06.65_HPRF - Radiation Caps - Procurement,AS_HPRF_CAP_6250_Inventory - Radiation Caps,RF Fab,,SLAC,Labor
75051,1.03,1.03.03,1.03.03.06,1.03.03.06.65,1.03.03.06.65,HPRF - Radiation Caps - Procurement,AS_HPRF_CAP_6220,Vendor Effort - Radiation Caps,60.0,21.0,21.0,21.0,01-18-24,04-11-24,AS_HPRF_CAP_6210: FS,AS_HPRF_CAP_6230: FS,SLAC,0%,52178.52178_RF Vacuum Tube Fab,52178_RF Vacuum Tube Fab,Labor,0.0d,60.0,60.0,At Completion Units,12/5/2022,3/14/2023,0,0,0,0,0,0,0,0,0,0,1.03_Accelerator Systems (AS),1.03.03_AS Superconducting Linac System (ScL),1.03.03.06_AS Superconducting Linac System Procurement and Fabrication,1.03.03.06.65_HPRF - Radiation Caps - Procurement,AS_HPRF_CAP_6220_Vendor Effort - Radiation Caps,RF Fab,,SLAC,Labor
75052,1.03,1.03.03,1.03.03.06,1.03.03.06.65,1.03.03.06.65,HPRF - Radiation Caps - Procurement,AS_HPRF_CAP_6210,AWARD: Procurement - Radiation Caps,1.0,381459.0,381459.0,381459.0,01-17-24,01-17-24,AS_HPRF_CAP_6200: FS,AS_HPRF_CAP_6220: FS,SLAC,0%,AWARD_USE.AWARD - Use this AWARD,AWARD - Use this AWARD,Nonlabor,0.0d,1.0,1.0,At Completion Units,12/2/2022,12/2/2022,AWARD < $500K,0,0,0,0,0,0,0,0,0,1.03_Accelerator Systems (AS),1.03.03_AS Superconducting Linac System (ScL),1.03.03.06_AS Superconducting Linac System Procurement and Fabrication,1.03.03.06.65_HPRF - Radiation Caps - Procurement,AS_HPRF_CAP_6210_AWARD: Procurement - Radiation Caps,Material,,SLAC,M&S
75053,1.03,1.03.03,1.03.03.06,1.03.03.06.65,1.03.03.06.65,HPRF - Radiation Caps - Procurement,AS_HPRF_CAP_6140,RQN: Approval of Requisition - Radiation Caps,1.0,381459.0,381459.0,381459.0,10-23-23,10-23-23,AS_HPRF_CAP_6130: FS,AS_HPRF_CAP_6150: FS,SLAC,0%,REQ.Requisition,Requisition,Nonlabor,0.0d,1.0,1.0,At Completion Units,9/23/2022,9/23/2022,RQN,0,0,0,0,0,0,0,0,0,1.03_Accelerator Systems (AS),1.03.03_AS Superconducting Linac System (ScL),1.03.03.06_AS Superconducting Linac System Procurement and Fabrication,1.03.03.06.65_HPRF - Radiation Caps - Procurement,AS_HPRF_CAP_6140_RQN: Approval of Requisition - Radiation Caps,Material,,SLAC,M&S
75054,1.03,1.03.03,1.03.03.06,1.03.03.06.65,1.03.03.06.65,HPRF - Radiation Caps - Procurement,AS_HPRF_CAP_6230,RCV: Radiation Caps,1.0,381459.0,381459.0,381459.0,04-12-24,04-12-24,AS_HPRF_CAP_6220: FS,AS_HPRF_CAP_6240: FS,SLAC,0%,SL_MSSC.SLAC M&S (<$500K) (gets G&A) (gets ESC),SLAC M&S (<$500K) (gets G&A) (gets ESC),Nonlabor,0.0d,1.0,1.0,At Completion Units,3/15/2023,3/15/2023,0,0,0,0,0,0,0,0,0,0,1.03_Accelerator Systems (AS),1.03.03_AS Superconducting Linac System (ScL),1.03.03.06_AS Superconducting Linac System Procurement and Fabrication,1.03.03.06.65_HPRF - Radiation Caps - Procurement,AS_HPRF_CAP_6230_RCV: Radiation Caps,Material,,SLAC,M&S
75374,1.03,1.03.03,1.03.03.06,1.03.03.06.66,1.03.03.06.66,HPRF - Vertical Penetration Conduits - Procurement,AS_HPRF_CND_6160,Transport to Inventory - Vertical Penetration Conduits,5.0,10.0,10.0,10.0,03-27-24,04-02-24,AS_HPRF_CND_6150: FS,AS_HPRF_CAP_9400: FS,SLAC,0%,52178.52178_RF Vacuum Tube Fab,52178_RF Vacuum Tube Fab,Labor,0.0d,5.0,5.0,At Completion Units,8/30/2023,9/6/2023,0,0,0,0,0,0,0,0,0,0,1.03_Accelerator Systems (AS),1.03.03_AS Superconducting Linac System (ScL),1.03.03.06_AS Superconducting Linac System Procurement and Fabrication,1.03.03.06.66_HPRF - Vertical Penetration Conduits - Procurement,AS_HPRF_CND_6160_Transport to Inventory - Vertical Penetration Conduits,RF Fab,,SLAC,Labor
75375,1.03,1.03.03,1.03.03.06,1.03.03.06.66,1.03.03.06.66,HPRF - Vertical Penetration Conduits - Procurement,AS_HPRF_CND_6010,Prepare Requisition (Specs/SOW/ETC) - Vertical Penetration Conduits,45.0,12.0,12.0,12.0,12-12-22,02-28-23,AS_HPRF_WAV_5210: FS,AS_HPRF_CND_6020: FS,SLAC,0%,52178.52178_RF Vacuum Tube Fab,52178_RF Vacuum Tube Fab,Labor,0.0d,45.0,45.0,At Completion Units,6/1/2022,8/3/2022,0,0,0,0,0,0,0,0,0,0,1.03_Accelerator Systems (AS),1.03.03_AS Superconducting Linac System (ScL),1.03.03.06_AS Superconducting Linac System Procurement and Fabrication,1.03.03.06.66_HPRF - Vertical Penetration Conduits - Procurement,AS_HPRF_CND_6010_Prepare Requisition (Specs/SOW/ETC) - Vertical Penetration Conduits,RF Fab,,SLAC,Labor
75376,1.03,1.03.03,1.03.03.06,1.03.03.06.66,1.03.03.06.66,HPRF - Vertical Penetration Conduits - Procurement,AS_HPRF_CND_6140,RCV: Vertical Penetration Conduits,1.0,15714.0,15714.0,15714.0,03-26-24,03-26-24,AS_HPRF_CND_6130: FS,AS_HPRF_CND_6150: FS,SLAC,0%,SL_MSSY.SLAC M&S (>$500K) (NO G&A) (gets ESC),SLAC M&S (>$500K) (NO G&A) (gets ESC),Nonlabor,0.0d,1.0,1.0,At Completion Units,8/29/2023,8/29/2023,0,0,0,0,0,0,0,0,0,0,1.03_Accelerator Systems (AS),1.03.03_AS Superconducting Linac System (ScL),1.03.03.06_AS Superconducting Linac System Procurement and Fabrication,1.03.03.06.66_HPRF - Vertical Penetration Conduits - Procurement,AS_HPRF_CND_6140_RCV: Vertical Penetration Conduits,Material,,SLAC,M&S
75377,1.03,1.03.03,1.03.03.06,1.03.03.06.66,1.03.03.06.66,HPRF - Vertical Penetration Conduits - Procurement,AS_HPRF_CND_6120,AWARD: Procurement - Vertical Penetration Conduits,5.0,515714.0,515714.0,515714.0,10-10-23,10-16-23,"AS_HPRF_CND_6110: FS, AS_M4_3010: FS",AS_HPRF_CND_6130: FS,SLAC,0%,AWARD_USE.AWARD - Use this AWARD,AWARD - Use this AWARD,Nonlabor,0.0d,5.0,5.0,At Completion Units,3/31/2023,4/6/2023,AWARD > $500K,0,0,0,0,0,0,0,0,0,1.03_Accelerator Systems (AS),1.03.03_AS Superconducting Linac System (ScL),1.03.03.06_AS Superconducting Linac System Procurement and Fabrication,1.03.03.06.66_HPRF - Vertical Penetration Conduits - Procurement,AS_HPRF_CND_6120_AWARD: Procurement - Vertical Penetration Conduits,Material,,SLAC,M&S
75378,1.03,1.03.03,1.03.03.06,1.03.03.06.66,1.03.03.06.66,HPRF - Vertical Penetration Conduits - Procurement,AS_HPRF_CND_6020,RQN: Approval of Requisition - Vertical Penetration Conduits,1.0,515714.0,515714.0,515714.0,03-01-23,03-01-23,AS_HPRF_CND_6010: FS,AS_HPRF_CND_6030: FS,SLAC,0%,REQ.Requisition,Requisition,Nonlabor,0.0d,1.0,1.0,At Completion Units,8/4/2022,8/4/2022,RQN,0,0,0,0,0,0,0,0,0,1.03_Accelerator Systems (AS),1.03.03_AS Superconducting Linac System (ScL),1.03.03.06_AS Superconducting Linac System Procurement and Fabrication,1.03.03.06.66_HPRF - Vertical Penetration Conduits - Procurement,AS_HPRF_CND_6020_RQN: Approval of Requisition - Vertical Penetration Conduits,Material,,SLAC,M&S
75379,1.03,1.03.03,1.03.03.06,1.03.03.06.66,1.03.03.06.66,HPRF - Vertical Penetration Conduits - Procurement,AS_HPRF_CND_6140,RCV: Vertical Penetration Conduits,1.0,500000.0,500000.0,500000.0,03-26-24,03-26-24,AS_HPRF_CND_6130: FS,AS_HPRF_CND_6150: FS,SLAC,0%,SL_MSSC.SLAC M&S (<$500K) (gets G&A) (gets ESC),SLAC M&S (<$500K) (gets G&A) (gets ESC),Nonlabor,0.0d,1.0,1.0,At Completion Units,8/29/2023,8/29/2023,0,0,0,0,0,0,0,0,0,0,1.03_Accelerator Systems (AS),1.03.03_AS Superconducting Linac System (ScL),1.03.03.06_AS Superconducting Linac System Procurement and Fabrication,1.03.03.06.66_HPRF - Vertical Penetration Conduits - Procurement,AS_HPRF_CND_6140_RCV: Vertical Penetration Conduits,Material,,SLAC,M&S
75699,1.03,1.03.03,1.03.03.06,1.03.03.06.67,1.03.03.06.67,HPRF - Frames and Structure - Procurement,AS_HPRF_ST_6200,Inventory - Frames & Structure,30.0,171.0,171.0,171.0,01-16-24,02-27-24,AS_HPRF_ST_6190: FS,AS_HPRF_ST_9050: FS,SLAC,0%,52178.52178_RF Vacuum Tube Fab,52178_RF Vacuum Tube Fab,Labor,0.0d,30.0,30.0,At Completion Units,1/13/2023,2/27/2023,0,0,0,0,0,0,0,0,0,0,1.03_Accelerator Systems (AS),1.03.03_AS Superconducting Linac System (ScL),1.03.03.06_AS Superconducting Linac System Procurement and Fabrication,1.03.03.06.67_HPRF - Frames and Structure - Procurement,AS_HPRF_ST_6200_Inventory - Frames & Structure,RF Fab,,SLAC,Labor
75700,1.03,1.03.03,1.03.03.06,1.03.03.06.67,1.03.03.06.67,HPRF - Frames and Structure - Procurement,AS_HPRF_ST_6080,Prepare Requisition (Specs/SOW/ETC) -  Frames & Structure,25.0,22.0,22.0,22.0,12-12-22,01-30-23,AS_HPRF_WAV_5210: FS,AS_HPRF_ST_6090: FS,SLAC,0%,52190.52190_METSTP Tech Planning - Reinstated FY16,52190_METSTP Tech Planning - Reinstated FY16,Labor,0.0d,25.0,25.0,At Completion Units,6/1/2022,7/6/2022,0,0,0,0,0,0,0,0,0,0,1.03_Accelerator Systems (AS),1.03.03_AS Superconducting Linac System (ScL),1.03.03.06_AS Superconducting Linac System Procurement and Fabrication,1.03.03.06.67_HPRF - Frames and Structure - Procurement,AS_HPRF_ST_6080_Prepare Requisition (Specs/SOW/ETC) -  Frames & Structure,METSTPT Tech Planning,Tech,SLAC,Labor
75701,1.03,1.03.03,1.03.03.06,1.03.03.06.67,1.03.03.06.67,HPRF - Frames and Structure - Procurement,AS_HPRF_ST_6080,Prepare Requisition (Specs/SOW/ETC) -  Frames & Structure,25.0,139.0,139.0,139.0,12-12-22,01-30-23,AS_HPRF_WAV_5210: FS,AS_HPRF_ST_6090: FS,SLAC,0%,52178.52178_RF Vacuum Tube Fab,52178_RF Vacuum Tube Fab,Labor,0.0d,25.0,25.0,At Completion Units,6/1/2022,7/6/2022,0,0,0,0,0,0,0,0,0,0,1.03_Accelerator Systems (AS),1.03.03_AS Superconducting Linac System (ScL),1.03.03.06_AS Superconducting Linac System Procurement and Fabrication,1.03.03.06.67_HPRF - Frames and Structure - Procurement,AS_HPRF_ST_6080_Prepare Requisition (Specs/SOW/ETC) -  Frames & Structure,RF Fab,,SLAC,Labor
75702,1.03,1.03.03,1.03.03.06,1.03.03.06.67,1.03.03.06.67,HPRF - Frames and Structure - Procurement,AS_HPRF_ST_6160,AWARD: Procurement - Frames & Structure,1.0,288797.0,288797.0,288797.0,10-02-23,10-02-23,"AS_HPRF_ST_6150: FS, AS_M4_3010: FS",AS_HPRF_ST_6170: FS,SLAC,0%,AWARD_USE.AWARD - Use this AWARD,AWARD - Use this AWARD,Nonlabor,0.0d,1.0,1.0,At Completion Units,10/3/2022,10/3/2022,AWARD < $500K,0,0,0,0,0,0,0,0,0,1.03_Accelerator Systems (AS),1.03.03_AS Superconducting Linac System (ScL),1.03.03.06_AS Superconducting Linac System Procurement and Fabrication,1.03.03.06.67_HPRF - Frames and Structure - Procurement,AS_HPRF_ST_6160_AWARD: Procurement - Frames & Structure,Material,,SLAC,M&S
75703,1.03,1.03.03,1.03.03.06,1.03.03.06.67,1.03.03.06.67,HPRF - Frames and Structure - Procurement,AS_HPRF_ST_6090,RQN: Approval of Requisition - Frames & Structure,1.0,288797.0,288797.0,288797.0,01-31-23,01-31-23,AS_HPRF_ST_6080: FS,AS_HPRF_ST_6100: FS,SLAC,0%,REQ.Requisition,Requisition,Nonlabor,0.0d,1.0,1.0,At Completion Units,7/7/2022,7/7/2022,RQN,0,0,0,0,0,0,0,0,0,1.03_Accelerator Systems (AS),1.03.03_AS Superconducting Linac System (ScL),1.03.03.06_AS Superconducting Linac System Procurement and Fabrication,1.03.03.06.67_HPRF - Frames and Structure - Procurement,AS_HPRF_ST_6090_RQN: Approval of Requisition - Frames & Structure,Material,,SLAC,M&S
75704,1.03,1.03.03,1.03.03.06,1.03.03.06.67,1.03.03.06.67,HPRF - Frames and Structure - Procurement,AS_HPRF_ST_6180,RCV: Frames & Structure,1.0,288797.0,288797.0,288797.0,01-12-24,01-12-24,AS_HPRF_ST_6170: FS,AS_HPRF_ST_6190: FS,SLAC,0%,SL_MSSC.SLAC M&S (<$500K) (gets G&A) (gets ESC),SLAC M&S (<$500K) (gets G&A) (gets ESC),Nonlabor,0.0d,1.0,1.0,At Completion Units,1/12/2023,1/12/2023,0,0,0,0,0,0,0,0,0,0,1.03_Accelerator Systems (AS),1.03.03_AS Superconducting Linac System (ScL),1.03.03.06_AS Superconducting Linac System Procurement and Fabrication,1.03.03.06.67_HPRF - Frames and Structure - Procurement,AS_HPRF_ST_6180_RCV: Frames & Structure,Material,,SLAC,M&S
76024,1.03,1.03.03,1.03.03.06,1.03.03.06.70,1.03.03.06.70,HPRF - Waveguide - Procurement,AS_HPRF_WAV_6230,Print SN and Coupling Ration on the Side - HPRF Waveguide,20.0,118.0,118.0,118.0,04-30-24,05-28-24,"AS_HPRF_WAV_6160: FS, AS_HPRF_WAV_6220: FF",AS_HPRF_WGTU_9200: FS,SLAC,0%,52178.52178_RF Vacuum Tube Fab,52178_RF Vacuum Tube Fab,Labor,0.0d,20.0,20.0,At Completion Units,8/9/2023,9/6/2023,0,0,0,0,0,0,0,0,0,0,1.03_Accelerator Systems (AS),1.03.03_AS Superconducting Linac System (ScL),1.03.03.06_AS Superconducting Linac System Procurement and Fabrication,1.03.03.06.70_HPRF - Waveguide - Procurement,AS_HPRF_WAV_6230_Print SN and Coupling Ration on the Side - HPRF Waveguide,RF Fab,,SLAC,Labor
76025,1.03,1.03.03,1.03.03.06,1.03.03.06.70,1.03.03.06.70,HPRF - Waveguide - Procurement,AS_HPRF_WAV_6200,Perform 100% Cold Test - HPRF Waveguide,20.0,321.0,321.0,321.0,04-30-24,05-28-24,"AS_HPRF_WAV_6160: FS, AS_HPRF_WAV_6190: FF",AS_HPRF_WAV_6210: FF,SLAC,0%,52178.52178_RF Vacuum Tube Fab,52178_RF Vacuum Tube Fab,Labor,0.0d,20.0,20.0,At Completion Units,8/9/2023,9/6/2023,0,0,0,0,0,0,0,0,0,0,1.03_Accelerator Systems (AS),1.03.03_AS Superconducting Linac System (ScL),1.03.03.06_AS Superconducting Linac System Procurement and Fabrication,1.03.03.06.70_HPRF - Waveguide - Procurement,AS_HPRF_WAV_6200_Perform 100% Cold Test - HPRF Waveguide,RF Fab,,SLAC,Labor
76026,1.03,1.03.03,1.03.03.06,1.03.03.06.70,1.03.03.06.70,HPRF - Waveguide - Procurement,AS_HPRF_WAV_6140,FAT - HPRF Waveguide,30.0,64.0,64.0,64.0,03-18-24,04-26-24,AS_HPRF_WAV_6130: FS,AS_HPRF_WAV_6150: FS,SLAC,0%,52178.52178_RF Vacuum Tube Fab,52178_RF Vacuum Tube Fab,Labor,0.0d,30.0,30.0,At Completion Units,6/26/2023,8/7/2023,0,0,0,0,0,0,0,0,0,0,1.03_Accelerator Systems (AS),1.03.03_AS Superconducting Linac System (ScL),1.03.03.06_AS Superconducting Linac System Procurement and Fabrication,1.03.03.06.70_HPRF - Waveguide - Procurement,AS_HPRF_WAV_6140_FAT - HPRF Waveguide,RF Fab,,SLAC,Labor
76027,1.03,1.03.03,1.03.03.06,1.03.03.06.70,1.03.03.06.70,HPRF - Waveguide - Procurement,AS_HPRF_WAV_6220,Perform 100% Pressure Check - HPRF Waveguide,20.0,171.0,171.0,171.0,04-30-24,05-28-24,"AS_HPRF_WAV_6160: FS, AS_HPRF_WAV_6210: FF","AS_HPRF_WAV_6230: FF, AS_HPRF_CAP_9400: FS",SLAC,0%,52178.52178_RF Vacuum Tube Fab,52178_RF Vacuum Tube Fab,Labor,0.0d,20.0,20.0,At Completion Units,8/9/2023,9/6/2023,0,0,0,0,0,0,0,0,0,0,1.03_Accelerator Systems (AS),1.03.03_AS Superconducting Linac System (ScL),1.03.03.06_AS Superconducting Linac System Procurement and Fabrication,1.03.03.06.70_HPRF - Waveguide - Procurement,AS_HPRF_WAV_6220_Perform 100% Pressure Check - HPRF Waveguide,RF Fab,,SLAC,Labor
76028,1.03,1.03.03,1.03.03.06,1.03.03.06.70,1.03.03.06.70,HPRF - Waveguide - Procurement,AS_HPRF_WAV_6210,Perform 100% Pressure Check Legs - HPRF Waveguide,20.0,214.0,214.0,214.0,04-30-24,05-28-24,"AS_HPRF_WAV_6160: FS, AS_HPRF_WAV_6200: FF",AS_HPRF_WAV_6220: FF,SLAC,0%,52178.52178_RF Vacuum Tube Fab,52178_RF Vacuum Tube Fab,Labor,0.0d,20.0,20.0,At Completion Units,8/9/2023,9/6/2023,0,0,0,0,0,0,0,0,0,0,1.03_Accelerator Systems (AS),1.03.03_AS Superconducting Linac System (ScL),1.03.03.06_AS Superconducting Linac System Procurement and Fabrication,1.03.03.06.70_HPRF - Waveguide - Procurement,AS_HPRF_WAV_6210_Perform 100% Pressure Check Legs - HPRF Waveguide,RF Fab,,SLAC,Labor
76029,1.03,1.03.03,1.03.03.06,1.03.03.06.70,1.03.03.06.70,HPRF - Waveguide - Procurement,AS_HPRF_WAV_6190,Perform 25% Cold Test Legs - HPRF Waveguide,20.0,290.0,290.0,290.0,04-30-24,05-28-24,"AS_HPRF_WAV_6160: FS, AS_HPRF_WAV_6180: FF",AS_HPRF_WAV_6200: FF,SLAC,0%,52178.52178_RF Vacuum Tube Fab,52178_RF Vacuum Tube Fab,Labor,0.0d,20.0,20.0,At Completion Units,8/9/2023,9/6/2023,0,0,0,0,0,0,0,0,0,0,1.03_Accelerator Systems (AS),1.03.03_AS Superconducting Linac System (ScL),1.03.03.06_AS Superconducting Linac System Procurement and Fabrication,1.03.03.06.70_HPRF - Waveguide - Procurement,AS_HPRF_WAV_6190_Perform 25% Cold Test Legs - HPRF Waveguide,RF Fab,,SLAC,Labor
76030,1.03,1.03.03,1.03.03.06,1.03.03.06.70,1.03.03.06.70,HPRF - Waveguide - Procurement,AS_HPRF_WAV_6130,Vendor Support - HPRF Waveguide Procurement,100.0,250.0,250.0,250.0,10-09-23,03-15-24,AS_HPRF_WAV_6120: FS,AS_HPRF_WAV_6140: FS,SLAC,0%,8706.8706_Health & Safety Specialist,8706_Health & Safety Specialist,Labor,0.0d,100.0,100.0,At Completion Units,2/2/2023,6/23/2023,0,0,0,0,0,0,0,0,0,0,1.03_Accelerator Systems (AS),1.03.03_AS Superconducting Linac System (ScL),1.03.03.06_AS Superconducting Linac System Procurement and Fabrication,1.03.03.06.70_HPRF - Waveguide - Procurement,AS_HPRF_WAV_6130_Vendor Support - HPRF Waveguide Procurement,ESH,,SLAC,Labor
76031,1.03,1.03.03,1.03.03.06,1.03.03.06.70,1.03.03.06.70,HPRF - Waveguide - Procurement,AS_HPRF_WAV_6130,Vendor Support - HPRF Waveguide Procurement,100.0,274.0,274.0,274.0,10-09-23,03-15-24,AS_HPRF_WAV_6120: FS,AS_HPRF_WAV_6140: FS,SLAC,0%,52210.52210_EEDRF,52210_EEDRF,Labor,0.0d,100.0,100.0,At Completion Units,2/2/2023,6/23/2023,0,0,0,0,0,0,0,0,0,0,1.03_Accelerator Systems (AS),1.03.03_AS Superconducting Linac System (ScL),1.03.03.06_AS Superconducting Linac System Procurement and Fabrication,1.03.03.06.70_HPRF - Waveguide - Procurement,AS_HPRF_WAV_6130_Vendor Support - HPRF Waveguide Procurement,RF,,SLAC,Labor
76032,1.03,1.03.03,1.03.03.06,1.03.03.06.70,1.03.03.06.70,HPRF - Waveguide - Procurement,AS_HPRF_WAV_6180,Perform 2-5% Cold Test - HPRF Waveguide,20.0,430.0,430.0,430.0,04-30-24,05-28-24,"AS_HPRF_WAV_6160: FS, AS_HPRF_WAV_6170: FF",AS_HPRF_WAV_6190: FF,SLAC,0%,52178.52178_RF Vacuum Tube Fab,52178_RF Vacuum Tube Fab,Labor,0.0d,20.0,20.0,At Completion Units,8/9/2023,9/6/2023,0,0,0,0,0,0,0,0,0,0,1.03_Accelerator Systems (AS),1.03.03_AS Superconducting Linac System (ScL),1.03.03.06_AS Superconducting Linac System Procurement and Fabrication,1.03.03.06.70_HPRF - Waveguide - Procurement,AS_HPRF_WAV_6180_Perform 2-5% Cold Test - HPRF Waveguide,RF Fab,,SLAC,Labor
76033,1.03,1.03.03,1.03.03.06,1.03.03.06.70,1.03.03.06.70,HPRF - Waveguide - Procurement,AS_HPRF_WAV_6170,Inventory - HPRF Waveguide,20.0,693.0,693.0,693.0,04-30-24,05-28-24,AS_HPRF_WAV_6160: FS,AS_HPRF_WAV_6180: FF,SLAC,0%,52178.52178_RF Vacuum Tube Fab,52178_RF Vacuum Tube Fab,Labor,0.0d,20.0,20.0,At Completion Units,8/9/2023,9/6/2023,0,0,0,0,0,0,0,0,0,0,1.03_Accelerator Systems (AS),1.03.03_AS Superconducting Linac System (ScL),1.03.03.06_AS Superconducting Linac System Procurement and Fabrication,1.03.03.06.70_HPRF - Waveguide - Procurement,AS_HPRF_WAV_6170_Inventory - HPRF Waveguide,RF Fab,,SLAC,Labor
76034,1.03,1.03.03,1.03.03.06,1.03.03.06.70,1.03.03.06.70,HPRF - Waveguide - Procurement,AS_HPRF_WAV_6130,Vendor Support - HPRF Waveguide Procurement,100.0,1971.0,1971.0,1971.0,10-09-23,03-15-24,AS_HPRF_WAV_6120: FS,AS_HPRF_WAV_6140: FS,SLAC,0%,52178.52178_RF Vacuum Tube Fab,52178_RF Vacuum Tube Fab,Labor,0.0d,100.0,100.0,At Completion Units,2/2/2023,6/23/2023,0,0,0,0,0,0,0,0,0,0,1.03_Accelerator Systems (AS),1.03.03_AS Superconducting Linac System (ScL),1.03.03.06_AS Superconducting Linac System Procurement and Fabrication,1.03.03.06.70_HPRF - Waveguide - Procurement,AS_HPRF_WAV_6130_Vendor Support - HPRF Waveguide Procurement,RF Fab,,SLAC,Labor
76035,1.03,1.03.03,1.03.03.06,1.03.03.06.70,1.03.03.06.70,HPRF - Waveguide - Procurement,AS_HPRF_WAV_6090,Prepare Award Documents - HPRF Waveguide Procurement,5.0,203.0,203.0,203.0,07-10-23,07-14-23,AS_HPRF_WAV_6080: FS,AS_HPRF_WAV_6100: FS,SLAC,0%,52178.52178_RF Vacuum Tube Fab,52178_RF Vacuum Tube Fab,Labor,0.0d,5.0,5.0,At Completion Units,12/14/2022,1/3/2023,0,0,0,0,0,0,0,0,0,0,1.03_Accelerator Systems (AS),1.03.03_AS Superconducting Linac System (ScL),1.03.03.06_AS Superconducting Linac System Procurement and Fabrication,1.03.03.06.70_HPRF - Waveguide - Procurement,AS_HPRF_WAV_6090_Prepare Award Documents - HPRF Waveguide Procurement,RF Fab,,SLAC,Labor
76036,1.03,1.03.03,1.03.03.06,1.03.03.06.70,1.03.03.06.70,HPRF - Waveguide - Procurement,AS_HPRF_WAV_6010,Prepare Requisition (Specs/SOW/ETC) - HPRF Waveguide Procurement,25.0,942.0,942.0,942.0,12-12-22,01-30-23,AS_HPRF_WAV_5210: FS,AS_HPRF_WAV_6020: FS,SLAC,0%,52178.52178_RF Vacuum Tube Fab,52178_RF Vacuum Tube Fab,Labor,0.0d,25.0,25.0,At Completion Units,6/1/2022,7/6/2022,0,0,0,0,0,0,0,0,0,0,1.03_Accelerator Systems (AS),1.03.03_AS Superconducting Linac System (ScL),1.03.03.06_AS Superconducting Linac System Procurement and Fabrication,1.03.03.06.70_HPRF - Waveguide - Procurement,AS_HPRF_WAV_6010_Prepare Requisition (Specs/SOW/ETC) - HPRF Waveguide Procurement,RF Fab,,SLAC,Labor
76037,1.03,1.03.03,1.03.03.06,1.03.03.06.70,1.03.03.06.70,HPRF - Waveguide - Procurement,AS_HPRF_WAV_6150,RCV: HPRF Waveguide Procurement,1.0,4052142.0,4052142.0,4052142.0,04-29-24,04-29-24,AS_HPRF_WAV_6140: FS,AS_HPRF_WAV_6160: FS,SLAC,0%,SL_MSSY.SLAC M&S (>$500K) (NO G&A) (gets ESC),SLAC M&S (>$500K) (NO G&A) (gets ESC),Nonlabor,0.0d,1.0,1.0,At Completion Units,8/8/2023,8/8/2023,0,0,0,0,0,0,0,0,0,0,1.03_Accelerator Systems (AS),1.03.03_AS Superconducting Linac System (ScL),1.03.03.06_AS Superconducting Linac System Procurement and Fabrication,1.03.03.06.70_HPRF - Waveguide - Procurement,AS_HPRF_WAV_6150_RCV: HPRF Waveguide Procurement,Material,,SLAC,M&S
76038,1.03,1.03.03,1.03.03.06,1.03.03.06.70,1.03.03.06.70,HPRF - Waveguide - Procurement,AS_HPRF_WAV_6120,AWARD: Procurement - HPRF Waveguide,5.0,4552142.0,4552142.0,4552142.0,10-02-23,10-06-23,"AS_HPRF_WAV_6110: FS, AS_M4_3010: FS",AS_HPRF_WAV_6130: FS,SLAC,0%,AWARD_USE.AWARD - Use this AWARD,AWARD - Use this AWARD,Nonlabor,0.0d,5.0,5.0,At Completion Units,1/26/2023,2/1/2023,AWARD > $500K,0,0,0,0,0,0,0,0,0,1.03_Accelerator Systems (AS),1.03.03_AS Superconducting Linac System (ScL),1.03.03.06_AS Superconducting Linac System Procurement and Fabrication,1.03.03.06.70_HPRF - Waveguide - Procurement,AS_HPRF_WAV_6120_AWARD: Procurement - HPRF Waveguide,Material,,SLAC,M&S
76039,1.03,1.03.03,1.03.03.06,1.03.03.06.70,1.03.03.06.70,HPRF - Waveguide - Procurement,AS_HPRF_WAV_6020,RQN: Approval of Requisition - HPRF Waveguide Procurement,1.0,4552142.0,4552142.0,4552142.0,01-31-23,01-31-23,AS_HPRF_WAV_6010: FS,AS_HPRF_WAV_6030: FS,SLAC,0%,REQ.Requisition,Requisition,Nonlabor,0.0d,1.0,1.0,At Completion Units,7/7/2022,7/7/2022,RQN,0,0,0,0,0,0,0,0,0,1.03_Accelerator Systems (AS),1.03.03_AS Superconducting Linac System (ScL),1.03.03.06_AS Superconducting Linac System Procurement and Fabrication,1.03.03.06.70_HPRF - Waveguide - Procurement,AS_HPRF_WAV_6020_RQN: Approval of Requisition - HPRF Waveguide Procurement,Material,,SLAC,M&S
76040,1.03,1.03.03,1.03.03.06,1.03.03.06.70,1.03.03.06.70,HPRF - Waveguide - Procurement,AS_HPRF_WAV_6150,RCV: HPRF Waveguide Procurement,1.0,500000.0,500000.0,500000.0,04-29-24,04-29-24,AS_HPRF_WAV_6140: FS,AS_HPRF_WAV_6160: FS,SLAC,0%,SL_MSSC.SLAC M&S (<$500K) (gets G&A) (gets ESC),SLAC M&S (<$500K) (gets G&A) (gets ESC),Nonlabor,0.0d,1.0,1.0,At Completion Units,8/8/2023,8/8/2023,0,0,0,0,0,0,0,0,0,0,1.03_Accelerator Systems (AS),1.03.03_AS Superconducting Linac System (ScL),1.03.03.06_AS Superconducting Linac System Procurement and Fabrication,1.03.03.06.70_HPRF - Waveguide - Procurement,AS_HPRF_WAV_6150_RCV: HPRF Waveguide Procurement,Material,,SLAC,M&S
76360,1.03,1.03.03,1.03.03.06,1.03.03.06.71,1.03.03.06.71,HPRF - Isolators - Procurement,AS_HPRF_ISL_6210,100% Water Pressure Check Test - Isolators,37.5,160.0,160.0,160.0,07-08-25,08-28-25,AS_HPRF_ISL_6200: FS,AS_HPRF_ST_9050: FS,SLAC,0%,52178.52178_RF Vacuum Tube Fab,52178_RF Vacuum Tube Fab,Labor,0.0d,37.5,37.5,At Completion Units,6/7/2024,7/31/2024,0,0,0,0,0,0,0,0,0,0,1.03_Accelerator Systems (AS),1.03.03_AS Superconducting Linac System (ScL),1.03.03.06_AS Superconducting Linac System Procurement and Fabrication,1.03.03.06.71_HPRF - Isolators - Procurement,AS_HPRF_ISL_6210_100% Water Pressure Check Test - Isolators,RF Fab,,SLAC,Labor
76361,1.03,1.03.03,1.03.03.06,1.03.03.06.71,1.03.03.06.71,HPRF - Isolators - Procurement,AS_HPRF_ISL_6200,100% Air Pressure Check Test - Isolators,25.0,107.0,107.0,107.0,06-02-25,07-07-25,AS_HPRF_ISL_6190: FS,AS_HPRF_ISL_6210: FS,SLAC,0%,52178.52178_RF Vacuum Tube Fab,52178_RF Vacuum Tube Fab,Labor,0.0d,25.0,25.0,At Completion Units,5/2/2024,6/6/2024,0,0,0,0,0,0,0,0,0,0,1.03_Accelerator Systems (AS),1.03.03_AS Superconducting Linac System (ScL),1.03.03.06_AS Superconducting Linac System Procurement and Fabrication,1.03.03.06.71_HPRF - Isolators - Procurement,AS_HPRF_ISL_6200_100% Air Pressure Check Test - Isolators,RF Fab,,SLAC,Labor
76362,1.03,1.03.03,1.03.03.06,1.03.03.06.71,1.03.03.06.71,HPRF - Isolators - Procurement,AS_HPRF_ISL_6190,25% Cold Test - Isolators,70.0,340.0,340.0,340.0,02-21-25,05-30-25,AS_HPRF_ISL_6180: FS,AS_HPRF_ISL_6200: FS,SLAC,0%,52178.52178_RF Vacuum Tube Fab,52178_RF Vacuum Tube Fab,Labor,0.0d,70.0,70.0,At Completion Units,1/24/2024,5/1/2024,0,0,0,0,0,0,0,0,0,0,1.03_Accelerator Systems (AS),1.03.03_AS Superconducting Linac System (ScL),1.03.03.06_AS Superconducting Linac System Procurement and Fabrication,1.03.03.06.71_HPRF - Isolators - Procurement,AS_HPRF_ISL_6190_25% Cold Test - Isolators,RF Fab,,SLAC,Labor
76363,1.03,1.03.03,1.03.03.06,1.03.03.06.71,1.03.03.06.71,HPRF - Isolators - Procurement,AS_HPRF_ISL_6180,Inventory - Isolators,5.0,21.0,21.0,21.0,02-13-25,02-20-25,"AS_HPRF_ISL_6150: FS, AS_HPRF_ISL_6170: FS",AS_HPRF_ISL_6190: FS,SLAC,0%,52178.52178_RF Vacuum Tube Fab,52178_RF Vacuum Tube Fab,Labor,0.0d,5.0,5.0,At Completion Units,1/17/2024,1/23/2024,0,0,0,0,0,0,0,0,0,0,1.03_Accelerator Systems (AS),1.03.03_AS Superconducting Linac System (ScL),1.03.03.06_AS Superconducting Linac System Procurement and Fabrication,1.03.03.06.71_HPRF - Isolators - Procurement,AS_HPRF_ISL_6180_Inventory - Isolators,RF Fab,,SLAC,Labor
76364,1.03,1.03.03,1.03.03.06,1.03.03.06.71,1.03.03.06.71,HPRF - Isolators - Procurement,AS_HPRF_ISL_6140,FAT Support - Isolators,16.3,70.0,70.0,70.0,09-06-24,09-30-24,AS_HPRF_ISL_6120: FS,AS_HPRF_ISL_6150: FS,SLAC,0%,52178.52178_RF Vacuum Tube Fab,52178_RF Vacuum Tube Fab,Labor,0.0d,16.3,16.3,At Completion Units,8/8/2023,8/30/2023,0,0,0,0,0,0,0,0,0,0,1.03_Accelerator Systems (AS),1.03.03_AS Superconducting Linac System (ScL),1.03.03.06_AS Superconducting Linac System Procurement and Fabrication,1.03.03.06.71_HPRF - Isolators - Procurement,AS_HPRF_ISL_6140_FAT Support - Isolators,RF Fab,,SLAC,Labor
76365,1.03,1.03.03,1.03.03.06,1.03.03.06.71,1.03.03.06.71,HPRF - Isolators - Procurement,AS_HPRF_ISL_6130,Vendor Support - Isolators,100.0,21.5,21.5,21.5,09-06-24,02-11-25,AS_HPRF_ISL_6120: FS,AS_HPRF_ISL_6150: FS,SLAC,0%,8706.8706_Health & Safety Specialist,8706_Health & Safety Specialist,Labor,0.0d,100.0,100.0,At Completion Units,8/8/2023,1/12/2024,0,0,0,0,0,0,0,0,0,0,1.03_Accelerator Systems (AS),1.03.03_AS Superconducting Linac System (ScL),1.03.03.06_AS Superconducting Linac System Procurement and Fabrication,1.03.03.06.71_HPRF - Isolators - Procurement,AS_HPRF_ISL_6130_Vendor Support - Isolators,ESH,,SLAC,Labor
76366,1.03,1.03.03,1.03.03.06,1.03.03.06.71,1.03.03.06.71,HPRF - Isolators - Procurement,AS_HPRF_ISL_6130,Vendor Support - Isolators,100.0,21.5,21.5,21.5,09-06-24,02-11-25,AS_HPRF_ISL_6120: FS,AS_HPRF_ISL_6150: FS,SLAC,0%,52210.52210_EEDRF,52210_EEDRF,Labor,0.0d,100.0,100.0,At Completion Units,8/8/2023,1/12/2024,0,0,0,0,0,0,0,0,0,0,1.03_Accelerator Systems (AS),1.03.03_AS Superconducting Linac System (ScL),1.03.03.06_AS Superconducting Linac System Procurement and Fabrication,1.03.03.06.71_HPRF - Isolators - Procurement,AS_HPRF_ISL_6130_Vendor Support - Isolators,RF,,SLAC,Labor
76367,1.03,1.03.03,1.03.03.06,1.03.03.06.71,1.03.03.06.71,HPRF - Isolators - Procurement,AS_HPRF_ISL_6130,Vendor Support - Isolators,100.0,150.0,150.0,150.0,09-06-24,02-11-25,AS_HPRF_ISL_6120: FS,AS_HPRF_ISL_6150: FS,SLAC,0%,52178.52178_RF Vacuum Tube Fab,52178_RF Vacuum Tube Fab,Labor,0.0d,100.0,100.0,At Completion Units,8/8/2023,1/12/2024,0,0,0,0,0,0,0,0,0,0,1.03_Accelerator Systems (AS),1.03.03_AS Superconducting Linac System (ScL),1.03.03.06_AS Superconducting Linac System Procurement and Fabrication,1.03.03.06.71_HPRF - Isolators - Procurement,AS_HPRF_ISL_6130_Vendor Support - Isolators,RF Fab,,SLAC,Labor
76368,1.03,1.03.03,1.03.03.06,1.03.03.06.71,1.03.03.06.71,HPRF - Isolators - Procurement,AS_HPRF_ISL_6090,Prepare Award Documents - Isolators,5.0,8.0,8.0,8.0,08-01-24,08-07-24,AS_HPRF_ISL_6080: FS,AS_HPRF_ISL_6100: FS,SLAC,0%,52178.52178_RF Vacuum Tube Fab,52178_RF Vacuum Tube Fab,Labor,0.0d,5.0,5.0,At Completion Units,7/3/2023,7/10/2023,0,0,0,0,0,0,0,0,0,0,1.03_Accelerator Systems (AS),1.03.03_AS Superconducting Linac System (ScL),1.03.03.06_AS Superconducting Linac System Procurement and Fabrication,1.03.03.06.71_HPRF - Isolators - Procurement,AS_HPRF_ISL_6090_Prepare Award Documents - Isolators,RF Fab,,SLAC,Labor
76369,1.03,1.03.03,1.03.03.06,1.03.03.06.71,1.03.03.06.71,HPRF - Isolators - Procurement,AS_HPRF_ISL_6010,Prepare Requisition (Specs/SOW/ETC) - Isolators,45.0,43.0,43.0,43.0,10-30-23,01-18-24,AS_HPRF_SSA_6010: FS,AS_HPRF_ISL_6020: FS,SLAC,0%,52178.52178_RF Vacuum Tube Fab,52178_RF Vacuum Tube Fab,Labor,0.0d,45.0,45.0,At Completion Units,9/30/2022,12/5/2022,0,0,0,0,0,0,0,0,0,0,1.03_Accelerator Systems (AS),1.03.03_AS Superconducting Linac System (ScL),1.03.03.06_AS Superconducting Linac System Procurement and Fabrication,1.03.03.06.71_HPRF - Isolators - Procurement,AS_HPRF_ISL_6010_Prepare Requisition (Specs/SOW/ETC) - Isolators,RF Fab,,SLAC,Labor
76370,1.03,1.03.03,1.03.03.06,1.03.03.06.71,1.03.03.06.71,HPRF - Isolators - Procurement,AS_HPRF_ISL_6150,RCV: Isolators,1.0,1665050.0,1665050.0,1665050.0,02-12-25,02-12-25,"AS_HPRF_ISL_6130: FS, AS_HPRF_ISL_6140: FS","AS_HPRF_ISL_6170: FS, AS_HPRF_ISL_6180: FS",SLAC,0%,SL_MSSY.SLAC M&S (>$500K) (NO G&A) (gets ESC),SLAC M&S (>$500K) (NO G&A) (gets ESC),Nonlabor,0.0d,1.0,1.0,At Completion Units,1/16/2024,1/16/2024,0,0,0,0,0,0,0,0,0,0,1.03_Accelerator Systems (AS),1.03.03_AS Superconducting Linac System (ScL),1.03.03.06_AS Superconducting Linac System Procurement and Fabrication,1.03.03.06.71_HPRF - Isolators - Procurement,AS_HPRF_ISL_6150_RCV: Isolators,Material,,SLAC,M&S
76371,1.03,1.03.03,1.03.03.06,1.03.03.06.71,1.03.03.06.71,HPRF - Isolators - Procurement,AS_HPRF_ISL_6120,AWARD: Procurement - Isolators,5.0,2165050.0,2165050.0,2165050.0,08-29-24,09-05-24,AS_HPRF_ISL_6110: FS,"AS_HPRF_ISL_6130: FS, AS_HPRF_ISL_6140: FS",SLAC,0%,AWARD_USE.AWARD - Use this AWARD,AWARD - Use this AWARD,Nonlabor,0.0d,5.0,5.0,At Completion Units,8/1/2023,8/7/2023,AWARD > $500K,0,0,0,0,0,0,0,0,0,1.03_Accelerator Systems (AS),1.03.03_AS Superconducting Linac System (ScL),1.03.03.06_AS Superconducting Linac System Procurement and Fabrication,1.03.03.06.71_HPRF - Isolators - Procurement,AS_HPRF_ISL_6120_AWARD: Procurement - Isolators,Material,,SLAC,M&S
76372,1.03,1.03.03,1.03.03.06,1.03.03.06.71,1.03.03.06.71,HPRF - Isolators - Procurement,AS_HPRF_ISL_6020,RQN: Approval of Requisition - Isolators,1.0,2165050.0,2165050.0,2165050.0,01-19-24,01-19-24,AS_HPRF_ISL_6010: FS,AS_HPRF_ISL_6030: FS,SLAC,0%,REQ.Requisition,Requisition,Nonlabor,0.0d,1.0,1.0,At Completion Units,12/6/2022,12/6/2022,RQN,0,0,0,0,0,0,0,0,0,1.03_Accelerator Systems (AS),1.03.03_AS Superconducting Linac System (ScL),1.03.03.06_AS Superconducting Linac System Procurement and Fabrication,1.03.03.06.71_HPRF - Isolators - Procurement,AS_HPRF_ISL_6020_RQN: Approval of Requisition - Isolators,Material,,SLAC,M&S
76373,1.03,1.03.03,1.03.03.06,1.03.03.06.71,1.03.03.06.71,HPRF - Isolators - Procurement,AS_HPRF_ISL_6150,RCV: Isolators,1.0,500000.0,500000.0,500000.0,02-12-25,02-12-25,"AS_HPRF_ISL_6130: FS, AS_HPRF_ISL_6140: FS","AS_HPRF_ISL_6170: FS, AS_HPRF_ISL_6180: FS",SLAC,0%,SL_MSSC.SLAC M&S (<$500K) (gets G&A) (gets ESC),SLAC M&S (<$500K) (gets G&A) (gets ESC),Nonlabor,0.0d,1.0,1.0,At Completion Units,1/16/2024,1/16/2024,0,0,0,0,0,0,0,0,0,0,1.03_Accelerator Systems (AS),1.03.03_AS Superconducting Linac System (ScL),1.03.03.06_AS Superconducting Linac System Procurement and Fabrication,1.03.03.06.71_HPRF - Isolators - Procurement,AS_HPRF_ISL_6150_RCV: Isolators,Material,,SLAC,M&S
76693,1.03,1.03.03,1.03.03.06,1.03.03.06.72,1.03.03.06.72,HPRF - NIRP Systems - Procurement,AS_HPRF_NPA_6130,Inventory - Air Parts - NIRP,10.0,64.0,64.0,64.0,06-28-24,07-12-24,AS_HPRF_NPA_6120: FS,AS_HPRF_WGKG_9500: FS,SLAC,0%,52178.52178_RF Vacuum Tube Fab,52178_RF Vacuum Tube Fab,Labor,0.0d,10.0,10.0,At Completion Units,5/31/2023,6/13/2023,0,0,0,0,0,0,0,0,0,0,1.03_Accelerator Systems (AS),1.03.03_AS Superconducting Linac System (ScL),1.03.03.06_AS Superconducting Linac System Procurement and Fabrication,1.03.03.06.72_HPRF - NIRP Systems - Procurement,AS_HPRF_NPA_6130_Inventory - Air Parts - NIRP,RF Fab,,SLAC,Labor
76694,1.03,1.03.03,1.03.03.06,1.03.03.06.72,1.03.03.06.72,HPRF - NIRP Systems - Procurement,AS_HPRF_NPA_6010,Prepare Requisition (Specs/SOW/ETC) - Air Parts - NIRP,25.0,75.0,75.0,75.0,10-23-23,11-28-23,AS_HPRF_CNX_6010: FS,AS_HPRF_NPA_6020: FS,SLAC,0%,52178.52178_RF Vacuum Tube Fab,52178_RF Vacuum Tube Fab,Labor,0.0d,25.0,25.0,At Completion Units,9/23/2022,10/27/2022,0,0,0,0,0,0,0,0,0,0,1.03_Accelerator Systems (AS),1.03.03_AS Superconducting Linac System (ScL),1.03.03.06_AS Superconducting Linac System Procurement and Fabrication,1.03.03.06.72_HPRF - NIRP Systems - Procurement,AS_HPRF_NPA_6010_Prepare Requisition (Specs/SOW/ETC) - Air Parts - NIRP,RF Fab,,SLAC,Labor
76695,1.03,1.03.03,1.03.03.06,1.03.03.06.72,1.03.03.06.72,HPRF - NIRP Systems - Procurement,AS_HPRF_NPA_6090,AWARD: Procurement - Air Parts - NIRP,1.0,494520.0,494520.0,494520.0,04-02-24,04-02-24,AS_HPRF_NPA_6080: FS,AS_HPRF_NPA_6100: FS,SLAC,0%,AWARD_USE.AWARD - Use this AWARD,AWARD - Use this AWARD,Nonlabor,0.0d,1.0,1.0,At Completion Units,3/3/2023,3/3/2023,AWARD < $500K,0,0,0,0,0,0,0,0,0,1.03_Accelerator Systems (AS),1.03.03_AS Superconducting Linac System (ScL),1.03.03.06_AS Superconducting Linac System Procurement and Fabrication,1.03.03.06.72_HPRF - NIRP Systems - Procurement,AS_HPRF_NPA_6090_AWARD: Procurement - Air Parts - NIRP,Material,,SLAC,M&S
76696,1.03,1.03.03,1.03.03.06,1.03.03.06.72,1.03.03.06.72,HPRF - NIRP Systems - Procurement,AS_HPRF_NPA_6020,RQN: Approval of Requisition - Air Parts - NIRP,1.0,494520.0,494520.0,494520.0,11-29-23,11-29-23,AS_HPRF_NPA_6010: FS,AS_HPRF_NPA_6030: FS,SLAC,0%,REQ.Requisition,Requisition,Nonlabor,0.0d,1.0,1.0,At Completion Units,10/28/2022,10/28/2022,RQN,0,0,0,0,0,0,0,0,0,1.03_Accelerator Systems (AS),1.03.03_AS Superconducting Linac System (ScL),1.03.03.06_AS Superconducting Linac System Procurement and Fabrication,1.03.03.06.72_HPRF - NIRP Systems - Procurement,AS_HPRF_NPA_6020_RQN: Approval of Requisition - Air Parts - NIRP,Material,,SLAC,M&S
76697,1.03,1.03.03,1.03.03.06,1.03.03.06.72,1.03.03.06.72,HPRF - NIRP Systems - Procurement,AS_HPRF_NPA_6110,RCV: Goods/Services/Final Report - Air Parts - NIRP,1.0,494520.0,494520.0,494520.0,06-27-24,06-27-24,AS_HPRF_NPA_6100: FS,AS_HPRF_NPA_6120: FS,SLAC,0%,SL_MSSC.SLAC M&S (<$500K) (gets G&A) (gets ESC),SLAC M&S (<$500K) (gets G&A) (gets ESC),Nonlabor,0.0d,1.0,1.0,At Completion Units,5/30/2023,5/30/2023,0,0,0,0,0,0,0,0,0,0,1.03_Accelerator Systems (AS),1.03.03_AS Superconducting Linac System (ScL),1.03.03.06_AS Superconducting Linac System Procurement and Fabrication,1.03.03.06.72_HPRF - NIRP Systems - Procurement,AS_HPRF_NPA_6110_RCV: Goods/Services/Final Report - Air Parts - NIRP,Material,,SLAC,M&S
77017,1.03,1.03.03,1.03.03.06,1.03.03.06.73,1.03.03.06.73,HPRF - Gaskets and Connectors - Procurement,AS_HPRF_CNX_6010,Prepare Requisition (Specs/SOW/ETC) - Gaskets and Connectors,15.0,10.0,10.0,10.0,10-02-23,10-20-23,AS_M4_3010: FS,"AS_HPRF_CNX_6020: FS, AS_HPRF_NPA_6010: FS",SLAC,0%,52190.52190_METSTP Tech Planning - Reinstated FY16,52190_METSTP Tech Planning - Reinstated FY16,Labor,0.0d,15.0,15.0,At Completion Units,9/1/2022,9/22/2022,0,0,0,0,0,0,0,0,0,0,1.03_Accelerator Systems (AS),1.03.03_AS Superconducting Linac System (ScL),1.03.03.06_AS Superconducting Linac System Procurement and Fabrication,1.03.03.06.73_HPRF - Gaskets and Connectors - Procurement,AS_HPRF_CNX_6010_Prepare Requisition (Specs/SOW/ETC) - Gaskets and Connectors,METSTPT Tech Planning,Tech,SLAC,Labor
77018,1.03,1.03.03,1.03.03.06,1.03.03.06.73,1.03.03.06.73,HPRF - Gaskets and Connectors - Procurement,AS_HPRF_CNX_6140,RCV: Gaskets and Connectors,1.0,150468.0,150468.0,150468.0,07-15-24,07-15-24,AS_HPRF_CNX_6130: FS,AS_HPRF_CNX_6150: FS,SLAC,0%,SL_MSSY.SLAC M&S (>$500K) (NO G&A) (gets ESC),SLAC M&S (>$500K) (NO G&A) (gets ESC),Nonlabor,0.0d,1.0,1.0,At Completion Units,6/14/2023,6/14/2023,0,0,0,0,0,0,0,0,0,0,1.03_Accelerator Systems (AS),1.03.03_AS Superconducting Linac System (ScL),1.03.03.06_AS Superconducting Linac System Procurement and Fabrication,1.03.03.06.73_HPRF - Gaskets and Connectors - Procurement,AS_HPRF_CNX_6140_RCV: Gaskets and Connectors,Material,,SLAC,M&S
77019,1.03,1.03.03,1.03.03.06,1.03.03.06.73,1.03.03.06.73,HPRF - Gaskets and Connectors - Procurement,AS_HPRF_CNX_6160,Inventory - Gaskets and Connectors,20.0,177.0,177.0,177.0,07-16-24,08-12-24,AS_HPRF_CNX_6150: FS,AS_HPRF_CAP_9090: FS,SLAC,0%,52178.52178_RF Vacuum Tube Fab,52178_RF Vacuum Tube Fab,Labor,0.0d,20.0,20.0,At Completion Units,6/15/2023,7/13/2023,0,0,0,0,0,0,0,0,0,0,1.03_Accelerator Systems (AS),1.03.03_AS Superconducting Linac System (ScL),1.03.03.06_AS Superconducting Linac System Procurement and Fabrication,1.03.03.06.73_HPRF - Gaskets and Connectors - Procurement,AS_HPRF_CNX_6160_Inventory - Gaskets and Connectors,RF Fab,,SLAC,Labor
77020,1.03,1.03.03,1.03.03.06,1.03.03.06.73,1.03.03.06.73,HPRF - Gaskets and Connectors - Procurement,AS_HPRF_CNX_6010,Prepare Requisition (Specs/SOW/ETC) - Gaskets and Connectors,15.0,257.0,257.0,257.0,10-02-23,10-20-23,AS_M4_3010: FS,"AS_HPRF_CNX_6020: FS, AS_HPRF_NPA_6010: FS",SLAC,0%,52178.52178_RF Vacuum Tube Fab,52178_RF Vacuum Tube Fab,Labor,0.0d,15.0,15.0,At Completion Units,9/1/2022,9/22/2022,0,0,0,0,0,0,0,0,0,0,1.03_Accelerator Systems (AS),1.03.03_AS Superconducting Linac System (ScL),1.03.03.06_AS Superconducting Linac System Procurement and Fabrication,1.03.03.06.73_HPRF - Gaskets and Connectors - Procurement,AS_HPRF_CNX_6010_Prepare Requisition (Specs/SOW/ETC) - Gaskets and Connectors,RF Fab,,SLAC,Labor
77021,1.03,1.03.03,1.03.03.06,1.03.03.06.73,1.03.03.06.73,HPRF - Gaskets and Connectors - Procurement,AS_HPRF_CNX_6120,AWARD: Procurement - Gaskets and Connectors,5.0,650468.0,650468.0,650468.0,02-14-24,02-21-24,AS_HPRF_CNX_6110: FS,AS_HPRF_CNX_6130: FS,SLAC,0%,AWARD_USE.AWARD - Use this AWARD,AWARD - Use this AWARD,Nonlabor,0.0d,5.0,5.0,At Completion Units,1/13/2023,1/20/2023,AWARD < $500K,0,0,0,0,0,0,0,0,0,1.03_Accelerator Systems (AS),1.03.03_AS Superconducting Linac System (ScL),1.03.03.06_AS Superconducting Linac System Procurement and Fabrication,1.03.03.06.73_HPRF - Gaskets and Connectors - Procurement,AS_HPRF_CNX_6120_AWARD: Procurement - Gaskets and Connectors,Material,,SLAC,M&S
77022,1.03,1.03.03,1.03.03.06,1.03.03.06.73,1.03.03.06.73,HPRF - Gaskets and Connectors - Procurement,AS_HPRF_CNX_6020,RQN: Approval of Requisition - Gaskets and Connectors,1.0,650468.0,650468.0,650468.0,10-23-23,10-23-23,AS_HPRF_CNX_6010: FS,AS_HPRF_CNX_6030: FS,SLAC,0%,REQ.Requisition,Requisition,Nonlabor,0.0d,1.0,1.0,At Completion Units,9/23/2022,9/23/2022,RQN,0,0,0,0,0,0,0,0,0,1.03_Accelerator Systems (AS),1.03.03_AS Superconducting Linac System (ScL),1.03.03.06_AS Superconducting Linac System Procurement and Fabrication,1.03.03.06.73_HPRF - Gaskets and Connectors - Procurement,AS_HPRF_CNX_6020_RQN: Approval of Requisition - Gaskets and Connectors,Material,,SLAC,M&S
77023,1.03,1.03.03,1.03.03.06,1.03.03.06.73,1.03.03.06.73,HPRF - Gaskets and Connectors - Procurement,AS_HPRF_CNX_6140,RCV: Gaskets and Connectors,1.0,500000.0,500000.0,500000.0,07-15-24,07-15-24,AS_HPRF_CNX_6130: FS,AS_HPRF_CNX_6150: FS,SLAC,0%,SL_MSSC.SLAC M&S (<$500K) (gets G&A) (gets ESC),SLAC M&S (<$500K) (gets G&A) (gets ESC),Nonlabor,0.0d,1.0,1.0,At Completion Units,6/14/2023,6/14/2023,0,0,0,0,0,0,0,0,0,0,1.03_Accelerator Systems (AS),1.03.03_AS Superconducting Linac System (ScL),1.03.03.06_AS Superconducting Linac System Procurement and Fabrication,1.03.03.06.73_HPRF - Gaskets and Connectors - Procurement,AS_HPRF_CNX_6140_RCV: Gaskets and Connectors,Material,,SLAC,M&S
77662,1.03,1.03.03,1.03.03.20,1.03.03.20.01,1.03.03.20.01,ScL - Accelerator Housing Installation Planning,AS_ScL_IRR_9300,Prepare Installation Readiness Review Long Down - Accelerator Housing Installation Planning,60.0,575.0,575.0,575.0,08-01-24,10-24-24,"AS_DES_1080: FS, AS_M4_1030: FS, AS_ScL_L3B_5110: FS",AS_ScL_IRR_9310: FS,SLAC,0%,52169.52169_METS Mechanical Engineer,52169_METS Mechanical Engineer,Labor,0.0d,60.0,60.0,At Completion Units,8/1/2024,10/24/2024,0,0,0,0,0,0,0,0,0,0,1.03_Accelerator Systems (AS),1.03.03_AS Superconducting Linac System (ScL),1.03.03.20_AS Superconducting Linac System Installation,1.03.03.20.01_ScL - Accelerator Housing Installation Planning,AS_ScL_IRR_9300_Prepare Installation Readiness Review Long Down - Accelerator Housing Installation Planning,Mechanical,,SLAC,Labor
77663,1.03,1.03.03,1.03.03.20,1.03.03.20.01,1.03.03.20.01,ScL - Accelerator Housing Installation Planning,AS_ScL_IRR_9320,Respond to recommendations Review Long Down - Accelerator Housing Installation Planning,40.0,185.0,185.0,185.0,11-01-24,01-13-25,AS_ScL_IRR_9310: FS,AS_ScL_IRR_9330: FS,SLAC,0%,52169.52169_METS Mechanical Engineer,52169_METS Mechanical Engineer,Labor,0.0d,40.0,40.0,At Completion Units,11/1/2024,1/13/2025,0,0,0,0,0,0,0,0,0,0,1.03_Accelerator Systems (AS),1.03.03_AS Superconducting Linac System (ScL),1.03.03.20_AS Superconducting Linac System Installation,1.03.03.20.01_ScL - Accelerator Housing Installation Planning,AS_ScL_IRR_9320_Respond to recommendations Review Long Down - Accelerator Housing Installation Planning,Mechanical,,SLAC,Labor
77664,1.03,1.03.03,1.03.03.20,1.03.03.20.01,1.03.03.20.01,ScL - Accelerator Housing Installation Planning,AS_ScL_IRR_9220,Respond to recommendations  Readiness Review Short Down #2 - Accelerator Housing Installation Planning,20.0,40.0,40.0,40.0,05-07-24,06-04-24,AS_ScL_IRR_9210: FS,AS_ScL_IRR_9230: FS,SLAC,0%,52169.52169_METS Mechanical Engineer,52169_METS Mechanical Engineer,Labor,0.0d,20.0,20.0,At Completion Units,5/7/2024,6/4/2024,0,0,0,0,0,0,0,0,0,0,1.03_Accelerator Systems (AS),1.03.03_AS Superconducting Linac System (ScL),1.03.03.20_AS Superconducting Linac System Installation,1.03.03.20.01_ScL - Accelerator Housing Installation Planning,AS_ScL_IRR_9220_Respond to recommendations  Readiness Review Short Down #2 - Accelerator Housing Installation Planning,Mechanical,,SLAC,Labor
77665,1.03,1.03.03,1.03.03.20,1.03.03.20.01,1.03.03.20.01,ScL - Accelerator Housing Installation Planning,AS_ScL_IRR_9200,Prepare Installation Readiness Review Short Down #2 - Accelerator Housing Installation Planning,20.0,80.0,80.0,80.0,04-02-24,04-29-24,MS_FY_2024_Q3: FS,AS_ScL_IRR_9210: FS,SLAC,0%,52169.52169_METS Mechanical Engineer,52169_METS Mechanical Engineer,Labor,0.0d,20.0,20.0,At Completion Units,4/2/2024,4/29/2024,0,0,0,0,0,0,0,0,0,0,1.03_Accelerator Systems (AS),1.03.03_AS Superconducting Linac System (ScL),1.03.03.20_AS Superconducting Linac System Installation,1.03.03.20.01_ScL - Accelerator Housing Installation Planning,AS_ScL_IRR_9200_Prepare Installation Readiness Review Short Down #2 - Accelerator Housing Installation Planning,Mechanical,,SLAC,Labor
77666,1.03,1.03.03,1.03.03.20,1.03.03.20.01,1.03.03.20.01,ScL - Accelerator Housing Installation Planning,AS_ScL_IRR_9120,Respond to recommendations Readiness Review Short Down #1 -Accelerator Housing Installation Planning,20.0,40.0,40.0,40.0,05-09-23,06-06-23,AS_ScL_IRR_9110: FS,AS_ScL_IRR_9130: FS,SLAC,0%,52169.52169_METS Mechanical Engineer,52169_METS Mechanical Engineer,Labor,0.0d,20.0,20.0,At Completion Units,5/9/2023,6/6/2023,0,0,0,0,0,0,0,0,0,0,1.03_Accelerator Systems (AS),1.03.03_AS Superconducting Linac System (ScL),1.03.03.20_AS Superconducting Linac System Installation,1.03.03.20.01_ScL - Accelerator Housing Installation Planning,AS_ScL_IRR_9120_Respond to recommendations Readiness Review Short Down #1 -Accelerator Housing Installation Planning,Mechanical,,SLAC,Labor
77667,1.03,1.03.03,1.03.03.20,1.03.03.20.01,1.03.03.20.01,ScL - Accelerator Housing Installation Planning,AS_ScL_IRR_9100,Prepare Installation Readiness Review Short Down #1 - Accelerator Housing Installation Planning,20.0,40.0,40.0,40.0,04-04-23,05-01-23,MS_FY_2023_Q3: FS,AS_ScL_IRR_9110: FS,SLAC,0%,52169.52169_METS Mechanical Engineer,52169_METS Mechanical Engineer,Labor,0.0d,20.0,20.0,At Completion Units,4/4/2023,5/1/2023,0,0,0,0,0,0,0,0,0,0,1.03_Accelerator Systems (AS),1.03.03_AS Superconducting Linac System (ScL),1.03.03.20_AS Superconducting Linac System Installation,1.03.03.20.01_ScL - Accelerator Housing Installation Planning,AS_ScL_IRR_9100_Prepare Installation Readiness Review Short Down #1 - Accelerator Housing Installation Planning,Mechanical,,SLAC,Labor
77987,1.03,1.03.03,1.03.03.20,1.03.03.20.10,1.03.03.20.10,ScL - L3/L4 Transition Package (PP),AS_ScL_L34_9130,Verification and Test - L3/L4 Transition - ScL,5.0,0.0,0.0,0.0,07-17-25,07-23-25,AS_ScL_L34_9010: FS,AS_ScL_L34_9140: FS,SLAC,0%,SL_MSSC.SLAC M&S (<$500K) (gets G&A) (gets ESC),SLAC M&S (<$500K) (gets G&A) (gets ESC),Nonlabor,0.0d,5.0,5.0,At Completion Units,7/17/2025,7/23/2025,0,0,0,0,0,0,0,0,0,0,1.03_Accelerator Systems (AS),1.03.03_AS Superconducting Linac System (ScL),1.03.03.20_AS Superconducting Linac System Installation,1.03.03.20.10_ScL - L3/L4 Transition Package (PP),AS_ScL_L34_9130_Verification and Test - L3/L4 Transition - ScL,Material,,SLAC,M&S
77988,1.03,1.03.03,1.03.03.20,1.03.03.20.10,1.03.03.20.10,ScL - L3/L4 Transition Package (PP),AS_ScL_L34_9130,Verification and Test - L3/L4 Transition - ScL,5.0,0.0,0.0,0.0,07-17-25,07-23-25,AS_ScL_L34_9010: FS,AS_ScL_L34_9140: FS,SLAC,0%,52169.52169_METS Mechanical Engineer,52169_METS Mechanical Engineer,Labor,0.0d,5.0,5.0,At Completion Units,7/17/2025,7/23/2025,0,0,0,0,0,0,0,0,0,0,1.03_Accelerator Systems (AS),1.03.03_AS Superconducting Linac System (ScL),1.03.03.20_AS Superconducting Linac System Installation,1.03.03.20.10_ScL - L3/L4 Transition Package (PP),AS_ScL_L34_9130_Verification and Test - L3/L4 Transition - ScL,Mechanical,,SLAC,Labor
77989,1.03,1.03.03,1.03.03.20,1.03.03.20.10,1.03.03.20.10,ScL - L3/L4 Transition Package (PP),AS_ScL_L34_9130,Verification and Test - L3/L4 Transition - ScL,5.0,0.0,0.0,0.0,07-17-25,07-23-25,AS_ScL_L34_9010: FS,AS_ScL_L34_9140: FS,SLAC,0%,52190.52190_METSTP Tech Planning - Reinstated FY16,52190_METSTP Tech Planning - Reinstated FY16,Labor,0.0d,5.0,5.0,At Completion Units,7/17/2025,7/23/2025,0,0,0,0,0,0,0,0,0,0,1.03_Accelerator Systems (AS),1.03.03_AS Superconducting Linac System (ScL),1.03.03.20_AS Superconducting Linac System Installation,1.03.03.20.10_ScL - L3/L4 Transition Package (PP),AS_ScL_L34_9130_Verification and Test - L3/L4 Transition - ScL,METSTPT Tech Planning,Tech,SLAC,Labor
77990,1.03,1.03.03,1.03.03.20,1.03.03.20.10,1.03.03.20.10,ScL - L3/L4 Transition Package (PP),AS_ScL_L34_9130,Verification and Test - L3/L4 Transition - ScL,5.0,0.0,0.0,0.0,07-17-25,07-23-25,AS_ScL_L34_9010: FS,AS_ScL_L34_9140: FS,SLAC,0%,52155.52155_Health Physics Technician III,52155_Health Physics Technician III,Labor,0.0d,5.0,5.0,At Completion Units,7/17/2025,7/23/2025,0,0,0,0,0,0,0,0,0,0,1.03_Accelerator Systems (AS),1.03.03_AS Superconducting Linac System (ScL),1.03.03.20_AS Superconducting Linac System Installation,1.03.03.20.10_ScL - L3/L4 Transition Package (PP),AS_ScL_L34_9130_Verification and Test - L3/L4 Transition - ScL,Support System,Tech,SLAC,Labor
77991,1.03,1.03.03,1.03.03.20,1.03.03.20.10,1.03.03.20.10,ScL - L3/L4 Transition Package (PP),AS_ScL_L34_9130,Verification and Test - L3/L4 Transition - ScL,5.0,0.0,0.0,0.0,07-17-25,07-23-25,AS_ScL_L34_9010: FS,AS_ScL_L34_9140: FS,SLAC,0%,52152.52152_FAC Fleet,52152_FAC Fleet,Labor,0.0d,5.0,5.0,At Completion Units,7/17/2025,7/23/2025,0,0,0,0,0,0,0,0,0,0,1.03_Accelerator Systems (AS),1.03.03_AS Superconducting Linac System (ScL),1.03.03.20_AS Superconducting Linac System Installation,1.03.03.20.10_ScL - L3/L4 Transition Package (PP),AS_ScL_L34_9130_Verification and Test - L3/L4 Transition - ScL,Support System,,SLAC,Labor
77992,1.03,1.03.03,1.03.03.20,1.03.03.20.10,1.03.03.20.10,ScL - L3/L4 Transition Package (PP),AS_ScL_L34_9130,Verification and Test - L3/L4 Transition - ScL,5.0,0.0,0.0,0.0,07-17-25,07-23-25,AS_ScL_L34_9010: FS,AS_ScL_L34_9140: FS,SLAC,0%,52211.52211_EEDOPSE (Electronics & Engineering Div - Ops & PSE),52211_EEDOPSE (Electronics & Engineering Div - Ops & PSE),Labor,0.0d,5.0,5.0,At Completion Units,7/17/2025,7/23/2025,0,0,0,0,0,0,0,0,0,0,1.03_Accelerator Systems (AS),1.03.03_AS Superconducting Linac System (ScL),1.03.03.20_AS Superconducting Linac System Installation,1.03.03.20.10_ScL - L3/L4 Transition Package (PP),AS_ScL_L34_9130_Verification and Test - L3/L4 Transition - ScL,Electrical,,SLAC,Labor
77993,1.03,1.03.03,1.03.03.20,1.03.03.20.10,1.03.03.20.10,ScL - L3/L4 Transition Package (PP),AS_ScL_L34_9130,Verification and Test - L3/L4 Transition - ScL,5.0,0.0,0.0,0.0,07-17-25,07-23-25,AS_ScL_L34_9010: FS,AS_ScL_L34_9140: FS,SLAC,0%,52213.52213_EEDHW (Electronics & Engineering Div - HW Engr),52213_EEDHW (Electronics & Engineering Div - HW Engr),Labor,0.0d,5.0,5.0,At Completion Units,7/17/2025,7/23/2025,0,0,0,0,0,0,0,0,0,0,1.03_Accelerator Systems (AS),1.03.03_AS Superconducting Linac System (ScL),1.03.03.20_AS Superconducting Linac System Installation,1.03.03.20.10_ScL - L3/L4 Transition Package (PP),AS_ScL_L34_9130_Verification and Test - L3/L4 Transition - ScL,Electrical,,SLAC,Labor
77994,1.03,1.03.03,1.03.03.20,1.03.03.20.10,1.03.03.20.10,ScL - L3/L4 Transition Package (PP),AS_ScL_L34_9130,Verification and Test - L3/L4 Transition - ScL,5.0,0.0,0.0,0.0,07-17-25,07-23-25,AS_ScL_L34_9010: FS,AS_ScL_L34_9140: FS,SLAC,0%,52198.52198_METSMANF (METSD Manufacturing),52198_METSMANF (METSD Manufacturing),Labor,0.0d,5.0,5.0,At Completion Units,7/17/2025,7/23/2025,0,0,0,0,0,0,0,0,0,0,1.03_Accelerator Systems (AS),1.03.03_AS Superconducting Linac System (ScL),1.03.03.20_AS Superconducting Linac System Installation,1.03.03.20.10_ScL - L3/L4 Transition Package (PP),AS_ScL_L34_9130_Verification and Test - L3/L4 Transition - ScL,Manufacturing,,SLAC,Labor
77995,1.03,1.03.03,1.03.03.20,1.03.03.20.10,1.03.03.20.10,ScL - L3/L4 Transition Package (PP),AS_ScL_L34_9130,Verification and Test - L3/L4 Transition - ScL,5.0,0.0,0.0,0.0,07-17-25,07-23-25,AS_ScL_L34_9010: FS,AS_ScL_L34_9140: FS,SLAC,0%,52191.52191_METSMET Metrology,52191_METSMET Metrology,Labor,0.0d,5.0,5.0,At Completion Units,7/17/2025,7/23/2025,0,0,0,0,0,0,0,0,0,0,1.03_Accelerator Systems (AS),1.03.03_AS Superconducting Linac System (ScL),1.03.03.20_AS Superconducting Linac System Installation,1.03.03.20.10_ScL - L3/L4 Transition Package (PP),AS_ScL_L34_9130_Verification and Test - L3/L4 Transition - ScL,Metrology,,SLAC,Labor
77996,1.03,1.03.03,1.03.03.20,1.03.03.20.10,1.03.03.20.10,ScL - L3/L4 Transition Package (PP),AS_ScL_L34_9010,Installation  - L3/L4 Transition - ScL,55.0,28333.0,28333.0,28333.0,04-29-25,07-16-25,"AS_ScL_L34_9000: FS, AS_M4_1010: FS",AS_ScL_L34_9130: FS,SLAC,0%,SL_MSSC.SLAC M&S (<$500K) (gets G&A) (gets ESC),SLAC M&S (<$500K) (gets G&A) (gets ESC),Nonlabor,0.0d,55.0,55.0,At Completion Units,4/29/2025,7/16/2025,0,0,0,0,0,0,0,0,0,0,1.03_Accelerator Systems (AS),1.03.03_AS Superconducting Linac System (ScL),1.03.03.20_AS Superconducting Linac System Installation,1.03.03.20.10_ScL - L3/L4 Transition Package (PP),AS_ScL_L34_9010_Installation  - L3/L4 Transition - ScL,Material,,SLAC,M&S
77997,1.03,1.03.03,1.03.03.20,1.03.03.20.10,1.03.03.20.10,ScL - L3/L4 Transition Package (PP),AS_ScL_L34_9010,Installation  - L3/L4 Transition - ScL,55.0,172.0,172.0,172.0,04-29-25,07-16-25,"AS_ScL_L34_9000: FS, AS_M4_1010: FS",AS_ScL_L34_9130: FS,SLAC,0%,52169.52169_METS Mechanical Engineer,52169_METS Mechanical Engineer,Labor,0.0d,55.0,55.0,At Completion Units,4/29/2025,7/16/2025,0,0,0,0,0,0,0,0,0,0,1.03_Accelerator Systems (AS),1.03.03_AS Superconducting Linac System (ScL),1.03.03.20_AS Superconducting Linac System Installation,1.03.03.20.10_ScL - L3/L4 Transition Package (PP),AS_ScL_L34_9010_Installation  - L3/L4 Transition - ScL,Mechanical,,SLAC,Labor
77998,1.03,1.03.03,1.03.03.20,1.03.03.20.10,1.03.03.20.10,ScL - L3/L4 Transition Package (PP),AS_ScL_L34_9010,Installation  - L3/L4 Transition - ScL,55.0,55.0,55.0,55.0,04-29-25,07-16-25,"AS_ScL_L34_9000: FS, AS_M4_1010: FS",AS_ScL_L34_9130: FS,SLAC,0%,52190.52190_METSTP Tech Planning - Reinstated FY16,52190_METSTP Tech Planning - Reinstated FY16,Labor,0.0d,55.0,55.0,At Completion Units,4/29/2025,7/16/2025,0,0,0,0,0,0,0,0,0,0,1.03_Accelerator Systems (AS),1.03.03_AS Superconducting Linac System (ScL),1.03.03.20_AS Superconducting Linac System Installation,1.03.03.20.10_ScL - L3/L4 Transition Package (PP),AS_ScL_L34_9010_Installation  - L3/L4 Transition - ScL,METSTPT Tech Planning,Tech,SLAC,Labor
77999,1.03,1.03.03,1.03.03.20,1.03.03.20.10,1.03.03.20.10,ScL - L3/L4 Transition Package (PP),AS_ScL_L34_9010,Installation  - L3/L4 Transition - ScL,55.0,23.0,23.0,23.0,04-29-25,07-16-25,"AS_ScL_L34_9000: FS, AS_M4_1010: FS",AS_ScL_L34_9130: FS,SLAC,0%,52155.52155_Health Physics Technician III,52155_Health Physics Technician III,Labor,0.0d,55.0,55.0,At Completion Units,4/29/2025,7/16/2025,0,0,0,0,0,0,0,0,0,0,1.03_Accelerator Systems (AS),1.03.03_AS Superconducting Linac System (ScL),1.03.03.20_AS Superconducting Linac System Installation,1.03.03.20.10_ScL - L3/L4 Transition Package (PP),AS_ScL_L34_9010_Installation  - L3/L4 Transition - ScL,Support System,Tech,SLAC,Labor
78000,1.03,1.03.03,1.03.03.20,1.03.03.20.10,1.03.03.20.10,ScL - L3/L4 Transition Package (PP),AS_ScL_L34_9010,Installation  - L3/L4 Transition - ScL,55.0,68.0,68.0,68.0,04-29-25,07-16-25,"AS_ScL_L34_9000: FS, AS_M4_1010: FS",AS_ScL_L34_9130: FS,SLAC,0%,52152.52152_FAC Fleet,52152_FAC Fleet,Labor,0.0d,55.0,55.0,At Completion Units,4/29/2025,7/16/2025,0,0,0,0,0,0,0,0,0,0,1.03_Accelerator Systems (AS),1.03.03_AS Superconducting Linac System (ScL),1.03.03.20_AS Superconducting Linac System Installation,1.03.03.20.10_ScL - L3/L4 Transition Package (PP),AS_ScL_L34_9010_Installation  - L3/L4 Transition - ScL,Support System,,SLAC,Labor
78001,1.03,1.03.03,1.03.03.20,1.03.03.20.10,1.03.03.20.10,ScL - L3/L4 Transition Package (PP),AS_ScL_L34_9010,Installation  - L3/L4 Transition - ScL,55.0,14.0,14.0,14.0,04-29-25,07-16-25,"AS_ScL_L34_9000: FS, AS_M4_1010: FS",AS_ScL_L34_9130: FS,SLAC,0%,52211.52211_EEDOPSE (Electronics & Engineering Div - Ops & PSE),52211_EEDOPSE (Electronics & Engineering Div - Ops & PSE),Labor,0.0d,55.0,55.0,At Completion Units,4/29/2025,7/16/2025,0,0,0,0,0,0,0,0,0,0,1.03_Accelerator Systems (AS),1.03.03_AS Superconducting Linac System (ScL),1.03.03.20_AS Superconducting Linac System Installation,1.03.03.20.10_ScL - L3/L4 Transition Package (PP),AS_ScL_L34_9010_Installation  - L3/L4 Transition - ScL,Electrical,,SLAC,Labor
78002,1.03,1.03.03,1.03.03.20,1.03.03.20.10,1.03.03.20.10,ScL - L3/L4 Transition Package (PP),AS_ScL_L34_9010,Installation  - L3/L4 Transition - ScL,55.0,27.0,27.0,27.0,04-29-25,07-16-25,"AS_ScL_L34_9000: FS, AS_M4_1010: FS",AS_ScL_L34_9130: FS,SLAC,0%,52213.52213_EEDHW (Electronics & Engineering Div - HW Engr),52213_EEDHW (Electronics & Engineering Div - HW Engr),Labor,0.0d,55.0,55.0,At Completion Units,4/29/2025,7/16/2025,0,0,0,0,0,0,0,0,0,0,1.03_Accelerator Systems (AS),1.03.03_AS Superconducting Linac System (ScL),1.03.03.20_AS Superconducting Linac System Installation,1.03.03.20.10_ScL - L3/L4 Transition Package (PP),AS_ScL_L34_9010_Installation  - L3/L4 Transition - ScL,Electrical,,SLAC,Labor
78003,1.03,1.03.03,1.03.03.20,1.03.03.20.10,1.03.03.20.10,ScL - L3/L4 Transition Package (PP),AS_ScL_L34_9010,Installation  - L3/L4 Transition - ScL,55.0,594.0,594.0,594.0,04-29-25,07-16-25,"AS_ScL_L34_9000: FS, AS_M4_1010: FS",AS_ScL_L34_9130: FS,SLAC,0%,52198.52198_METSMANF (METSD Manufacturing),52198_METSMANF (METSD Manufacturing),Labor,0.0d,55.0,55.0,At Completion Units,4/29/2025,7/16/2025,0,0,0,0,0,0,0,0,0,0,1.03_Accelerator Systems (AS),1.03.03_AS Superconducting Linac System (ScL),1.03.03.20_AS Superconducting Linac System Installation,1.03.03.20.10_ScL - L3/L4 Transition Package (PP),AS_ScL_L34_9010_Installation  - L3/L4 Transition - ScL,Manufacturing,,SLAC,Labor
78004,1.03,1.03.03,1.03.03.20,1.03.03.20.10,1.03.03.20.10,ScL - L3/L4 Transition Package (PP),AS_ScL_L34_9010,Installation  - L3/L4 Transition - ScL,55.0,23.0,23.0,23.0,04-29-25,07-16-25,"AS_ScL_L34_9000: FS, AS_M4_1010: FS",AS_ScL_L34_9130: FS,SLAC,0%,52191.52191_METSMET Metrology,52191_METSMET Metrology,Labor,0.0d,55.0,55.0,At Completion Units,4/29/2025,7/16/2025,0,0,0,0,0,0,0,0,0,0,1.03_Accelerator Systems (AS),1.03.03_AS Superconducting Linac System (ScL),1.03.03.20_AS Superconducting Linac System Installation,1.03.03.20.10_ScL - L3/L4 Transition Package (PP),AS_ScL_L34_9010_Installation  - L3/L4 Transition - ScL,Metrology,,SLAC,Labor
78324,1.03,1.03.03,1.03.03.20,1.03.03.20.20,1.03.03.20.20,ScL - Cryomodules Installation,AS_ScL_CM00_SUP_115,SLAC Effort - CM Stand Install,40.0,14982.0,14982.0,14982.0,04-01-25,05-27-25,AS_M4_1010: FS,AS_HPRF_INST_5030: SS,SLAC,0%,SL_MSSC.SLAC M&S (<$500K) (gets G&A) (gets ESC),SLAC M&S (<$500K) (gets G&A) (gets ESC),Nonlabor,0.0d,40.0,40.0,At Completion Units,4/1/2025,5/27/2025,0,0,0,0,0,0,0,0,0,0,1.03_Accelerator Systems (AS),1.03.03_AS Superconducting Linac System (ScL),1.03.03.20_AS Superconducting Linac System Installation,1.03.03.20.20_ScL - Cryomodules Installation,AS_ScL_CM00_SUP_115_SLAC Effort - CM Stand Install,Material,,SLAC,M&S
78325,1.03,1.03.03,1.03.03.20,1.03.03.20.20,1.03.03.20.20,ScL - Cryomodules Installation,AS_ScL_CM00_SUP_115,SLAC Effort - CM Stand Install,40.0,192.0,192.0,192.0,04-01-25,05-27-25,AS_M4_1010: FS,AS_HPRF_INST_5030: SS,SLAC,0%,52191.52191_METSMET Metrology,52191_METSMET Metrology,Labor,0.0d,40.0,40.0,At Completion Units,4/1/2025,5/27/2025,0,0,0,0,0,0,0,0,0,0,1.03_Accelerator Systems (AS),1.03.03_AS Superconducting Linac System (ScL),1.03.03.20_AS Superconducting Linac System Installation,1.03.03.20.20_ScL - Cryomodules Installation,AS_ScL_CM00_SUP_115_SLAC Effort - CM Stand Install,Metrology,,SLAC,Labor
78326,1.03,1.03.03,1.03.03.20,1.03.03.20.20,1.03.03.20.20,ScL - Cryomodules Installation,AS_ScL_CM37_9010,"Receiving, Rigging and Welding CM37 - Cryomodules",24.0,3500.0,3500.0,3500.0,01-08-26,02-11-26,"AS_ScL_CM36_9010: FS, AS_ScL_CM_RQD_9200: FS, AS_ScL_CM_RQD_9300: FS","AS_ScL_CM38_9010: SS, AS_CDS_TE_9040: FS, AS_CDS_TE_9190: FS",SLAC,0%,SL_MSSC.SLAC M&S (<$500K) (gets G&A) (gets ESC),SLAC M&S (<$500K) (gets G&A) (gets ESC),Nonlabor,0.0d,24.0,24.0,At Completion Units,6/19/2025,7/23/2025,0,0,0,0,0,0,0,0,0,0,1.03_Accelerator Systems (AS),1.03.03_AS Superconducting Linac System (ScL),1.03.03.20_AS Superconducting Linac System Installation,1.03.03.20.20_ScL - Cryomodules Installation,"AS_ScL_CM37_9010_Receiving, Rigging and Welding CM37 - Cryomodules",Material,,SLAC,M&S
78327,1.03,1.03.03,1.03.03.20,1.03.03.20.20,1.03.03.20.20,ScL - Cryomodules Installation,AS_ScL_CM37_9010,"Receiving, Rigging and Welding CM37 - Cryomodules",24.0,561.0,561.0,561.0,01-08-26,02-11-26,"AS_ScL_CM36_9010: FS, AS_ScL_CM_RQD_9200: FS, AS_ScL_CM_RQD_9300: FS","AS_ScL_CM38_9010: SS, AS_CDS_TE_9040: FS, AS_CDS_TE_9190: FS",SLAC,0%,52198.52198_METSMANF (METSD Manufacturing),52198_METSMANF (METSD Manufacturing),Labor,0.0d,24.0,24.0,At Completion Units,6/19/2025,7/23/2025,0,0,0,0,0,0,0,0,0,0,1.03_Accelerator Systems (AS),1.03.03_AS Superconducting Linac System (ScL),1.03.03.20_AS Superconducting Linac System Installation,1.03.03.20.20_ScL - Cryomodules Installation,"AS_ScL_CM37_9010_Receiving, Rigging and Welding CM37 - Cryomodules",Manufacturing,,SLAC,Labor
78328,1.03,1.03.03,1.03.03.20,1.03.03.20.20,1.03.03.20.20,ScL - Cryomodules Installation,AS_ScL_CM37_9010,"Receiving, Rigging and Welding CM37 - Cryomodules",24.0,75.0,75.0,75.0,01-08-26,02-11-26,"AS_ScL_CM36_9010: FS, AS_ScL_CM_RQD_9200: FS, AS_ScL_CM_RQD_9300: FS","AS_ScL_CM38_9010: SS, AS_CDS_TE_9040: FS, AS_CDS_TE_9190: FS",SLAC,0%,52169.52169_METS Mechanical Engineer,52169_METS Mechanical Engineer,Labor,0.0d,24.0,24.0,At Completion Units,6/19/2025,7/23/2025,0,0,0,0,0,0,0,0,0,0,1.03_Accelerator Systems (AS),1.03.03_AS Superconducting Linac System (ScL),1.03.03.20_AS Superconducting Linac System Installation,1.03.03.20.20_ScL - Cryomodules Installation,"AS_ScL_CM37_9010_Receiving, Rigging and Welding CM37 - Cryomodules",Mechanical,,SLAC,Labor
78329,1.03,1.03.03,1.03.03.20,1.03.03.20.20,1.03.03.20.20,ScL - Cryomodules Installation,AS_ScL_CM37_9010,"Receiving, Rigging and Welding CM37 - Cryomodules",24.0,48.0,48.0,48.0,01-08-26,02-11-26,"AS_ScL_CM36_9010: FS, AS_ScL_CM_RQD_9200: FS, AS_ScL_CM_RQD_9300: FS","AS_ScL_CM38_9010: SS, AS_CDS_TE_9040: FS, AS_CDS_TE_9190: FS",SLAC,0%,52152.52152_FAC Fleet,52152_FAC Fleet,Labor,0.0d,24.0,24.0,At Completion Units,6/19/2025,7/23/2025,0,0,0,0,0,0,0,0,0,0,1.03_Accelerator Systems (AS),1.03.03_AS Superconducting Linac System (ScL),1.03.03.20_AS Superconducting Linac System Installation,1.03.03.20.20_ScL - Cryomodules Installation,"AS_ScL_CM37_9010_Receiving, Rigging and Welding CM37 - Cryomodules",Support System,,SLAC,Labor
78330,1.03,1.03.03,1.03.03.20,1.03.03.20.20,1.03.03.20.20,ScL - Cryomodules Installation,AS_ScL_L4B_9010,Pressure & Leak Tests - Cryomodules L4B,28.0,600.0,600.0,600.0,01-22-26,03-03-26,"AS_ScL_L4A_9010: FS, AS_ScL_INS_CSM_9010: FS, AS_ScL_L4_SPI_9010: FS",AS_ScL_L4B_9100: FS,SLAC,0%,SL_MSSC.SLAC M&S (<$500K) (gets G&A) (gets ESC),SLAC M&S (<$500K) (gets G&A) (gets ESC),Nonlabor,0.0d,28.0,28.0,At Completion Units,1/22/2026,3/3/2026,0,0,0,0,0,0,0,0,0,0,1.03_Accelerator Systems (AS),1.03.03_AS Superconducting Linac System (ScL),1.03.03.20_AS Superconducting Linac System Installation,1.03.03.20.20_ScL - Cryomodules Installation,AS_ScL_L4B_9010_Pressure & Leak Tests - Cryomodules L4B,Material,,SLAC,M&S
78331,1.03,1.03.03,1.03.03.20,1.03.03.20.20,1.03.03.20.20,ScL - Cryomodules Installation,AS_ScL_CM36_9010,Welding CM36 - Cryomodules Installation,15.0,1500.0,1500.0,1500.0,12-04-25,01-07-26,"AS_ScL_CM00_RIG_9120: FS, AS_ScL_CM_RQD_9010: FS, AS_ScL_CM_RQD_9110: FS, AS_ScL_CM_RQD_9200: FS, AS_ScL_CM_RQD_9300: FS, AS_ScL_CM00_SUP_130: FS, AS_ScL_CM_RQD_9000: FS",AS_ScL_CM37_9010: FS,SLAC,0%,SL_MSSC.SLAC M&S (<$500K) (gets G&A) (gets ESC),SLAC M&S (<$500K) (gets G&A) (gets ESC),Nonlabor,0.0d,15.0,15.0,At Completion Units,5/29/2025,6/18/2025,0,0,0,0,0,0,0,0,0,0,1.03_Accelerator Systems (AS),1.03.03_AS Superconducting Linac System (ScL),1.03.03.20_AS Superconducting Linac System Installation,1.03.03.20.20_ScL - Cryomodules Installation,AS_ScL_CM36_9010_Welding CM36 - Cryomodules Installation,Material,,SLAC,M&S
78332,1.03,1.03.03,1.03.03.20,1.03.03.20.20,1.03.03.20.20,ScL - Cryomodules Installation,AS_ScL_CM36_9010,Welding CM36 - Cryomodules Installation,15.0,332.0,332.0,332.0,12-04-25,01-07-26,"AS_ScL_CM00_RIG_9120: FS, AS_ScL_CM_RQD_9010: FS, AS_ScL_CM_RQD_9110: FS, AS_ScL_CM_RQD_9200: FS, AS_ScL_CM_RQD_9300: FS, AS_ScL_CM00_SUP_130: FS, AS_ScL_CM_RQD_9000: FS",AS_ScL_CM37_9010: FS,SLAC,0%,52198.52198_METSMANF (METSD Manufacturing),52198_METSMANF (METSD Manufacturing),Labor,0.0d,15.0,15.0,At Completion Units,5/29/2025,6/18/2025,0,0,0,0,0,0,0,0,0,0,1.03_Accelerator Systems (AS),1.03.03_AS Superconducting Linac System (ScL),1.03.03.20_AS Superconducting Linac System Installation,1.03.03.20.20_ScL - Cryomodules Installation,AS_ScL_CM36_9010_Welding CM36 - Cryomodules Installation,Manufacturing,,SLAC,Labor
78333,1.03,1.03.03,1.03.03.20,1.03.03.20.20,1.03.03.20.20,ScL - Cryomodules Installation,AS_ScL_CM36_9010,Welding CM36 - Cryomodules Installation,15.0,4.0,4.0,4.0,12-04-25,01-07-26,"AS_ScL_CM00_RIG_9120: FS, AS_ScL_CM_RQD_9010: FS, AS_ScL_CM_RQD_9110: FS, AS_ScL_CM_RQD_9200: FS, AS_ScL_CM_RQD_9300: FS, AS_ScL_CM00_SUP_130: FS, AS_ScL_CM_RQD_9000: FS",AS_ScL_CM37_9010: FS,SLAC,0%,52191.52191_METSMET Metrology,52191_METSMET Metrology,Labor,0.0d,15.0,15.0,At Completion Units,5/29/2025,6/18/2025,0,0,0,0,0,0,0,0,0,0,1.03_Accelerator Systems (AS),1.03.03_AS Superconducting Linac System (ScL),1.03.03.20_AS Superconducting Linac System Installation,1.03.03.20.20_ScL - Cryomodules Installation,AS_ScL_CM36_9010_Welding CM36 - Cryomodules Installation,Metrology,,SLAC,Labor
78334,1.03,1.03.03,1.03.03.20,1.03.03.20.20,1.03.03.20.20,ScL - Cryomodules Installation,AS_ScL_CM32_9012,CM32 Removal - Cryomodules Installation,18.0,280.0,280.0,280.0,05-28-25,06-20-25,"AS_ScL_CM32_9010: FS, AS_CDS_EC3_9040: FS","AS_ScL_CM41_9010: FF, AS_ScL_L3B_9010: FS",SLAC,0%,52198.52198_METSMANF (METSD Manufacturing),52198_METSMANF (METSD Manufacturing),Labor,0.0d,18.0,18.0,At Completion Units,5/28/2025,6/20/2025,0,0,0,0,0,0,0,0,0,0,1.03_Accelerator Systems (AS),1.03.03_AS Superconducting Linac System (ScL),1.03.03.20_AS Superconducting Linac System Installation,1.03.03.20.20_ScL - Cryomodules Installation,AS_ScL_CM32_9012_CM32 Removal - Cryomodules Installation,Manufacturing,,SLAC,Labor
78335,1.03,1.03.03,1.03.03.20,1.03.03.20.20,1.03.03.20.20,ScL - Cryomodules Installation,AS_ScL_CM32_9010,ECD Removal - Cryomodules Installation,14.0,180.0,180.0,180.0,03-20-25,04-08-25,AS_ScL_CM00_NDE_9120: FS,AS_ScL_CM32_9012: FS,SLAC,0%,52198.52198_METSMANF (METSD Manufacturing),52198_METSMANF (METSD Manufacturing),Labor,0.0d,14.0,14.0,At Completion Units,3/20/2025,4/8/2025,0,0,0,0,0,0,0,0,0,0,1.03_Accelerator Systems (AS),1.03.03_AS Superconducting Linac System (ScL),1.03.03.20_AS Superconducting Linac System Installation,1.03.03.20.20_ScL - Cryomodules Installation,AS_ScL_CM32_9010_ECD Removal - Cryomodules Installation,Manufacturing,,SLAC,Labor
78336,1.03,1.03.03,1.03.03.20,1.03.03.20.20,1.03.03.20.20,ScL - Cryomodules Installation,AS_ScL_INS_CSM_9010,Consumables - ScL,5.0,80.0,80.0,80.0,04-01-25,04-07-25,AS_M4_1010: FS,AS_ScL_L4B_9010: FS,SLAC,0%,52169.52169_METS Mechanical Engineer,52169_METS Mechanical Engineer,Labor,0.0d,5.0,5.0,At Completion Units,4/1/2025,4/7/2025,0,0,0,0,0,0,0,0,0,0,1.03_Accelerator Systems (AS),1.03.03_AS Superconducting Linac System (ScL),1.03.03.20_AS Superconducting Linac System Installation,1.03.03.20.20_ScL - Cryomodules Installation,AS_ScL_INS_CSM_9010_Consumables - ScL,Mechanical,,SLAC,Labor
78337,1.03,1.03.03,1.03.03.20,1.03.03.20.20,1.03.03.20.20,ScL - Cryomodules Installation,AS_ScL_INS_CSM_9010,Consumables - ScL,5.0,20000.0,20000.0,20000.0,04-01-25,04-07-25,AS_M4_1010: FS,AS_ScL_L4B_9010: FS,SLAC,0%,SL_MSSC.SLAC M&S (<$500K) (gets G&A) (gets ESC),SLAC M&S (<$500K) (gets G&A) (gets ESC),Nonlabor,0.0d,5.0,5.0,At Completion Units,4/1/2025,4/7/2025,0,0,0,0,0,0,0,0,0,0,1.03_Accelerator Systems (AS),1.03.03_AS Superconducting Linac System (ScL),1.03.03.20_AS Superconducting Linac System Installation,1.03.03.20.20_ScL - Cryomodules Installation,AS_ScL_INS_CSM_9010_Consumables - ScL,Material,,SLAC,M&S
78338,1.03,1.03.03,1.03.03.20,1.03.03.20.20,1.03.03.20.20,ScL - Cryomodules Installation,AS_ScL_L4B_9010,Pressure & Leak Tests - Cryomodules L4B,28.0,496.0,496.0,496.0,01-22-26,03-03-26,"AS_ScL_L4A_9010: FS, AS_ScL_INS_CSM_9010: FS, AS_ScL_L4_SPI_9010: FS",AS_ScL_L4B_9100: FS,SLAC,0%,52198.52198_METSMANF (METSD Manufacturing),52198_METSMANF (METSD Manufacturing),Labor,0.0d,28.0,28.0,At Completion Units,1/22/2026,3/3/2026,0,0,0,0,0,0,0,0,0,0,1.03_Accelerator Systems (AS),1.03.03_AS Superconducting Linac System (ScL),1.03.03.20_AS Superconducting Linac System Installation,1.03.03.20.20_ScL - Cryomodules Installation,AS_ScL_L4B_9010_Pressure & Leak Tests - Cryomodules L4B,Manufacturing,,SLAC,Labor
78339,1.03,1.03.03,1.03.03.20,1.03.03.20.20,1.03.03.20.20,ScL - Cryomodules Installation,AS_ScL_L4A_9010,Pressure & Leak Tests - Cryomodules L4A,38.0,776.0,776.0,776.0,08-19-25,10-10-25,AS_ScL_L3B_9010: FS,"AS_ScL_L4B_9010: FS, AS_ScL_L4A_9100: FS, AS_ScL_L4_SPI_9010: FS",SLAC,0%,52198.52198_METSMANF (METSD Manufacturing),52198_METSMANF (METSD Manufacturing),Labor,0.0d,38.0,38.0,At Completion Units,8/19/2025,10/10/2025,0,0,0,0,0,0,0,0,0,0,1.03_Accelerator Systems (AS),1.03.03_AS Superconducting Linac System (ScL),1.03.03.20_AS Superconducting Linac System Installation,1.03.03.20.20_ScL - Cryomodules Installation,AS_ScL_L4A_9010_Pressure & Leak Tests - Cryomodules L4A,Manufacturing,,SLAC,Labor
78340,1.03,1.03.03,1.03.03.20,1.03.03.20.20,1.03.03.20.20,ScL - Cryomodules Installation,AS_ScL_L4A_9010,Pressure & Leak Tests - Cryomodules L4A,38.0,120.0,120.0,120.0,08-19-25,10-10-25,AS_ScL_L3B_9010: FS,"AS_ScL_L4B_9010: FS, AS_ScL_L4A_9100: FS, AS_ScL_L4_SPI_9010: FS",SLAC,0%,52169.52169_METS Mechanical Engineer,52169_METS Mechanical Engineer,Labor,0.0d,38.0,38.0,At Completion Units,8/19/2025,10/10/2025,0,0,0,0,0,0,0,0,0,0,1.03_Accelerator Systems (AS),1.03.03_AS Superconducting Linac System (ScL),1.03.03.20_AS Superconducting Linac System Installation,1.03.03.20.20_ScL - Cryomodules Installation,AS_ScL_L4A_9010_Pressure & Leak Tests - Cryomodules L4A,Mechanical,,SLAC,Labor
78341,1.03,1.03.03,1.03.03.20,1.03.03.20.20,1.03.03.20.20,ScL - Cryomodules Installation,AS_ScL_L3B_9010,Pressure & Leak Tests - Cryomodules L3B,40.0,120.0,120.0,120.0,06-23-25,08-18-25,AS_ScL_CM32_9012: FS,"AS_ScL_L4A_9010: FS, AS_ScL_CM32_9013: FS",SLAC,0%,52169.52169_METS Mechanical Engineer,52169_METS Mechanical Engineer,Labor,0.0d,40.0,40.0,At Completion Units,6/23/2025,8/18/2025,0,0,0,0,0,0,0,0,0,0,1.03_Accelerator Systems (AS),1.03.03_AS Superconducting Linac System (ScL),1.03.03.20_AS Superconducting Linac System Installation,1.03.03.20.20_ScL - Cryomodules Installation,AS_ScL_L3B_9010_Pressure & Leak Tests - Cryomodules L3B,Mechanical,,SLAC,Labor
78342,1.03,1.03.03,1.03.03.20,1.03.03.20.20,1.03.03.20.20,ScL - Cryomodules Installation,AS_ScL_L3B_9010,Pressure & Leak Tests - Cryomodules L3B,40.0,524.0,524.0,524.0,06-23-25,08-18-25,AS_ScL_CM32_9012: FS,"AS_ScL_L4A_9010: FS, AS_ScL_CM32_9013: FS",SLAC,0%,52198.52198_METSMANF (METSD Manufacturing),52198_METSMANF (METSD Manufacturing),Labor,0.0d,40.0,40.0,At Completion Units,6/23/2025,8/18/2025,0,0,0,0,0,0,0,0,0,0,1.03_Accelerator Systems (AS),1.03.03_AS Superconducting Linac System (ScL),1.03.03.20_AS Superconducting Linac System Installation,1.03.03.20.20_ScL - Cryomodules Installation,AS_ScL_L3B_9010_Pressure & Leak Tests - Cryomodules L3B,Manufacturing,,SLAC,Labor
78343,1.03,1.03.03,1.03.03.20,1.03.03.20.20,1.03.03.20.20,ScL - Cryomodules Installation,AS_ScL_L4A_9010,Pressure & Leak Tests - Cryomodules L4A,38.0,2400.0,2400.0,2400.0,08-19-25,10-10-25,AS_ScL_L3B_9010: FS,"AS_ScL_L4B_9010: FS, AS_ScL_L4A_9100: FS, AS_ScL_L4_SPI_9010: FS",SLAC,0%,SL_MSSC.SLAC M&S (<$500K) (gets G&A) (gets ESC),SLAC M&S (<$500K) (gets G&A) (gets ESC),Nonlabor,0.0d,38.0,38.0,At Completion Units,8/19/2025,10/10/2025,0,0,0,0,0,0,0,0,0,0,1.03_Accelerator Systems (AS),1.03.03_AS Superconducting Linac System (ScL),1.03.03.20_AS Superconducting Linac System Installation,1.03.03.20.20_ScL - Cryomodules Installation,AS_ScL_L4A_9010_Pressure & Leak Tests - Cryomodules L4A,Material,,SLAC,M&S
78344,1.03,1.03.03,1.03.03.20,1.03.03.20.20,1.03.03.20.20,ScL - Cryomodules Installation,AS_ScL_L3B_9010,Pressure & Leak Tests - Cryomodules L3B,40.0,2400.0,2400.0,2400.0,06-23-25,08-18-25,AS_ScL_CM32_9012: FS,"AS_ScL_L4A_9010: FS, AS_ScL_CM32_9013: FS",SLAC,0%,SL_MSSC.SLAC M&S (<$500K) (gets G&A) (gets ESC),SLAC M&S (<$500K) (gets G&A) (gets ESC),Nonlabor,0.0d,40.0,40.0,At Completion Units,6/23/2025,8/18/2025,0,0,0,0,0,0,0,0,0,0,1.03_Accelerator Systems (AS),1.03.03_AS Superconducting Linac System (ScL),1.03.03.20_AS Superconducting Linac System Installation,1.03.03.20.20_ScL - Cryomodules Installation,AS_ScL_L3B_9010_Pressure & Leak Tests - Cryomodules L3B,Material,,SLAC,M&S
78345,1.03,1.03.03,1.03.03.20,1.03.03.20.20,1.03.03.20.20,ScL - Cryomodules Installation,AS_ScL_CM59_9010,"Receiving, Rigging and Welding CM59 - Cryomodules",24.0,3500.0,3500.0,3500.0,07-29-26,08-31-26,AS_ScL_CM58_9010: SS,"AS_M4_3030: FS, AS_CDS_EC4_9040: FS",SLAC,0%,SL_MSSC.SLAC M&S (<$500K) (gets G&A) (gets ESC),SLAC M&S (<$500K) (gets G&A) (gets ESC),Nonlabor,0.0d,24.0,24.0,At Completion Units,1/22/2026,2/25/2026,0,0,0,0,0,0,0,0,0,0,1.03_Accelerator Systems (AS),1.03.03_AS Superconducting Linac System (ScL),1.03.03.20_AS Superconducting Linac System Installation,1.03.03.20.20_ScL - Cryomodules Installation,"AS_ScL_CM59_9010_Receiving, Rigging and Welding CM59 - Cryomodules",Material,,SLAC,M&S
78346,1.03,1.03.03,1.03.03.20,1.03.03.20.20,1.03.03.20.20,ScL - Cryomodules Installation,AS_ScL_CM59_9010,"Receiving, Rigging and Welding CM59 - Cryomodules",24.0,561.0,561.0,561.0,07-29-26,08-31-26,AS_ScL_CM58_9010: SS,"AS_M4_3030: FS, AS_CDS_EC4_9040: FS",SLAC,0%,52198.52198_METSMANF (METSD Manufacturing),52198_METSMANF (METSD Manufacturing),Labor,0.0d,24.0,24.0,At Completion Units,1/22/2026,2/25/2026,0,0,0,0,0,0,0,0,0,0,1.03_Accelerator Systems (AS),1.03.03_AS Superconducting Linac System (ScL),1.03.03.20_AS Superconducting Linac System Installation,1.03.03.20.20_ScL - Cryomodules Installation,"AS_ScL_CM59_9010_Receiving, Rigging and Welding CM59 - Cryomodules",Manufacturing,,SLAC,Labor
78347,1.03,1.03.03,1.03.03.20,1.03.03.20.20,1.03.03.20.20,ScL - Cryomodules Installation,AS_ScL_CM59_9010,"Receiving, Rigging and Welding CM59 - Cryomodules",24.0,48.0,48.0,48.0,07-29-26,08-31-26,AS_ScL_CM58_9010: SS,"AS_M4_3030: FS, AS_CDS_EC4_9040: FS",SLAC,0%,52152.52152_FAC Fleet,52152_FAC Fleet,Labor,0.0d,24.0,24.0,At Completion Units,1/22/2026,2/25/2026,0,0,0,0,0,0,0,0,0,0,1.03_Accelerator Systems (AS),1.03.03_AS Superconducting Linac System (ScL),1.03.03.20_AS Superconducting Linac System Installation,1.03.03.20.20_ScL - Cryomodules Installation,"AS_ScL_CM59_9010_Receiving, Rigging and Welding CM59 - Cryomodules",Support System,,SLAC,Labor
78348,1.03,1.03.03,1.03.03.20,1.03.03.20.20,1.03.03.20.20,ScL - Cryomodules Installation,AS_ScL_CM59_9010,"Receiving, Rigging and Welding CM59 - Cryomodules",24.0,75.0,75.0,75.0,07-29-26,08-31-26,AS_ScL_CM58_9010: SS,"AS_M4_3030: FS, AS_CDS_EC4_9040: FS",SLAC,0%,52169.52169_METS Mechanical Engineer,52169_METS Mechanical Engineer,Labor,0.0d,24.0,24.0,At Completion Units,1/22/2026,2/25/2026,0,0,0,0,0,0,0,0,0,0,1.03_Accelerator Systems (AS),1.03.03_AS Superconducting Linac System (ScL),1.03.03.20_AS Superconducting Linac System Installation,1.03.03.20.20_ScL - Cryomodules Installation,"AS_ScL_CM59_9010_Receiving, Rigging and Welding CM59 - Cryomodules",Mechanical,,SLAC,Labor
78349,1.03,1.03.03,1.03.03.20,1.03.03.20.20,1.03.03.20.20,ScL - Cryomodules Installation,AS_ScL_CM58_9010,"Receiving, Rigging and Welding CM58 - Cryomodules",24.0,3500.0,3500.0,3500.0,07-29-26,08-31-26,AS_ScL_CM57_9010: SS,AS_ScL_CM59_9010: SS,SLAC,0%,SL_MSSC.SLAC M&S (<$500K) (gets G&A) (gets ESC),SLAC M&S (<$500K) (gets G&A) (gets ESC),Nonlabor,0.0d,24.0,24.0,At Completion Units,1/22/2026,2/25/2026,0,0,0,0,0,0,0,0,0,0,1.03_Accelerator Systems (AS),1.03.03_AS Superconducting Linac System (ScL),1.03.03.20_AS Superconducting Linac System Installation,1.03.03.20.20_ScL - Cryomodules Installation,"AS_ScL_CM58_9010_Receiving, Rigging and Welding CM58 - Cryomodules",Material,,SLAC,M&S
78350,1.03,1.03.03,1.03.03.20,1.03.03.20.20,1.03.03.20.20,ScL - Cryomodules Installation,AS_ScL_CM58_9010,"Receiving, Rigging and Welding CM58 - Cryomodules",24.0,561.0,561.0,561.0,07-29-26,08-31-26,AS_ScL_CM57_9010: SS,AS_ScL_CM59_9010: SS,SLAC,0%,52198.52198_METSMANF (METSD Manufacturing),52198_METSMANF (METSD Manufacturing),Labor,0.0d,24.0,24.0,At Completion Units,1/22/2026,2/25/2026,0,0,0,0,0,0,0,0,0,0,1.03_Accelerator Systems (AS),1.03.03_AS Superconducting Linac System (ScL),1.03.03.20_AS Superconducting Linac System Installation,1.03.03.20.20_ScL - Cryomodules Installation,"AS_ScL_CM58_9010_Receiving, Rigging and Welding CM58 - Cryomodules",Manufacturing,,SLAC,Labor
78351,1.03,1.03.03,1.03.03.20,1.03.03.20.20,1.03.03.20.20,ScL - Cryomodules Installation,AS_ScL_CM58_9010,"Receiving, Rigging and Welding CM58 - Cryomodules",24.0,48.0,48.0,48.0,07-29-26,08-31-26,AS_ScL_CM57_9010: SS,AS_ScL_CM59_9010: SS,SLAC,0%,52152.52152_FAC Fleet,52152_FAC Fleet,Labor,0.0d,24.0,24.0,At Completion Units,1/22/2026,2/25/2026,0,0,0,0,0,0,0,0,0,0,1.03_Accelerator Systems (AS),1.03.03_AS Superconducting Linac System (ScL),1.03.03.20_AS Superconducting Linac System Installation,1.03.03.20.20_ScL - Cryomodules Installation,"AS_ScL_CM58_9010_Receiving, Rigging and Welding CM58 - Cryomodules",Support System,,SLAC,Labor
78352,1.03,1.03.03,1.03.03.20,1.03.03.20.20,1.03.03.20.20,ScL - Cryomodules Installation,AS_ScL_CM58_9010,"Receiving, Rigging and Welding CM58 - Cryomodules",24.0,75.0,75.0,75.0,07-29-26,08-31-26,AS_ScL_CM57_9010: SS,AS_ScL_CM59_9010: SS,SLAC,0%,52169.52169_METS Mechanical Engineer,52169_METS Mechanical Engineer,Labor,0.0d,24.0,24.0,At Completion Units,1/22/2026,2/25/2026,0,0,0,0,0,0,0,0,0,0,1.03_Accelerator Systems (AS),1.03.03_AS Superconducting Linac System (ScL),1.03.03.20_AS Superconducting Linac System Installation,1.03.03.20.20_ScL - Cryomodules Installation,"AS_ScL_CM58_9010_Receiving, Rigging and Welding CM58 - Cryomodules",Mechanical,,SLAC,Labor
78353,1.03,1.03.03,1.03.03.20,1.03.03.20.20,1.03.03.20.20,ScL - Cryomodules Installation,AS_ScL_CM57_9010,"Receiving, Rigging and Welding CM57 - Cryomodules",24.0,3500.0,3500.0,3500.0,07-29-26,08-31-26,AS_ScL_CM56_9010: SS,AS_ScL_CM58_9010: SS,SLAC,0%,SL_MSSC.SLAC M&S (<$500K) (gets G&A) (gets ESC),SLAC M&S (<$500K) (gets G&A) (gets ESC),Nonlabor,0.0d,24.0,24.0,At Completion Units,1/22/2026,2/25/2026,0,0,0,0,0,0,0,0,0,0,1.03_Accelerator Systems (AS),1.03.03_AS Superconducting Linac System (ScL),1.03.03.20_AS Superconducting Linac System Installation,1.03.03.20.20_ScL - Cryomodules Installation,"AS_ScL_CM57_9010_Receiving, Rigging and Welding CM57 - Cryomodules",Material,,SLAC,M&S
78354,1.03,1.03.03,1.03.03.20,1.03.03.20.20,1.03.03.20.20,ScL - Cryomodules Installation,AS_ScL_CM57_9010,"Receiving, Rigging and Welding CM57 - Cryomodules",24.0,561.0,561.0,561.0,07-29-26,08-31-26,AS_ScL_CM56_9010: SS,AS_ScL_CM58_9010: SS,SLAC,0%,52198.52198_METSMANF (METSD Manufacturing),52198_METSMANF (METSD Manufacturing),Labor,0.0d,24.0,24.0,At Completion Units,1/22/2026,2/25/2026,0,0,0,0,0,0,0,0,0,0,1.03_Accelerator Systems (AS),1.03.03_AS Superconducting Linac System (ScL),1.03.03.20_AS Superconducting Linac System Installation,1.03.03.20.20_ScL - Cryomodules Installation,"AS_ScL_CM57_9010_Receiving, Rigging and Welding CM57 - Cryomodules",Manufacturing,,SLAC,Labor
78355,1.03,1.03.03,1.03.03.20,1.03.03.20.20,1.03.03.20.20,ScL - Cryomodules Installation,AS_ScL_CM57_9010,"Receiving, Rigging and Welding CM57 - Cryomodules",24.0,48.0,48.0,48.0,07-29-26,08-31-26,AS_ScL_CM56_9010: SS,AS_ScL_CM58_9010: SS,SLAC,0%,52152.52152_FAC Fleet,52152_FAC Fleet,Labor,0.0d,24.0,24.0,At Completion Units,1/22/2026,2/25/2026,0,0,0,0,0,0,0,0,0,0,1.03_Accelerator Systems (AS),1.03.03_AS Superconducting Linac System (ScL),1.03.03.20_AS Superconducting Linac System Installation,1.03.03.20.20_ScL - Cryomodules Installation,"AS_ScL_CM57_9010_Receiving, Rigging and Welding CM57 - Cryomodules",Support System,,SLAC,Labor
78356,1.03,1.03.03,1.03.03.20,1.03.03.20.20,1.03.03.20.20,ScL - Cryomodules Installation,AS_ScL_CM57_9010,"Receiving, Rigging and Welding CM57 - Cryomodules",24.0,75.0,75.0,75.0,07-29-26,08-31-26,AS_ScL_CM56_9010: SS,AS_ScL_CM58_9010: SS,SLAC,0%,52169.52169_METS Mechanical Engineer,52169_METS Mechanical Engineer,Labor,0.0d,24.0,24.0,At Completion Units,1/22/2026,2/25/2026,0,0,0,0,0,0,0,0,0,0,1.03_Accelerator Systems (AS),1.03.03_AS Superconducting Linac System (ScL),1.03.03.20_AS Superconducting Linac System Installation,1.03.03.20.20_ScL - Cryomodules Installation,"AS_ScL_CM57_9010_Receiving, Rigging and Welding CM57 - Cryomodules",Mechanical,,SLAC,Labor
78357,1.03,1.03.03,1.03.03.20,1.03.03.20.20,1.03.03.20.20,ScL - Cryomodules Installation,AS_ScL_CM56_9010,"Receiving, Rigging and Welding CM56 - Cryomodules",24.0,3500.0,3500.0,3500.0,07-29-26,08-31-26,AS_ScL_CM55_9010: SS,AS_ScL_CM57_9010: SS,SLAC,0%,SL_MSSC.SLAC M&S (<$500K) (gets G&A) (gets ESC),SLAC M&S (<$500K) (gets G&A) (gets ESC),Nonlabor,0.0d,24.0,24.0,At Completion Units,1/22/2026,2/25/2026,0,0,0,0,0,0,0,0,0,0,1.03_Accelerator Systems (AS),1.03.03_AS Superconducting Linac System (ScL),1.03.03.20_AS Superconducting Linac System Installation,1.03.03.20.20_ScL - Cryomodules Installation,"AS_ScL_CM56_9010_Receiving, Rigging and Welding CM56 - Cryomodules",Material,,SLAC,M&S
78358,1.03,1.03.03,1.03.03.20,1.03.03.20.20,1.03.03.20.20,ScL - Cryomodules Installation,AS_ScL_CM56_9010,"Receiving, Rigging and Welding CM56 - Cryomodules",24.0,561.0,561.0,561.0,07-29-26,08-31-26,AS_ScL_CM55_9010: SS,AS_ScL_CM57_9010: SS,SLAC,0%,52198.52198_METSMANF (METSD Manufacturing),52198_METSMANF (METSD Manufacturing),Labor,0.0d,24.0,24.0,At Completion Units,1/22/2026,2/25/2026,0,0,0,0,0,0,0,0,0,0,1.03_Accelerator Systems (AS),1.03.03_AS Superconducting Linac System (ScL),1.03.03.20_AS Superconducting Linac System Installation,1.03.03.20.20_ScL - Cryomodules Installation,"AS_ScL_CM56_9010_Receiving, Rigging and Welding CM56 - Cryomodules",Manufacturing,,SLAC,Labor
78359,1.03,1.03.03,1.03.03.20,1.03.03.20.20,1.03.03.20.20,ScL - Cryomodules Installation,AS_ScL_CM56_9010,"Receiving, Rigging and Welding CM56 - Cryomodules",24.0,48.0,48.0,48.0,07-29-26,08-31-26,AS_ScL_CM55_9010: SS,AS_ScL_CM57_9010: SS,SLAC,0%,52152.52152_FAC Fleet,52152_FAC Fleet,Labor,0.0d,24.0,24.0,At Completion Units,1/22/2026,2/25/2026,0,0,0,0,0,0,0,0,0,0,1.03_Accelerator Systems (AS),1.03.03_AS Superconducting Linac System (ScL),1.03.03.20_AS Superconducting Linac System Installation,1.03.03.20.20_ScL - Cryomodules Installation,"AS_ScL_CM56_9010_Receiving, Rigging and Welding CM56 - Cryomodules",Support System,,SLAC,Labor
78360,1.03,1.03.03,1.03.03.20,1.03.03.20.20,1.03.03.20.20,ScL - Cryomodules Installation,AS_ScL_CM56_9010,"Receiving, Rigging and Welding CM56 - Cryomodules",24.0,75.0,75.0,75.0,07-29-26,08-31-26,AS_ScL_CM55_9010: SS,AS_ScL_CM57_9010: SS,SLAC,0%,52169.52169_METS Mechanical Engineer,52169_METS Mechanical Engineer,Labor,0.0d,24.0,24.0,At Completion Units,1/22/2026,2/25/2026,0,0,0,0,0,0,0,0,0,0,1.03_Accelerator Systems (AS),1.03.03_AS Superconducting Linac System (ScL),1.03.03.20_AS Superconducting Linac System Installation,1.03.03.20.20_ScL - Cryomodules Installation,"AS_ScL_CM56_9010_Receiving, Rigging and Welding CM56 - Cryomodules",Mechanical,,SLAC,Labor
78361,1.03,1.03.03,1.03.03.20,1.03.03.20.20,1.03.03.20.20,ScL - Cryomodules Installation,AS_ScL_CM55_9010,"Receiving, Rigging and Welding CM55 - Cryomodules",24.0,3500.0,3500.0,3500.0,07-29-26,08-31-26,AS_ScL_CM54_9010: SS,AS_ScL_CM56_9010: SS,SLAC,0%,SL_MSSC.SLAC M&S (<$500K) (gets G&A) (gets ESC),SLAC M&S (<$500K) (gets G&A) (gets ESC),Nonlabor,0.0d,24.0,24.0,At Completion Units,1/22/2026,2/25/2026,0,0,0,0,0,0,0,0,0,0,1.03_Accelerator Systems (AS),1.03.03_AS Superconducting Linac System (ScL),1.03.03.20_AS Superconducting Linac System Installation,1.03.03.20.20_ScL - Cryomodules Installation,"AS_ScL_CM55_9010_Receiving, Rigging and Welding CM55 - Cryomodules",Material,,SLAC,M&S
78362,1.03,1.03.03,1.03.03.20,1.03.03.20.20,1.03.03.20.20,ScL - Cryomodules Installation,AS_ScL_CM55_9010,"Receiving, Rigging and Welding CM55 - Cryomodules",24.0,561.0,561.0,561.0,07-29-26,08-31-26,AS_ScL_CM54_9010: SS,AS_ScL_CM56_9010: SS,SLAC,0%,52198.52198_METSMANF (METSD Manufacturing),52198_METSMANF (METSD Manufacturing),Labor,0.0d,24.0,24.0,At Completion Units,1/22/2026,2/25/2026,0,0,0,0,0,0,0,0,0,0,1.03_Accelerator Systems (AS),1.03.03_AS Superconducting Linac System (ScL),1.03.03.20_AS Superconducting Linac System Installation,1.03.03.20.20_ScL - Cryomodules Installation,"AS_ScL_CM55_9010_Receiving, Rigging and Welding CM55 - Cryomodules",Manufacturing,,SLAC,Labor
78363,1.03,1.03.03,1.03.03.20,1.03.03.20.20,1.03.03.20.20,ScL - Cryomodules Installation,AS_ScL_CM55_9010,"Receiving, Rigging and Welding CM55 - Cryomodules",24.0,48.0,48.0,48.0,07-29-26,08-31-26,AS_ScL_CM54_9010: SS,AS_ScL_CM56_9010: SS,SLAC,0%,52152.52152_FAC Fleet,52152_FAC Fleet,Labor,0.0d,24.0,24.0,At Completion Units,1/22/2026,2/25/2026,0,0,0,0,0,0,0,0,0,0,1.03_Accelerator Systems (AS),1.03.03_AS Superconducting Linac System (ScL),1.03.03.20_AS Superconducting Linac System Installation,1.03.03.20.20_ScL - Cryomodules Installation,"AS_ScL_CM55_9010_Receiving, Rigging and Welding CM55 - Cryomodules",Support System,,SLAC,Labor
78364,1.03,1.03.03,1.03.03.20,1.03.03.20.20,1.03.03.20.20,ScL - Cryomodules Installation,AS_ScL_CM55_9010,"Receiving, Rigging and Welding CM55 - Cryomodules",24.0,75.0,75.0,75.0,07-29-26,08-31-26,AS_ScL_CM54_9010: SS,AS_ScL_CM56_9010: SS,SLAC,0%,52169.52169_METS Mechanical Engineer,52169_METS Mechanical Engineer,Labor,0.0d,24.0,24.0,At Completion Units,1/22/2026,2/25/2026,0,0,0,0,0,0,0,0,0,0,1.03_Accelerator Systems (AS),1.03.03_AS Superconducting Linac System (ScL),1.03.03.20_AS Superconducting Linac System Installation,1.03.03.20.20_ScL - Cryomodules Installation,"AS_ScL_CM55_9010_Receiving, Rigging and Welding CM55 - Cryomodules",Mechanical,,SLAC,Labor
78365,1.03,1.03.03,1.03.03.20,1.03.03.20.20,1.03.03.20.20,ScL - Cryomodules Installation,AS_ScL_CM54_9010,"Receiving, Rigging and Welding CM54 - Cryomodules",24.0,3500.0,3500.0,3500.0,07-29-26,08-31-26,AS_ScL_CM53_9010: SS,AS_ScL_CM55_9010: SS,SLAC,0%,SL_MSSC.SLAC M&S (<$500K) (gets G&A) (gets ESC),SLAC M&S (<$500K) (gets G&A) (gets ESC),Nonlabor,0.0d,24.0,24.0,At Completion Units,1/22/2026,2/25/2026,0,0,0,0,0,0,0,0,0,0,1.03_Accelerator Systems (AS),1.03.03_AS Superconducting Linac System (ScL),1.03.03.20_AS Superconducting Linac System Installation,1.03.03.20.20_ScL - Cryomodules Installation,"AS_ScL_CM54_9010_Receiving, Rigging and Welding CM54 - Cryomodules",Material,,SLAC,M&S
78366,1.03,1.03.03,1.03.03.20,1.03.03.20.20,1.03.03.20.20,ScL - Cryomodules Installation,AS_ScL_CM54_9010,"Receiving, Rigging and Welding CM54 - Cryomodules",24.0,561.0,561.0,561.0,07-29-26,08-31-26,AS_ScL_CM53_9010: SS,AS_ScL_CM55_9010: SS,SLAC,0%,52198.52198_METSMANF (METSD Manufacturing),52198_METSMANF (METSD Manufacturing),Labor,0.0d,24.0,24.0,At Completion Units,1/22/2026,2/25/2026,0,0,0,0,0,0,0,0,0,0,1.03_Accelerator Systems (AS),1.03.03_AS Superconducting Linac System (ScL),1.03.03.20_AS Superconducting Linac System Installation,1.03.03.20.20_ScL - Cryomodules Installation,"AS_ScL_CM54_9010_Receiving, Rigging and Welding CM54 - Cryomodules",Manufacturing,,SLAC,Labor
78367,1.03,1.03.03,1.03.03.20,1.03.03.20.20,1.03.03.20.20,ScL - Cryomodules Installation,AS_ScL_CM54_9010,"Receiving, Rigging and Welding CM54 - Cryomodules",24.0,48.0,48.0,48.0,07-29-26,08-31-26,AS_ScL_CM53_9010: SS,AS_ScL_CM55_9010: SS,SLAC,0%,52152.52152_FAC Fleet,52152_FAC Fleet,Labor,0.0d,24.0,24.0,At Completion Units,1/22/2026,2/25/2026,0,0,0,0,0,0,0,0,0,0,1.03_Accelerator Systems (AS),1.03.03_AS Superconducting Linac System (ScL),1.03.03.20_AS Superconducting Linac System Installation,1.03.03.20.20_ScL - Cryomodules Installation,"AS_ScL_CM54_9010_Receiving, Rigging and Welding CM54 - Cryomodules",Support System,,SLAC,Labor
78368,1.03,1.03.03,1.03.03.20,1.03.03.20.20,1.03.03.20.20,ScL - Cryomodules Installation,AS_ScL_CM54_9010,"Receiving, Rigging and Welding CM54 - Cryomodules",24.0,75.0,75.0,75.0,07-29-26,08-31-26,AS_ScL_CM53_9010: SS,AS_ScL_CM55_9010: SS,SLAC,0%,52169.52169_METS Mechanical Engineer,52169_METS Mechanical Engineer,Labor,0.0d,24.0,24.0,At Completion Units,1/22/2026,2/25/2026,0,0,0,0,0,0,0,0,0,0,1.03_Accelerator Systems (AS),1.03.03_AS Superconducting Linac System (ScL),1.03.03.20_AS Superconducting Linac System Installation,1.03.03.20.20_ScL - Cryomodules Installation,"AS_ScL_CM54_9010_Receiving, Rigging and Welding CM54 - Cryomodules",Mechanical,,SLAC,Labor
78369,1.03,1.03.03,1.03.03.20,1.03.03.20.20,1.03.03.20.20,ScL - Cryomodules Installation,AS_ScL_CM53_9010,"Receiving, Rigging and Welding CM53 - Cryomodules",24.0,3500.0,3500.0,3500.0,07-29-26,08-31-26,AS_ScL_CM52_9010: FS,AS_ScL_CM54_9010: SS,SLAC,0%,SL_MSSC.SLAC M&S (<$500K) (gets G&A) (gets ESC),SLAC M&S (<$500K) (gets G&A) (gets ESC),Nonlabor,0.0d,24.0,24.0,At Completion Units,1/22/2026,2/25/2026,0,0,0,0,0,0,0,0,0,0,1.03_Accelerator Systems (AS),1.03.03_AS Superconducting Linac System (ScL),1.03.03.20_AS Superconducting Linac System Installation,1.03.03.20.20_ScL - Cryomodules Installation,"AS_ScL_CM53_9010_Receiving, Rigging and Welding CM53 - Cryomodules",Material,,SLAC,M&S
78370,1.03,1.03.03,1.03.03.20,1.03.03.20.20,1.03.03.20.20,ScL - Cryomodules Installation,AS_ScL_CM53_9010,"Receiving, Rigging and Welding CM53 - Cryomodules",24.0,561.0,561.0,561.0,07-29-26,08-31-26,AS_ScL_CM52_9010: FS,AS_ScL_CM54_9010: SS,SLAC,0%,52198.52198_METSMANF (METSD Manufacturing),52198_METSMANF (METSD Manufacturing),Labor,0.0d,24.0,24.0,At Completion Units,1/22/2026,2/25/2026,0,0,0,0,0,0,0,0,0,0,1.03_Accelerator Systems (AS),1.03.03_AS Superconducting Linac System (ScL),1.03.03.20_AS Superconducting Linac System Installation,1.03.03.20.20_ScL - Cryomodules Installation,"AS_ScL_CM53_9010_Receiving, Rigging and Welding CM53 - Cryomodules",Manufacturing,,SLAC,Labor
78371,1.03,1.03.03,1.03.03.20,1.03.03.20.20,1.03.03.20.20,ScL - Cryomodules Installation,AS_ScL_CM53_9010,"Receiving, Rigging and Welding CM53 - Cryomodules",24.0,48.0,48.0,48.0,07-29-26,08-31-26,AS_ScL_CM52_9010: FS,AS_ScL_CM54_9010: SS,SLAC,0%,52152.52152_FAC Fleet,52152_FAC Fleet,Labor,0.0d,24.0,24.0,At Completion Units,1/22/2026,2/25/2026,0,0,0,0,0,0,0,0,0,0,1.03_Accelerator Systems (AS),1.03.03_AS Superconducting Linac System (ScL),1.03.03.20_AS Superconducting Linac System Installation,1.03.03.20.20_ScL - Cryomodules Installation,"AS_ScL_CM53_9010_Receiving, Rigging and Welding CM53 - Cryomodules",Support System,,SLAC,Labor
78372,1.03,1.03.03,1.03.03.20,1.03.03.20.20,1.03.03.20.20,ScL - Cryomodules Installation,AS_ScL_CM53_9010,"Receiving, Rigging and Welding CM53 - Cryomodules",24.0,75.0,75.0,75.0,07-29-26,08-31-26,AS_ScL_CM52_9010: FS,AS_ScL_CM54_9010: SS,SLAC,0%,52169.52169_METS Mechanical Engineer,52169_METS Mechanical Engineer,Labor,0.0d,24.0,24.0,At Completion Units,1/22/2026,2/25/2026,0,0,0,0,0,0,0,0,0,0,1.03_Accelerator Systems (AS),1.03.03_AS Superconducting Linac System (ScL),1.03.03.20_AS Superconducting Linac System Installation,1.03.03.20.20_ScL - Cryomodules Installation,"AS_ScL_CM53_9010_Receiving, Rigging and Welding CM53 - Cryomodules",Mechanical,,SLAC,Labor
78373,1.03,1.03.03,1.03.03.20,1.03.03.20.20,1.03.03.20.20,ScL - Cryomodules Installation,AS_ScL_CM52_9010,"Receiving, Rigging and Welding CM52 - Cryomodules",24.0,3500.0,3500.0,3500.0,06-24-26,07-28-26,AS_ScL_CM51_9010: SS,AS_ScL_CM53_9010: FS,SLAC,0%,SL_MSSC.SLAC M&S (<$500K) (gets G&A) (gets ESC),SLAC M&S (<$500K) (gets G&A) (gets ESC),Nonlabor,0.0d,24.0,24.0,At Completion Units,12/4/2025,1/21/2026,0,0,0,0,0,0,0,0,0,0,1.03_Accelerator Systems (AS),1.03.03_AS Superconducting Linac System (ScL),1.03.03.20_AS Superconducting Linac System Installation,1.03.03.20.20_ScL - Cryomodules Installation,"AS_ScL_CM52_9010_Receiving, Rigging and Welding CM52 - Cryomodules",Material,,SLAC,M&S
78374,1.03,1.03.03,1.03.03.20,1.03.03.20.20,1.03.03.20.20,ScL - Cryomodules Installation,AS_ScL_CM52_9010,"Receiving, Rigging and Welding CM52 - Cryomodules",24.0,561.0,561.0,561.0,06-24-26,07-28-26,AS_ScL_CM51_9010: SS,AS_ScL_CM53_9010: FS,SLAC,0%,52198.52198_METSMANF (METSD Manufacturing),52198_METSMANF (METSD Manufacturing),Labor,0.0d,24.0,24.0,At Completion Units,12/4/2025,1/21/2026,0,0,0,0,0,0,0,0,0,0,1.03_Accelerator Systems (AS),1.03.03_AS Superconducting Linac System (ScL),1.03.03.20_AS Superconducting Linac System Installation,1.03.03.20.20_ScL - Cryomodules Installation,"AS_ScL_CM52_9010_Receiving, Rigging and Welding CM52 - Cryomodules",Manufacturing,,SLAC,Labor
78375,1.03,1.03.03,1.03.03.20,1.03.03.20.20,1.03.03.20.20,ScL - Cryomodules Installation,AS_ScL_CM52_9010,"Receiving, Rigging and Welding CM52 - Cryomodules",24.0,48.0,48.0,48.0,06-24-26,07-28-26,AS_ScL_CM51_9010: SS,AS_ScL_CM53_9010: FS,SLAC,0%,52152.52152_FAC Fleet,52152_FAC Fleet,Labor,0.0d,24.0,24.0,At Completion Units,12/4/2025,1/21/2026,0,0,0,0,0,0,0,0,0,0,1.03_Accelerator Systems (AS),1.03.03_AS Superconducting Linac System (ScL),1.03.03.20_AS Superconducting Linac System Installation,1.03.03.20.20_ScL - Cryomodules Installation,"AS_ScL_CM52_9010_Receiving, Rigging and Welding CM52 - Cryomodules",Support System,,SLAC,Labor
78376,1.03,1.03.03,1.03.03.20,1.03.03.20.20,1.03.03.20.20,ScL - Cryomodules Installation,AS_ScL_CM52_9010,"Receiving, Rigging and Welding CM52 - Cryomodules",24.0,75.0,75.0,75.0,06-24-26,07-28-26,AS_ScL_CM51_9010: SS,AS_ScL_CM53_9010: FS,SLAC,0%,52169.52169_METS Mechanical Engineer,52169_METS Mechanical Engineer,Labor,0.0d,24.0,24.0,At Completion Units,12/4/2025,1/21/2026,0,0,0,0,0,0,0,0,0,0,1.03_Accelerator Systems (AS),1.03.03_AS Superconducting Linac System (ScL),1.03.03.20_AS Superconducting Linac System Installation,1.03.03.20.20_ScL - Cryomodules Installation,"AS_ScL_CM52_9010_Receiving, Rigging and Welding CM52 - Cryomodules",Mechanical,,SLAC,Labor
78377,1.03,1.03.03,1.03.03.20,1.03.03.20.20,1.03.03.20.20,ScL - Cryomodules Installation,AS_ScL_CM51_9010,"Receiving, Rigging and Welding CM51 - Cryomodules",24.0,3500.0,3500.0,3500.0,06-24-26,07-28-26,AS_ScL_CM50_9010: SS,AS_ScL_CM52_9010: SS,SLAC,0%,SL_MSSC.SLAC M&S (<$500K) (gets G&A) (gets ESC),SLAC M&S (<$500K) (gets G&A) (gets ESC),Nonlabor,0.0d,24.0,24.0,At Completion Units,12/4/2025,1/21/2026,0,0,0,0,0,0,0,0,0,0,1.03_Accelerator Systems (AS),1.03.03_AS Superconducting Linac System (ScL),1.03.03.20_AS Superconducting Linac System Installation,1.03.03.20.20_ScL - Cryomodules Installation,"AS_ScL_CM51_9010_Receiving, Rigging and Welding CM51 - Cryomodules",Material,,SLAC,M&S
78378,1.03,1.03.03,1.03.03.20,1.03.03.20.20,1.03.03.20.20,ScL - Cryomodules Installation,AS_ScL_CM51_9010,"Receiving, Rigging and Welding CM51 - Cryomodules",24.0,561.0,561.0,561.0,06-24-26,07-28-26,AS_ScL_CM50_9010: SS,AS_ScL_CM52_9010: SS,SLAC,0%,52198.52198_METSMANF (METSD Manufacturing),52198_METSMANF (METSD Manufacturing),Labor,0.0d,24.0,24.0,At Completion Units,12/4/2025,1/21/2026,0,0,0,0,0,0,0,0,0,0,1.03_Accelerator Systems (AS),1.03.03_AS Superconducting Linac System (ScL),1.03.03.20_AS Superconducting Linac System Installation,1.03.03.20.20_ScL - Cryomodules Installation,"AS_ScL_CM51_9010_Receiving, Rigging and Welding CM51 - Cryomodules",Manufacturing,,SLAC,Labor
78379,1.03,1.03.03,1.03.03.20,1.03.03.20.20,1.03.03.20.20,ScL - Cryomodules Installation,AS_ScL_CM51_9010,"Receiving, Rigging and Welding CM51 - Cryomodules",24.0,48.0,48.0,48.0,06-24-26,07-28-26,AS_ScL_CM50_9010: SS,AS_ScL_CM52_9010: SS,SLAC,0%,52152.52152_FAC Fleet,52152_FAC Fleet,Labor,0.0d,24.0,24.0,At Completion Units,12/4/2025,1/21/2026,0,0,0,0,0,0,0,0,0,0,1.03_Accelerator Systems (AS),1.03.03_AS Superconducting Linac System (ScL),1.03.03.20_AS Superconducting Linac System Installation,1.03.03.20.20_ScL - Cryomodules Installation,"AS_ScL_CM51_9010_Receiving, Rigging and Welding CM51 - Cryomodules",Support System,,SLAC,Labor
78380,1.03,1.03.03,1.03.03.20,1.03.03.20.20,1.03.03.20.20,ScL - Cryomodules Installation,AS_ScL_CM51_9010,"Receiving, Rigging and Welding CM51 - Cryomodules",24.0,75.0,75.0,75.0,06-24-26,07-28-26,AS_ScL_CM50_9010: SS,AS_ScL_CM52_9010: SS,SLAC,0%,52169.52169_METS Mechanical Engineer,52169_METS Mechanical Engineer,Labor,0.0d,24.0,24.0,At Completion Units,12/4/2025,1/21/2026,0,0,0,0,0,0,0,0,0,0,1.03_Accelerator Systems (AS),1.03.03_AS Superconducting Linac System (ScL),1.03.03.20_AS Superconducting Linac System Installation,1.03.03.20.20_ScL - Cryomodules Installation,"AS_ScL_CM51_9010_Receiving, Rigging and Welding CM51 - Cryomodules",Mechanical,,SLAC,Labor
78381,1.03,1.03.03,1.03.03.20,1.03.03.20.20,1.03.03.20.20,ScL - Cryomodules Installation,AS_ScL_CM50_9010,"Receiving, Rigging and Welding CM50 - Cryomodules",24.0,3500.0,3500.0,3500.0,06-24-26,07-28-26,AS_ScL_CM49_9010: SS,AS_ScL_CM51_9010: SS,SLAC,0%,SL_MSSC.SLAC M&S (<$500K) (gets G&A) (gets ESC),SLAC M&S (<$500K) (gets G&A) (gets ESC),Nonlabor,0.0d,24.0,24.0,At Completion Units,12/4/2025,1/21/2026,0,0,0,0,0,0,0,0,0,0,1.03_Accelerator Systems (AS),1.03.03_AS Superconducting Linac System (ScL),1.03.03.20_AS Superconducting Linac System Installation,1.03.03.20.20_ScL - Cryomodules Installation,"AS_ScL_CM50_9010_Receiving, Rigging and Welding CM50 - Cryomodules",Material,,SLAC,M&S
78382,1.03,1.03.03,1.03.03.20,1.03.03.20.20,1.03.03.20.20,ScL - Cryomodules Installation,AS_ScL_CM50_9010,"Receiving, Rigging and Welding CM50 - Cryomodules",24.0,561.0,561.0,561.0,06-24-26,07-28-26,AS_ScL_CM49_9010: SS,AS_ScL_CM51_9010: SS,SLAC,0%,52198.52198_METSMANF (METSD Manufacturing),52198_METSMANF (METSD Manufacturing),Labor,0.0d,24.0,24.0,At Completion Units,12/4/2025,1/21/2026,0,0,0,0,0,0,0,0,0,0,1.03_Accelerator Systems (AS),1.03.03_AS Superconducting Linac System (ScL),1.03.03.20_AS Superconducting Linac System Installation,1.03.03.20.20_ScL - Cryomodules Installation,"AS_ScL_CM50_9010_Receiving, Rigging and Welding CM50 - Cryomodules",Manufacturing,,SLAC,Labor
78383,1.03,1.03.03,1.03.03.20,1.03.03.20.20,1.03.03.20.20,ScL - Cryomodules Installation,AS_ScL_CM50_9010,"Receiving, Rigging and Welding CM50 - Cryomodules",24.0,48.0,48.0,48.0,06-24-26,07-28-26,AS_ScL_CM49_9010: SS,AS_ScL_CM51_9010: SS,SLAC,0%,52152.52152_FAC Fleet,52152_FAC Fleet,Labor,0.0d,24.0,24.0,At Completion Units,12/4/2025,1/21/2026,0,0,0,0,0,0,0,0,0,0,1.03_Accelerator Systems (AS),1.03.03_AS Superconducting Linac System (ScL),1.03.03.20_AS Superconducting Linac System Installation,1.03.03.20.20_ScL - Cryomodules Installation,"AS_ScL_CM50_9010_Receiving, Rigging and Welding CM50 - Cryomodules",Support System,,SLAC,Labor
78384,1.03,1.03.03,1.03.03.20,1.03.03.20.20,1.03.03.20.20,ScL - Cryomodules Installation,AS_ScL_CM50_9010,"Receiving, Rigging and Welding CM50 - Cryomodules",24.0,75.0,75.0,75.0,06-24-26,07-28-26,AS_ScL_CM49_9010: SS,AS_ScL_CM51_9010: SS,SLAC,0%,52169.52169_METS Mechanical Engineer,52169_METS Mechanical Engineer,Labor,0.0d,24.0,24.0,At Completion Units,12/4/2025,1/21/2026,0,0,0,0,0,0,0,0,0,0,1.03_Accelerator Systems (AS),1.03.03_AS Superconducting Linac System (ScL),1.03.03.20_AS Superconducting Linac System Installation,1.03.03.20.20_ScL - Cryomodules Installation,"AS_ScL_CM50_9010_Receiving, Rigging and Welding CM50 - Cryomodules",Mechanical,,SLAC,Labor
78385,1.03,1.03.03,1.03.03.20,1.03.03.20.20,1.03.03.20.20,ScL - Cryomodules Installation,AS_ScL_CM49_9010,"Receiving, Rigging and Welding CM49 - Cryomodules",24.0,3500.0,3500.0,3500.0,06-24-26,07-28-26,"AS_ScL_CM48_9010: FS, AS_CDS_VB_9040: FS",AS_ScL_CM50_9010: SS,SLAC,0%,SL_MSSC.SLAC M&S (<$500K) (gets G&A) (gets ESC),SLAC M&S (<$500K) (gets G&A) (gets ESC),Nonlabor,0.0d,24.0,24.0,At Completion Units,12/4/2025,1/21/2026,0,0,0,0,0,0,0,0,0,0,1.03_Accelerator Systems (AS),1.03.03_AS Superconducting Linac System (ScL),1.03.03.20_AS Superconducting Linac System Installation,1.03.03.20.20_ScL - Cryomodules Installation,"AS_ScL_CM49_9010_Receiving, Rigging and Welding CM49 - Cryomodules",Material,,SLAC,M&S
78386,1.03,1.03.03,1.03.03.20,1.03.03.20.20,1.03.03.20.20,ScL - Cryomodules Installation,AS_ScL_CM49_9010,"Receiving, Rigging and Welding CM49 - Cryomodules",24.0,561.0,561.0,561.0,06-24-26,07-28-26,"AS_ScL_CM48_9010: FS, AS_CDS_VB_9040: FS",AS_ScL_CM50_9010: SS,SLAC,0%,52198.52198_METSMANF (METSD Manufacturing),52198_METSMANF (METSD Manufacturing),Labor,0.0d,24.0,24.0,At Completion Units,12/4/2025,1/21/2026,0,0,0,0,0,0,0,0,0,0,1.03_Accelerator Systems (AS),1.03.03_AS Superconducting Linac System (ScL),1.03.03.20_AS Superconducting Linac System Installation,1.03.03.20.20_ScL - Cryomodules Installation,"AS_ScL_CM49_9010_Receiving, Rigging and Welding CM49 - Cryomodules",Manufacturing,,SLAC,Labor
78387,1.03,1.03.03,1.03.03.20,1.03.03.20.20,1.03.03.20.20,ScL - Cryomodules Installation,AS_ScL_CM49_9010,"Receiving, Rigging and Welding CM49 - Cryomodules",24.0,48.0,48.0,48.0,06-24-26,07-28-26,"AS_ScL_CM48_9010: FS, AS_CDS_VB_9040: FS",AS_ScL_CM50_9010: SS,SLAC,0%,52152.52152_FAC Fleet,52152_FAC Fleet,Labor,0.0d,24.0,24.0,At Completion Units,12/4/2025,1/21/2026,0,0,0,0,0,0,0,0,0,0,1.03_Accelerator Systems (AS),1.03.03_AS Superconducting Linac System (ScL),1.03.03.20_AS Superconducting Linac System Installation,1.03.03.20.20_ScL - Cryomodules Installation,"AS_ScL_CM49_9010_Receiving, Rigging and Welding CM49 - Cryomodules",Support System,,SLAC,Labor
78388,1.03,1.03.03,1.03.03.20,1.03.03.20.20,1.03.03.20.20,ScL - Cryomodules Installation,AS_ScL_CM49_9010,"Receiving, Rigging and Welding CM49 - Cryomodules",24.0,75.0,75.0,75.0,06-24-26,07-28-26,"AS_ScL_CM48_9010: FS, AS_CDS_VB_9040: FS",AS_ScL_CM50_9010: SS,SLAC,0%,52169.52169_METS Mechanical Engineer,52169_METS Mechanical Engineer,Labor,0.0d,24.0,24.0,At Completion Units,12/4/2025,1/21/2026,0,0,0,0,0,0,0,0,0,0,1.03_Accelerator Systems (AS),1.03.03_AS Superconducting Linac System (ScL),1.03.03.20_AS Superconducting Linac System Installation,1.03.03.20.20_ScL - Cryomodules Installation,"AS_ScL_CM49_9010_Receiving, Rigging and Welding CM49 - Cryomodules",Mechanical,,SLAC,Labor
78389,1.03,1.03.03,1.03.03.20,1.03.03.20.20,1.03.03.20.20,ScL - Cryomodules Installation,AS_ScL_CM47_9010,"Receiving, Rigging and Welding CM47 - Cryomodules",24.0,3500.0,3500.0,3500.0,05-06-26,06-09-26,AS_ScL_CM46_9010: SS,AS_ScL_CM48_9010: SS,SLAC,0%,SL_MSSC.SLAC M&S (<$500K) (gets G&A) (gets ESC),SLAC M&S (<$500K) (gets G&A) (gets ESC),Nonlabor,0.0d,24.0,24.0,At Completion Units,10/15/2025,11/17/2025,0,0,0,0,0,0,0,0,0,0,1.03_Accelerator Systems (AS),1.03.03_AS Superconducting Linac System (ScL),1.03.03.20_AS Superconducting Linac System Installation,1.03.03.20.20_ScL - Cryomodules Installation,"AS_ScL_CM47_9010_Receiving, Rigging and Welding CM47 - Cryomodules",Material,,SLAC,M&S
78390,1.03,1.03.03,1.03.03.20,1.03.03.20.20,1.03.03.20.20,ScL - Cryomodules Installation,AS_ScL_CM47_9010,"Receiving, Rigging and Welding CM47 - Cryomodules",24.0,561.0,561.0,561.0,05-06-26,06-09-26,AS_ScL_CM46_9010: SS,AS_ScL_CM48_9010: SS,SLAC,0%,52198.52198_METSMANF (METSD Manufacturing),52198_METSMANF (METSD Manufacturing),Labor,0.0d,24.0,24.0,At Completion Units,10/15/2025,11/17/2025,0,0,0,0,0,0,0,0,0,0,1.03_Accelerator Systems (AS),1.03.03_AS Superconducting Linac System (ScL),1.03.03.20_AS Superconducting Linac System Installation,1.03.03.20.20_ScL - Cryomodules Installation,"AS_ScL_CM47_9010_Receiving, Rigging and Welding CM47 - Cryomodules",Manufacturing,,SLAC,Labor
78391,1.03,1.03.03,1.03.03.20,1.03.03.20.20,1.03.03.20.20,ScL - Cryomodules Installation,AS_ScL_CM47_9010,"Receiving, Rigging and Welding CM47 - Cryomodules",24.0,48.0,48.0,48.0,05-06-26,06-09-26,AS_ScL_CM46_9010: SS,AS_ScL_CM48_9010: SS,SLAC,0%,52152.52152_FAC Fleet,52152_FAC Fleet,Labor,0.0d,24.0,24.0,At Completion Units,10/15/2025,11/17/2025,0,0,0,0,0,0,0,0,0,0,1.03_Accelerator Systems (AS),1.03.03_AS Superconducting Linac System (ScL),1.03.03.20_AS Superconducting Linac System Installation,1.03.03.20.20_ScL - Cryomodules Installation,"AS_ScL_CM47_9010_Receiving, Rigging and Welding CM47 - Cryomodules",Support System,,SLAC,Labor
78392,1.03,1.03.03,1.03.03.20,1.03.03.20.20,1.03.03.20.20,ScL - Cryomodules Installation,AS_ScL_CM47_9010,"Receiving, Rigging and Welding CM47 - Cryomodules",24.0,75.0,75.0,75.0,05-06-26,06-09-26,AS_ScL_CM46_9010: SS,AS_ScL_CM48_9010: SS,SLAC,0%,52169.52169_METS Mechanical Engineer,52169_METS Mechanical Engineer,Labor,0.0d,24.0,24.0,At Completion Units,10/15/2025,11/17/2025,0,0,0,0,0,0,0,0,0,0,1.03_Accelerator Systems (AS),1.03.03_AS Superconducting Linac System (ScL),1.03.03.20_AS Superconducting Linac System Installation,1.03.03.20.20_ScL - Cryomodules Installation,"AS_ScL_CM47_9010_Receiving, Rigging and Welding CM47 - Cryomodules",Mechanical,,SLAC,Labor
78393,1.03,1.03.03,1.03.03.20,1.03.03.20.20,1.03.03.20.20,ScL - Cryomodules Installation,AS_ScL_CM48_9010,"Receiving, Rigging and Welding CM48 - Cryomodules",24.0,3500.0,3500.0,3500.0,05-06-26,06-09-26,AS_ScL_CM47_9010: SS,"AS_ScL_CM49_9010: FS, AS_CDS_VB_9040: FS, AS_CDS_VB_9190: FS",SLAC,0%,SL_MSSC.SLAC M&S (<$500K) (gets G&A) (gets ESC),SLAC M&S (<$500K) (gets G&A) (gets ESC),Nonlabor,0.0d,24.0,24.0,At Completion Units,10/15/2025,11/17/2025,0,0,0,0,0,0,0,0,0,0,1.03_Accelerator Systems (AS),1.03.03_AS Superconducting Linac System (ScL),1.03.03.20_AS Superconducting Linac System Installation,1.03.03.20.20_ScL - Cryomodules Installation,"AS_ScL_CM48_9010_Receiving, Rigging and Welding CM48 - Cryomodules",Material,,SLAC,M&S
78394,1.03,1.03.03,1.03.03.20,1.03.03.20.20,1.03.03.20.20,ScL - Cryomodules Installation,AS_ScL_CM48_9010,"Receiving, Rigging and Welding CM48 - Cryomodules",24.0,561.0,561.0,561.0,05-06-26,06-09-26,AS_ScL_CM47_9010: SS,"AS_ScL_CM49_9010: FS, AS_CDS_VB_9040: FS, AS_CDS_VB_9190: FS",SLAC,0%,52198.52198_METSMANF (METSD Manufacturing),52198_METSMANF (METSD Manufacturing),Labor,0.0d,24.0,24.0,At Completion Units,10/15/2025,11/17/2025,0,0,0,0,0,0,0,0,0,0,1.03_Accelerator Systems (AS),1.03.03_AS Superconducting Linac System (ScL),1.03.03.20_AS Superconducting Linac System Installation,1.03.03.20.20_ScL - Cryomodules Installation,"AS_ScL_CM48_9010_Receiving, Rigging and Welding CM48 - Cryomodules",Manufacturing,,SLAC,Labor
78395,1.03,1.03.03,1.03.03.20,1.03.03.20.20,1.03.03.20.20,ScL - Cryomodules Installation,AS_ScL_CM48_9010,"Receiving, Rigging and Welding CM48 - Cryomodules",24.0,48.0,48.0,48.0,05-06-26,06-09-26,AS_ScL_CM47_9010: SS,"AS_ScL_CM49_9010: FS, AS_CDS_VB_9040: FS, AS_CDS_VB_9190: FS",SLAC,0%,52152.52152_FAC Fleet,52152_FAC Fleet,Labor,0.0d,24.0,24.0,At Completion Units,10/15/2025,11/17/2025,0,0,0,0,0,0,0,0,0,0,1.03_Accelerator Systems (AS),1.03.03_AS Superconducting Linac System (ScL),1.03.03.20_AS Superconducting Linac System Installation,1.03.03.20.20_ScL - Cryomodules Installation,"AS_ScL_CM48_9010_Receiving, Rigging and Welding CM48 - Cryomodules",Support System,,SLAC,Labor
78396,1.03,1.03.03,1.03.03.20,1.03.03.20.20,1.03.03.20.20,ScL - Cryomodules Installation,AS_ScL_CM48_9010,"Receiving, Rigging and Welding CM48 - Cryomodules",24.0,75.0,75.0,75.0,05-06-26,06-09-26,AS_ScL_CM47_9010: SS,"AS_ScL_CM49_9010: FS, AS_CDS_VB_9040: FS, AS_CDS_VB_9190: FS",SLAC,0%,52169.52169_METS Mechanical Engineer,52169_METS Mechanical Engineer,Labor,0.0d,24.0,24.0,At Completion Units,10/15/2025,11/17/2025,0,0,0,0,0,0,0,0,0,0,1.03_Accelerator Systems (AS),1.03.03_AS Superconducting Linac System (ScL),1.03.03.20_AS Superconducting Linac System Installation,1.03.03.20.20_ScL - Cryomodules Installation,"AS_ScL_CM48_9010_Receiving, Rigging and Welding CM48 - Cryomodules",Mechanical,,SLAC,Labor
78397,1.03,1.03.03,1.03.03.20,1.03.03.20.20,1.03.03.20.20,ScL - Cryomodules Installation,AS_ScL_CM46_9010,"Receiving, Rigging and Welding CM46 - Cryomodules",24.0,3500.0,3500.0,3500.0,05-06-26,06-09-26,AS_ScL_CM45_9010: SS,AS_ScL_CM47_9010: SS,SLAC,0%,SL_MSSC.SLAC M&S (<$500K) (gets G&A) (gets ESC),SLAC M&S (<$500K) (gets G&A) (gets ESC),Nonlabor,0.0d,24.0,24.0,At Completion Units,10/15/2025,11/17/2025,0,0,0,0,0,0,0,0,0,0,1.03_Accelerator Systems (AS),1.03.03_AS Superconducting Linac System (ScL),1.03.03.20_AS Superconducting Linac System Installation,1.03.03.20.20_ScL - Cryomodules Installation,"AS_ScL_CM46_9010_Receiving, Rigging and Welding CM46 - Cryomodules",Material,,SLAC,M&S
78398,1.03,1.03.03,1.03.03.20,1.03.03.20.20,1.03.03.20.20,ScL - Cryomodules Installation,AS_ScL_CM46_9010,"Receiving, Rigging and Welding CM46 - Cryomodules",24.0,561.0,561.0,561.0,05-06-26,06-09-26,AS_ScL_CM45_9010: SS,AS_ScL_CM47_9010: SS,SLAC,0%,52198.52198_METSMANF (METSD Manufacturing),52198_METSMANF (METSD Manufacturing),Labor,0.0d,24.0,24.0,At Completion Units,10/15/2025,11/17/2025,0,0,0,0,0,0,0,0,0,0,1.03_Accelerator Systems (AS),1.03.03_AS Superconducting Linac System (ScL),1.03.03.20_AS Superconducting Linac System Installation,1.03.03.20.20_ScL - Cryomodules Installation,"AS_ScL_CM46_9010_Receiving, Rigging and Welding CM46 - Cryomodules",Manufacturing,,SLAC,Labor
78399,1.03,1.03.03,1.03.03.20,1.03.03.20.20,1.03.03.20.20,ScL - Cryomodules Installation,AS_ScL_CM46_9010,"Receiving, Rigging and Welding CM46 - Cryomodules",24.0,48.0,48.0,48.0,05-06-26,06-09-26,AS_ScL_CM45_9010: SS,AS_ScL_CM47_9010: SS,SLAC,0%,52152.52152_FAC Fleet,52152_FAC Fleet,Labor,0.0d,24.0,24.0,At Completion Units,10/15/2025,11/17/2025,0,0,0,0,0,0,0,0,0,0,1.03_Accelerator Systems (AS),1.03.03_AS Superconducting Linac System (ScL),1.03.03.20_AS Superconducting Linac System Installation,1.03.03.20.20_ScL - Cryomodules Installation,"AS_ScL_CM46_9010_Receiving, Rigging and Welding CM46 - Cryomodules",Support System,,SLAC,Labor
78400,1.03,1.03.03,1.03.03.20,1.03.03.20.20,1.03.03.20.20,ScL - Cryomodules Installation,AS_ScL_CM46_9010,"Receiving, Rigging and Welding CM46 - Cryomodules",24.0,75.0,75.0,75.0,05-06-26,06-09-26,AS_ScL_CM45_9010: SS,AS_ScL_CM47_9010: SS,SLAC,0%,52169.52169_METS Mechanical Engineer,52169_METS Mechanical Engineer,Labor,0.0d,24.0,24.0,At Completion Units,10/15/2025,11/17/2025,0,0,0,0,0,0,0,0,0,0,1.03_Accelerator Systems (AS),1.03.03_AS Superconducting Linac System (ScL),1.03.03.20_AS Superconducting Linac System Installation,1.03.03.20.20_ScL - Cryomodules Installation,"AS_ScL_CM46_9010_Receiving, Rigging and Welding CM46 - Cryomodules",Mechanical,,SLAC,Labor
78401,1.03,1.03.03,1.03.03.20,1.03.03.20.20,1.03.03.20.20,ScL - Cryomodules Installation,AS_ScL_CM45_9010,"Receiving, Rigging and Welding CM45 - Cryomodules",24.0,3500.0,3500.0,3500.0,05-06-26,06-09-26,AS_ScL_CM44_9010: FS,AS_ScL_CM46_9010: SS,SLAC,0%,SL_MSSC.SLAC M&S (<$500K) (gets G&A) (gets ESC),SLAC M&S (<$500K) (gets G&A) (gets ESC),Nonlabor,0.0d,24.0,24.0,At Completion Units,10/15/2025,11/17/2025,0,0,0,0,0,0,0,0,0,0,1.03_Accelerator Systems (AS),1.03.03_AS Superconducting Linac System (ScL),1.03.03.20_AS Superconducting Linac System Installation,1.03.03.20.20_ScL - Cryomodules Installation,"AS_ScL_CM45_9010_Receiving, Rigging and Welding CM45 - Cryomodules",Material,,SLAC,M&S
78402,1.03,1.03.03,1.03.03.20,1.03.03.20.20,1.03.03.20.20,ScL - Cryomodules Installation,AS_ScL_CM45_9010,"Receiving, Rigging and Welding CM45 - Cryomodules",24.0,561.0,561.0,561.0,05-06-26,06-09-26,AS_ScL_CM44_9010: FS,AS_ScL_CM46_9010: SS,SLAC,0%,52198.52198_METSMANF (METSD Manufacturing),52198_METSMANF (METSD Manufacturing),Labor,0.0d,24.0,24.0,At Completion Units,10/15/2025,11/17/2025,0,0,0,0,0,0,0,0,0,0,1.03_Accelerator Systems (AS),1.03.03_AS Superconducting Linac System (ScL),1.03.03.20_AS Superconducting Linac System Installation,1.03.03.20.20_ScL - Cryomodules Installation,"AS_ScL_CM45_9010_Receiving, Rigging and Welding CM45 - Cryomodules",Manufacturing,,SLAC,Labor
78403,1.03,1.03.03,1.03.03.20,1.03.03.20.20,1.03.03.20.20,ScL - Cryomodules Installation,AS_ScL_CM45_9010,"Receiving, Rigging and Welding CM45 - Cryomodules",24.0,75.0,75.0,75.0,05-06-26,06-09-26,AS_ScL_CM44_9010: FS,AS_ScL_CM46_9010: SS,SLAC,0%,52152.52152_FAC Fleet,52152_FAC Fleet,Labor,0.0d,24.0,24.0,At Completion Units,10/15/2025,11/17/2025,0,0,0,0,0,0,0,0,0,0,1.03_Accelerator Systems (AS),1.03.03_AS Superconducting Linac System (ScL),1.03.03.20_AS Superconducting Linac System Installation,1.03.03.20.20_ScL - Cryomodules Installation,"AS_ScL_CM45_9010_Receiving, Rigging and Welding CM45 - Cryomodules",Support System,,SLAC,Labor
78404,1.03,1.03.03,1.03.03.20,1.03.03.20.20,1.03.03.20.20,ScL - Cryomodules Installation,AS_ScL_CM45_9010,"Receiving, Rigging and Welding CM45 - Cryomodules",24.0,48.0,48.0,48.0,05-06-26,06-09-26,AS_ScL_CM44_9010: FS,AS_ScL_CM46_9010: SS,SLAC,0%,52169.52169_METS Mechanical Engineer,52169_METS Mechanical Engineer,Labor,0.0d,24.0,24.0,At Completion Units,10/15/2025,11/17/2025,0,0,0,0,0,0,0,0,0,0,1.03_Accelerator Systems (AS),1.03.03_AS Superconducting Linac System (ScL),1.03.03.20_AS Superconducting Linac System Installation,1.03.03.20.20_ScL - Cryomodules Installation,"AS_ScL_CM45_9010_Receiving, Rigging and Welding CM45 - Cryomodules",Mechanical,,SLAC,Labor
78405,1.03,1.03.03,1.03.03.20,1.03.03.20.20,1.03.03.20.20,ScL - Cryomodules Installation,AS_ScL_CM44_9010,"Receiving, Rigging and Welding CM44 - Cryomodules",24.0,3500.0,3500.0,3500.0,04-02-26,05-05-26,AS_ScL_CM43_9010: SS,AS_ScL_CM45_9010: FS,SLAC,0%,SL_MSSC.SLAC M&S (<$500K) (gets G&A) (gets ESC),SLAC M&S (<$500K) (gets G&A) (gets ESC),Nonlabor,0.0d,24.0,24.0,At Completion Units,9/11/2025,10/14/2025,0,0,0,0,0,0,0,0,0,0,1.03_Accelerator Systems (AS),1.03.03_AS Superconducting Linac System (ScL),1.03.03.20_AS Superconducting Linac System Installation,1.03.03.20.20_ScL - Cryomodules Installation,"AS_ScL_CM44_9010_Receiving, Rigging and Welding CM44 - Cryomodules",Material,,SLAC,M&S
78406,1.03,1.03.03,1.03.03.20,1.03.03.20.20,1.03.03.20.20,ScL - Cryomodules Installation,AS_ScL_CM44_9010,"Receiving, Rigging and Welding CM44 - Cryomodules",24.0,561.0,561.0,561.0,04-02-26,05-05-26,AS_ScL_CM43_9010: SS,AS_ScL_CM45_9010: FS,SLAC,0%,52198.52198_METSMANF (METSD Manufacturing),52198_METSMANF (METSD Manufacturing),Labor,0.0d,24.0,24.0,At Completion Units,9/11/2025,10/14/2025,0,0,0,0,0,0,0,0,0,0,1.03_Accelerator Systems (AS),1.03.03_AS Superconducting Linac System (ScL),1.03.03.20_AS Superconducting Linac System Installation,1.03.03.20.20_ScL - Cryomodules Installation,"AS_ScL_CM44_9010_Receiving, Rigging and Welding CM44 - Cryomodules",Manufacturing,,SLAC,Labor
78407,1.03,1.03.03,1.03.03.20,1.03.03.20.20,1.03.03.20.20,ScL - Cryomodules Installation,AS_ScL_CM44_9010,"Receiving, Rigging and Welding CM44 - Cryomodules",24.0,48.0,48.0,48.0,04-02-26,05-05-26,AS_ScL_CM43_9010: SS,AS_ScL_CM45_9010: FS,SLAC,0%,52152.52152_FAC Fleet,52152_FAC Fleet,Labor,0.0d,24.0,24.0,At Completion Units,9/11/2025,10/14/2025,0,0,0,0,0,0,0,0,0,0,1.03_Accelerator Systems (AS),1.03.03_AS Superconducting Linac System (ScL),1.03.03.20_AS Superconducting Linac System Installation,1.03.03.20.20_ScL - Cryomodules Installation,"AS_ScL_CM44_9010_Receiving, Rigging and Welding CM44 - Cryomodules",Support System,,SLAC,Labor
78408,1.03,1.03.03,1.03.03.20,1.03.03.20.20,1.03.03.20.20,ScL - Cryomodules Installation,AS_ScL_CM44_9010,"Receiving, Rigging and Welding CM44 - Cryomodules",24.0,75.0,75.0,75.0,04-02-26,05-05-26,AS_ScL_CM43_9010: SS,AS_ScL_CM45_9010: FS,SLAC,0%,52169.52169_METS Mechanical Engineer,52169_METS Mechanical Engineer,Labor,0.0d,24.0,24.0,At Completion Units,9/11/2025,10/14/2025,0,0,0,0,0,0,0,0,0,0,1.03_Accelerator Systems (AS),1.03.03_AS Superconducting Linac System (ScL),1.03.03.20_AS Superconducting Linac System Installation,1.03.03.20.20_ScL - Cryomodules Installation,"AS_ScL_CM44_9010_Receiving, Rigging and Welding CM44 - Cryomodules",Mechanical,,SLAC,Labor
78409,1.03,1.03.03,1.03.03.20,1.03.03.20.20,1.03.03.20.20,ScL - Cryomodules Installation,AS_ScL_CM43_9010,"Receiving, Rigging and Welding CM43 - Cryomodules",24.0,3500.0,3500.0,3500.0,04-02-26,05-05-26,AS_ScL_CM42_9010: SS,AS_ScL_CM44_9010: SS,SLAC,0%,SL_MSSC.SLAC M&S (<$500K) (gets G&A) (gets ESC),SLAC M&S (<$500K) (gets G&A) (gets ESC),Nonlabor,0.0d,24.0,24.0,At Completion Units,9/11/2025,10/14/2025,0,0,0,0,0,0,0,0,0,0,1.03_Accelerator Systems (AS),1.03.03_AS Superconducting Linac System (ScL),1.03.03.20_AS Superconducting Linac System Installation,1.03.03.20.20_ScL - Cryomodules Installation,"AS_ScL_CM43_9010_Receiving, Rigging and Welding CM43 - Cryomodules",Material,,SLAC,M&S
78410,1.03,1.03.03,1.03.03.20,1.03.03.20.20,1.03.03.20.20,ScL - Cryomodules Installation,AS_ScL_CM43_9010,"Receiving, Rigging and Welding CM43 - Cryomodules",24.0,561.0,561.0,561.0,04-02-26,05-05-26,AS_ScL_CM42_9010: SS,AS_ScL_CM44_9010: SS,SLAC,0%,52198.52198_METSMANF (METSD Manufacturing),52198_METSMANF (METSD Manufacturing),Labor,0.0d,24.0,24.0,At Completion Units,9/11/2025,10/14/2025,0,0,0,0,0,0,0,0,0,0,1.03_Accelerator Systems (AS),1.03.03_AS Superconducting Linac System (ScL),1.03.03.20_AS Superconducting Linac System Installation,1.03.03.20.20_ScL - Cryomodules Installation,"AS_ScL_CM43_9010_Receiving, Rigging and Welding CM43 - Cryomodules",Manufacturing,,SLAC,Labor
78411,1.03,1.03.03,1.03.03.20,1.03.03.20.20,1.03.03.20.20,ScL - Cryomodules Installation,AS_ScL_CM43_9010,"Receiving, Rigging and Welding CM43 - Cryomodules",24.0,48.0,48.0,48.0,04-02-26,05-05-26,AS_ScL_CM42_9010: SS,AS_ScL_CM44_9010: SS,SLAC,0%,52152.52152_FAC Fleet,52152_FAC Fleet,Labor,0.0d,24.0,24.0,At Completion Units,9/11/2025,10/14/2025,0,0,0,0,0,0,0,0,0,0,1.03_Accelerator Systems (AS),1.03.03_AS Superconducting Linac System (ScL),1.03.03.20_AS Superconducting Linac System Installation,1.03.03.20.20_ScL - Cryomodules Installation,"AS_ScL_CM43_9010_Receiving, Rigging and Welding CM43 - Cryomodules",Support System,,SLAC,Labor
78412,1.03,1.03.03,1.03.03.20,1.03.03.20.20,1.03.03.20.20,ScL - Cryomodules Installation,AS_ScL_CM43_9010,"Receiving, Rigging and Welding CM43 - Cryomodules",24.0,75.0,75.0,75.0,04-02-26,05-05-26,AS_ScL_CM42_9010: SS,AS_ScL_CM44_9010: SS,SLAC,0%,52169.52169_METS Mechanical Engineer,52169_METS Mechanical Engineer,Labor,0.0d,24.0,24.0,At Completion Units,9/11/2025,10/14/2025,0,0,0,0,0,0,0,0,0,0,1.03_Accelerator Systems (AS),1.03.03_AS Superconducting Linac System (ScL),1.03.03.20_AS Superconducting Linac System Installation,1.03.03.20.20_ScL - Cryomodules Installation,"AS_ScL_CM43_9010_Receiving, Rigging and Welding CM43 - Cryomodules",Mechanical,,SLAC,Labor
78413,1.03,1.03.03,1.03.03.20,1.03.03.20.20,1.03.03.20.20,ScL - Cryomodules Installation,AS_ScL_CM42_9010,"Receiving, Rigging and Welding CM42 - Cryomodules",24.0,3500.0,3500.0,3500.0,04-02-26,05-05-26,AS_ScL_CM41_9010: SS,AS_ScL_CM43_9010: SS,SLAC,0%,SL_MSSC.SLAC M&S (<$500K) (gets G&A) (gets ESC),SLAC M&S (<$500K) (gets G&A) (gets ESC),Nonlabor,0.0d,24.0,24.0,At Completion Units,9/11/2025,10/14/2025,0,0,0,0,0,0,0,0,0,0,1.03_Accelerator Systems (AS),1.03.03_AS Superconducting Linac System (ScL),1.03.03.20_AS Superconducting Linac System Installation,1.03.03.20.20_ScL - Cryomodules Installation,"AS_ScL_CM42_9010_Receiving, Rigging and Welding CM42 - Cryomodules",Material,,SLAC,M&S
78414,1.03,1.03.03,1.03.03.20,1.03.03.20.20,1.03.03.20.20,ScL - Cryomodules Installation,AS_ScL_CM42_9010,"Receiving, Rigging and Welding CM42 - Cryomodules",24.0,561.0,561.0,561.0,04-02-26,05-05-26,AS_ScL_CM41_9010: SS,AS_ScL_CM43_9010: SS,SLAC,0%,52198.52198_METSMANF (METSD Manufacturing),52198_METSMANF (METSD Manufacturing),Labor,0.0d,24.0,24.0,At Completion Units,9/11/2025,10/14/2025,0,0,0,0,0,0,0,0,0,0,1.03_Accelerator Systems (AS),1.03.03_AS Superconducting Linac System (ScL),1.03.03.20_AS Superconducting Linac System Installation,1.03.03.20.20_ScL - Cryomodules Installation,"AS_ScL_CM42_9010_Receiving, Rigging and Welding CM42 - Cryomodules",Manufacturing,,SLAC,Labor
78415,1.03,1.03.03,1.03.03.20,1.03.03.20.20,1.03.03.20.20,ScL - Cryomodules Installation,AS_ScL_CM42_9010,"Receiving, Rigging and Welding CM42 - Cryomodules",24.0,48.0,48.0,48.0,04-02-26,05-05-26,AS_ScL_CM41_9010: SS,AS_ScL_CM43_9010: SS,SLAC,0%,52152.52152_FAC Fleet,52152_FAC Fleet,Labor,0.0d,24.0,24.0,At Completion Units,9/11/2025,10/14/2025,0,0,0,0,0,0,0,0,0,0,1.03_Accelerator Systems (AS),1.03.03_AS Superconducting Linac System (ScL),1.03.03.20_AS Superconducting Linac System Installation,1.03.03.20.20_ScL - Cryomodules Installation,"AS_ScL_CM42_9010_Receiving, Rigging and Welding CM42 - Cryomodules",Support System,,SLAC,Labor
78416,1.03,1.03.03,1.03.03.20,1.03.03.20.20,1.03.03.20.20,ScL - Cryomodules Installation,AS_ScL_CM42_9010,"Receiving, Rigging and Welding CM42 - Cryomodules",24.0,75.0,75.0,75.0,04-02-26,05-05-26,AS_ScL_CM41_9010: SS,AS_ScL_CM43_9010: SS,SLAC,0%,52169.52169_METS Mechanical Engineer,52169_METS Mechanical Engineer,Labor,0.0d,24.0,24.0,At Completion Units,9/11/2025,10/14/2025,0,0,0,0,0,0,0,0,0,0,1.03_Accelerator Systems (AS),1.03.03_AS Superconducting Linac System (ScL),1.03.03.20_AS Superconducting Linac System Installation,1.03.03.20.20_ScL - Cryomodules Installation,"AS_ScL_CM42_9010_Receiving, Rigging and Welding CM42 - Cryomodules",Mechanical,,SLAC,Labor
78417,1.03,1.03.03,1.03.03.20,1.03.03.20.20,1.03.03.20.20,ScL - Cryomodules Installation,AS_ScL_CM41_9010,"Receiving, Rigging and Welding CM41 - Cryomodules",24.0,3500.0,3500.0,3500.0,04-02-26,05-05-26,"AS_ScL_CM40_9010: FS, AS_ScL_CM32_9012: FF",AS_ScL_CM42_9010: SS,SLAC,0%,SL_MSSC.SLAC M&S (<$500K) (gets G&A) (gets ESC),SLAC M&S (<$500K) (gets G&A) (gets ESC),Nonlabor,0.0d,24.0,24.0,At Completion Units,9/11/2025,10/14/2025,0,0,0,0,0,0,0,0,0,0,1.03_Accelerator Systems (AS),1.03.03_AS Superconducting Linac System (ScL),1.03.03.20_AS Superconducting Linac System Installation,1.03.03.20.20_ScL - Cryomodules Installation,"AS_ScL_CM41_9010_Receiving, Rigging and Welding CM41 - Cryomodules",Material,,SLAC,M&S
78418,1.03,1.03.03,1.03.03.20,1.03.03.20.20,1.03.03.20.20,ScL - Cryomodules Installation,AS_ScL_CM41_9010,"Receiving, Rigging and Welding CM41 - Cryomodules",24.0,561.0,561.0,561.0,04-02-26,05-05-26,"AS_ScL_CM40_9010: FS, AS_ScL_CM32_9012: FF",AS_ScL_CM42_9010: SS,SLAC,0%,52198.52198_METSMANF (METSD Manufacturing),52198_METSMANF (METSD Manufacturing),Labor,0.0d,24.0,24.0,At Completion Units,9/11/2025,10/14/2025,0,0,0,0,0,0,0,0,0,0,1.03_Accelerator Systems (AS),1.03.03_AS Superconducting Linac System (ScL),1.03.03.20_AS Superconducting Linac System Installation,1.03.03.20.20_ScL - Cryomodules Installation,"AS_ScL_CM41_9010_Receiving, Rigging and Welding CM41 - Cryomodules",Manufacturing,,SLAC,Labor
78419,1.03,1.03.03,1.03.03.20,1.03.03.20.20,1.03.03.20.20,ScL - Cryomodules Installation,AS_ScL_CM41_9010,"Receiving, Rigging and Welding CM41 - Cryomodules",24.0,48.0,48.0,48.0,04-02-26,05-05-26,"AS_ScL_CM40_9010: FS, AS_ScL_CM32_9012: FF",AS_ScL_CM42_9010: SS,SLAC,0%,52152.52152_FAC Fleet,52152_FAC Fleet,Labor,0.0d,24.0,24.0,At Completion Units,9/11/2025,10/14/2025,0,0,0,0,0,0,0,0,0,0,1.03_Accelerator Systems (AS),1.03.03_AS Superconducting Linac System (ScL),1.03.03.20_AS Superconducting Linac System Installation,1.03.03.20.20_ScL - Cryomodules Installation,"AS_ScL_CM41_9010_Receiving, Rigging and Welding CM41 - Cryomodules",Support System,,SLAC,Labor
78420,1.03,1.03.03,1.03.03.20,1.03.03.20.20,1.03.03.20.20,ScL - Cryomodules Installation,AS_ScL_CM41_9010,"Receiving, Rigging and Welding CM41 - Cryomodules",24.0,75.0,75.0,75.0,04-02-26,05-05-26,"AS_ScL_CM40_9010: FS, AS_ScL_CM32_9012: FF",AS_ScL_CM42_9010: SS,SLAC,0%,52169.52169_METS Mechanical Engineer,52169_METS Mechanical Engineer,Labor,0.0d,24.0,24.0,At Completion Units,9/11/2025,10/14/2025,0,0,0,0,0,0,0,0,0,0,1.03_Accelerator Systems (AS),1.03.03_AS Superconducting Linac System (ScL),1.03.03.20_AS Superconducting Linac System Installation,1.03.03.20.20_ScL - Cryomodules Installation,"AS_ScL_CM41_9010_Receiving, Rigging and Welding CM41 - Cryomodules",Mechanical,,SLAC,Labor
78421,1.03,1.03.03,1.03.03.20,1.03.03.20.20,1.03.03.20.20,ScL - Cryomodules Installation,AS_ScL_CM40_9010,"Receiving, Rigging and Welding CM40 - Cryomodules",24.0,3500.0,3500.0,3500.0,02-27-26,04-01-26,AS_ScL_CM39_9010: SS,AS_ScL_CM41_9010: FS,SLAC,0%,SL_MSSC.SLAC M&S (<$500K) (gets G&A) (gets ESC),SLAC M&S (<$500K) (gets G&A) (gets ESC),Nonlabor,0.0d,24.0,24.0,At Completion Units,8/7/2025,9/10/2025,0,0,0,0,0,0,0,0,0,0,1.03_Accelerator Systems (AS),1.03.03_AS Superconducting Linac System (ScL),1.03.03.20_AS Superconducting Linac System Installation,1.03.03.20.20_ScL - Cryomodules Installation,"AS_ScL_CM40_9010_Receiving, Rigging and Welding CM40 - Cryomodules",Material,,SLAC,M&S
78422,1.03,1.03.03,1.03.03.20,1.03.03.20.20,1.03.03.20.20,ScL - Cryomodules Installation,AS_ScL_CM40_9010,"Receiving, Rigging and Welding CM40 - Cryomodules",24.0,561.0,561.0,561.0,02-27-26,04-01-26,AS_ScL_CM39_9010: SS,AS_ScL_CM41_9010: FS,SLAC,0%,52198.52198_METSMANF (METSD Manufacturing),52198_METSMANF (METSD Manufacturing),Labor,0.0d,24.0,24.0,At Completion Units,8/7/2025,9/10/2025,0,0,0,0,0,0,0,0,0,0,1.03_Accelerator Systems (AS),1.03.03_AS Superconducting Linac System (ScL),1.03.03.20_AS Superconducting Linac System Installation,1.03.03.20.20_ScL - Cryomodules Installation,"AS_ScL_CM40_9010_Receiving, Rigging and Welding CM40 - Cryomodules",Manufacturing,,SLAC,Labor
78423,1.03,1.03.03,1.03.03.20,1.03.03.20.20,1.03.03.20.20,ScL - Cryomodules Installation,AS_ScL_CM40_9010,"Receiving, Rigging and Welding CM40 - Cryomodules",24.0,48.0,48.0,48.0,02-27-26,04-01-26,AS_ScL_CM39_9010: SS,AS_ScL_CM41_9010: FS,SLAC,0%,52152.52152_FAC Fleet,52152_FAC Fleet,Labor,0.0d,24.0,24.0,At Completion Units,8/7/2025,9/10/2025,0,0,0,0,0,0,0,0,0,0,1.03_Accelerator Systems (AS),1.03.03_AS Superconducting Linac System (ScL),1.03.03.20_AS Superconducting Linac System Installation,1.03.03.20.20_ScL - Cryomodules Installation,"AS_ScL_CM40_9010_Receiving, Rigging and Welding CM40 - Cryomodules",Support System,,SLAC,Labor
78424,1.03,1.03.03,1.03.03.20,1.03.03.20.20,1.03.03.20.20,ScL - Cryomodules Installation,AS_ScL_CM40_9010,"Receiving, Rigging and Welding CM40 - Cryomodules",24.0,75.0,75.0,75.0,02-27-26,04-01-26,AS_ScL_CM39_9010: SS,AS_ScL_CM41_9010: FS,SLAC,0%,52169.52169_METS Mechanical Engineer,52169_METS Mechanical Engineer,Labor,0.0d,24.0,24.0,At Completion Units,8/7/2025,9/10/2025,0,0,0,0,0,0,0,0,0,0,1.03_Accelerator Systems (AS),1.03.03_AS Superconducting Linac System (ScL),1.03.03.20_AS Superconducting Linac System Installation,1.03.03.20.20_ScL - Cryomodules Installation,"AS_ScL_CM40_9010_Receiving, Rigging and Welding CM40 - Cryomodules",Mechanical,,SLAC,Labor
78425,1.03,1.03.03,1.03.03.20,1.03.03.20.20,1.03.03.20.20,ScL - Cryomodules Installation,AS_ScL_CM39_9010,"Receiving, Rigging and Welding CM39 - Cryomodules",24.0,3500.0,3500.0,3500.0,02-27-26,04-01-26,AS_ScL_CM38_9010: SS,AS_ScL_CM40_9010: SS,SLAC,0%,SL_MSSC.SLAC M&S (<$500K) (gets G&A) (gets ESC),SLAC M&S (<$500K) (gets G&A) (gets ESC),Nonlabor,0.0d,24.0,24.0,At Completion Units,8/7/2025,9/10/2025,0,0,0,0,0,0,0,0,0,0,1.03_Accelerator Systems (AS),1.03.03_AS Superconducting Linac System (ScL),1.03.03.20_AS Superconducting Linac System Installation,1.03.03.20.20_ScL - Cryomodules Installation,"AS_ScL_CM39_9010_Receiving, Rigging and Welding CM39 - Cryomodules",Material,,SLAC,M&S
78426,1.03,1.03.03,1.03.03.20,1.03.03.20.20,1.03.03.20.20,ScL - Cryomodules Installation,AS_ScL_CM39_9010,"Receiving, Rigging and Welding CM39 - Cryomodules",24.0,561.0,561.0,561.0,02-27-26,04-01-26,AS_ScL_CM38_9010: SS,AS_ScL_CM40_9010: SS,SLAC,0%,52198.52198_METSMANF (METSD Manufacturing),52198_METSMANF (METSD Manufacturing),Labor,0.0d,24.0,24.0,At Completion Units,8/7/2025,9/10/2025,0,0,0,0,0,0,0,0,0,0,1.03_Accelerator Systems (AS),1.03.03_AS Superconducting Linac System (ScL),1.03.03.20_AS Superconducting Linac System Installation,1.03.03.20.20_ScL - Cryomodules Installation,"AS_ScL_CM39_9010_Receiving, Rigging and Welding CM39 - Cryomodules",Manufacturing,,SLAC,Labor
78427,1.03,1.03.03,1.03.03.20,1.03.03.20.20,1.03.03.20.20,ScL - Cryomodules Installation,AS_ScL_CM39_9010,"Receiving, Rigging and Welding CM39 - Cryomodules",24.0,48.0,48.0,48.0,02-27-26,04-01-26,AS_ScL_CM38_9010: SS,AS_ScL_CM40_9010: SS,SLAC,0%,52152.52152_FAC Fleet,52152_FAC Fleet,Labor,0.0d,24.0,24.0,At Completion Units,8/7/2025,9/10/2025,0,0,0,0,0,0,0,0,0,0,1.03_Accelerator Systems (AS),1.03.03_AS Superconducting Linac System (ScL),1.03.03.20_AS Superconducting Linac System Installation,1.03.03.20.20_ScL - Cryomodules Installation,"AS_ScL_CM39_9010_Receiving, Rigging and Welding CM39 - Cryomodules",Support System,,SLAC,Labor
78428,1.03,1.03.03,1.03.03.20,1.03.03.20.20,1.03.03.20.20,ScL - Cryomodules Installation,AS_ScL_CM39_9010,"Receiving, Rigging and Welding CM39 - Cryomodules",24.0,75.0,75.0,75.0,02-27-26,04-01-26,AS_ScL_CM38_9010: SS,AS_ScL_CM40_9010: SS,SLAC,0%,52169.52169_METS Mechanical Engineer,52169_METS Mechanical Engineer,Labor,0.0d,24.0,24.0,At Completion Units,8/7/2025,9/10/2025,0,0,0,0,0,0,0,0,0,0,1.03_Accelerator Systems (AS),1.03.03_AS Superconducting Linac System (ScL),1.03.03.20_AS Superconducting Linac System Installation,1.03.03.20.20_ScL - Cryomodules Installation,"AS_ScL_CM39_9010_Receiving, Rigging and Welding CM39 - Cryomodules",Mechanical,,SLAC,Labor
78429,1.03,1.03.03,1.03.03.20,1.03.03.20.20,1.03.03.20.20,ScL - Cryomodules Installation,AS_ScL_CM38_9010,"Receiving, Rigging and Welding CM38 - Cryomodules",24.0,3500.0,3500.0,3500.0,02-27-26,04-01-26,"AS_ScL_CM37_9010: SS, AS_CDS_TE_9040: FS",AS_ScL_CM39_9010: SS,SLAC,0%,SL_MSSC.SLAC M&S (<$500K) (gets G&A) (gets ESC),SLAC M&S (<$500K) (gets G&A) (gets ESC),Nonlabor,0.0d,24.0,24.0,At Completion Units,8/7/2025,9/10/2025,0,0,0,0,0,0,0,0,0,0,1.03_Accelerator Systems (AS),1.03.03_AS Superconducting Linac System (ScL),1.03.03.20_AS Superconducting Linac System Installation,1.03.03.20.20_ScL - Cryomodules Installation,"AS_ScL_CM38_9010_Receiving, Rigging and Welding CM38 - Cryomodules",Material,,SLAC,M&S
78430,1.03,1.03.03,1.03.03.20,1.03.03.20.20,1.03.03.20.20,ScL - Cryomodules Installation,AS_ScL_CM38_9010,"Receiving, Rigging and Welding CM38 - Cryomodules",24.0,561.0,561.0,561.0,02-27-26,04-01-26,"AS_ScL_CM37_9010: SS, AS_CDS_TE_9040: FS",AS_ScL_CM39_9010: SS,SLAC,0%,52198.52198_METSMANF (METSD Manufacturing),52198_METSMANF (METSD Manufacturing),Labor,0.0d,24.0,24.0,At Completion Units,8/7/2025,9/10/2025,0,0,0,0,0,0,0,0,0,0,1.03_Accelerator Systems (AS),1.03.03_AS Superconducting Linac System (ScL),1.03.03.20_AS Superconducting Linac System Installation,1.03.03.20.20_ScL - Cryomodules Installation,"AS_ScL_CM38_9010_Receiving, Rigging and Welding CM38 - Cryomodules",Manufacturing,,SLAC,Labor
78431,1.03,1.03.03,1.03.03.20,1.03.03.20.20,1.03.03.20.20,ScL - Cryomodules Installation,AS_ScL_CM38_9010,"Receiving, Rigging and Welding CM38 - Cryomodules",24.0,48.0,48.0,48.0,02-27-26,04-01-26,"AS_ScL_CM37_9010: SS, AS_CDS_TE_9040: FS",AS_ScL_CM39_9010: SS,SLAC,0%,52152.52152_FAC Fleet,52152_FAC Fleet,Labor,0.0d,24.0,24.0,At Completion Units,8/7/2025,9/10/2025,0,0,0,0,0,0,0,0,0,0,1.03_Accelerator Systems (AS),1.03.03_AS Superconducting Linac System (ScL),1.03.03.20_AS Superconducting Linac System Installation,1.03.03.20.20_ScL - Cryomodules Installation,"AS_ScL_CM38_9010_Receiving, Rigging and Welding CM38 - Cryomodules",Support System,,SLAC,Labor
78432,1.03,1.03.03,1.03.03.20,1.03.03.20.20,1.03.03.20.20,ScL - Cryomodules Installation,AS_ScL_CM38_9010,"Receiving, Rigging and Welding CM38 - Cryomodules",24.0,75.0,75.0,75.0,02-27-26,04-01-26,"AS_ScL_CM37_9010: SS, AS_CDS_TE_9040: FS",AS_ScL_CM39_9010: SS,SLAC,0%,52169.52169_METS Mechanical Engineer,52169_METS Mechanical Engineer,Labor,0.0d,24.0,24.0,At Completion Units,8/7/2025,9/10/2025,0,0,0,0,0,0,0,0,0,0,1.03_Accelerator Systems (AS),1.03.03_AS Superconducting Linac System (ScL),1.03.03.20_AS Superconducting Linac System Installation,1.03.03.20.20_ScL - Cryomodules Installation,"AS_ScL_CM38_9010_Receiving, Rigging and Welding CM38 - Cryomodules",Mechanical,,SLAC,Labor
78433,1.03,1.03.03,1.03.03.20,1.03.03.20.20,1.03.03.20.20,ScL - Cryomodules Installation,AS_ScL_CM36_9010,Welding CM36 - Cryomodules Installation,15.0,16.0,16.0,16.0,12-04-25,01-07-26,"AS_ScL_CM00_RIG_9120: FS, AS_ScL_CM_RQD_9010: FS, AS_ScL_CM_RQD_9110: FS, AS_ScL_CM_RQD_9200: FS, AS_ScL_CM_RQD_9300: FS, AS_ScL_CM00_SUP_130: FS, AS_ScL_CM_RQD_9000: FS",AS_ScL_CM37_9010: FS,SLAC,0%,52152.52152_FAC Fleet,52152_FAC Fleet,Labor,0.0d,15.0,15.0,At Completion Units,5/29/2025,6/18/2025,0,0,0,0,0,0,0,0,0,0,1.03_Accelerator Systems (AS),1.03.03_AS Superconducting Linac System (ScL),1.03.03.20_AS Superconducting Linac System Installation,1.03.03.20.20_ScL - Cryomodules Installation,AS_ScL_CM36_9010_Welding CM36 - Cryomodules Installation,Support System,,SLAC,Labor
78434,1.03,1.03.03,1.03.03.20,1.03.03.20.20,1.03.03.20.20,ScL - Cryomodules Installation,AS_ScL_CM00_NDE_9100,Vendor Effort - CM Weld Inspection / Examination,20.0,19.0,19.0,19.0,02-19-25,03-18-25,AS_ScL_CM00_NDE_9090: FS,AS_ScL_CM00_NDE_9110: FS,SLAC,0%,52169.52169_METS Mechanical Engineer,52169_METS Mechanical Engineer,Labor,0.0d,20.0,20.0,At Completion Units,2/19/2025,3/18/2025,0,0,0,0,0,0,0,0,0,0,1.03_Accelerator Systems (AS),1.03.03_AS Superconducting Linac System (ScL),1.03.03.20_AS Superconducting Linac System Installation,1.03.03.20.20_ScL - Cryomodules Installation,AS_ScL_CM00_NDE_9100_Vendor Effort - CM Weld Inspection / Examination,Mechanical,,SLAC,Labor
78435,1.03,1.03.03,1.03.03.20,1.03.03.20.20,1.03.03.20.20,ScL - Cryomodules Installation,AS_ScL_CM00_NDE_9080,Prepare Award Documents - CM Weld Inspection / Examination,5.0,1.0,1.0,1.0,02-10-25,02-14-25,AS_ScL_CM00_NDE_9070: FS,AS_ScL_CM00_NDE_9090: FS,SLAC,0%,52169.52169_METS Mechanical Engineer,52169_METS Mechanical Engineer,Labor,0.0d,5.0,5.0,At Completion Units,2/10/2025,2/14/2025,0,0,0,0,0,0,0,0,0,0,1.03_Accelerator Systems (AS),1.03.03_AS Superconducting Linac System (ScL),1.03.03.20_AS Superconducting Linac System Installation,1.03.03.20.20_ScL - Cryomodules Installation,AS_ScL_CM00_NDE_9080_Prepare Award Documents - CM Weld Inspection / Examination,Mechanical,,SLAC,Labor
78436,1.03,1.03.03,1.03.03.20,1.03.03.20.20,1.03.03.20.20,ScL - Cryomodules Installation,AS_ScL_CM00_NDE_9010,Prepare Requisition (Specs/SOW/ETC) - CM Weld Inspection / Examination,15.0,4.0,4.0,4.0,11-01-24,11-21-24,AS_ScL_CM00_RIG_9010: SS,AS_ScL_CM00_NDE_9020: FS,SLAC,0%,52169.52169_METS Mechanical Engineer,52169_METS Mechanical Engineer,Labor,0.0d,15.0,15.0,At Completion Units,11/1/2024,11/21/2024,0,0,0,0,0,0,0,0,0,0,1.03_Accelerator Systems (AS),1.03.03_AS Superconducting Linac System (ScL),1.03.03.20_AS Superconducting Linac System Installation,1.03.03.20.20_ScL - Cryomodules Installation,AS_ScL_CM00_NDE_9010_Prepare Requisition (Specs/SOW/ETC) - CM Weld Inspection / Examination,Mechanical,,SLAC,Labor
78437,1.03,1.03.03,1.03.03.20,1.03.03.20.20,1.03.03.20.20,ScL - Cryomodules Installation,AS_ScL_CM00_RIG_9100,Vendor Effort - CM Rigging Vendor,20.0,19.0,19.0,19.0,04-01-25,04-28-25,"AS_ScL_CM00_RIG_9090: FS, AS_ScL_TOO_CMx_6120: FS, AS_ScL_TOO_VAC_6120: FS, AS_ScL_TOO_WLD_6120: FS, AS_M4_1010: FS",AS_ScL_CM00_RIG_9110: FS,SLAC,0%,52169.52169_METS Mechanical Engineer,52169_METS Mechanical Engineer,Labor,0.0d,20.0,20.0,At Completion Units,4/1/2025,4/28/2025,0,0,0,0,0,0,0,0,0,0,1.03_Accelerator Systems (AS),1.03.03_AS Superconducting Linac System (ScL),1.03.03.20_AS Superconducting Linac System Installation,1.03.03.20.20_ScL - Cryomodules Installation,AS_ScL_CM00_RIG_9100_Vendor Effort - CM Rigging Vendor,Mechanical,,SLAC,Labor
78438,1.03,1.03.03,1.03.03.20,1.03.03.20.20,1.03.03.20.20,ScL - Cryomodules Installation,AS_ScL_CM00_RIG_9080,Prepare Award Documents - CM Rigging Vendor,5.0,1.0,1.0,1.0,02-10-25,02-14-25,AS_ScL_CM00_RIG_9070: FS,AS_ScL_CM00_RIG_9090: FS,SLAC,0%,52169.52169_METS Mechanical Engineer,52169_METS Mechanical Engineer,Labor,0.0d,5.0,5.0,At Completion Units,2/10/2025,2/14/2025,0,0,0,0,0,0,0,0,0,0,1.03_Accelerator Systems (AS),1.03.03_AS Superconducting Linac System (ScL),1.03.03.20_AS Superconducting Linac System Installation,1.03.03.20.20_ScL - Cryomodules Installation,AS_ScL_CM00_RIG_9080_Prepare Award Documents - CM Rigging Vendor,Mechanical,,SLAC,Labor
78439,1.03,1.03.03,1.03.03.20,1.03.03.20.20,1.03.03.20.20,ScL - Cryomodules Installation,AS_ScL_CM00_RIG_9010,Prepare Requisition (Specs/SOW/ETC) - CM Rigging Vendor,15.0,4.0,4.0,4.0,11-01-24,11-21-24,AS_ScL_IRR_9310: FS,"AS_ScL_CM00_RIG_9020: FS, AS_ScL_CM00_NDE_9010: SS",SLAC,0%,52169.52169_METS Mechanical Engineer,52169_METS Mechanical Engineer,Labor,0.0d,15.0,15.0,At Completion Units,11/1/2024,11/21/2024,0,0,0,0,0,0,0,0,0,0,1.03_Accelerator Systems (AS),1.03.03_AS Superconducting Linac System (ScL),1.03.03.20_AS Superconducting Linac System Installation,1.03.03.20.20_ScL - Cryomodules Installation,AS_ScL_CM00_RIG_9010_Prepare Requisition (Specs/SOW/ETC) - CM Rigging Vendor,Mechanical,,SLAC,Labor
78440,1.03,1.03.03,1.03.03.20,1.03.03.20.20,1.03.03.20.20,ScL - Cryomodules Installation,AS_ScL_CM00_SUP_110,Vendor Effort - CM Stand Install,40.0,19.0,19.0,19.0,07-21-25,09-15-25,"AS_ScL_CM00_SUP_100: FS, AS_ScL_CM_RQD_9100: FS, AS_M4_1010: FS",AS_ScL_CM00_SUP_120: FS,SLAC,0%,52169.52169_METS Mechanical Engineer,52169_METS Mechanical Engineer,Labor,0.0d,40.0,40.0,At Completion Units,4/1/2025,5/27/2025,0,0,0,0,0,0,0,0,0,0,1.03_Accelerator Systems (AS),1.03.03_AS Superconducting Linac System (ScL),1.03.03.20_AS Superconducting Linac System Installation,1.03.03.20.20_ScL - Cryomodules Installation,AS_ScL_CM00_SUP_110_Vendor Effort - CM Stand Install,Mechanical,,SLAC,Labor
78441,1.03,1.03.03,1.03.03.20,1.03.03.20.20,1.03.03.20.20,ScL - Cryomodules Installation,AS_ScL_CM00_SUP_090,Prepare Award Documents - CM Stand Install,5.0,1.0,1.0,1.0,10-02-24,10-08-24,AS_ScL_CM00_SUP_080: FS,AS_ScL_CM00_SUP_100: FS,SLAC,0%,52169.52169_METS Mechanical Engineer,52169_METS Mechanical Engineer,Labor,0.0d,5.0,5.0,At Completion Units,10/2/2024,10/8/2024,0,0,0,0,0,0,0,0,0,0,1.03_Accelerator Systems (AS),1.03.03_AS Superconducting Linac System (ScL),1.03.03.20_AS Superconducting Linac System Installation,1.03.03.20.20_ScL - Cryomodules Installation,AS_ScL_CM00_SUP_090_Prepare Award Documents - CM Stand Install,Mechanical,,SLAC,Labor
78442,1.03,1.03.03,1.03.03.20,1.03.03.20.20,1.03.03.20.20,ScL - Cryomodules Installation,AS_ScL_CM00_NDE_9090,AWARD: Procurement - CM Weld Inspection / Examination,1.0,60452.0,60452.0,60452.0,02-18-25,02-18-25,AS_ScL_CM00_NDE_9080: FS,AS_ScL_CM00_NDE_9100: FS,SLAC,0%,AWARD_USE.AWARD - Use this AWARD,AWARD - Use this AWARD,Nonlabor,0.0d,1.0,1.0,At Completion Units,2/18/2025,2/18/2025,AWARD < $500K,0,0,0,0,0,0,0,0,0,1.03_Accelerator Systems (AS),1.03.03_AS Superconducting Linac System (ScL),1.03.03.20_AS Superconducting Linac System Installation,1.03.03.20.20_ScL - Cryomodules Installation,AS_ScL_CM00_NDE_9090_AWARD: Procurement - CM Weld Inspection / Examination,Material,,SLAC,M&S
78443,1.03,1.03.03,1.03.03.20,1.03.03.20.20,1.03.03.20.20,ScL - Cryomodules Installation,AS_ScL_CM00_NDE_9020,RQN: Approval of Requisition - CM Weld Inspection / Examination,1.0,60452.0,60452.0,60452.0,11-22-24,11-22-24,AS_ScL_CM00_NDE_9010: FS,AS_ScL_CM00_NDE_9030: FS,SLAC,0%,REQ.Requisition,Requisition,Nonlabor,0.0d,1.0,1.0,At Completion Units,11/22/2024,11/22/2024,RQN,0,0,0,0,0,0,0,0,0,1.03_Accelerator Systems (AS),1.03.03_AS Superconducting Linac System (ScL),1.03.03.20_AS Superconducting Linac System Installation,1.03.03.20.20_ScL - Cryomodules Installation,AS_ScL_CM00_NDE_9020_RQN: Approval of Requisition - CM Weld Inspection / Examination,Material,,SLAC,M&S
78444,1.03,1.03.03,1.03.03.20,1.03.03.20.20,1.03.03.20.20,ScL - Cryomodules Installation,AS_ScL_CM00_NDE_9110,RCV: Goods/Services/Final Report - CM Weld Inspection / Examination,1.0,60452.0,60452.0,60452.0,03-19-25,03-19-25,AS_ScL_CM00_NDE_9100: FS,AS_ScL_CM00_NDE_9120: FS,SLAC,0%,SL_MSSC.SLAC M&S (<$500K) (gets G&A) (gets ESC),SLAC M&S (<$500K) (gets G&A) (gets ESC),Nonlabor,0.0d,1.0,1.0,At Completion Units,3/19/2025,3/19/2025,0,0,0,0,0,0,0,0,0,0,1.03_Accelerator Systems (AS),1.03.03_AS Superconducting Linac System (ScL),1.03.03.20_AS Superconducting Linac System Installation,1.03.03.20.20_ScL - Cryomodules Installation,AS_ScL_CM00_NDE_9110_RCV: Goods/Services/Final Report - CM Weld Inspection / Examination,Material,,SLAC,M&S
78445,1.03,1.03.03,1.03.03.20,1.03.03.20.20,1.03.03.20.20,ScL - Cryomodules Installation,AS_ScL_CM00_RIG_9090,AWARD: Procurement - CM Rigging Vendor,1.0,58607.0,58607.0,58607.0,02-18-25,02-18-25,AS_ScL_CM00_RIG_9080: FS,AS_ScL_CM00_RIG_9100: FS,SLAC,0%,AWARD_USE.AWARD - Use this AWARD,AWARD - Use this AWARD,Nonlabor,0.0d,1.0,1.0,At Completion Units,2/18/2025,2/18/2025,AWARD < $500K,0,0,0,0,0,0,0,0,0,1.03_Accelerator Systems (AS),1.03.03_AS Superconducting Linac System (ScL),1.03.03.20_AS Superconducting Linac System Installation,1.03.03.20.20_ScL - Cryomodules Installation,AS_ScL_CM00_RIG_9090_AWARD: Procurement - CM Rigging Vendor,Material,,SLAC,M&S
78446,1.03,1.03.03,1.03.03.20,1.03.03.20.20,1.03.03.20.20,ScL - Cryomodules Installation,AS_ScL_CM00_RIG_9020,RQN: Approval of Requisition - CM Rigging Vendor,1.0,58607.0,58607.0,58607.0,11-22-24,11-22-24,AS_ScL_CM00_RIG_9010: FS,AS_ScL_CM00_RIG_9030: FS,SLAC,0%,REQ.Requisition,Requisition,Nonlabor,0.0d,1.0,1.0,At Completion Units,11/22/2024,11/22/2024,RQN,0,0,0,0,0,0,0,0,0,1.03_Accelerator Systems (AS),1.03.03_AS Superconducting Linac System (ScL),1.03.03.20_AS Superconducting Linac System Installation,1.03.03.20.20_ScL - Cryomodules Installation,AS_ScL_CM00_RIG_9020_RQN: Approval of Requisition - CM Rigging Vendor,Material,,SLAC,M&S
78447,1.03,1.03.03,1.03.03.20,1.03.03.20.20,1.03.03.20.20,ScL - Cryomodules Installation,AS_ScL_CM00_RIG_9110,RCV: Goods/Services/Final Report - CM Rigging,1.0,58607.0,58607.0,58607.0,04-29-25,04-29-25,AS_ScL_CM00_RIG_9100: FS,AS_ScL_CM00_RIG_9120: FS,SLAC,0%,SL_MSSC.SLAC M&S (<$500K) (gets G&A) (gets ESC),SLAC M&S (<$500K) (gets G&A) (gets ESC),Nonlabor,0.0d,1.0,1.0,At Completion Units,4/29/2025,4/29/2025,0,0,0,0,0,0,0,0,0,0,1.03_Accelerator Systems (AS),1.03.03_AS Superconducting Linac System (ScL),1.03.03.20_AS Superconducting Linac System Installation,1.03.03.20.20_ScL - Cryomodules Installation,AS_ScL_CM00_RIG_9110_RCV: Goods/Services/Final Report - CM Rigging,Material,,SLAC,M&S
78448,1.03,1.03.03,1.03.03.20,1.03.03.20.20,1.03.03.20.20,ScL - Cryomodules Installation,AS_ScL_CM00_SUP_100,AWARD: Procurement - CM Stand Install,1.0,162000.0,162000.0,162000.0,10-09-24,10-09-24,AS_ScL_CM00_SUP_090: FS,AS_ScL_CM00_SUP_110: FS,SLAC,0%,AWARD_USE.AWARD - Use this AWARD,AWARD - Use this AWARD,Nonlabor,0.0d,1.0,1.0,At Completion Units,10/9/2024,10/9/2024,AWARD < $500K,0,0,0,0,0,0,0,0,0,1.03_Accelerator Systems (AS),1.03.03_AS Superconducting Linac System (ScL),1.03.03.20_AS Superconducting Linac System Installation,1.03.03.20.20_ScL - Cryomodules Installation,AS_ScL_CM00_SUP_100_AWARD: Procurement - CM Stand Install,Material,,SLAC,M&S
78449,1.03,1.03.03,1.03.03.20,1.03.03.20.20,1.03.03.20.20,ScL - Cryomodules Installation,AS_ScL_CM00_SUP_030,RQN: Approval of Requisition - CM Stand Install,1.0,162000.0,162000.0,162000.0,08-01-24,08-01-24,AS_M4_1030: FS,AS_ScL_CM00_SUP_040: FS,SLAC,0%,REQ.Requisition,Requisition,Nonlabor,0.0d,1.0,1.0,At Completion Units,8/1/2024,8/1/2024,RQN,0,0,0,0,0,0,0,0,0,1.03_Accelerator Systems (AS),1.03.03_AS Superconducting Linac System (ScL),1.03.03.20_AS Superconducting Linac System Installation,1.03.03.20.20_ScL - Cryomodules Installation,AS_ScL_CM00_SUP_030_RQN: Approval of Requisition - CM Stand Install,Material,,SLAC,M&S
78450,1.03,1.03.03,1.03.03.20,1.03.03.20.20,1.03.03.20.20,ScL - Cryomodules Installation,AS_ScL_CM00_SUP_120,RCV: Installation of CM Stand,1.0,162000.0,162000.0,162000.0,09-16-25,09-16-25,AS_ScL_CM00_SUP_110: FS,AS_ScL_CM00_SUP_130: FS,SLAC,0%,SL_MSSC.SLAC M&S (<$500K) (gets G&A) (gets ESC),SLAC M&S (<$500K) (gets G&A) (gets ESC),Nonlabor,0.0d,1.0,1.0,At Completion Units,5/28/2025,5/28/2025,0,0,0,0,0,0,0,0,0,0,1.03_Accelerator Systems (AS),1.03.03_AS Superconducting Linac System (ScL),1.03.03.20_AS Superconducting Linac System Installation,1.03.03.20.20_ScL - Cryomodules Installation,AS_ScL_CM00_SUP_120_RCV: Installation of CM Stand,Material,,SLAC,M&S
78770,1.03,1.03.03,1.03.03.20,1.03.03.20.21,1.03.03.20.21,ScL - L4 Scavaging Pump Package (PP),AS_ScL_L4_SPI_9010,Scavaging Pump Installation - ScL,60.0,28333.0,28333.0,28333.0,10-13-25,01-21-26,"AS_ScL_VAC_SCP_6130: FS, AS_ScL_L4A_9010: FS","AS_ScL_L4_SPI_9020: FS, AS_ScL_L4B_9010: FS",SLAC,0%,SL_MSSC.SLAC M&S (<$500K) (gets G&A) (gets ESC),SLAC M&S (<$500K) (gets G&A) (gets ESC),Nonlabor,0.0d,60.0,60.0,At Completion Units,10/13/2025,1/21/2026,0,0,0,0,0,0,0,0,0,0,1.03_Accelerator Systems (AS),1.03.03_AS Superconducting Linac System (ScL),1.03.03.20_AS Superconducting Linac System Installation,1.03.03.20.21_ScL - L4 Scavaging Pump Package (PP),AS_ScL_L4_SPI_9010_Scavaging Pump Installation - ScL,Material,,SLAC,M&S
78771,1.03,1.03.03,1.03.03.20,1.03.03.20.21,1.03.03.20.21,ScL - L4 Scavaging Pump Package (PP),AS_ScL_L4_SPI_9010,Scavaging Pump Installation - ScL,60.0,172.0,172.0,172.0,10-13-25,01-21-26,"AS_ScL_VAC_SCP_6130: FS, AS_ScL_L4A_9010: FS","AS_ScL_L4_SPI_9020: FS, AS_ScL_L4B_9010: FS",SLAC,0%,52169.52169_METS Mechanical Engineer,52169_METS Mechanical Engineer,Labor,0.0d,60.0,60.0,At Completion Units,10/13/2025,1/21/2026,0,0,0,0,0,0,0,0,0,0,1.03_Accelerator Systems (AS),1.03.03_AS Superconducting Linac System (ScL),1.03.03.20_AS Superconducting Linac System Installation,1.03.03.20.21_ScL - L4 Scavaging Pump Package (PP),AS_ScL_L4_SPI_9010_Scavaging Pump Installation - ScL,Mechanical,,SLAC,Labor
78772,1.03,1.03.03,1.03.03.20,1.03.03.20.21,1.03.03.20.21,ScL - L4 Scavaging Pump Package (PP),AS_ScL_L4_SPI_9010,Scavaging Pump Installation - ScL,60.0,55.0,55.0,55.0,10-13-25,01-21-26,"AS_ScL_VAC_SCP_6130: FS, AS_ScL_L4A_9010: FS","AS_ScL_L4_SPI_9020: FS, AS_ScL_L4B_9010: FS",SLAC,0%,52190.52190_METSTP Tech Planning - Reinstated FY16,52190_METSTP Tech Planning - Reinstated FY16,Labor,0.0d,60.0,60.0,At Completion Units,10/13/2025,1/21/2026,0,0,0,0,0,0,0,0,0,0,1.03_Accelerator Systems (AS),1.03.03_AS Superconducting Linac System (ScL),1.03.03.20_AS Superconducting Linac System Installation,1.03.03.20.21_ScL - L4 Scavaging Pump Package (PP),AS_ScL_L4_SPI_9010_Scavaging Pump Installation - ScL,METSTPT Tech Planning,Tech,SLAC,Labor
78773,1.03,1.03.03,1.03.03.20,1.03.03.20.21,1.03.03.20.21,ScL - L4 Scavaging Pump Package (PP),AS_ScL_L4_SPI_9010,Scavaging Pump Installation - ScL,60.0,23.0,23.0,23.0,10-13-25,01-21-26,"AS_ScL_VAC_SCP_6130: FS, AS_ScL_L4A_9010: FS","AS_ScL_L4_SPI_9020: FS, AS_ScL_L4B_9010: FS",SLAC,0%,52155.52155_Health Physics Technician III,52155_Health Physics Technician III,Labor,0.0d,60.0,60.0,At Completion Units,10/13/2025,1/21/2026,0,0,0,0,0,0,0,0,0,0,1.03_Accelerator Systems (AS),1.03.03_AS Superconducting Linac System (ScL),1.03.03.20_AS Superconducting Linac System Installation,1.03.03.20.21_ScL - L4 Scavaging Pump Package (PP),AS_ScL_L4_SPI_9010_Scavaging Pump Installation - ScL,Support System,Tech,SLAC,Labor
78774,1.03,1.03.03,1.03.03.20,1.03.03.20.21,1.03.03.20.21,ScL - L4 Scavaging Pump Package (PP),AS_ScL_L4_SPI_9010,Scavaging Pump Installation - ScL,60.0,68.0,68.0,68.0,10-13-25,01-21-26,"AS_ScL_VAC_SCP_6130: FS, AS_ScL_L4A_9010: FS","AS_ScL_L4_SPI_9020: FS, AS_ScL_L4B_9010: FS",SLAC,0%,52152.52152_FAC Fleet,52152_FAC Fleet,Labor,0.0d,60.0,60.0,At Completion Units,10/13/2025,1/21/2026,0,0,0,0,0,0,0,0,0,0,1.03_Accelerator Systems (AS),1.03.03_AS Superconducting Linac System (ScL),1.03.03.20_AS Superconducting Linac System Installation,1.03.03.20.21_ScL - L4 Scavaging Pump Package (PP),AS_ScL_L4_SPI_9010_Scavaging Pump Installation - ScL,Support System,,SLAC,Labor
78775,1.03,1.03.03,1.03.03.20,1.03.03.20.21,1.03.03.20.21,ScL - L4 Scavaging Pump Package (PP),AS_ScL_L4_SPI_9010,Scavaging Pump Installation - ScL,60.0,14.0,14.0,14.0,10-13-25,01-21-26,"AS_ScL_VAC_SCP_6130: FS, AS_ScL_L4A_9010: FS","AS_ScL_L4_SPI_9020: FS, AS_ScL_L4B_9010: FS",SLAC,0%,52211.52211_EEDOPSE (Electronics & Engineering Div - Ops & PSE),52211_EEDOPSE (Electronics & Engineering Div - Ops & PSE),Labor,0.0d,60.0,60.0,At Completion Units,10/13/2025,1/21/2026,0,0,0,0,0,0,0,0,0,0,1.03_Accelerator Systems (AS),1.03.03_AS Superconducting Linac System (ScL),1.03.03.20_AS Superconducting Linac System Installation,1.03.03.20.21_ScL - L4 Scavaging Pump Package (PP),AS_ScL_L4_SPI_9010_Scavaging Pump Installation - ScL,Electrical,,SLAC,Labor
78776,1.03,1.03.03,1.03.03.20,1.03.03.20.21,1.03.03.20.21,ScL - L4 Scavaging Pump Package (PP),AS_ScL_L4_SPI_9010,Scavaging Pump Installation - ScL,60.0,27.0,27.0,27.0,10-13-25,01-21-26,"AS_ScL_VAC_SCP_6130: FS, AS_ScL_L4A_9010: FS","AS_ScL_L4_SPI_9020: FS, AS_ScL_L4B_9010: FS",SLAC,0%,52213.52213_EEDHW (Electronics & Engineering Div - HW Engr),52213_EEDHW (Electronics & Engineering Div - HW Engr),Labor,0.0d,60.0,60.0,At Completion Units,10/13/2025,1/21/2026,0,0,0,0,0,0,0,0,0,0,1.03_Accelerator Systems (AS),1.03.03_AS Superconducting Linac System (ScL),1.03.03.20_AS Superconducting Linac System Installation,1.03.03.20.21_ScL - L4 Scavaging Pump Package (PP),AS_ScL_L4_SPI_9010_Scavaging Pump Installation - ScL,Electrical,,SLAC,Labor
78777,1.03,1.03.03,1.03.03.20,1.03.03.20.21,1.03.03.20.21,ScL - L4 Scavaging Pump Package (PP),AS_ScL_L4_SPI_9010,Scavaging Pump Installation - ScL,60.0,594.0,594.0,594.0,10-13-25,01-21-26,"AS_ScL_VAC_SCP_6130: FS, AS_ScL_L4A_9010: FS","AS_ScL_L4_SPI_9020: FS, AS_ScL_L4B_9010: FS",SLAC,0%,52198.52198_METSMANF (METSD Manufacturing),52198_METSMANF (METSD Manufacturing),Labor,0.0d,60.0,60.0,At Completion Units,10/13/2025,1/21/2026,0,0,0,0,0,0,0,0,0,0,1.03_Accelerator Systems (AS),1.03.03_AS Superconducting Linac System (ScL),1.03.03.20_AS Superconducting Linac System Installation,1.03.03.20.21_ScL - L4 Scavaging Pump Package (PP),AS_ScL_L4_SPI_9010_Scavaging Pump Installation - ScL,Manufacturing,,SLAC,Labor
78778,1.03,1.03.03,1.03.03.20,1.03.03.20.21,1.03.03.20.21,ScL - L4 Scavaging Pump Package (PP),AS_ScL_L4_SPI_9010,Scavaging Pump Installation - ScL,60.0,23.0,23.0,23.0,10-13-25,01-21-26,"AS_ScL_VAC_SCP_6130: FS, AS_ScL_L4A_9010: FS","AS_ScL_L4_SPI_9020: FS, AS_ScL_L4B_9010: FS",SLAC,0%,52191.52191_METSMET Metrology,52191_METSMET Metrology,Labor,0.0d,60.0,60.0,At Completion Units,10/13/2025,1/21/2026,0,0,0,0,0,0,0,0,0,0,1.03_Accelerator Systems (AS),1.03.03_AS Superconducting Linac System (ScL),1.03.03.20_AS Superconducting Linac System Installation,1.03.03.20.21_ScL - L4 Scavaging Pump Package (PP),AS_ScL_L4_SPI_9010_Scavaging Pump Installation - ScL,Metrology,,SLAC,Labor
79098,1.03,1.03.03,1.03.03.20,1.03.03.20.30,1.03.03.20.30,ScL - L3 Extension Removal and L4 EXT/DOG Installation,AS_ScL_EXT_9180,Install new vacuum - EXT Installation - ScL,20.0,40.0,40.0,40.0,10-14-26,11-10-26,"AS_ScL_EXT_9170: FS, AS_ScL_EXT_9190: FF","AS_ScL_EXT_9300: FS, AS_M4_3030: FS",SLAC,0%,52213.52213_EEDHW (Electronics & Engineering Div - HW Engr),52213_EEDHW (Electronics & Engineering Div - HW Engr),Labor,0.0d,20.0,20.0,At Completion Units,4/9/2026,5/6/2026,0,0,0,0,0,0,0,0,0,0,1.03_Accelerator Systems (AS),1.03.03_AS Superconducting Linac System (ScL),1.03.03.20_AS Superconducting Linac System Installation,1.03.03.20.30_ScL - L3 Extension Removal and L4 EXT/DOG Installation,AS_ScL_EXT_9180_Install new vacuum - EXT Installation - ScL,Electrical,,SLAC,Labor
79099,1.03,1.03.03,1.03.03.20,1.03.03.20.30,1.03.03.20.30,ScL - L3 Extension Removal and L4 EXT/DOG Installation,AS_ScL_EXT_9150,Refurb and relocate vacuum - EXT Installation - ScL,20.0,64.0,64.0,64.0,06-25-25,07-23-25,AS_ScL_EXT_9140: FS,AS_ScL_EXT_9160: FS,SLAC,0%,52152.52152_FAC Fleet,52152_FAC Fleet,Labor,0.0d,20.0,20.0,At Completion Units,6/25/2025,7/23/2025,0,0,0,0,0,0,0,0,0,0,1.03_Accelerator Systems (AS),1.03.03_AS Superconducting Linac System (ScL),1.03.03.20_AS Superconducting Linac System Installation,1.03.03.20.30_ScL - L3 Extension Removal and L4 EXT/DOG Installation,AS_ScL_EXT_9150_Refurb and relocate vacuum - EXT Installation - ScL,Support System,,SLAC,Labor
79100,1.03,1.03.03,1.03.03.20,1.03.03.20.30,1.03.03.20.30,ScL - L3 Extension Removal and L4 EXT/DOG Installation,AS_ScL_EXT_9150,Refurb and relocate vacuum - EXT Installation - ScL,20.0,40.0,40.0,40.0,06-25-25,07-23-25,AS_ScL_EXT_9140: FS,AS_ScL_EXT_9160: FS,SLAC,0%,52213.52213_EEDHW (Electronics & Engineering Div - HW Engr),52213_EEDHW (Electronics & Engineering Div - HW Engr),Labor,0.0d,20.0,20.0,At Completion Units,6/25/2025,7/23/2025,0,0,0,0,0,0,0,0,0,0,1.03_Accelerator Systems (AS),1.03.03_AS Superconducting Linac System (ScL),1.03.03.20_AS Superconducting Linac System Installation,1.03.03.20.30_ScL - L3 Extension Removal and L4 EXT/DOG Installation,AS_ScL_EXT_9150_Refurb and relocate vacuum - EXT Installation - ScL,Electrical,,SLAC,Labor
79101,1.03,1.03.03,1.03.03.20,1.03.03.20.30,1.03.03.20.30,ScL - L3 Extension Removal and L4 EXT/DOG Installation,AS_ScL_EXT_9150,Refurb and relocate vacuum - EXT Installation - ScL,20.0,16.0,16.0,16.0,06-25-25,07-23-25,AS_ScL_EXT_9140: FS,AS_ScL_EXT_9160: FS,SLAC,0%,52191.52191_METSMET Metrology,52191_METSMET Metrology,Labor,0.0d,20.0,20.0,At Completion Units,6/25/2025,7/23/2025,0,0,0,0,0,0,0,0,0,0,1.03_Accelerator Systems (AS),1.03.03_AS Superconducting Linac System (ScL),1.03.03.20_AS Superconducting Linac System Installation,1.03.03.20.30_ScL - L3 Extension Removal and L4 EXT/DOG Installation,AS_ScL_EXT_9150_Refurb and relocate vacuum - EXT Installation - ScL,Metrology,,SLAC,Labor
79102,1.03,1.03.03,1.03.03.20,1.03.03.20.30,1.03.03.20.30,ScL - L3 Extension Removal and L4 EXT/DOG Installation,AS_ScL_EXT_9130,Refurb and relocate magnets - EXT Installation - ScL,20.0,16.0,16.0,16.0,04-29-25,05-27-25,"AS_ScL_EXT_9100: FS, AS_ScL_EXT_9110: FF",AS_ScL_EXT_9140: FS,SLAC,0%,52152.52152_FAC Fleet,52152_FAC Fleet,Labor,0.0d,20.0,20.0,At Completion Units,4/29/2025,5/27/2025,0,0,0,0,0,0,0,0,0,0,1.03_Accelerator Systems (AS),1.03.03_AS Superconducting Linac System (ScL),1.03.03.20_AS Superconducting Linac System Installation,1.03.03.20.30_ScL - L3 Extension Removal and L4 EXT/DOG Installation,AS_ScL_EXT_9130_Refurb and relocate magnets - EXT Installation - ScL,Support System,,SLAC,Labor
79103,1.03,1.03.03,1.03.03.20,1.03.03.20.30,1.03.03.20.30,ScL - L3 Extension Removal and L4 EXT/DOG Installation,AS_ScL_EXT_9120,Remove existing Vacuum - EXT Installation - ScL,20.0,24.0,24.0,24.0,04-01-25,04-28-25,AS_M4_1010: FS,"AS_ScL_EXT_9140: FF, AS_CDS_EC3_9040: FS",SLAC,0%,52169.52169_METS Mechanical Engineer,52169_METS Mechanical Engineer,Labor,0.0d,20.0,20.0,At Completion Units,4/1/2025,4/28/2025,0,0,0,0,0,0,0,0,0,0,1.03_Accelerator Systems (AS),1.03.03_AS Superconducting Linac System (ScL),1.03.03.20_AS Superconducting Linac System Installation,1.03.03.20.30_ScL - L3 Extension Removal and L4 EXT/DOG Installation,AS_ScL_EXT_9120_Remove existing Vacuum - EXT Installation - ScL,Mechanical,,SLAC,Labor
79104,1.03,1.03.03,1.03.03.20,1.03.03.20.30,1.03.03.20.30,ScL - L3 Extension Removal and L4 EXT/DOG Installation,AS_ScL_EXT_9120,Remove existing Vacuum - EXT Installation - ScL,20.0,176.0,176.0,176.0,04-01-25,04-28-25,AS_M4_1010: FS,"AS_ScL_EXT_9140: FF, AS_CDS_EC3_9040: FS",SLAC,0%,52198.52198_METSMANF (METSD Manufacturing),52198_METSMANF (METSD Manufacturing),Labor,0.0d,20.0,20.0,At Completion Units,4/1/2025,4/28/2025,0,0,0,0,0,0,0,0,0,0,1.03_Accelerator Systems (AS),1.03.03_AS Superconducting Linac System (ScL),1.03.03.20_AS Superconducting Linac System Installation,1.03.03.20.30_ScL - L3 Extension Removal and L4 EXT/DOG Installation,AS_ScL_EXT_9120_Remove existing Vacuum - EXT Installation - ScL,Manufacturing,,SLAC,Labor
79105,1.03,1.03.03,1.03.03.20,1.03.03.20.30,1.03.03.20.30,ScL - L3 Extension Removal and L4 EXT/DOG Installation,AS_ScL_EXT_9110,Remove existing Stands - EXT Installation - ScL,20.0,16.0,16.0,16.0,04-01-25,04-28-25,AS_M4_1010: FS,AS_ScL_EXT_9130: FF,SLAC,0%,52169.52169_METS Mechanical Engineer,52169_METS Mechanical Engineer,Labor,0.0d,20.0,20.0,At Completion Units,4/1/2025,4/28/2025,0,0,0,0,0,0,0,0,0,0,1.03_Accelerator Systems (AS),1.03.03_AS Superconducting Linac System (ScL),1.03.03.20_AS Superconducting Linac System Installation,1.03.03.20.30_ScL - L3 Extension Removal and L4 EXT/DOG Installation,AS_ScL_EXT_9110_Remove existing Stands - EXT Installation - ScL,Mechanical,,SLAC,Labor
79106,1.03,1.03.03,1.03.03.20,1.03.03.20.30,1.03.03.20.30,ScL - L3 Extension Removal and L4 EXT/DOG Installation,AS_ScL_EXT_9110,Remove existing Stands - EXT Installation - ScL,20.0,60.0,60.0,60.0,04-01-25,04-28-25,AS_M4_1010: FS,AS_ScL_EXT_9130: FF,SLAC,0%,52198.52198_METSMANF (METSD Manufacturing),52198_METSMANF (METSD Manufacturing),Labor,0.0d,20.0,20.0,At Completion Units,4/1/2025,4/28/2025,0,0,0,0,0,0,0,0,0,0,1.03_Accelerator Systems (AS),1.03.03_AS Superconducting Linac System (ScL),1.03.03.20_AS Superconducting Linac System Installation,1.03.03.20.30_ScL - L3 Extension Removal and L4 EXT/DOG Installation,AS_ScL_EXT_9110_Remove existing Stands - EXT Installation - ScL,Manufacturing,,SLAC,Labor
79107,1.03,1.03.03,1.03.03.20,1.03.03.20.30,1.03.03.20.30,ScL - L3 Extension Removal and L4 EXT/DOG Installation,AS_ScL_EXT_9140,Refurb and relocate stands - EXT Installation - ScL,20.0,74.0,74.0,74.0,05-28-25,06-24-25,"AS_ScL_EXT_9130: FS, AS_ScL_EXT_9120: FF",AS_ScL_EXT_9150: FS,SLAC,0%,52152.52152_FAC Fleet,52152_FAC Fleet,Labor,0.0d,20.0,20.0,At Completion Units,5/28/2025,6/24/2025,0,0,0,0,0,0,0,0,0,0,1.03_Accelerator Systems (AS),1.03.03_AS Superconducting Linac System (ScL),1.03.03.20_AS Superconducting Linac System Installation,1.03.03.20.30_ScL - L3 Extension Removal and L4 EXT/DOG Installation,AS_ScL_EXT_9140_Refurb and relocate stands - EXT Installation - ScL,Support System,,SLAC,Labor
79108,1.03,1.03.03,1.03.03.20,1.03.03.20.30,1.03.03.20.30,ScL - L3 Extension Removal and L4 EXT/DOG Installation,AS_ScL_EXT_9100,Remove existing components - EXT Installation - ScL,20.0,16.0,16.0,16.0,04-01-25,04-28-25,"AS_ScL_VAC_L34_6320: FS, AS_ScL_VAC_DOG_6320: FS, AS_M4_1010: FS","AS_ScL_EXT_9130: FS, AS_ScL_EXT_9190: SS",SLAC,0%,52169.52169_METS Mechanical Engineer,52169_METS Mechanical Engineer,Labor,0.0d,20.0,20.0,At Completion Units,4/1/2025,4/28/2025,0,0,0,0,0,0,0,0,0,0,1.03_Accelerator Systems (AS),1.03.03_AS Superconducting Linac System (ScL),1.03.03.20_AS Superconducting Linac System Installation,1.03.03.20.30_ScL - L3 Extension Removal and L4 EXT/DOG Installation,AS_ScL_EXT_9100_Remove existing components - EXT Installation - ScL,Mechanical,,SLAC,Labor
79109,1.03,1.03.03,1.03.03.20,1.03.03.20.30,1.03.03.20.30,ScL - L3 Extension Removal and L4 EXT/DOG Installation,AS_ScL_EXT_9170,Install new stands - EXT Installation - ScL,20.0,84997.0,84997.0,84997.0,09-16-26,10-13-26,"AS_ScL_EXT_9160: FS, AS_CDS_EC3_9050: FS, AS_CDS_EC4_9040: FS",AS_ScL_EXT_9180: FS,SLAC,0%,SL_MSSC1.SLAC M&S (<$500K) (gets G&A) (NO ESC),SLAC M&S (<$500K) (gets G&A) (NO ESC),Nonlabor,0.0d,20.0,20.0,At Completion Units,3/12/2026,4/8/2026,0,0,0,0,0,0,0,0,0,0,1.03_Accelerator Systems (AS),1.03.03_AS Superconducting Linac System (ScL),1.03.03.20_AS Superconducting Linac System Installation,1.03.03.20.30_ScL - L3 Extension Removal and L4 EXT/DOG Installation,AS_ScL_EXT_9170_Install new stands - EXT Installation - ScL,Material,,SLAC,M&S
79110,1.03,1.03.03,1.03.03.20,1.03.03.20.30,1.03.03.20.30,ScL - L3 Extension Removal and L4 EXT/DOG Installation,AS_ScL_EXT_9190,Installation coordination - EXT Installation - ScL,60.0,69.0,69.0,69.0,04-01-25,06-24-25,AS_ScL_EXT_9100: SS,AS_ScL_EXT_9180: FF,SLAC,0%,52155.52155_Health Physics Technician III,52155_Health Physics Technician III,Labor,0.0d,60.0,60.0,At Completion Units,4/1/2025,6/24/2025,0,0,0,0,0,0,0,0,0,0,1.03_Accelerator Systems (AS),1.03.03_AS Superconducting Linac System (ScL),1.03.03.20_AS Superconducting Linac System Installation,1.03.03.20.30_ScL - L3 Extension Removal and L4 EXT/DOG Installation,AS_ScL_EXT_9190_Installation coordination - EXT Installation - ScL,Support System,Tech,SLAC,Labor
79111,1.03,1.03.03,1.03.03.20,1.03.03.20.30,1.03.03.20.30,ScL - L3 Extension Removal and L4 EXT/DOG Installation,AS_ScL_EXT_9190,Installation coordination - EXT Installation - ScL,60.0,207.0,207.0,207.0,04-01-25,06-24-25,AS_ScL_EXT_9100: SS,AS_ScL_EXT_9180: FF,SLAC,0%,52169.52169_METS Mechanical Engineer,52169_METS Mechanical Engineer,Labor,0.0d,60.0,60.0,At Completion Units,4/1/2025,6/24/2025,0,0,0,0,0,0,0,0,0,0,1.03_Accelerator Systems (AS),1.03.03_AS Superconducting Linac System (ScL),1.03.03.20_AS Superconducting Linac System Installation,1.03.03.20.30_ScL - L3 Extension Removal and L4 EXT/DOG Installation,AS_ScL_EXT_9190_Installation coordination - EXT Installation - ScL,Mechanical,,SLAC,Labor
79112,1.03,1.03.03,1.03.03.20,1.03.03.20.30,1.03.03.20.30,ScL - L3 Extension Removal and L4 EXT/DOG Installation,AS_ScL_EXT_9180,Install new vacuum - EXT Installation - ScL,20.0,28.0,28.0,28.0,10-14-26,11-10-26,"AS_ScL_EXT_9170: FS, AS_ScL_EXT_9190: FF","AS_ScL_EXT_9300: FS, AS_M4_3030: FS",SLAC,0%,52190.52190_METSTP Tech Planning - Reinstated FY16,52190_METSTP Tech Planning - Reinstated FY16,Labor,0.0d,20.0,20.0,At Completion Units,4/9/2026,5/6/2026,0,0,0,0,0,0,0,0,0,0,1.03_Accelerator Systems (AS),1.03.03_AS Superconducting Linac System (ScL),1.03.03.20_AS Superconducting Linac System Installation,1.03.03.20.30_ScL - L3 Extension Removal and L4 EXT/DOG Installation,AS_ScL_EXT_9180_Install new vacuum - EXT Installation - ScL,METSTPT Tech Planning,Tech,SLAC,Labor
79113,1.03,1.03.03,1.03.03.20,1.03.03.20.30,1.03.03.20.30,ScL - L3 Extension Removal and L4 EXT/DOG Installation,AS_ScL_EXT_9180,Install new vacuum - EXT Installation - ScL,20.0,44.0,44.0,44.0,10-14-26,11-10-26,"AS_ScL_EXT_9170: FS, AS_ScL_EXT_9190: FF","AS_ScL_EXT_9300: FS, AS_M4_3030: FS",SLAC,0%,52169.52169_METS Mechanical Engineer,52169_METS Mechanical Engineer,Labor,0.0d,20.0,20.0,At Completion Units,4/9/2026,5/6/2026,0,0,0,0,0,0,0,0,0,0,1.03_Accelerator Systems (AS),1.03.03_AS Superconducting Linac System (ScL),1.03.03.20_AS Superconducting Linac System Installation,1.03.03.20.30_ScL - L3 Extension Removal and L4 EXT/DOG Installation,AS_ScL_EXT_9180_Install new vacuum - EXT Installation - ScL,Mechanical,,SLAC,Labor
79114,1.03,1.03.03,1.03.03.20,1.03.03.20.30,1.03.03.20.30,ScL - L3 Extension Removal and L4 EXT/DOG Installation,AS_ScL_EXT_9180,Install new vacuum - EXT Installation - ScL,20.0,104.0,104.0,104.0,10-14-26,11-10-26,"AS_ScL_EXT_9170: FS, AS_ScL_EXT_9190: FF","AS_ScL_EXT_9300: FS, AS_M4_3030: FS",SLAC,0%,52198.52198_METSMANF (METSD Manufacturing),52198_METSMANF (METSD Manufacturing),Labor,0.0d,20.0,20.0,At Completion Units,4/9/2026,5/6/2026,0,0,0,0,0,0,0,0,0,0,1.03_Accelerator Systems (AS),1.03.03_AS Superconducting Linac System (ScL),1.03.03.20_AS Superconducting Linac System Installation,1.03.03.20.30_ScL - L3 Extension Removal and L4 EXT/DOG Installation,AS_ScL_EXT_9180_Install new vacuum - EXT Installation - ScL,Manufacturing,,SLAC,Labor
79115,1.03,1.03.03,1.03.03.20,1.03.03.20.30,1.03.03.20.30,ScL - L3 Extension Removal and L4 EXT/DOG Installation,AS_ScL_EXT_9180,Install new vacuum - EXT Installation - ScL,20.0,0.0,0.0,0.0,10-14-26,11-10-26,"AS_ScL_EXT_9170: FS, AS_ScL_EXT_9190: FF","AS_ScL_EXT_9300: FS, AS_M4_3030: FS",SLAC,0%,SL_MSSC.SLAC M&S (<$500K) (gets G&A) (gets ESC),SLAC M&S (<$500K) (gets G&A) (gets ESC),Nonlabor,0.0d,20.0,20.0,At Completion Units,4/9/2026,5/6/2026,0,0,0,0,0,0,0,0,0,0,1.03_Accelerator Systems (AS),1.03.03_AS Superconducting Linac System (ScL),1.03.03.20_AS Superconducting Linac System Installation,1.03.03.20.30_ScL - L3 Extension Removal and L4 EXT/DOG Installation,AS_ScL_EXT_9180_Install new vacuum - EXT Installation - ScL,Material,,SLAC,M&S
79116,1.03,1.03.03,1.03.03.20,1.03.03.20.30,1.03.03.20.30,ScL - L3 Extension Removal and L4 EXT/DOG Installation,AS_ScL_EXT_9170,Install new stands - EXT Installation - ScL,20.0,28.0,28.0,28.0,09-16-26,10-13-26,"AS_ScL_EXT_9160: FS, AS_CDS_EC3_9050: FS, AS_CDS_EC4_9040: FS",AS_ScL_EXT_9180: FS,SLAC,0%,52190.52190_METSTP Tech Planning - Reinstated FY16,52190_METSTP Tech Planning - Reinstated FY16,Labor,0.0d,20.0,20.0,At Completion Units,3/12/2026,4/8/2026,0,0,0,0,0,0,0,0,0,0,1.03_Accelerator Systems (AS),1.03.03_AS Superconducting Linac System (ScL),1.03.03.20_AS Superconducting Linac System Installation,1.03.03.20.30_ScL - L3 Extension Removal and L4 EXT/DOG Installation,AS_ScL_EXT_9170_Install new stands - EXT Installation - ScL,METSTPT Tech Planning,Tech,SLAC,Labor
79117,1.03,1.03.03,1.03.03.20,1.03.03.20.30,1.03.03.20.30,ScL - L3 Extension Removal and L4 EXT/DOG Installation,AS_ScL_EXT_9170,Install new stands - EXT Installation - ScL,20.0,36.0,36.0,36.0,09-16-26,10-13-26,"AS_ScL_EXT_9160: FS, AS_CDS_EC3_9050: FS, AS_CDS_EC4_9040: FS",AS_ScL_EXT_9180: FS,SLAC,0%,52169.52169_METS Mechanical Engineer,52169_METS Mechanical Engineer,Labor,0.0d,20.0,20.0,At Completion Units,3/12/2026,4/8/2026,0,0,0,0,0,0,0,0,0,0,1.03_Accelerator Systems (AS),1.03.03_AS Superconducting Linac System (ScL),1.03.03.20_AS Superconducting Linac System Installation,1.03.03.20.30_ScL - L3 Extension Removal and L4 EXT/DOG Installation,AS_ScL_EXT_9170_Install new stands - EXT Installation - ScL,Mechanical,,SLAC,Labor
79118,1.03,1.03.03,1.03.03.20,1.03.03.20.30,1.03.03.20.30,ScL - L3 Extension Removal and L4 EXT/DOG Installation,AS_ScL_EXT_9170,Install new stands - EXT Installation - ScL,20.0,353.0,353.0,353.0,09-16-26,10-13-26,"AS_ScL_EXT_9160: FS, AS_CDS_EC3_9050: FS, AS_CDS_EC4_9040: FS",AS_ScL_EXT_9180: FS,SLAC,0%,52198.52198_METSMANF (METSD Manufacturing),52198_METSMANF (METSD Manufacturing),Labor,0.0d,20.0,20.0,At Completion Units,3/12/2026,4/8/2026,0,0,0,0,0,0,0,0,0,0,1.03_Accelerator Systems (AS),1.03.03_AS Superconducting Linac System (ScL),1.03.03.20_AS Superconducting Linac System Installation,1.03.03.20.30_ScL - L3 Extension Removal and L4 EXT/DOG Installation,AS_ScL_EXT_9170_Install new stands - EXT Installation - ScL,Manufacturing,,SLAC,Labor
79119,1.03,1.03.03,1.03.03.20,1.03.03.20.30,1.03.03.20.30,ScL - L3 Extension Removal and L4 EXT/DOG Installation,AS_ScL_EXT_9160,Install new magnets - EXT Installation - ScL,20.0,24.0,24.0,24.0,07-24-25,08-20-25,AS_ScL_EXT_9150: FS,AS_ScL_EXT_9170: FS,SLAC,0%,52190.52190_METSTP Tech Planning - Reinstated FY16,52190_METSTP Tech Planning - Reinstated FY16,Labor,0.0d,20.0,20.0,At Completion Units,7/24/2025,8/20/2025,0,0,0,0,0,0,0,0,0,0,1.03_Accelerator Systems (AS),1.03.03_AS Superconducting Linac System (ScL),1.03.03.20_AS Superconducting Linac System Installation,1.03.03.20.30_ScL - L3 Extension Removal and L4 EXT/DOG Installation,AS_ScL_EXT_9160_Install new magnets - EXT Installation - ScL,METSTPT Tech Planning,Tech,SLAC,Labor
79120,1.03,1.03.03,1.03.03.20,1.03.03.20.30,1.03.03.20.30,ScL - L3 Extension Removal and L4 EXT/DOG Installation,AS_ScL_EXT_9160,Install new magnets - EXT Installation - ScL,20.0,48.0,48.0,48.0,07-24-25,08-20-25,AS_ScL_EXT_9150: FS,AS_ScL_EXT_9170: FS,SLAC,0%,52152.52152_FAC Fleet,52152_FAC Fleet,Labor,0.0d,20.0,20.0,At Completion Units,7/24/2025,8/20/2025,0,0,0,0,0,0,0,0,0,0,1.03_Accelerator Systems (AS),1.03.03_AS Superconducting Linac System (ScL),1.03.03.20_AS Superconducting Linac System Installation,1.03.03.20.30_ScL - L3 Extension Removal and L4 EXT/DOG Installation,AS_ScL_EXT_9160_Install new magnets - EXT Installation - ScL,Support System,,SLAC,Labor
79121,1.03,1.03.03,1.03.03.20,1.03.03.20.30,1.03.03.20.30,ScL - L3 Extension Removal and L4 EXT/DOG Installation,AS_ScL_EXT_9160,Install new magnets - EXT Installation - ScL,20.0,40.0,40.0,40.0,07-24-25,08-20-25,AS_ScL_EXT_9150: FS,AS_ScL_EXT_9170: FS,SLAC,0%,52211.52211_EEDOPSE (Electronics & Engineering Div - Ops & PSE),52211_EEDOPSE (Electronics & Engineering Div - Ops & PSE),Labor,0.0d,20.0,20.0,At Completion Units,7/24/2025,8/20/2025,0,0,0,0,0,0,0,0,0,0,1.03_Accelerator Systems (AS),1.03.03_AS Superconducting Linac System (ScL),1.03.03.20_AS Superconducting Linac System Installation,1.03.03.20.30_ScL - L3 Extension Removal and L4 EXT/DOG Installation,AS_ScL_EXT_9160_Install new magnets - EXT Installation - ScL,Electrical,,SLAC,Labor
79122,1.03,1.03.03,1.03.03.20,1.03.03.20.30,1.03.03.20.30,ScL - L3 Extension Removal and L4 EXT/DOG Installation,AS_ScL_EXT_9160,Install new magnets - EXT Installation - ScL,20.0,24.0,24.0,24.0,07-24-25,08-20-25,AS_ScL_EXT_9150: FS,AS_ScL_EXT_9170: FS,SLAC,0%,52169.52169_METS Mechanical Engineer,52169_METS Mechanical Engineer,Labor,0.0d,20.0,20.0,At Completion Units,7/24/2025,8/20/2025,0,0,0,0,0,0,0,0,0,0,1.03_Accelerator Systems (AS),1.03.03_AS Superconducting Linac System (ScL),1.03.03.20_AS Superconducting Linac System Installation,1.03.03.20.30_ScL - L3 Extension Removal and L4 EXT/DOG Installation,AS_ScL_EXT_9160_Install new magnets - EXT Installation - ScL,Mechanical,,SLAC,Labor
79123,1.03,1.03.03,1.03.03.20,1.03.03.20.30,1.03.03.20.30,ScL - L3 Extension Removal and L4 EXT/DOG Installation,AS_ScL_EXT_9160,Install new magnets - EXT Installation - ScL,20.0,24.0,24.0,24.0,07-24-25,08-20-25,AS_ScL_EXT_9150: FS,AS_ScL_EXT_9170: FS,SLAC,0%,52191.52191_METSMET Metrology,52191_METSMET Metrology,Labor,0.0d,20.0,20.0,At Completion Units,7/24/2025,8/20/2025,0,0,0,0,0,0,0,0,0,0,1.03_Accelerator Systems (AS),1.03.03_AS Superconducting Linac System (ScL),1.03.03.20_AS Superconducting Linac System Installation,1.03.03.20.30_ScL - L3 Extension Removal and L4 EXT/DOG Installation,AS_ScL_EXT_9160_Install new magnets - EXT Installation - ScL,Metrology,,SLAC,Labor
79124,1.03,1.03.03,1.03.03.20,1.03.03.20.30,1.03.03.20.30,ScL - L3 Extension Removal and L4 EXT/DOG Installation,AS_ScL_EXT_9160,Install new magnets - EXT Installation - ScL,20.0,48.0,48.0,48.0,07-24-25,08-20-25,AS_ScL_EXT_9150: FS,AS_ScL_EXT_9170: FS,SLAC,0%,52198.52198_METSMANF (METSD Manufacturing),52198_METSMANF (METSD Manufacturing),Labor,0.0d,20.0,20.0,At Completion Units,7/24/2025,8/20/2025,0,0,0,0,0,0,0,0,0,0,1.03_Accelerator Systems (AS),1.03.03_AS Superconducting Linac System (ScL),1.03.03.20_AS Superconducting Linac System Installation,1.03.03.20.30_ScL - L3 Extension Removal and L4 EXT/DOG Installation,AS_ScL_EXT_9160_Install new magnets - EXT Installation - ScL,Manufacturing,,SLAC,Labor
79125,1.03,1.03.03,1.03.03.20,1.03.03.20.30,1.03.03.20.30,ScL - L3 Extension Removal and L4 EXT/DOG Installation,AS_ScL_EXT_9150,Refurb and relocate vacuum - EXT Installation - ScL,20.0,28.0,28.0,28.0,06-25-25,07-23-25,AS_ScL_EXT_9140: FS,AS_ScL_EXT_9160: FS,SLAC,0%,52190.52190_METSTP Tech Planning - Reinstated FY16,52190_METSTP Tech Planning - Reinstated FY16,Labor,0.0d,20.0,20.0,At Completion Units,6/25/2025,7/23/2025,0,0,0,0,0,0,0,0,0,0,1.03_Accelerator Systems (AS),1.03.03_AS Superconducting Linac System (ScL),1.03.03.20_AS Superconducting Linac System Installation,1.03.03.20.30_ScL - L3 Extension Removal and L4 EXT/DOG Installation,AS_ScL_EXT_9150_Refurb and relocate vacuum - EXT Installation - ScL,METSTPT Tech Planning,Tech,SLAC,Labor
79126,1.03,1.03.03,1.03.03.20,1.03.03.20.30,1.03.03.20.30,ScL - L3 Extension Removal and L4 EXT/DOG Installation,AS_ScL_EXT_9150,Refurb and relocate vacuum - EXT Installation - ScL,20.0,44.0,44.0,44.0,06-25-25,07-23-25,AS_ScL_EXT_9140: FS,AS_ScL_EXT_9160: FS,SLAC,0%,52169.52169_METS Mechanical Engineer,52169_METS Mechanical Engineer,Labor,0.0d,20.0,20.0,At Completion Units,6/25/2025,7/23/2025,0,0,0,0,0,0,0,0,0,0,1.03_Accelerator Systems (AS),1.03.03_AS Superconducting Linac System (ScL),1.03.03.20_AS Superconducting Linac System Installation,1.03.03.20.30_ScL - L3 Extension Removal and L4 EXT/DOG Installation,AS_ScL_EXT_9150_Refurb and relocate vacuum - EXT Installation - ScL,Mechanical,,SLAC,Labor
79127,1.03,1.03.03,1.03.03.20,1.03.03.20.30,1.03.03.20.30,ScL - L3 Extension Removal and L4 EXT/DOG Installation,AS_ScL_EXT_9150,Refurb and relocate vacuum - EXT Installation - ScL,20.0,321.0,321.0,321.0,06-25-25,07-23-25,AS_ScL_EXT_9140: FS,AS_ScL_EXT_9160: FS,SLAC,0%,52198.52198_METSMANF (METSD Manufacturing),52198_METSMANF (METSD Manufacturing),Labor,0.0d,20.0,20.0,At Completion Units,6/25/2025,7/23/2025,0,0,0,0,0,0,0,0,0,0,1.03_Accelerator Systems (AS),1.03.03_AS Superconducting Linac System (ScL),1.03.03.20_AS Superconducting Linac System Installation,1.03.03.20.30_ScL - L3 Extension Removal and L4 EXT/DOG Installation,AS_ScL_EXT_9150_Refurb and relocate vacuum - EXT Installation - ScL,Manufacturing,,SLAC,Labor
79128,1.03,1.03.03,1.03.03.20,1.03.03.20.30,1.03.03.20.30,ScL - L3 Extension Removal and L4 EXT/DOG Installation,AS_ScL_EXT_9140,Refurb and relocate stands - EXT Installation - ScL,20.0,28.0,28.0,28.0,05-28-25,06-24-25,"AS_ScL_EXT_9130: FS, AS_ScL_EXT_9120: FF",AS_ScL_EXT_9150: FS,SLAC,0%,52190.52190_METSTP Tech Planning - Reinstated FY16,52190_METSTP Tech Planning - Reinstated FY16,Labor,0.0d,20.0,20.0,At Completion Units,5/28/2025,6/24/2025,0,0,0,0,0,0,0,0,0,0,1.03_Accelerator Systems (AS),1.03.03_AS Superconducting Linac System (ScL),1.03.03.20_AS Superconducting Linac System Installation,1.03.03.20.30_ScL - L3 Extension Removal and L4 EXT/DOG Installation,AS_ScL_EXT_9140_Refurb and relocate stands - EXT Installation - ScL,METSTPT Tech Planning,Tech,SLAC,Labor
79129,1.03,1.03.03,1.03.03.20,1.03.03.20.30,1.03.03.20.30,ScL - L3 Extension Removal and L4 EXT/DOG Installation,AS_ScL_EXT_9140,Refurb and relocate stands - EXT Installation - ScL,20.0,40.0,40.0,40.0,05-28-25,06-24-25,"AS_ScL_EXT_9130: FS, AS_ScL_EXT_9120: FF",AS_ScL_EXT_9150: FS,SLAC,0%,52169.52169_METS Mechanical Engineer,52169_METS Mechanical Engineer,Labor,0.0d,20.0,20.0,At Completion Units,5/28/2025,6/24/2025,0,0,0,0,0,0,0,0,0,0,1.03_Accelerator Systems (AS),1.03.03_AS Superconducting Linac System (ScL),1.03.03.20_AS Superconducting Linac System Installation,1.03.03.20.30_ScL - L3 Extension Removal and L4 EXT/DOG Installation,AS_ScL_EXT_9140_Refurb and relocate stands - EXT Installation - ScL,Mechanical,,SLAC,Labor
79130,1.03,1.03.03,1.03.03.20,1.03.03.20.30,1.03.03.20.30,ScL - L3 Extension Removal and L4 EXT/DOG Installation,AS_ScL_EXT_9140,Refurb and relocate stands - EXT Installation - ScL,20.0,439.0,439.0,439.0,05-28-25,06-24-25,"AS_ScL_EXT_9130: FS, AS_ScL_EXT_9120: FF",AS_ScL_EXT_9150: FS,SLAC,0%,52198.52198_METSMANF (METSD Manufacturing),52198_METSMANF (METSD Manufacturing),Labor,0.0d,20.0,20.0,At Completion Units,5/28/2025,6/24/2025,0,0,0,0,0,0,0,0,0,0,1.03_Accelerator Systems (AS),1.03.03_AS Superconducting Linac System (ScL),1.03.03.20_AS Superconducting Linac System Installation,1.03.03.20.30_ScL - L3 Extension Removal and L4 EXT/DOG Installation,AS_ScL_EXT_9140_Refurb and relocate stands - EXT Installation - ScL,Manufacturing,,SLAC,Labor
79131,1.03,1.03.03,1.03.03.20,1.03.03.20.30,1.03.03.20.30,ScL - L3 Extension Removal and L4 EXT/DOG Installation,AS_ScL_EXT_9130,Refurb and relocate magnets - EXT Installation - ScL,20.0,28.0,28.0,28.0,04-29-25,05-27-25,"AS_ScL_EXT_9100: FS, AS_ScL_EXT_9110: FF",AS_ScL_EXT_9140: FS,SLAC,0%,52190.52190_METSTP Tech Planning - Reinstated FY16,52190_METSTP Tech Planning - Reinstated FY16,Labor,0.0d,20.0,20.0,At Completion Units,4/29/2025,5/27/2025,0,0,0,0,0,0,0,0,0,0,1.03_Accelerator Systems (AS),1.03.03_AS Superconducting Linac System (ScL),1.03.03.20_AS Superconducting Linac System Installation,1.03.03.20.30_ScL - L3 Extension Removal and L4 EXT/DOG Installation,AS_ScL_EXT_9130_Refurb and relocate magnets - EXT Installation - ScL,METSTPT Tech Planning,Tech,SLAC,Labor
79132,1.03,1.03.03,1.03.03.20,1.03.03.20.30,1.03.03.20.30,ScL - L3 Extension Removal and L4 EXT/DOG Installation,AS_ScL_EXT_9130,Refurb and relocate magnets - EXT Installation - ScL,20.0,64.0,64.0,64.0,04-29-25,05-27-25,"AS_ScL_EXT_9100: FS, AS_ScL_EXT_9110: FF",AS_ScL_EXT_9140: FS,SLAC,0%,52169.52169_METS Mechanical Engineer,52169_METS Mechanical Engineer,Labor,0.0d,20.0,20.0,At Completion Units,4/29/2025,5/27/2025,0,0,0,0,0,0,0,0,0,0,1.03_Accelerator Systems (AS),1.03.03_AS Superconducting Linac System (ScL),1.03.03.20_AS Superconducting Linac System Installation,1.03.03.20.30_ScL - L3 Extension Removal and L4 EXT/DOG Installation,AS_ScL_EXT_9130_Refurb and relocate magnets - EXT Installation - ScL,Mechanical,,SLAC,Labor
79133,1.03,1.03.03,1.03.03.20,1.03.03.20.30,1.03.03.20.30,ScL - L3 Extension Removal and L4 EXT/DOG Installation,AS_ScL_EXT_9130,Refurb and relocate magnets - EXT Installation - ScL,20.0,29.0,29.0,29.0,04-29-25,05-27-25,"AS_ScL_EXT_9100: FS, AS_ScL_EXT_9110: FF",AS_ScL_EXT_9140: FS,SLAC,0%,52191.52191_METSMET Metrology,52191_METSMET Metrology,Labor,0.0d,20.0,20.0,At Completion Units,4/29/2025,5/27/2025,0,0,0,0,0,0,0,0,0,0,1.03_Accelerator Systems (AS),1.03.03_AS Superconducting Linac System (ScL),1.03.03.20_AS Superconducting Linac System Installation,1.03.03.20.30_ScL - L3 Extension Removal and L4 EXT/DOG Installation,AS_ScL_EXT_9130_Refurb and relocate magnets - EXT Installation - ScL,Metrology,,SLAC,Labor
79134,1.03,1.03.03,1.03.03.20,1.03.03.20.30,1.03.03.20.30,ScL - L3 Extension Removal and L4 EXT/DOG Installation,AS_ScL_EXT_9130,Refurb and relocate magnets - EXT Installation - ScL,20.0,248.0,248.0,248.0,04-29-25,05-27-25,"AS_ScL_EXT_9100: FS, AS_ScL_EXT_9110: FF",AS_ScL_EXT_9140: FS,SLAC,0%,52198.52198_METSMANF (METSD Manufacturing),52198_METSMANF (METSD Manufacturing),Labor,0.0d,20.0,20.0,At Completion Units,4/29/2025,5/27/2025,0,0,0,0,0,0,0,0,0,0,1.03_Accelerator Systems (AS),1.03.03_AS Superconducting Linac System (ScL),1.03.03.20_AS Superconducting Linac System Installation,1.03.03.20.30_ScL - L3 Extension Removal and L4 EXT/DOG Installation,AS_ScL_EXT_9130_Refurb and relocate magnets - EXT Installation - ScL,Manufacturing,,SLAC,Labor
79135,1.03,1.03.03,1.03.03.20,1.03.03.20.30,1.03.03.20.30,ScL - L3 Extension Removal and L4 EXT/DOG Installation,AS_ScL_EXT_9100,Remove existing components - EXT Installation - ScL,20.0,32.0,32.0,32.0,04-01-25,04-28-25,"AS_ScL_VAC_L34_6320: FS, AS_ScL_VAC_DOG_6320: FS, AS_M4_1010: FS","AS_ScL_EXT_9130: FS, AS_ScL_EXT_9190: SS",SLAC,0%,52198.52198_METSMANF (METSD Manufacturing),52198_METSMANF (METSD Manufacturing),Labor,0.0d,20.0,20.0,At Completion Units,4/1/2025,4/28/2025,0,0,0,0,0,0,0,0,0,0,1.03_Accelerator Systems (AS),1.03.03_AS Superconducting Linac System (ScL),1.03.03.20_AS Superconducting Linac System Installation,1.03.03.20.30_ScL - L3 Extension Removal and L4 EXT/DOG Installation,AS_ScL_EXT_9100_Remove existing components - EXT Installation - ScL,Manufacturing,,SLAC,Labor
79455,1.03,1.03.03,1.03.03.20,1.03.03.20.40,1.03.03.20.40,ScL - Installation Coordination (PP),AS_ScL_INS_9080,Cryo Plant Collaboration - ScL,243.0,40.0,40.0,40.0,04-01-25,03-30-26,AS_M4_1010: FS,AS_ScL_L4B_9100: FS,SLAC,0%,52169.52169_METS Mechanical Engineer,52169_METS Mechanical Engineer,Labor,0.0d,243.0,243.0,At Completion Units,4/1/2025,3/30/2026,0,0,0,0,0,0,0,0,0,0,1.03_Accelerator Systems (AS),1.03.03_AS Superconducting Linac System (ScL),1.03.03.20_AS Superconducting Linac System Installation,1.03.03.20.40_ScL - Installation Coordination (PP),AS_ScL_INS_9080_Cryo Plant Collaboration - ScL,Mechanical,,SLAC,Labor
79456,1.03,1.03.03,1.03.03.20,1.03.03.20.40,1.03.03.20.40,ScL - Installation Coordination (PP),AS_ScL_INS_9070,Conventional Facilities Collaboration - ScL,243.0,40.0,40.0,40.0,04-01-25,03-30-26,AS_M4_1010: FS,AS_ScL_L4B_9100: FS,SLAC,0%,52169.52169_METS Mechanical Engineer,52169_METS Mechanical Engineer,Labor,0.0d,243.0,243.0,At Completion Units,4/1/2025,3/30/2026,0,0,0,0,0,0,0,0,0,0,1.03_Accelerator Systems (AS),1.03.03_AS Superconducting Linac System (ScL),1.03.03.20_AS Superconducting Linac System Installation,1.03.03.20.40_ScL - Installation Coordination (PP),AS_ScL_INS_9070_Conventional Facilities Collaboration - ScL,Mechanical,,SLAC,Labor
79457,1.03,1.03.03,1.03.03.20,1.03.03.20.40,1.03.03.20.40,ScL - Installation Coordination (PP),AS_ScL_INS_9060,Controls Collaboration - ScL,243.0,40.0,40.0,40.0,04-01-25,03-30-26,AS_M4_1010: FS,AS_ScL_L4B_9100: FS,SLAC,0%,0140_E3.0140_Engineer-Electrical_E3,0140_Engineer-Electrical_E3,Labor,0.0d,243.0,243.0,At Completion Units,4/1/2025,3/30/2026,0,0,0,0,0,0,0,0,0,0,1.03_Accelerator Systems (AS),1.03.03_AS Superconducting Linac System (ScL),1.03.03.20_AS Superconducting Linac System Installation,1.03.03.20.40_ScL - Installation Coordination (PP),AS_ScL_INS_9060_Controls Collaboration - ScL,Electrical,,SLAC,Labor
79458,1.03,1.03.03,1.03.03.20,1.03.03.20.40,1.03.03.20.40,ScL - Installation Coordination (PP),AS_ScL_INS_9050,Cryo Systems Collaboration - ScL,243.0,40.0,40.0,40.0,04-01-25,03-30-26,AS_M4_1010: FS,AS_ScL_L4B_9100: FS,SLAC,0%,52169.52169_METS Mechanical Engineer,52169_METS Mechanical Engineer,Labor,0.0d,243.0,243.0,At Completion Units,4/1/2025,3/30/2026,0,0,0,0,0,0,0,0,0,0,1.03_Accelerator Systems (AS),1.03.03_AS Superconducting Linac System (ScL),1.03.03.20_AS Superconducting Linac System Installation,1.03.03.20.40_ScL - Installation Coordination (PP),AS_ScL_INS_9050_Cryo Systems Collaboration - ScL,Mechanical,,SLAC,Labor
79459,1.03,1.03.03,1.03.03.20,1.03.03.20.40,1.03.03.20.40,ScL - Installation Coordination (PP),AS_ScL_INS_9040,Quality Reviews - ScL,243.0,80.0,80.0,80.0,04-01-25,03-30-26,AS_M4_1010: FS,AS_ScL_L4B_9100: FS,SLAC,0%,52169.52169_METS Mechanical Engineer,52169_METS Mechanical Engineer,Labor,0.0d,243.0,243.0,At Completion Units,4/1/2025,3/30/2026,0,0,0,0,0,0,0,0,0,0,1.03_Accelerator Systems (AS),1.03.03_AS Superconducting Linac System (ScL),1.03.03.20_AS Superconducting Linac System Installation,1.03.03.20.40_ScL - Installation Coordination (PP),AS_ScL_INS_9040_Quality Reviews - ScL,Mechanical,,SLAC,Labor
79460,1.03,1.03.03,1.03.03.20,1.03.03.20.40,1.03.03.20.40,ScL - Installation Coordination (PP),AS_ScL_INS_9030,Work Planning and Controls - ScL,239.0,600.0,600.0,600.0,04-01-25,03-24-26,AS_M4_1010: FS,AS_ScL_L4B_9100: FS,SLAC,0%,52169.52169_METS Mechanical Engineer,52169_METS Mechanical Engineer,Labor,0.0d,239.0,239.0,At Completion Units,4/1/2025,3/24/2026,0,0,0,0,0,0,0,0,0,0,1.03_Accelerator Systems (AS),1.03.03_AS Superconducting Linac System (ScL),1.03.03.20_AS Superconducting Linac System Installation,1.03.03.20.40_ScL - Installation Coordination (PP),AS_ScL_INS_9030_Work Planning and Controls - ScL,Mechanical,,SLAC,Labor
79461,1.03,1.03.03,1.03.03.20,1.03.03.20.40,1.03.03.20.40,ScL - Installation Coordination (PP),AS_ScL_INS_9020,Field Construction Management - ScL,239.0,600.0,600.0,600.0,04-01-25,03-24-26,AS_M4_1010: FS,AS_ScL_L4B_9100: FS,SLAC,0%,52149.52149_Field Construction Manager (FCM),52149_Field Construction Manager (FCM),Labor,0.0d,239.0,239.0,At Completion Units,4/1/2025,3/24/2026,0,0,0,0,0,0,0,0,0,0,1.03_Accelerator Systems (AS),1.03.03_AS Superconducting Linac System (ScL),1.03.03.20_AS Superconducting Linac System Installation,1.03.03.20.40_ScL - Installation Coordination (PP),AS_ScL_INS_9020_Field Construction Management - ScL,FAC,Engineer,SLAC,Labor
79462,1.03,1.03.03,1.03.03.20,1.03.03.20.40,1.03.03.20.40,ScL - Installation Coordination (PP),AS_ScL_INS_9010,Installation Oversight - ScL,239.0,600.0,600.0,600.0,04-01-25,03-24-26,AS_M4_1010: FS,AS_ScL_L4B_9100: FS,SLAC,0%,52198.52198_METSMANF (METSD Manufacturing),52198_METSMANF (METSD Manufacturing),Labor,0.0d,239.0,239.0,At Completion Units,4/1/2025,3/24/2026,0,0,0,0,0,0,0,0,0,0,1.03_Accelerator Systems (AS),1.03.03_AS Superconducting Linac System (ScL),1.03.03.20_AS Superconducting Linac System Installation,1.03.03.20.40_ScL - Installation Coordination (PP),AS_ScL_INS_9010_Installation Oversight - ScL,Manufacturing,,SLAC,Labor
79782,1.03,1.03.03,1.03.03.20,1.03.03.20.50,1.03.03.20.50,HPRF - Radiation Shielding Penetration Base Rigging Contract,AS_HPRF_CAP_9100,SLAC support of - HPRF Radiation Penetration Base Rigging Contract,30.0,142.0,142.0,142.0,08-13-24,09-24-24,"AS_HPRF_CAP_9090: SS, AS_HPRF_CAP_6250: FS",AS_HPRF_CAP_9105: FS,SLAC,0%,52152.52152_FAC Fleet,52152_FAC Fleet,Labor,0.0d,30.0,30.0,At Completion Units,8/1/2023,9/12/2023,0,0,0,0,0,0,0,0,0,0,1.03_Accelerator Systems (AS),1.03.03_AS Superconducting Linac System (ScL),1.03.03.20_AS Superconducting Linac System Installation,1.03.03.20.50_HPRF - Radiation Shielding Penetration Base Rigging Contract,AS_HPRF_CAP_9100_SLAC support of - HPRF Radiation Penetration Base Rigging Contract,Support System,,SLAC,Labor
79783,1.03,1.03.03,1.03.03.20,1.03.03.20.50,1.03.03.20.50,HPRF - Radiation Shielding Penetration Base Rigging Contract,AS_HPRF_CAP_9100,SLAC support of - HPRF Radiation Penetration Base Rigging Contract,30.0,22.0,22.0,22.0,08-13-24,09-24-24,"AS_HPRF_CAP_9090: SS, AS_HPRF_CAP_6250: FS",AS_HPRF_CAP_9105: FS,SLAC,0%,52190.52190_METSTP Tech Planning - Reinstated FY16,52190_METSTP Tech Planning - Reinstated FY16,Labor,0.0d,30.0,30.0,At Completion Units,8/1/2023,9/12/2023,0,0,0,0,0,0,0,0,0,0,1.03_Accelerator Systems (AS),1.03.03_AS Superconducting Linac System (ScL),1.03.03.20_AS Superconducting Linac System Installation,1.03.03.20.50_HPRF - Radiation Shielding Penetration Base Rigging Contract,AS_HPRF_CAP_9100_SLAC support of - HPRF Radiation Penetration Base Rigging Contract,METSTPT Tech Planning,Tech,SLAC,Labor
79784,1.03,1.03.03,1.03.03.20,1.03.03.20.50,1.03.03.20.50,HPRF - Radiation Shielding Penetration Base Rigging Contract,AS_HPRF_CAP_9090,Vendor Effort - HPRF Radiation Penetration Base Rigging Contract,30.0,12.0,12.0,12.0,08-13-24,09-24-24,"AS_HPRF_CAP_9080: FS, AS_HPRF_CNX_6160: FS, AS_M4_1020: FS","AS_HPRF_CAP_9100: SS, AS_HPRF_CAP_9105: FS, AS_HPRF_CAP_9650: SS",SLAC,0%,52190.52190_METSTP Tech Planning - Reinstated FY16,52190_METSTP Tech Planning - Reinstated FY16,Labor,0.0d,30.0,30.0,At Completion Units,8/1/2023,9/12/2023,0,0,0,0,0,0,0,0,0,0,1.03_Accelerator Systems (AS),1.03.03_AS Superconducting Linac System (ScL),1.03.03.20_AS Superconducting Linac System Installation,1.03.03.20.50_HPRF - Radiation Shielding Penetration Base Rigging Contract,AS_HPRF_CAP_9090_Vendor Effort - HPRF Radiation Penetration Base Rigging Contract,METSTPT Tech Planning,Tech,SLAC,Labor
79785,1.03,1.03.03,1.03.03.20,1.03.03.20.50,1.03.03.20.50,HPRF - Radiation Shielding Penetration Base Rigging Contract,AS_HPRF_CAP_9060,Evaluations/Negotiations - HPRF Radiation Penetration Base Rigging Contract,35.0,12.0,12.0,12.0,09-06-23,10-24-23,AS_HPRF_CAP_9050: FS,AS_HPRF_CAP_9070: FS,SLAC,0%,52190.52190_METSTP Tech Planning - Reinstated FY16,52190_METSTP Tech Planning - Reinstated FY16,Labor,0.0d,35.0,35.0,At Completion Units,3/31/2023,5/18/2023,0,0,0,0,0,0,0,0,0,0,1.03_Accelerator Systems (AS),1.03.03_AS Superconducting Linac System (ScL),1.03.03.20_AS Superconducting Linac System Installation,1.03.03.20.50_HPRF - Radiation Shielding Penetration Base Rigging Contract,AS_HPRF_CAP_9060_Evaluations/Negotiations - HPRF Radiation Penetration Base Rigging Contract,METSTPT Tech Planning,Tech,SLAC,Labor
79786,1.03,1.03.03,1.03.03.20,1.03.03.20.50,1.03.03.20.50,HPRF - Radiation Shielding Penetration Base Rigging Contract,AS_HPRF_CAP_9105,RCV: HPRF Radiation Penetration Base Rigging Contract,1.0,62455.0,62455.0,62455.0,09-25-24,09-25-24,"AS_HPRF_CAP_9090: FS, AS_HPRF_CAP_9100: FS",AS_HPRF_CAP_9130: FS,SLAC,0%,SL_MSSC.SLAC M&S (<$500K) (gets G&A) (gets ESC),SLAC M&S (<$500K) (gets G&A) (gets ESC),Nonlabor,0.0d,1.0,1.0,At Completion Units,9/13/2023,9/13/2023,0,0,0,0,0,0,0,0,0,0,1.03_Accelerator Systems (AS),1.03.03_AS Superconducting Linac System (ScL),1.03.03.20_AS Superconducting Linac System Installation,1.03.03.20.50_HPRF - Radiation Shielding Penetration Base Rigging Contract,AS_HPRF_CAP_9105_RCV: HPRF Radiation Penetration Base Rigging Contract,Material,,SLAC,M&S
79787,1.03,1.03.03,1.03.03.20,1.03.03.20.50,1.03.03.20.50,HPRF - Radiation Shielding Penetration Base Rigging Contract,AS_HPRF_CAP_9100,SLAC support of - HPRF Radiation Penetration Base Rigging Contract,30.0,55.0,55.0,55.0,08-13-24,09-24-24,"AS_HPRF_CAP_9090: SS, AS_HPRF_CAP_6250: FS",AS_HPRF_CAP_9105: FS,SLAC,0%,52178.52178_RF Vacuum Tube Fab,52178_RF Vacuum Tube Fab,Labor,0.0d,30.0,30.0,At Completion Units,8/1/2023,9/12/2023,0,0,0,0,0,0,0,0,0,0,1.03_Accelerator Systems (AS),1.03.03_AS Superconducting Linac System (ScL),1.03.03.20_AS Superconducting Linac System Installation,1.03.03.20.50_HPRF - Radiation Shielding Penetration Base Rigging Contract,AS_HPRF_CAP_9100_SLAC support of - HPRF Radiation Penetration Base Rigging Contract,RF Fab,,SLAC,Labor
79788,1.03,1.03.03,1.03.03.20,1.03.03.20.50,1.03.03.20.50,HPRF - Radiation Shielding Penetration Base Rigging Contract,AS_HPRF_CAP_9100,SLAC support of - HPRF Radiation Penetration Base Rigging Contract,30.0,22.0,22.0,22.0,08-13-24,09-24-24,"AS_HPRF_CAP_9090: SS, AS_HPRF_CAP_6250: FS",AS_HPRF_CAP_9105: FS,SLAC,0%,52191.52191_METSMET Metrology,52191_METSMET Metrology,Labor,0.0d,30.0,30.0,At Completion Units,8/1/2023,9/12/2023,0,0,0,0,0,0,0,0,0,0,1.03_Accelerator Systems (AS),1.03.03_AS Superconducting Linac System (ScL),1.03.03.20_AS Superconducting Linac System Installation,1.03.03.20.50_HPRF - Radiation Shielding Penetration Base Rigging Contract,AS_HPRF_CAP_9100_SLAC support of - HPRF Radiation Penetration Base Rigging Contract,Metrology,,SLAC,Labor
79789,1.03,1.03.03,1.03.03.20,1.03.03.20.50,1.03.03.20.50,HPRF - Radiation Shielding Penetration Base Rigging Contract,AS_HPRF_CAP_9100,SLAC support of - HPRF Radiation Penetration Base Rigging Contract,30.0,1027.0,1027.0,1027.0,08-13-24,09-24-24,"AS_HPRF_CAP_9090: SS, AS_HPRF_CAP_6250: FS",AS_HPRF_CAP_9105: FS,SLAC,0%,52198.52198_METSMANF (METSD Manufacturing),52198_METSMANF (METSD Manufacturing),Labor,0.0d,30.0,30.0,At Completion Units,8/1/2023,9/12/2023,0,0,0,0,0,0,0,0,0,0,1.03_Accelerator Systems (AS),1.03.03_AS Superconducting Linac System (ScL),1.03.03.20_AS Superconducting Linac System Installation,1.03.03.20.50_HPRF - Radiation Shielding Penetration Base Rigging Contract,AS_HPRF_CAP_9100_SLAC support of - HPRF Radiation Penetration Base Rigging Contract,Manufacturing,,SLAC,Labor
79790,1.03,1.03.03,1.03.03.20,1.03.03.20.50,1.03.03.20.50,HPRF - Radiation Shielding Penetration Base Rigging Contract,AS_HPRF_CAP_9000,Prepare Requisition (Specs/SOW/ETC) - HPRF Radiation Penetration Base Rigging Contract,25.0,20.0,20.0,20.0,06-09-23,07-14-23,"MS_FY_2023_Q2: FS, AS_HPRF_INS_5010: FS",AS_HPRF_CAP_9010: FS,SLAC,0%,52190.52190_METSTP Tech Planning - Reinstated FY16,52190_METSTP Tech Planning - Reinstated FY16,Labor,0.0d,25.0,25.0,At Completion Units,1/3/2023,2/7/2023,0,0,0,0,0,0,0,0,0,0,1.03_Accelerator Systems (AS),1.03.03_AS Superconducting Linac System (ScL),1.03.03.20_AS Superconducting Linac System Installation,1.03.03.20.50_HPRF - Radiation Shielding Penetration Base Rigging Contract,AS_HPRF_CAP_9000_Prepare Requisition (Specs/SOW/ETC) - HPRF Radiation Penetration Base Rigging Contract,METSTPT Tech Planning,Tech,SLAC,Labor
79791,1.03,1.03.03,1.03.03.20,1.03.03.20.50,1.03.03.20.50,HPRF - Radiation Shielding Penetration Base Rigging Contract,AS_HPRF_CAP_9080,AWARD: Procurement - HPRF Radiation Penetration Base Rigging Contract,1.0,62455.0,62455.0,62455.0,11-01-23,11-01-23,AS_HPRF_CAP_9070: FS,AS_HPRF_CAP_9090: FS,SLAC,0%,AWARD_USE.AWARD - Use this AWARD,AWARD - Use this AWARD,Nonlabor,0.0d,1.0,1.0,At Completion Units,5/26/2023,5/26/2023,AWARD < $500K,0,0,0,0,0,0,0,0,0,1.03_Accelerator Systems (AS),1.03.03_AS Superconducting Linac System (ScL),1.03.03.20_AS Superconducting Linac System Installation,1.03.03.20.50_HPRF - Radiation Shielding Penetration Base Rigging Contract,AS_HPRF_CAP_9080_AWARD: Procurement - HPRF Radiation Penetration Base Rigging Contract,Material,,SLAC,M&S
79792,1.03,1.03.03,1.03.03.20,1.03.03.20.50,1.03.03.20.50,HPRF - Radiation Shielding Penetration Base Rigging Contract,AS_HPRF_CAP_9010,RQN: Approval of Requisition - HPRF Radiation Penetration Base Rigging Contract,1.0,62455.0,62455.0,62455.0,07-17-23,07-17-23,AS_HPRF_CAP_9000: FS,AS_HPRF_CAP_9020: FS,SLAC,0%,REQ.Requisition,Requisition,Nonlabor,0.0d,1.0,1.0,At Completion Units,2/8/2023,2/8/2023,RQN,0,0,0,0,0,0,0,0,0,1.03_Accelerator Systems (AS),1.03.03_AS Superconducting Linac System (ScL),1.03.03.20_AS Superconducting Linac System Installation,1.03.03.20.50_HPRF - Radiation Shielding Penetration Base Rigging Contract,AS_HPRF_CAP_9010_RQN: Approval of Requisition - HPRF Radiation Penetration Base Rigging Contract,Material,,SLAC,M&S
80112,1.03,1.03.03,1.03.03.20,1.03.03.20.60,1.03.03.20.60,HPRF - SSAs Installation,AS_HPRF_SSA_9130,Prepare Requisition (Specs/SOW/ETC) - SSA  Anchoring - SSAs Installation,15.0,21.5,21.5,21.5,01-06-25,01-27-25,AS_HPRF_SSA_9010: SS,AS_HPRF_SSA_9140: FS,SLAC,0%,52191.52191_METSMET Metrology,52191_METSMET Metrology,Labor,0.0d,15.0,15.0,At Completion Units,1/6/2025,1/27/2025,0,0,0,0,0,0,0,0,0,0,1.03_Accelerator Systems (AS),1.03.03_AS Superconducting Linac System (ScL),1.03.03.20_AS Superconducting Linac System Installation,1.03.03.20.60_HPRF - SSAs Installation,AS_HPRF_SSA_9130_Prepare Requisition (Specs/SOW/ETC) - SSA  Anchoring - SSAs Installation,Metrology,,SLAC,Labor
80113,1.03,1.03.03,1.03.03.20,1.03.03.20.60,1.03.03.20.60,HPRF - SSAs Installation,AS_HPRF_SSA_9130,Prepare Requisition (Specs/SOW/ETC) - SSA  Anchoring - SSAs Installation,15.0,21.5,21.5,21.5,01-06-25,01-27-25,AS_HPRF_SSA_9010: SS,AS_HPRF_SSA_9140: FS,SLAC,0%,52178.52178_RF Vacuum Tube Fab,52178_RF Vacuum Tube Fab,Labor,0.0d,15.0,15.0,At Completion Units,1/6/2025,1/27/2025,0,0,0,0,0,0,0,0,0,0,1.03_Accelerator Systems (AS),1.03.03_AS Superconducting Linac System (ScL),1.03.03.20_AS Superconducting Linac System Installation,1.03.03.20.60_HPRF - SSAs Installation,AS_HPRF_SSA_9130_Prepare Requisition (Specs/SOW/ETC) - SSA  Anchoring - SSAs Installation,RF Fab,,SLAC,Labor
80114,1.03,1.03.03,1.03.03.20,1.03.03.20.60,1.03.03.20.60,HPRF - SSAs Installation,AS_HPRF_SSA_9010,Prepare Requisition (Specs/SOW/ETC) - Rebar Scan - SSAs Installation,15.0,22.0,22.0,22.0,01-06-25,01-27-25,MS_FY_2025_Q2: FS,"AS_HPRF_SSA_9020: FS, AS_HPRF_SSA_9130: SS",SLAC,0%,52178.52178_RF Vacuum Tube Fab,52178_RF Vacuum Tube Fab,Labor,0.0d,15.0,15.0,At Completion Units,1/6/2025,1/27/2025,0,0,0,0,0,0,0,0,0,0,1.03_Accelerator Systems (AS),1.03.03_AS Superconducting Linac System (ScL),1.03.03.20_AS Superconducting Linac System Installation,1.03.03.20.60_HPRF - SSAs Installation,AS_HPRF_SSA_9010_Prepare Requisition (Specs/SOW/ETC) - Rebar Scan - SSAs Installation,RF Fab,,SLAC,Labor
80115,1.03,1.03.03,1.03.03.20,1.03.03.20.60,1.03.03.20.60,HPRF - SSAs Installation,AS_HPRF_SSA_9210,AWARD: Contract - SSA  Anchoring - SSAs Installation,1.0,65169.0,65169.0,65169.0,04-07-25,04-07-25,AS_HPRF_SSA_9200: FS,AS_HPRF_SSA_9220: FS,SLAC,0%,AWARD_USE.AWARD - Use this AWARD,AWARD - Use this AWARD,Nonlabor,0.0d,1.0,1.0,At Completion Units,4/7/2025,4/7/2025,AWARD < $500K,0,0,0,0,0,0,0,0,0,1.03_Accelerator Systems (AS),1.03.03_AS Superconducting Linac System (ScL),1.03.03.20_AS Superconducting Linac System Installation,1.03.03.20.60_HPRF - SSAs Installation,AS_HPRF_SSA_9210_AWARD: Contract - SSA  Anchoring - SSAs Installation,Material,,SLAC,M&S
80116,1.03,1.03.03,1.03.03.20,1.03.03.20.60,1.03.03.20.60,HPRF - SSAs Installation,AS_HPRF_SSA_9140,RQN: Approval of Requisition - SSA  Anchoring - SSAs Installation,1.0,65169.0,65169.0,65169.0,01-28-25,01-28-25,AS_HPRF_SSA_9130: FS,AS_HPRF_SSA_9150: FS,SLAC,0%,REQ.Requisition,Requisition,Nonlabor,0.0d,1.0,1.0,At Completion Units,1/28/2025,1/28/2025,RQN,0,0,0,0,0,0,0,0,0,1.03_Accelerator Systems (AS),1.03.03_AS Superconducting Linac System (ScL),1.03.03.20_AS Superconducting Linac System Installation,1.03.03.20.60_HPRF - SSAs Installation,AS_HPRF_SSA_9140_RQN: Approval of Requisition - SSA  Anchoring - SSAs Installation,Material,,SLAC,M&S
80117,1.03,1.03.03,1.03.03.20,1.03.03.20.60,1.03.03.20.60,HPRF - SSAs Installation,AS_HPRF_SSA_9230,RCV: SSA  Anchoring - SSAs Installation,1.0,65169.0,65169.0,65169.0,06-05-25,06-05-25,AS_HPRF_SSA_9220: FS,AS_HPRF_SSA_9240: FS,SLAC,0%,SL_MSSC.SLAC M&S (<$500K) (gets G&A) (gets ESC),SLAC M&S (<$500K) (gets G&A) (gets ESC),Nonlabor,0.0d,1.0,1.0,At Completion Units,6/5/2025,6/5/2025,0,0,0,0,0,0,0,0,0,0,1.03_Accelerator Systems (AS),1.03.03_AS Superconducting Linac System (ScL),1.03.03.20_AS Superconducting Linac System Installation,1.03.03.20.60_HPRF - SSAs Installation,AS_HPRF_SSA_9230_RCV: SSA  Anchoring - SSAs Installation,Material,,SLAC,M&S
80118,1.03,1.03.03,1.03.03.20,1.03.03.20.60,1.03.03.20.60,HPRF - SSAs Installation,AS_HPRF_SSA_9090,AWARD: Contract - Rebar Scan - SSAs Installation,1.0,149015.0,149015.0,149015.0,04-07-25,04-07-25,AS_HPRF_SSA_9080: FS,AS_HPRF_SSA_9100: FS,SLAC,0%,AWARD_USE.AWARD - Use this AWARD,AWARD - Use this AWARD,Nonlabor,0.0d,1.0,1.0,At Completion Units,4/7/2025,4/7/2025,AWARD < $500K,0,0,0,0,0,0,0,0,0,1.03_Accelerator Systems (AS),1.03.03_AS Superconducting Linac System (ScL),1.03.03.20_AS Superconducting Linac System Installation,1.03.03.20.60_HPRF - SSAs Installation,AS_HPRF_SSA_9090_AWARD: Contract - Rebar Scan - SSAs Installation,Material,,SLAC,M&S
80119,1.03,1.03.03,1.03.03.20,1.03.03.20.60,1.03.03.20.60,HPRF - SSAs Installation,AS_HPRF_SSA_9020,RQN: Approval of Requisition - Rebar Scan - SSAs Installation,1.0,149015.0,149015.0,149015.0,01-28-25,01-28-25,AS_HPRF_SSA_9010: FS,AS_HPRF_SSA_9030: FS,SLAC,0%,REQ.Requisition,Requisition,Nonlabor,0.0d,1.0,1.0,At Completion Units,1/28/2025,1/28/2025,RQN,0,0,0,0,0,0,0,0,0,1.03_Accelerator Systems (AS),1.03.03_AS Superconducting Linac System (ScL),1.03.03.20_AS Superconducting Linac System Installation,1.03.03.20.60_HPRF - SSAs Installation,AS_HPRF_SSA_9020_RQN: Approval of Requisition - Rebar Scan - SSAs Installation,Material,,SLAC,M&S
80120,1.03,1.03.03,1.03.03.20,1.03.03.20.60,1.03.03.20.60,HPRF - SSAs Installation,AS_HPRF_SSA_9110,RCV: Rebar Scan - SSAs Installation,1.0,149015.0,149015.0,149015.0,05-06-25,05-06-25,AS_HPRF_SSA_9100: FS,AS_HPRF_SSA_9120: FS,SLAC,0%,SL_MSSC.SLAC M&S (<$500K) (gets G&A) (gets ESC),SLAC M&S (<$500K) (gets G&A) (gets ESC),Nonlabor,0.0d,1.0,1.0,At Completion Units,5/6/2025,5/6/2025,0,0,0,0,0,0,0,0,0,0,1.03_Accelerator Systems (AS),1.03.03_AS Superconducting Linac System (ScL),1.03.03.20_AS Superconducting Linac System Installation,1.03.03.20.60_HPRF - SSAs Installation,AS_HPRF_SSA_9110_RCV: Rebar Scan - SSAs Installation,Material,,SLAC,M&S
80440,1.03,1.03.03,1.03.03.20,1.03.03.20.67,1.03.03.20.67,HPRF - Frames and Structure Installation,AS_HPRF_ST_9020,RQN: Approval of Requisition - Frames and Structure - Installation Contract,1.0,23750.0,23750.0,23750.0,10-16-24,10-16-24,AS_HPRF_ST_9010: FS,AS_HPRF_ST_9030: FS,SLAC,0%,REQ.Requisition,Requisition,Nonlabor,0.0d,1.0,1.0,At Completion Units,10/16/2024,10/16/2024,RQN,0,0,0,0,0,0,0,0,0,1.03_Accelerator Systems (AS),1.03.03_AS Superconducting Linac System (ScL),1.03.03.20_AS Superconducting Linac System Installation,1.03.03.20.67_HPRF - Frames and Structure Installation,AS_HPRF_ST_9020_RQN: Approval of Requisition - Frames and Structure - Installation Contract,Material,,SLAC,M&S
80441,1.03,1.03.03,1.03.03.20,1.03.03.20.67,1.03.03.20.67,HPRF - Frames and Structure Installation,AS_HPRF_ST_9050,Vendor Effort - Frames and Structure - Installation Contract,20.0,8.0,8.0,8.0,08-28-25,09-26-25,"AS_HPRF_ST_9040: FS, AS_HPRF_ISL_6210: FS, AS_HPRF_ST_6200: FS, AS_M4_1010: FS",AS_HPRF_ST_9060: FS,SLAC,0%,52178.52178_RF Vacuum Tube Fab,52178_RF Vacuum Tube Fab,Labor,0.0d,20.0,20.0,At Completion Units,4/1/2025,4/28/2025,0,0,0,0,0,0,0,0,0,0,1.03_Accelerator Systems (AS),1.03.03_AS Superconducting Linac System (ScL),1.03.03.20_AS Superconducting Linac System Installation,1.03.03.20.67_HPRF - Frames and Structure Installation,AS_HPRF_ST_9050_Vendor Effort - Frames and Structure - Installation Contract,RF Fab,,SLAC,Labor
80442,1.03,1.03.03,1.03.03.20,1.03.03.20.67,1.03.03.20.67,HPRF - Frames and Structure Installation,AS_HPRF_ST_9010,Prepare Requisition (Specs/SOW/ETC) - Frames and Structure - Installation Contract,10.0,22.0,22.0,22.0,10-02-24,10-15-24,MS_FY_2025_Q1: FS,AS_HPRF_ST_9020: FS,SLAC,0%,52191.52191_METSMET Metrology,52191_METSMET Metrology,Labor,0.0d,10.0,10.0,At Completion Units,10/2/2024,10/15/2024,0,0,0,0,0,0,0,0,0,0,1.03_Accelerator Systems (AS),1.03.03_AS Superconducting Linac System (ScL),1.03.03.20_AS Superconducting Linac System Installation,1.03.03.20.67_HPRF - Frames and Structure Installation,AS_HPRF_ST_9010_Prepare Requisition (Specs/SOW/ETC) - Frames and Structure - Installation Contract,Metrology,,SLAC,Labor
80443,1.03,1.03.03,1.03.03.20,1.03.03.20.67,1.03.03.20.67,HPRF - Frames and Structure Installation,AS_HPRF_ST_9030,Procurement Process - Frames and Structure - Installation Contract,20.0,13.0,13.0,13.0,10-17-24,11-13-24,AS_HPRF_ST_9020: FS,AS_HPRF_ST_9040: FS,SLAC,0%,52178.52178_RF Vacuum Tube Fab,52178_RF Vacuum Tube Fab,Labor,0.0d,20.0,20.0,At Completion Units,10/17/2024,11/13/2024,0,0,0,0,0,0,0,0,0,0,1.03_Accelerator Systems (AS),1.03.03_AS Superconducting Linac System (ScL),1.03.03.20_AS Superconducting Linac System Installation,1.03.03.20.67_HPRF - Frames and Structure Installation,AS_HPRF_ST_9030_Procurement Process - Frames and Structure - Installation Contract,RF Fab,,SLAC,Labor
80444,1.03,1.03.03,1.03.03.20,1.03.03.20.67,1.03.03.20.67,HPRF - Frames and Structure Installation,AS_HPRF_ST_9010,Prepare Requisition (Specs/SOW/ETC) - Frames and Structure - Installation Contract,10.0,11.0,11.0,11.0,10-02-24,10-15-24,MS_FY_2025_Q1: FS,AS_HPRF_ST_9020: FS,SLAC,0%,52178.52178_RF Vacuum Tube Fab,52178_RF Vacuum Tube Fab,Labor,0.0d,10.0,10.0,At Completion Units,10/2/2024,10/15/2024,0,0,0,0,0,0,0,0,0,0,1.03_Accelerator Systems (AS),1.03.03_AS Superconducting Linac System (ScL),1.03.03.20_AS Superconducting Linac System Installation,1.03.03.20.67_HPRF - Frames and Structure Installation,AS_HPRF_ST_9010_Prepare Requisition (Specs/SOW/ETC) - Frames and Structure - Installation Contract,RF Fab,,SLAC,Labor
80445,1.03,1.03.03,1.03.03.20,1.03.03.20.67,1.03.03.20.67,HPRF - Frames and Structure Installation,AS_HPRF_ST_9040,AWARD: Contract - Frames and Structure - Installation Contract,1.0,23750.0,23750.0,23750.0,11-14-24,11-14-24,AS_HPRF_ST_9030: FS,AS_HPRF_ST_9050: FS,SLAC,0%,AWARD_USE.AWARD - Use this AWARD,AWARD - Use this AWARD,Nonlabor,0.0d,1.0,1.0,At Completion Units,11/14/2024,11/14/2024,AWARD < $500K,0,0,0,0,0,0,0,0,0,1.03_Accelerator Systems (AS),1.03.03_AS Superconducting Linac System (ScL),1.03.03.20_AS Superconducting Linac System Installation,1.03.03.20.67_HPRF - Frames and Structure Installation,AS_HPRF_ST_9040_AWARD: Contract - Frames and Structure - Installation Contract,Material,,SLAC,M&S
80446,1.03,1.03.03,1.03.03.20,1.03.03.20.67,1.03.03.20.67,HPRF - Frames and Structure Installation,AS_HPRF_ST_9060,RCV: Frames and Structure - Installation Contract,1.0,23750.0,23750.0,23750.0,09-26-25,09-29-25,AS_HPRF_ST_9050: FS,AS_HPRF_ST_9070: FS,SLAC,0%,SL_MSSC.SLAC M&S (<$500K) (gets G&A) (gets ESC),SLAC M&S (<$500K) (gets G&A) (gets ESC),Nonlabor,0.0d,1.0,1.0,At Completion Units,4/29/2025,4/29/2025,0,0,0,0,0,0,0,0,0,0,1.03_Accelerator Systems (AS),1.03.03_AS Superconducting Linac System (ScL),1.03.03.20_AS Superconducting Linac System Installation,1.03.03.20.67_HPRF - Frames and Structure Installation,AS_HPRF_ST_9060_RCV: Frames and Structure - Installation Contract,Material,,SLAC,M&S
80766,1.03,1.03.03,1.03.03.20,1.03.03.20.70,1.03.03.20.70,HPRF - Waveguide Bundle Rigging Contract,AS_HPRF_CAP_9260,Evaluations/Negotiations - Waveguide Bundle Rigging Contract,35.0,23.0,23.0,23.0,04-12-24,05-31-24,AS_HPRF_CAP_9250: FS,AS_HPRF_CAP_9270: FS,SLAC,0%,52178.52178_RF Vacuum Tube Fab,52178_RF Vacuum Tube Fab,Labor,0.0d,35.0,35.0,At Completion Units,4/12/2024,5/31/2024,0,0,0,0,0,0,0,0,0,0,1.03_Accelerator Systems (AS),1.03.03_AS Superconducting Linac System (ScL),1.03.03.20_AS Superconducting Linac System Installation,1.03.03.20.70_HPRF - Waveguide Bundle Rigging Contract,AS_HPRF_CAP_9260_Evaluations/Negotiations - Waveguide Bundle Rigging Contract,RF Fab,,SLAC,Labor
80767,1.03,1.03.03,1.03.03.20,1.03.03.20.70,1.03.03.20.70,HPRF - Waveguide Bundle Rigging Contract,AS_HPRF_CAP_9290,Vendor Effort - Waveguide Bundle Rigging Contract Short Down #2,42.0,152.0,152.0,152.0,08-01-24,09-30-24,"AS_HPRF_CAP_9280: FS, AS_M4_1030: FS",AS_HPRF_CAP_9300: FS,SLAC,0%,52178.52178_RF Vacuum Tube Fab,52178_RF Vacuum Tube Fab,Labor,0.0d,42.0,42.0,At Completion Units,8/1/2024,9/30/2024,0,0,0,0,0,0,0,0,0,0,1.03_Accelerator Systems (AS),1.03.03_AS Superconducting Linac System (ScL),1.03.03.20_AS Superconducting Linac System Installation,1.03.03.20.70_HPRF - Waveguide Bundle Rigging Contract,AS_HPRF_CAP_9290_Vendor Effort - Waveguide Bundle Rigging Contract Short Down #2,RF Fab,,SLAC,Labor
80768,1.03,1.03.03,1.03.03.20,1.03.03.20.70,1.03.03.20.70,HPRF - Waveguide Bundle Rigging Contract,AS_HPRF_CAP_9270,Prepare Award Documents - Waveguide Bundle Rigging Contract,5.0,8.0,8.0,8.0,06-03-24,06-07-24,AS_HPRF_CAP_9260: FS,AS_HPRF_CAP_9280: FS,SLAC,0%,52178.52178_RF Vacuum Tube Fab,52178_RF Vacuum Tube Fab,Labor,0.0d,5.0,5.0,At Completion Units,6/3/2024,6/7/2024,0,0,0,0,0,0,0,0,0,0,1.03_Accelerator Systems (AS),1.03.03_AS Superconducting Linac System (ScL),1.03.03.20_AS Superconducting Linac System Installation,1.03.03.20.70_HPRF - Waveguide Bundle Rigging Contract,AS_HPRF_CAP_9270_Prepare Award Documents - Waveguide Bundle Rigging Contract,RF Fab,,SLAC,Labor
80769,1.03,1.03.03,1.03.03.20,1.03.03.20.70,1.03.03.20.70,HPRF - Waveguide Bundle Rigging Contract,AS_HPRF_CAP_9200,Prepare Requisition (Specs/SOW/ETC) - Waveguide Bundle Rigging Contract,35.0,12.0,12.0,12.0,01-02-24,02-21-24,MS_FY_2024_Q2: FS,AS_HPRF_CAP_9210: FS,SLAC,0%,52178.52178_RF Vacuum Tube Fab,52178_RF Vacuum Tube Fab,Labor,0.0d,35.0,35.0,At Completion Units,1/2/2024,2/21/2024,0,0,0,0,0,0,0,0,0,0,1.03_Accelerator Systems (AS),1.03.03_AS Superconducting Linac System (ScL),1.03.03.20_AS Superconducting Linac System Installation,1.03.03.20.70_HPRF - Waveguide Bundle Rigging Contract,AS_HPRF_CAP_9200_Prepare Requisition (Specs/SOW/ETC) - Waveguide Bundle Rigging Contract,RF Fab,,SLAC,Labor
80770,1.03,1.03.03,1.03.03.20,1.03.03.20.70,1.03.03.20.70,HPRF - Waveguide Bundle Rigging Contract,AS_HPRF_CAP_9280,AWARD: Contract - Waveguide Bundle Rigging Contract,1.0,225218.0,225218.0,225218.0,06-10-24,06-10-24,AS_HPRF_CAP_9270: FS,"AS_HPRF_CAP_9290: FS, AS_HPRF_CAP_9295: FS",SLAC,0%,AWARD_USE.AWARD - Use this AWARD,AWARD - Use this AWARD,Nonlabor,0.0d,1.0,1.0,At Completion Units,6/10/2024,6/10/2024,AWARD < $500K,0,0,0,0,0,0,0,0,0,1.03_Accelerator Systems (AS),1.03.03_AS Superconducting Linac System (ScL),1.03.03.20_AS Superconducting Linac System Installation,1.03.03.20.70_HPRF - Waveguide Bundle Rigging Contract,AS_HPRF_CAP_9280_AWARD: Contract - Waveguide Bundle Rigging Contract,Material,,SLAC,M&S
80771,1.03,1.03.03,1.03.03.20,1.03.03.20.70,1.03.03.20.70,HPRF - Waveguide Bundle Rigging Contract,AS_HPRF_CAP_9210,RQN: Approval of Requisition - Waveguide Bundle Rigging Contract,1.0,225218.0,225218.0,225218.0,02-22-24,02-22-24,AS_HPRF_CAP_9200: FS,AS_HPRF_CAP_9220: FS,SLAC,0%,REQ.Requisition,Requisition,Nonlabor,0.0d,1.0,1.0,At Completion Units,2/22/2024,2/22/2024,RQN,0,0,0,0,0,0,0,0,0,1.03_Accelerator Systems (AS),1.03.03_AS Superconducting Linac System (ScL),1.03.03.20_AS Superconducting Linac System Installation,1.03.03.20.70_HPRF - Waveguide Bundle Rigging Contract,AS_HPRF_CAP_9210_RQN: Approval of Requisition - Waveguide Bundle Rigging Contract,Material,,SLAC,M&S
80772,1.03,1.03.03,1.03.03.20,1.03.03.20.70,1.03.03.20.70,HPRF - Waveguide Bundle Rigging Contract,AS_HPRF_CAP_9300,RCV: Waveguide Bundle Rigging Contract,1.0,225218.0,225218.0,225218.0,08-04-25,08-04-25,"AS_HPRF_CAP_9290: FS, AS_HPRF_CAP_9295: FS",AS_HPRF_CAP_9310: FS,SLAC,0%,SL_MSSC.SLAC M&S (<$500K) (gets G&A) (gets ESC),SLAC M&S (<$500K) (gets G&A) (gets ESC),Nonlabor,0.0d,1.0,1.0,At Completion Units,8/4/2025,8/4/2025,0,0,0,0,0,0,0,0,0,0,1.03_Accelerator Systems (AS),1.03.03_AS Superconducting Linac System (ScL),1.03.03.20_AS Superconducting Linac System Installation,1.03.03.20.70_HPRF - Waveguide Bundle Rigging Contract,AS_HPRF_CAP_9300_RCV: Waveguide Bundle Rigging Contract,Material,,SLAC,M&S
81092,1.03,1.03.03,1.03.03.20,1.03.03.20.71,1.03.03.20.71,HPRF - Waveguide Bundle Preparation,AS_HPRF_CAP_9630,Prepare Waveguide Bundles - Set 23,10.0,43.0,43.0,43.0,05-08-25,05-21-25,AS_HPRF_CAP_9620: FS,AS_HPRF_CAP_9950: FS,SLAC,0%,52178.52178_RF Vacuum Tube Fab,52178_RF Vacuum Tube Fab,Labor,0.0d,10.0,10.0,At Completion Units,8/19/2024,8/30/2024,0,0,0,0,0,0,0,0,0,0,1.03_Accelerator Systems (AS),1.03.03_AS Superconducting Linac System (ScL),1.03.03.20_AS Superconducting Linac System Installation,1.03.03.20.71_HPRF - Waveguide Bundle Preparation,AS_HPRF_CAP_9630_Prepare Waveguide Bundles - Set 23,RF Fab,,SLAC,Labor
81093,1.03,1.03.03,1.03.03.20,1.03.03.20.71,1.03.03.20.71,HPRF - Waveguide Bundle Preparation,AS_HPRF_CAP_9620,Prepare Waveguide Bundles - Set 22,10.0,43.0,43.0,43.0,04-24-25,05-07-25,AS_HPRF_CAP_9610: FS,"AS_HPRF_CAP_9630: FS, AS_HPRF_CAP_9940: FS",SLAC,0%,52178.52178_RF Vacuum Tube Fab,52178_RF Vacuum Tube Fab,Labor,0.0d,10.0,10.0,At Completion Units,8/5/2024,8/16/2024,0,0,0,0,0,0,0,0,0,0,1.03_Accelerator Systems (AS),1.03.03_AS Superconducting Linac System (ScL),1.03.03.20_AS Superconducting Linac System Installation,1.03.03.20.71_HPRF - Waveguide Bundle Preparation,AS_HPRF_CAP_9620_Prepare Waveguide Bundles - Set 22,RF Fab,,SLAC,Labor
81094,1.03,1.03.03,1.03.03.20,1.03.03.20.71,1.03.03.20.71,HPRF - Waveguide Bundle Preparation,AS_HPRF_CAP_9610,Prepare Waveguide Bundles - Set 21,10.0,43.0,43.0,43.0,04-10-25,04-23-25,AS_HPRF_CAP_9600: FS,"AS_HPRF_CAP_9620: FS, AS_HPRF_CAP_9930: FS",SLAC,0%,52178.52178_RF Vacuum Tube Fab,52178_RF Vacuum Tube Fab,Labor,0.0d,10.0,10.0,At Completion Units,7/22/2024,8/2/2024,0,0,0,0,0,0,0,0,0,0,1.03_Accelerator Systems (AS),1.03.03_AS Superconducting Linac System (ScL),1.03.03.20_AS Superconducting Linac System Installation,1.03.03.20.71_HPRF - Waveguide Bundle Preparation,AS_HPRF_CAP_9610_Prepare Waveguide Bundles - Set 21,RF Fab,,SLAC,Labor
81095,1.03,1.03.03,1.03.03.20,1.03.03.20.71,1.03.03.20.71,HPRF - Waveguide Bundle Preparation,AS_HPRF_CAP_9600,Prepare Waveguide Bundles - Set 20,10.0,43.0,43.0,43.0,03-27-25,04-09-25,AS_HPRF_CAP_9590: FS,"AS_HPRF_CAP_9610: FS, AS_HPRF_CAP_9920: FS",SLAC,0%,52178.52178_RF Vacuum Tube Fab,52178_RF Vacuum Tube Fab,Labor,0.0d,10.0,10.0,At Completion Units,7/8/2024,7/19/2024,0,0,0,0,0,0,0,0,0,0,1.03_Accelerator Systems (AS),1.03.03_AS Superconducting Linac System (ScL),1.03.03.20_AS Superconducting Linac System Installation,1.03.03.20.71_HPRF - Waveguide Bundle Preparation,AS_HPRF_CAP_9600_Prepare Waveguide Bundles - Set 20,RF Fab,,SLAC,Labor
81096,1.03,1.03.03,1.03.03.20,1.03.03.20.71,1.03.03.20.71,HPRF - Waveguide Bundle Preparation,AS_HPRF_CAP_9590,Prepare Waveguide Bundles - Set 19,10.0,43.0,43.0,43.0,03-13-25,03-26-25,AS_HPRF_CAP_9580: FS,"AS_HPRF_CAP_9600: FS, AS_HPRF_CAP_9910: FS",SLAC,0%,52178.52178_RF Vacuum Tube Fab,52178_RF Vacuum Tube Fab,Labor,0.0d,10.0,10.0,At Completion Units,6/21/2024,7/5/2024,0,0,0,0,0,0,0,0,0,0,1.03_Accelerator Systems (AS),1.03.03_AS Superconducting Linac System (ScL),1.03.03.20_AS Superconducting Linac System Installation,1.03.03.20.71_HPRF - Waveguide Bundle Preparation,AS_HPRF_CAP_9590_Prepare Waveguide Bundles - Set 19,RF Fab,,SLAC,Labor
81097,1.03,1.03.03,1.03.03.20,1.03.03.20.71,1.03.03.20.71,HPRF - Waveguide Bundle Preparation,AS_HPRF_CAP_9580,Prepare Waveguide Bundles - Set 18,10.0,43.0,43.0,43.0,02-27-25,03-12-25,AS_HPRF_CAP_9570: FS,"AS_HPRF_CAP_9590: FS, AS_HPRF_CAP_9900: FS",SLAC,0%,52178.52178_RF Vacuum Tube Fab,52178_RF Vacuum Tube Fab,Labor,0.0d,10.0,10.0,At Completion Units,6/7/2024,6/20/2024,0,0,0,0,0,0,0,0,0,0,1.03_Accelerator Systems (AS),1.03.03_AS Superconducting Linac System (ScL),1.03.03.20_AS Superconducting Linac System Installation,1.03.03.20.71_HPRF - Waveguide Bundle Preparation,AS_HPRF_CAP_9580_Prepare Waveguide Bundles - Set 18,RF Fab,,SLAC,Labor
81098,1.03,1.03.03,1.03.03.20,1.03.03.20.71,1.03.03.20.71,HPRF - Waveguide Bundle Preparation,AS_HPRF_CAP_9570,Prepare Waveguide Bundles - Set 17,10.0,43.0,43.0,43.0,02-12-25,02-26-25,AS_HPRF_CAP_9560: FS,"AS_HPRF_CAP_9580: FS, AS_HPRF_CAP_9890: FS",SLAC,0%,52178.52178_RF Vacuum Tube Fab,52178_RF Vacuum Tube Fab,Labor,0.0d,10.0,10.0,At Completion Units,5/23/2024,6/6/2024,0,0,0,0,0,0,0,0,0,0,1.03_Accelerator Systems (AS),1.03.03_AS Superconducting Linac System (ScL),1.03.03.20_AS Superconducting Linac System Installation,1.03.03.20.71_HPRF - Waveguide Bundle Preparation,AS_HPRF_CAP_9570_Prepare Waveguide Bundles - Set 17,RF Fab,,SLAC,Labor
81099,1.03,1.03.03,1.03.03.20,1.03.03.20.71,1.03.03.20.71,HPRF - Waveguide Bundle Preparation,AS_HPRF_CAP_9560,Prepare Waveguide Bundles - Set 16,10.0,43.0,43.0,43.0,01-29-25,02-11-25,AS_HPRF_CAP_9550: FS,"AS_HPRF_CAP_9570: FS, AS_HPRF_CAP_9880: FS",SLAC,0%,52178.52178_RF Vacuum Tube Fab,52178_RF Vacuum Tube Fab,Labor,0.0d,10.0,10.0,At Completion Units,5/9/2024,5/22/2024,0,0,0,0,0,0,0,0,0,0,1.03_Accelerator Systems (AS),1.03.03_AS Superconducting Linac System (ScL),1.03.03.20_AS Superconducting Linac System Installation,1.03.03.20.71_HPRF - Waveguide Bundle Preparation,AS_HPRF_CAP_9560_Prepare Waveguide Bundles - Set 16,RF Fab,,SLAC,Labor
81100,1.03,1.03.03,1.03.03.20,1.03.03.20.71,1.03.03.20.71,HPRF - Waveguide Bundle Preparation,AS_HPRF_CAP_9550,Prepare Waveguide Bundles - Set 15,10.0,43.0,43.0,43.0,01-14-25,01-28-25,AS_HPRF_CAP_9540: FS,"AS_HPRF_CAP_9560: FS, AS_HPRF_CAP_9870: FS",SLAC,0%,52178.52178_RF Vacuum Tube Fab,52178_RF Vacuum Tube Fab,Labor,0.0d,10.0,10.0,At Completion Units,4/25/2024,5/8/2024,0,0,0,0,0,0,0,0,0,0,1.03_Accelerator Systems (AS),1.03.03_AS Superconducting Linac System (ScL),1.03.03.20_AS Superconducting Linac System Installation,1.03.03.20.71_HPRF - Waveguide Bundle Preparation,AS_HPRF_CAP_9550_Prepare Waveguide Bundles - Set 15,RF Fab,,SLAC,Labor
81101,1.03,1.03.03,1.03.03.20,1.03.03.20.71,1.03.03.20.71,HPRF - Waveguide Bundle Preparation,AS_HPRF_CAP_9540,Prepare Waveguide Bundles - Set 14,10.0,43.0,43.0,43.0,12-17-24,01-13-25,AS_HPRF_CAP_9530: FS,"AS_HPRF_CAP_9550: FS, AS_HPRF_CAP_9860: FS",SLAC,0%,52178.52178_RF Vacuum Tube Fab,52178_RF Vacuum Tube Fab,Labor,0.0d,10.0,10.0,At Completion Units,4/11/2024,4/24/2024,0,0,0,0,0,0,0,0,0,0,1.03_Accelerator Systems (AS),1.03.03_AS Superconducting Linac System (ScL),1.03.03.20_AS Superconducting Linac System Installation,1.03.03.20.71_HPRF - Waveguide Bundle Preparation,AS_HPRF_CAP_9540_Prepare Waveguide Bundles - Set 14,RF Fab,,SLAC,Labor
81102,1.03,1.03.03,1.03.03.20,1.03.03.20.71,1.03.03.20.71,HPRF - Waveguide Bundle Preparation,AS_HPRF_CAP_9530,Prepare Waveguide Bundles - Set 13,10.0,43.0,43.0,43.0,12-03-24,12-16-24,AS_HPRF_CAP_9520: FS,"AS_HPRF_CAP_9540: FS, AS_HPRF_CAP_9850: FS",SLAC,0%,52178.52178_RF Vacuum Tube Fab,52178_RF Vacuum Tube Fab,Labor,0.0d,10.0,10.0,At Completion Units,3/28/2024,4/10/2024,0,0,0,0,0,0,0,0,0,0,1.03_Accelerator Systems (AS),1.03.03_AS Superconducting Linac System (ScL),1.03.03.20_AS Superconducting Linac System Installation,1.03.03.20.71_HPRF - Waveguide Bundle Preparation,AS_HPRF_CAP_9530_Prepare Waveguide Bundles - Set 13,RF Fab,,SLAC,Labor
81103,1.03,1.03.03,1.03.03.20,1.03.03.20.71,1.03.03.20.71,HPRF - Waveguide Bundle Preparation,AS_HPRF_CAP_9520,Prepare Waveguide Bundles - Set 12,10.0,43.0,43.0,43.0,11-15-24,12-02-24,AS_HPRF_CAP_9510: FS,"AS_HPRF_CAP_9530: FS, AS_HPRF_CAP_9840: FS",SLAC,0%,52178.52178_RF Vacuum Tube Fab,52178_RF Vacuum Tube Fab,Labor,0.0d,10.0,10.0,At Completion Units,3/14/2024,3/27/2024,0,0,0,0,0,0,0,0,0,0,1.03_Accelerator Systems (AS),1.03.03_AS Superconducting Linac System (ScL),1.03.03.20_AS Superconducting Linac System Installation,1.03.03.20.71_HPRF - Waveguide Bundle Preparation,AS_HPRF_CAP_9520_Prepare Waveguide Bundles - Set 12,RF Fab,,SLAC,Labor
81104,1.03,1.03.03,1.03.03.20,1.03.03.20.71,1.03.03.20.71,HPRF - Waveguide Bundle Preparation,AS_HPRF_CAP_9510,Prepare Waveguide Bundles - Set 11,10.0,43.0,43.0,43.0,11-01-24,11-14-24,AS_HPRF_CAP_9500: FS,"AS_HPRF_CAP_9520: FS, AS_HPRF_CAP_9830: FS",SLAC,0%,52178.52178_RF Vacuum Tube Fab,52178_RF Vacuum Tube Fab,Labor,0.0d,10.0,10.0,At Completion Units,2/29/2024,3/13/2024,0,0,0,0,0,0,0,0,0,0,1.03_Accelerator Systems (AS),1.03.03_AS Superconducting Linac System (ScL),1.03.03.20_AS Superconducting Linac System Installation,1.03.03.20.71_HPRF - Waveguide Bundle Preparation,AS_HPRF_CAP_9510_Prepare Waveguide Bundles - Set 11,RF Fab,,SLAC,Labor
81105,1.03,1.03.03,1.03.03.20,1.03.03.20.71,1.03.03.20.71,HPRF - Waveguide Bundle Preparation,AS_HPRF_CAP_9500,Prepare Waveguide Bundles - Set 10,10.0,43.0,43.0,43.0,10-18-24,10-31-24,AS_HPRF_CAP_9490: FS,"AS_HPRF_CAP_9510: FS, AS_HPRF_CAP_9820: FS",SLAC,0%,52178.52178_RF Vacuum Tube Fab,52178_RF Vacuum Tube Fab,Labor,0.0d,10.0,10.0,At Completion Units,2/14/2024,2/28/2024,0,0,0,0,0,0,0,0,0,0,1.03_Accelerator Systems (AS),1.03.03_AS Superconducting Linac System (ScL),1.03.03.20_AS Superconducting Linac System Installation,1.03.03.20.71_HPRF - Waveguide Bundle Preparation,AS_HPRF_CAP_9500_Prepare Waveguide Bundles - Set 10,RF Fab,,SLAC,Labor
81106,1.03,1.03.03,1.03.03.20,1.03.03.20.71,1.03.03.20.71,HPRF - Waveguide Bundle Preparation,AS_HPRF_CAP_9490,Prepare Waveguide Bundles - Set 9,10.0,43.0,43.0,43.0,10-04-24,10-17-24,AS_HPRF_CAP_9480: FS,"AS_HPRF_CAP_9500: FS, AS_HPRF_CAP_9810: FS",SLAC,0%,52178.52178_RF Vacuum Tube Fab,52178_RF Vacuum Tube Fab,Labor,0.0d,10.0,10.0,At Completion Units,1/31/2024,2/13/2024,0,0,0,0,0,0,0,0,0,0,1.03_Accelerator Systems (AS),1.03.03_AS Superconducting Linac System (ScL),1.03.03.20_AS Superconducting Linac System Installation,1.03.03.20.71_HPRF - Waveguide Bundle Preparation,AS_HPRF_CAP_9490_Prepare Waveguide Bundles - Set 9,RF Fab,,SLAC,Labor
81107,1.03,1.03.03,1.03.03.20,1.03.03.20.71,1.03.03.20.71,HPRF - Waveguide Bundle Preparation,AS_HPRF_CAP_9480,Prepare Waveguide Bundles - Set 8,10.0,43.0,43.0,43.0,09-20-24,10-03-24,AS_HPRF_CAP_9470: FS,"AS_HPRF_CAP_9490: FS, AS_HPRF_CAP_9800: FS",SLAC,0%,52178.52178_RF Vacuum Tube Fab,52178_RF Vacuum Tube Fab,Labor,0.0d,10.0,10.0,At Completion Units,1/17/2024,1/30/2024,0,0,0,0,0,0,0,0,0,0,1.03_Accelerator Systems (AS),1.03.03_AS Superconducting Linac System (ScL),1.03.03.20_AS Superconducting Linac System Installation,1.03.03.20.71_HPRF - Waveguide Bundle Preparation,AS_HPRF_CAP_9480_Prepare Waveguide Bundles - Set 8,RF Fab,,SLAC,Labor
81108,1.03,1.03.03,1.03.03.20,1.03.03.20.71,1.03.03.20.71,HPRF - Waveguide Bundle Preparation,AS_HPRF_CAP_9470,Prepare Waveguide Bundles - Set 7,10.0,43.0,43.0,43.0,09-06-24,09-19-24,AS_HPRF_CAP_9460: FS,"AS_HPRF_CAP_9480: FS, AS_HPRF_CAP_9790: FS",SLAC,0%,52178.52178_RF Vacuum Tube Fab,52178_RF Vacuum Tube Fab,Labor,0.0d,10.0,10.0,At Completion Units,1/2/2024,1/16/2024,0,0,0,0,0,0,0,0,0,0,1.03_Accelerator Systems (AS),1.03.03_AS Superconducting Linac System (ScL),1.03.03.20_AS Superconducting Linac System Installation,1.03.03.20.71_HPRF - Waveguide Bundle Preparation,AS_HPRF_CAP_9470_Prepare Waveguide Bundles - Set 7,RF Fab,,SLAC,Labor
81109,1.03,1.03.03,1.03.03.20,1.03.03.20.71,1.03.03.20.71,HPRF - Waveguide Bundle Preparation,AS_HPRF_CAP_9460,Prepare Waveguide Bundles - Set 6,10.0,43.0,43.0,43.0,08-22-24,09-05-24,AS_HPRF_CAP_9450: FS,"AS_HPRF_CAP_9470: FS, AS_HPRF_CAP_9780: FS",SLAC,0%,52178.52178_RF Vacuum Tube Fab,52178_RF Vacuum Tube Fab,Labor,0.0d,10.0,10.0,At Completion Units,12/4/2023,12/15/2023,0,0,0,0,0,0,0,0,0,0,1.03_Accelerator Systems (AS),1.03.03_AS Superconducting Linac System (ScL),1.03.03.20_AS Superconducting Linac System Installation,1.03.03.20.71_HPRF - Waveguide Bundle Preparation,AS_HPRF_CAP_9460_Prepare Waveguide Bundles - Set 6,RF Fab,,SLAC,Labor
81110,1.03,1.03.03,1.03.03.20,1.03.03.20.71,1.03.03.20.71,HPRF - Waveguide Bundle Preparation,AS_HPRF_CAP_9450,Prepare Waveguide Bundles - Set 5,10.0,43.0,43.0,43.0,08-08-24,08-21-24,AS_HPRF_CAP_9440: FS,"AS_HPRF_CAP_9460: FS, AS_HPRF_CAP_9770: FS",SLAC,0%,52178.52178_RF Vacuum Tube Fab,52178_RF Vacuum Tube Fab,Labor,0.0d,10.0,10.0,At Completion Units,11/16/2023,12/1/2023,0,0,0,0,0,0,0,0,0,0,1.03_Accelerator Systems (AS),1.03.03_AS Superconducting Linac System (ScL),1.03.03.20_AS Superconducting Linac System Installation,1.03.03.20.71_HPRF - Waveguide Bundle Preparation,AS_HPRF_CAP_9450_Prepare Waveguide Bundles - Set 5,RF Fab,,SLAC,Labor
81111,1.03,1.03.03,1.03.03.20,1.03.03.20.71,1.03.03.20.71,HPRF - Waveguide Bundle Preparation,AS_HPRF_CAP_9440,Prepare Waveguide Bundles - Set 4,10.0,43.0,43.0,43.0,07-25-24,08-07-24,AS_HPRF_CAP_9430: FS,"AS_HPRF_CAP_9450: FS, AS_HPRF_CAP_9690: FS",SLAC,0%,52178.52178_RF Vacuum Tube Fab,52178_RF Vacuum Tube Fab,Labor,0.0d,10.0,10.0,At Completion Units,11/2/2023,11/15/2023,0,0,0,0,0,0,0,0,0,0,1.03_Accelerator Systems (AS),1.03.03_AS Superconducting Linac System (ScL),1.03.03.20_AS Superconducting Linac System Installation,1.03.03.20.71_HPRF - Waveguide Bundle Preparation,AS_HPRF_CAP_9440_Prepare Waveguide Bundles - Set 4,RF Fab,,SLAC,Labor
81112,1.03,1.03.03,1.03.03.20,1.03.03.20.71,1.03.03.20.71,HPRF - Waveguide Bundle Preparation,AS_HPRF_CAP_9430,Prepare Waveguide Bundles - Set 3,10.0,43.0,43.0,43.0,07-11-24,07-24-24,AS_HPRF_CAP_9420: FS,"AS_HPRF_CAP_9440: FS, AS_HPRF_CAP_9680: FS",SLAC,0%,52178.52178_RF Vacuum Tube Fab,52178_RF Vacuum Tube Fab,Labor,0.0d,10.0,10.0,At Completion Units,10/19/2023,11/1/2023,0,0,0,0,0,0,0,0,0,0,1.03_Accelerator Systems (AS),1.03.03_AS Superconducting Linac System (ScL),1.03.03.20_AS Superconducting Linac System Installation,1.03.03.20.71_HPRF - Waveguide Bundle Preparation,AS_HPRF_CAP_9430_Prepare Waveguide Bundles - Set 3,RF Fab,,SLAC,Labor
81113,1.03,1.03.03,1.03.03.20,1.03.03.20.71,1.03.03.20.71,HPRF - Waveguide Bundle Preparation,AS_HPRF_CAP_9420,Prepare Waveguide Bundles - Set 2,10.0,43.0,43.0,43.0,06-26-24,07-10-24,AS_HPRF_CAP_9410: FS,"AS_HPRF_CAP_9430: FS, AS_HPRF_CAP_9670: FS",SLAC,0%,52178.52178_RF Vacuum Tube Fab,52178_RF Vacuum Tube Fab,Labor,0.0d,10.0,10.0,At Completion Units,10/5/2023,10/18/2023,0,0,0,0,0,0,0,0,0,0,1.03_Accelerator Systems (AS),1.03.03_AS Superconducting Linac System (ScL),1.03.03.20_AS Superconducting Linac System Installation,1.03.03.20.71_HPRF - Waveguide Bundle Preparation,AS_HPRF_CAP_9420_Prepare Waveguide Bundles - Set 2,RF Fab,,SLAC,Labor
81114,1.03,1.03.03,1.03.03.20,1.03.03.20.71,1.03.03.20.71,HPRF - Waveguide Bundle Preparation,AS_HPRF_CAP_9410,Prepare Waveguide Bundles - Set 1,10.0,43.0,43.0,43.0,06-12-24,06-25-24,AS_HPRF_CAP_9400: FS,"AS_HPRF_CAP_9420: FS, AS_HPRF_CAP_9660: FS",SLAC,0%,52178.52178_RF Vacuum Tube Fab,52178_RF Vacuum Tube Fab,Labor,0.0d,10.0,10.0,At Completion Units,9/21/2023,10/4/2023,0,0,0,0,0,0,0,0,0,0,1.03_Accelerator Systems (AS),1.03.03_AS Superconducting Linac System (ScL),1.03.03.20_AS Superconducting Linac System Installation,1.03.03.20.71_HPRF - Waveguide Bundle Preparation,AS_HPRF_CAP_9410_Prepare Waveguide Bundles - Set 1,RF Fab,,SLAC,Labor
81115,1.03,1.03.03,1.03.03.20,1.03.03.20.71,1.03.03.20.71,HPRF - Waveguide Bundle Preparation,AS_HPRF_CAP_9400,Prepare Waveguide Bundles - Set 0 (Moved one),10.0,43.0,43.0,43.0,05-29-24,06-11-24,"AS_HPRF_CND_6160: FS, AS_HPRF_WAV_6220: FS","AS_HPRF_CAP_9410: FS, AS_HPRF_CAP_9650: FS",SLAC,0%,52178.52178_RF Vacuum Tube Fab,52178_RF Vacuum Tube Fab,Labor,0.0d,10.0,10.0,At Completion Units,9/7/2023,9/20/2023,0,0,0,0,0,0,0,0,0,0,1.03_Accelerator Systems (AS),1.03.03_AS Superconducting Linac System (ScL),1.03.03.20_AS Superconducting Linac System Installation,1.03.03.20.71_HPRF - Waveguide Bundle Preparation,AS_HPRF_CAP_9400_Prepare Waveguide Bundles - Set 0 (Moved one),RF Fab,,SLAC,Labor
81435,1.03,1.03.03,1.03.03.20,1.03.03.20.72,1.03.03.20.72,HPRF - Waveguide Bundle Installation,AS_HPRF_CAP_9950,Penetration - Installation & Checkout - Set 23,3.0,4.0,4.0,4.0,06-09-25,06-11-25,"AS_HPRF_CAP_9940: FS, AS_HPRF_CAP_9630: FS",AS_M4_DTL1_1010: FS,SLAC,0%,52198.52198_METSMANF (METSD Manufacturing),52198_METSMANF (METSD Manufacturing),Labor,0.0d,3.0,3.0,At Completion Units,6/9/2025,6/11/2025,0,0,0,0,0,0,0,0,0,0,1.03_Accelerator Systems (AS),1.03.03_AS Superconducting Linac System (ScL),1.03.03.20_AS Superconducting Linac System Installation,1.03.03.20.72_HPRF - Waveguide Bundle Installation,AS_HPRF_CAP_9950_Penetration - Installation & Checkout - Set 23,Manufacturing,,SLAC,Labor
81436,1.03,1.03.03,1.03.03.20,1.03.03.20.72,1.03.03.20.72,HPRF - Waveguide Bundle Installation,AS_HPRF_CAP_9950,Penetration - Installation & Checkout - Set 23,3.0,9.0,9.0,9.0,06-09-25,06-11-25,"AS_HPRF_CAP_9940: FS, AS_HPRF_CAP_9630: FS",AS_M4_DTL1_1010: FS,SLAC,0%,52152.52152_FAC Fleet,52152_FAC Fleet,Labor,0.0d,3.0,3.0,At Completion Units,6/9/2025,6/11/2025,0,0,0,0,0,0,0,0,0,0,1.03_Accelerator Systems (AS),1.03.03_AS Superconducting Linac System (ScL),1.03.03.20_AS Superconducting Linac System Installation,1.03.03.20.72_HPRF - Waveguide Bundle Installation,AS_HPRF_CAP_9950_Penetration - Installation & Checkout - Set 23,Support System,,SLAC,Labor
81437,1.03,1.03.03,1.03.03.20,1.03.03.20.72,1.03.03.20.72,HPRF - Waveguide Bundle Installation,AS_HPRF_CAP_9950,Penetration - Installation & Checkout - Set 23,3.0,20.0,20.0,20.0,06-09-25,06-11-25,"AS_HPRF_CAP_9940: FS, AS_HPRF_CAP_9630: FS",AS_M4_DTL1_1010: FS,SLAC,0%,52178.52178_RF Vacuum Tube Fab,52178_RF Vacuum Tube Fab,Labor,0.0d,3.0,3.0,At Completion Units,6/9/2025,6/11/2025,0,0,0,0,0,0,0,0,0,0,1.03_Accelerator Systems (AS),1.03.03_AS Superconducting Linac System (ScL),1.03.03.20_AS Superconducting Linac System Installation,1.03.03.20.72_HPRF - Waveguide Bundle Installation,AS_HPRF_CAP_9950_Penetration - Installation & Checkout - Set 23,RF Fab,,SLAC,Labor
81438,1.03,1.03.03,1.03.03.20,1.03.03.20.72,1.03.03.20.72,HPRF - Waveguide Bundle Installation,AS_HPRF_CAP_9940,Penetration - Installation & Checkout - Set 22,3.0,4.0,4.0,4.0,06-04-25,06-06-25,"AS_HPRF_CAP_9930: FS, AS_HPRF_CAP_9620: FS",AS_HPRF_CAP_9950: FS,SLAC,0%,52198.52198_METSMANF (METSD Manufacturing),52198_METSMANF (METSD Manufacturing),Labor,0.0d,3.0,3.0,At Completion Units,6/4/2025,6/6/2025,0,0,0,0,0,0,0,0,0,0,1.03_Accelerator Systems (AS),1.03.03_AS Superconducting Linac System (ScL),1.03.03.20_AS Superconducting Linac System Installation,1.03.03.20.72_HPRF - Waveguide Bundle Installation,AS_HPRF_CAP_9940_Penetration - Installation & Checkout - Set 22,Manufacturing,,SLAC,Labor
81439,1.03,1.03.03,1.03.03.20,1.03.03.20.72,1.03.03.20.72,HPRF - Waveguide Bundle Installation,AS_HPRF_CAP_9940,Penetration - Installation & Checkout - Set 22,3.0,9.0,9.0,9.0,06-04-25,06-06-25,"AS_HPRF_CAP_9930: FS, AS_HPRF_CAP_9620: FS",AS_HPRF_CAP_9950: FS,SLAC,0%,52152.52152_FAC Fleet,52152_FAC Fleet,Labor,0.0d,3.0,3.0,At Completion Units,6/4/2025,6/6/2025,0,0,0,0,0,0,0,0,0,0,1.03_Accelerator Systems (AS),1.03.03_AS Superconducting Linac System (ScL),1.03.03.20_AS Superconducting Linac System Installation,1.03.03.20.72_HPRF - Waveguide Bundle Installation,AS_HPRF_CAP_9940_Penetration - Installation & Checkout - Set 22,Support System,,SLAC,Labor
81440,1.03,1.03.03,1.03.03.20,1.03.03.20.72,1.03.03.20.72,HPRF - Waveguide Bundle Installation,AS_HPRF_CAP_9940,Penetration - Installation & Checkout - Set 22,3.0,20.0,20.0,20.0,06-04-25,06-06-25,"AS_HPRF_CAP_9930: FS, AS_HPRF_CAP_9620: FS",AS_HPRF_CAP_9950: FS,SLAC,0%,52178.52178_RF Vacuum Tube Fab,52178_RF Vacuum Tube Fab,Labor,0.0d,3.0,3.0,At Completion Units,6/4/2025,6/6/2025,0,0,0,0,0,0,0,0,0,0,1.03_Accelerator Systems (AS),1.03.03_AS Superconducting Linac System (ScL),1.03.03.20_AS Superconducting Linac System Installation,1.03.03.20.72_HPRF - Waveguide Bundle Installation,AS_HPRF_CAP_9940_Penetration - Installation & Checkout - Set 22,RF Fab,,SLAC,Labor
81441,1.03,1.03.03,1.03.03.20,1.03.03.20.72,1.03.03.20.72,HPRF - Waveguide Bundle Installation,AS_HPRF_CAP_9930,Penetration - Installation & Checkout - Set 21,3.0,4.0,4.0,4.0,05-30-25,06-03-25,"AS_HPRF_CAP_9920: FS, AS_HPRF_CAP_9610: FS",AS_HPRF_CAP_9940: FS,SLAC,0%,52198.52198_METSMANF (METSD Manufacturing),52198_METSMANF (METSD Manufacturing),Labor,0.0d,3.0,3.0,At Completion Units,5/30/2025,6/3/2025,0,0,0,0,0,0,0,0,0,0,1.03_Accelerator Systems (AS),1.03.03_AS Superconducting Linac System (ScL),1.03.03.20_AS Superconducting Linac System Installation,1.03.03.20.72_HPRF - Waveguide Bundle Installation,AS_HPRF_CAP_9930_Penetration - Installation & Checkout - Set 21,Manufacturing,,SLAC,Labor
81442,1.03,1.03.03,1.03.03.20,1.03.03.20.72,1.03.03.20.72,HPRF - Waveguide Bundle Installation,AS_HPRF_CAP_9930,Penetration - Installation & Checkout - Set 21,3.0,9.0,9.0,9.0,05-30-25,06-03-25,"AS_HPRF_CAP_9920: FS, AS_HPRF_CAP_9610: FS",AS_HPRF_CAP_9940: FS,SLAC,0%,52152.52152_FAC Fleet,52152_FAC Fleet,Labor,0.0d,3.0,3.0,At Completion Units,5/30/2025,6/3/2025,0,0,0,0,0,0,0,0,0,0,1.03_Accelerator Systems (AS),1.03.03_AS Superconducting Linac System (ScL),1.03.03.20_AS Superconducting Linac System Installation,1.03.03.20.72_HPRF - Waveguide Bundle Installation,AS_HPRF_CAP_9930_Penetration - Installation & Checkout - Set 21,Support System,,SLAC,Labor
81443,1.03,1.03.03,1.03.03.20,1.03.03.20.72,1.03.03.20.72,HPRF - Waveguide Bundle Installation,AS_HPRF_CAP_9930,Penetration - Installation & Checkout - Set 21,3.0,20.0,20.0,20.0,05-30-25,06-03-25,"AS_HPRF_CAP_9920: FS, AS_HPRF_CAP_9610: FS",AS_HPRF_CAP_9940: FS,SLAC,0%,52178.52178_RF Vacuum Tube Fab,52178_RF Vacuum Tube Fab,Labor,0.0d,3.0,3.0,At Completion Units,5/30/2025,6/3/2025,0,0,0,0,0,0,0,0,0,0,1.03_Accelerator Systems (AS),1.03.03_AS Superconducting Linac System (ScL),1.03.03.20_AS Superconducting Linac System Installation,1.03.03.20.72_HPRF - Waveguide Bundle Installation,AS_HPRF_CAP_9930_Penetration - Installation & Checkout - Set 21,RF Fab,,SLAC,Labor
81444,1.03,1.03.03,1.03.03.20,1.03.03.20.72,1.03.03.20.72,HPRF - Waveguide Bundle Installation,AS_HPRF_CAP_9920,Penetration - Installation & Checkout - Set 20,3.0,4.0,4.0,4.0,05-27-25,05-29-25,"AS_HPRF_CAP_9910: FS, AS_HPRF_CAP_9600: FS",AS_HPRF_CAP_9930: FS,SLAC,0%,52198.52198_METSMANF (METSD Manufacturing),52198_METSMANF (METSD Manufacturing),Labor,0.0d,3.0,3.0,At Completion Units,5/27/2025,5/29/2025,0,0,0,0,0,0,0,0,0,0,1.03_Accelerator Systems (AS),1.03.03_AS Superconducting Linac System (ScL),1.03.03.20_AS Superconducting Linac System Installation,1.03.03.20.72_HPRF - Waveguide Bundle Installation,AS_HPRF_CAP_9920_Penetration - Installation & Checkout - Set 20,Manufacturing,,SLAC,Labor
81445,1.03,1.03.03,1.03.03.20,1.03.03.20.72,1.03.03.20.72,HPRF - Waveguide Bundle Installation,AS_HPRF_CAP_9920,Penetration - Installation & Checkout - Set 20,3.0,9.0,9.0,9.0,05-27-25,05-29-25,"AS_HPRF_CAP_9910: FS, AS_HPRF_CAP_9600: FS",AS_HPRF_CAP_9930: FS,SLAC,0%,52152.52152_FAC Fleet,52152_FAC Fleet,Labor,0.0d,3.0,3.0,At Completion Units,5/27/2025,5/29/2025,0,0,0,0,0,0,0,0,0,0,1.03_Accelerator Systems (AS),1.03.03_AS Superconducting Linac System (ScL),1.03.03.20_AS Superconducting Linac System Installation,1.03.03.20.72_HPRF - Waveguide Bundle Installation,AS_HPRF_CAP_9920_Penetration - Installation & Checkout - Set 20,Support System,,SLAC,Labor
81446,1.03,1.03.03,1.03.03.20,1.03.03.20.72,1.03.03.20.72,HPRF - Waveguide Bundle Installation,AS_HPRF_CAP_9920,Penetration - Installation & Checkout - Set 20,3.0,20.0,20.0,20.0,05-27-25,05-29-25,"AS_HPRF_CAP_9910: FS, AS_HPRF_CAP_9600: FS",AS_HPRF_CAP_9930: FS,SLAC,0%,52178.52178_RF Vacuum Tube Fab,52178_RF Vacuum Tube Fab,Labor,0.0d,3.0,3.0,At Completion Units,5/27/2025,5/29/2025,0,0,0,0,0,0,0,0,0,0,1.03_Accelerator Systems (AS),1.03.03_AS Superconducting Linac System (ScL),1.03.03.20_AS Superconducting Linac System Installation,1.03.03.20.72_HPRF - Waveguide Bundle Installation,AS_HPRF_CAP_9920_Penetration - Installation & Checkout - Set 20,RF Fab,,SLAC,Labor
81447,1.03,1.03.03,1.03.03.20,1.03.03.20.72,1.03.03.20.72,HPRF - Waveguide Bundle Installation,AS_HPRF_CAP_9910,Penetration - Installation & Checkout - Set 19,3.0,4.0,4.0,4.0,05-21-25,05-23-25,"AS_HPRF_CAP_9900: FS, AS_HPRF_CAP_9590: FS",AS_HPRF_CAP_9920: FS,SLAC,0%,52198.52198_METSMANF (METSD Manufacturing),52198_METSMANF (METSD Manufacturing),Labor,0.0d,3.0,3.0,At Completion Units,5/21/2025,5/23/2025,0,0,0,0,0,0,0,0,0,0,1.03_Accelerator Systems (AS),1.03.03_AS Superconducting Linac System (ScL),1.03.03.20_AS Superconducting Linac System Installation,1.03.03.20.72_HPRF - Waveguide Bundle Installation,AS_HPRF_CAP_9910_Penetration - Installation & Checkout - Set 19,Manufacturing,,SLAC,Labor
81448,1.03,1.03.03,1.03.03.20,1.03.03.20.72,1.03.03.20.72,HPRF - Waveguide Bundle Installation,AS_HPRF_CAP_9910,Penetration - Installation & Checkout - Set 19,3.0,9.0,9.0,9.0,05-21-25,05-23-25,"AS_HPRF_CAP_9900: FS, AS_HPRF_CAP_9590: FS",AS_HPRF_CAP_9920: FS,SLAC,0%,52152.52152_FAC Fleet,52152_FAC Fleet,Labor,0.0d,3.0,3.0,At Completion Units,5/21/2025,5/23/2025,0,0,0,0,0,0,0,0,0,0,1.03_Accelerator Systems (AS),1.03.03_AS Superconducting Linac System (ScL),1.03.03.20_AS Superconducting Linac System Installation,1.03.03.20.72_HPRF - Waveguide Bundle Installation,AS_HPRF_CAP_9910_Penetration - Installation & Checkout - Set 19,Support System,,SLAC,Labor
81449,1.03,1.03.03,1.03.03.20,1.03.03.20.72,1.03.03.20.72,HPRF - Waveguide Bundle Installation,AS_HPRF_CAP_9910,Penetration - Installation & Checkout - Set 19,3.0,20.0,20.0,20.0,05-21-25,05-23-25,"AS_HPRF_CAP_9900: FS, AS_HPRF_CAP_9590: FS",AS_HPRF_CAP_9920: FS,SLAC,0%,52178.52178_RF Vacuum Tube Fab,52178_RF Vacuum Tube Fab,Labor,0.0d,3.0,3.0,At Completion Units,5/21/2025,5/23/2025,0,0,0,0,0,0,0,0,0,0,1.03_Accelerator Systems (AS),1.03.03_AS Superconducting Linac System (ScL),1.03.03.20_AS Superconducting Linac System Installation,1.03.03.20.72_HPRF - Waveguide Bundle Installation,AS_HPRF_CAP_9910_Penetration - Installation & Checkout - Set 19,RF Fab,,SLAC,Labor
81450,1.03,1.03.03,1.03.03.20,1.03.03.20.72,1.03.03.20.72,HPRF - Waveguide Bundle Installation,AS_HPRF_CAP_9900,Penetration - Installation & Checkout - Set 18,3.0,4.0,4.0,4.0,05-16-25,05-20-25,"AS_HPRF_CAP_9890: FS, AS_HPRF_CAP_9580: FS",AS_HPRF_CAP_9910: FS,SLAC,0%,52198.52198_METSMANF (METSD Manufacturing),52198_METSMANF (METSD Manufacturing),Labor,0.0d,3.0,3.0,At Completion Units,5/16/2025,5/20/2025,0,0,0,0,0,0,0,0,0,0,1.03_Accelerator Systems (AS),1.03.03_AS Superconducting Linac System (ScL),1.03.03.20_AS Superconducting Linac System Installation,1.03.03.20.72_HPRF - Waveguide Bundle Installation,AS_HPRF_CAP_9900_Penetration - Installation & Checkout - Set 18,Manufacturing,,SLAC,Labor
81451,1.03,1.03.03,1.03.03.20,1.03.03.20.72,1.03.03.20.72,HPRF - Waveguide Bundle Installation,AS_HPRF_CAP_9900,Penetration - Installation & Checkout - Set 18,3.0,9.0,9.0,9.0,05-16-25,05-20-25,"AS_HPRF_CAP_9890: FS, AS_HPRF_CAP_9580: FS",AS_HPRF_CAP_9910: FS,SLAC,0%,52152.52152_FAC Fleet,52152_FAC Fleet,Labor,0.0d,3.0,3.0,At Completion Units,5/16/2025,5/20/2025,0,0,0,0,0,0,0,0,0,0,1.03_Accelerator Systems (AS),1.03.03_AS Superconducting Linac System (ScL),1.03.03.20_AS Superconducting Linac System Installation,1.03.03.20.72_HPRF - Waveguide Bundle Installation,AS_HPRF_CAP_9900_Penetration - Installation & Checkout - Set 18,Support System,,SLAC,Labor
81452,1.03,1.03.03,1.03.03.20,1.03.03.20.72,1.03.03.20.72,HPRF - Waveguide Bundle Installation,AS_HPRF_CAP_9900,Penetration - Installation & Checkout - Set 18,3.0,20.0,20.0,20.0,05-16-25,05-20-25,"AS_HPRF_CAP_9890: FS, AS_HPRF_CAP_9580: FS",AS_HPRF_CAP_9910: FS,SLAC,0%,52178.52178_RF Vacuum Tube Fab,52178_RF Vacuum Tube Fab,Labor,0.0d,3.0,3.0,At Completion Units,5/16/2025,5/20/2025,0,0,0,0,0,0,0,0,0,0,1.03_Accelerator Systems (AS),1.03.03_AS Superconducting Linac System (ScL),1.03.03.20_AS Superconducting Linac System Installation,1.03.03.20.72_HPRF - Waveguide Bundle Installation,AS_HPRF_CAP_9900_Penetration - Installation & Checkout - Set 18,RF Fab,,SLAC,Labor
81453,1.03,1.03.03,1.03.03.20,1.03.03.20.72,1.03.03.20.72,HPRF - Waveguide Bundle Installation,AS_HPRF_CAP_9890,Penetration - Installation & Checkout - Set 17,3.0,4.0,4.0,4.0,05-13-25,05-15-25,"AS_HPRF_CAP_9880: FS, AS_HPRF_CAP_9570: FS",AS_HPRF_CAP_9900: FS,SLAC,0%,52198.52198_METSMANF (METSD Manufacturing),52198_METSMANF (METSD Manufacturing),Labor,0.0d,3.0,3.0,At Completion Units,5/13/2025,5/15/2025,0,0,0,0,0,0,0,0,0,0,1.03_Accelerator Systems (AS),1.03.03_AS Superconducting Linac System (ScL),1.03.03.20_AS Superconducting Linac System Installation,1.03.03.20.72_HPRF - Waveguide Bundle Installation,AS_HPRF_CAP_9890_Penetration - Installation & Checkout - Set 17,Manufacturing,,SLAC,Labor
81454,1.03,1.03.03,1.03.03.20,1.03.03.20.72,1.03.03.20.72,HPRF - Waveguide Bundle Installation,AS_HPRF_CAP_9890,Penetration - Installation & Checkout - Set 17,3.0,9.0,9.0,9.0,05-13-25,05-15-25,"AS_HPRF_CAP_9880: FS, AS_HPRF_CAP_9570: FS",AS_HPRF_CAP_9900: FS,SLAC,0%,52152.52152_FAC Fleet,52152_FAC Fleet,Labor,0.0d,3.0,3.0,At Completion Units,5/13/2025,5/15/2025,0,0,0,0,0,0,0,0,0,0,1.03_Accelerator Systems (AS),1.03.03_AS Superconducting Linac System (ScL),1.03.03.20_AS Superconducting Linac System Installation,1.03.03.20.72_HPRF - Waveguide Bundle Installation,AS_HPRF_CAP_9890_Penetration - Installation & Checkout - Set 17,Support System,,SLAC,Labor
81455,1.03,1.03.03,1.03.03.20,1.03.03.20.72,1.03.03.20.72,HPRF - Waveguide Bundle Installation,AS_HPRF_CAP_9890,Penetration - Installation & Checkout - Set 17,3.0,20.0,20.0,20.0,05-13-25,05-15-25,"AS_HPRF_CAP_9880: FS, AS_HPRF_CAP_9570: FS",AS_HPRF_CAP_9900: FS,SLAC,0%,52178.52178_RF Vacuum Tube Fab,52178_RF Vacuum Tube Fab,Labor,0.0d,3.0,3.0,At Completion Units,5/13/2025,5/15/2025,0,0,0,0,0,0,0,0,0,0,1.03_Accelerator Systems (AS),1.03.03_AS Superconducting Linac System (ScL),1.03.03.20_AS Superconducting Linac System Installation,1.03.03.20.72_HPRF - Waveguide Bundle Installation,AS_HPRF_CAP_9890_Penetration - Installation & Checkout - Set 17,RF Fab,,SLAC,Labor
81456,1.03,1.03.03,1.03.03.20,1.03.03.20.72,1.03.03.20.72,HPRF - Waveguide Bundle Installation,AS_HPRF_CAP_9880,Penetration - Installation & Checkout - Set 16,3.0,4.0,4.0,4.0,05-08-25,05-12-25,"AS_HPRF_CAP_9870: FS, AS_HPRF_CAP_9560: FS",AS_HPRF_CAP_9890: FS,SLAC,0%,52198.52198_METSMANF (METSD Manufacturing),52198_METSMANF (METSD Manufacturing),Labor,0.0d,3.0,3.0,At Completion Units,5/8/2025,5/12/2025,0,0,0,0,0,0,0,0,0,0,1.03_Accelerator Systems (AS),1.03.03_AS Superconducting Linac System (ScL),1.03.03.20_AS Superconducting Linac System Installation,1.03.03.20.72_HPRF - Waveguide Bundle Installation,AS_HPRF_CAP_9880_Penetration - Installation & Checkout - Set 16,Manufacturing,,SLAC,Labor
81457,1.03,1.03.03,1.03.03.20,1.03.03.20.72,1.03.03.20.72,HPRF - Waveguide Bundle Installation,AS_HPRF_CAP_9880,Penetration - Installation & Checkout - Set 16,3.0,9.0,9.0,9.0,05-08-25,05-12-25,"AS_HPRF_CAP_9870: FS, AS_HPRF_CAP_9560: FS",AS_HPRF_CAP_9890: FS,SLAC,0%,52152.52152_FAC Fleet,52152_FAC Fleet,Labor,0.0d,3.0,3.0,At Completion Units,5/8/2025,5/12/2025,0,0,0,0,0,0,0,0,0,0,1.03_Accelerator Systems (AS),1.03.03_AS Superconducting Linac System (ScL),1.03.03.20_AS Superconducting Linac System Installation,1.03.03.20.72_HPRF - Waveguide Bundle Installation,AS_HPRF_CAP_9880_Penetration - Installation & Checkout - Set 16,Support System,,SLAC,Labor
81458,1.03,1.03.03,1.03.03.20,1.03.03.20.72,1.03.03.20.72,HPRF - Waveguide Bundle Installation,AS_HPRF_CAP_9880,Penetration - Installation & Checkout - Set 16,3.0,20.0,20.0,20.0,05-08-25,05-12-25,"AS_HPRF_CAP_9870: FS, AS_HPRF_CAP_9560: FS",AS_HPRF_CAP_9890: FS,SLAC,0%,52178.52178_RF Vacuum Tube Fab,52178_RF Vacuum Tube Fab,Labor,0.0d,3.0,3.0,At Completion Units,5/8/2025,5/12/2025,0,0,0,0,0,0,0,0,0,0,1.03_Accelerator Systems (AS),1.03.03_AS Superconducting Linac System (ScL),1.03.03.20_AS Superconducting Linac System Installation,1.03.03.20.72_HPRF - Waveguide Bundle Installation,AS_HPRF_CAP_9880_Penetration - Installation & Checkout - Set 16,RF Fab,,SLAC,Labor
81459,1.03,1.03.03,1.03.03.20,1.03.03.20.72,1.03.03.20.72,HPRF - Waveguide Bundle Installation,AS_HPRF_CAP_9870,Penetration - Installation & Checkout - Set 15,3.0,4.0,4.0,4.0,05-05-25,05-07-25,"AS_HPRF_CAP_9860: FS, AS_HPRF_CAP_9550: FS",AS_HPRF_CAP_9880: FS,SLAC,0%,52198.52198_METSMANF (METSD Manufacturing),52198_METSMANF (METSD Manufacturing),Labor,0.0d,3.0,3.0,At Completion Units,5/5/2025,5/7/2025,0,0,0,0,0,0,0,0,0,0,1.03_Accelerator Systems (AS),1.03.03_AS Superconducting Linac System (ScL),1.03.03.20_AS Superconducting Linac System Installation,1.03.03.20.72_HPRF - Waveguide Bundle Installation,AS_HPRF_CAP_9870_Penetration - Installation & Checkout - Set 15,Manufacturing,,SLAC,Labor
81460,1.03,1.03.03,1.03.03.20,1.03.03.20.72,1.03.03.20.72,HPRF - Waveguide Bundle Installation,AS_HPRF_CAP_9870,Penetration - Installation & Checkout - Set 15,3.0,9.0,9.0,9.0,05-05-25,05-07-25,"AS_HPRF_CAP_9860: FS, AS_HPRF_CAP_9550: FS",AS_HPRF_CAP_9880: FS,SLAC,0%,52152.52152_FAC Fleet,52152_FAC Fleet,Labor,0.0d,3.0,3.0,At Completion Units,5/5/2025,5/7/2025,0,0,0,0,0,0,0,0,0,0,1.03_Accelerator Systems (AS),1.03.03_AS Superconducting Linac System (ScL),1.03.03.20_AS Superconducting Linac System Installation,1.03.03.20.72_HPRF - Waveguide Bundle Installation,AS_HPRF_CAP_9870_Penetration - Installation & Checkout - Set 15,Support System,,SLAC,Labor
81461,1.03,1.03.03,1.03.03.20,1.03.03.20.72,1.03.03.20.72,HPRF - Waveguide Bundle Installation,AS_HPRF_CAP_9870,Penetration - Installation & Checkout - Set 15,3.0,20.0,20.0,20.0,05-05-25,05-07-25,"AS_HPRF_CAP_9860: FS, AS_HPRF_CAP_9550: FS",AS_HPRF_CAP_9880: FS,SLAC,0%,52178.52178_RF Vacuum Tube Fab,52178_RF Vacuum Tube Fab,Labor,0.0d,3.0,3.0,At Completion Units,5/5/2025,5/7/2025,0,0,0,0,0,0,0,0,0,0,1.03_Accelerator Systems (AS),1.03.03_AS Superconducting Linac System (ScL),1.03.03.20_AS Superconducting Linac System Installation,1.03.03.20.72_HPRF - Waveguide Bundle Installation,AS_HPRF_CAP_9870_Penetration - Installation & Checkout - Set 15,RF Fab,,SLAC,Labor
81462,1.03,1.03.03,1.03.03.20,1.03.03.20.72,1.03.03.20.72,HPRF - Waveguide Bundle Installation,AS_HPRF_CAP_9860,Penetration - Installation & Checkout - Set 14,3.0,4.0,4.0,4.0,04-30-25,05-02-25,"AS_HPRF_CAP_9850: FS, AS_HPRF_CAP_9540: FS",AS_HPRF_CAP_9870: FS,SLAC,0%,52198.52198_METSMANF (METSD Manufacturing),52198_METSMANF (METSD Manufacturing),Labor,0.0d,3.0,3.0,At Completion Units,4/30/2025,5/2/2025,0,0,0,0,0,0,0,0,0,0,1.03_Accelerator Systems (AS),1.03.03_AS Superconducting Linac System (ScL),1.03.03.20_AS Superconducting Linac System Installation,1.03.03.20.72_HPRF - Waveguide Bundle Installation,AS_HPRF_CAP_9860_Penetration - Installation & Checkout - Set 14,Manufacturing,,SLAC,Labor
81463,1.03,1.03.03,1.03.03.20,1.03.03.20.72,1.03.03.20.72,HPRF - Waveguide Bundle Installation,AS_HPRF_CAP_9860,Penetration - Installation & Checkout - Set 14,3.0,9.0,9.0,9.0,04-30-25,05-02-25,"AS_HPRF_CAP_9850: FS, AS_HPRF_CAP_9540: FS",AS_HPRF_CAP_9870: FS,SLAC,0%,52152.52152_FAC Fleet,52152_FAC Fleet,Labor,0.0d,3.0,3.0,At Completion Units,4/30/2025,5/2/2025,0,0,0,0,0,0,0,0,0,0,1.03_Accelerator Systems (AS),1.03.03_AS Superconducting Linac System (ScL),1.03.03.20_AS Superconducting Linac System Installation,1.03.03.20.72_HPRF - Waveguide Bundle Installation,AS_HPRF_CAP_9860_Penetration - Installation & Checkout - Set 14,Support System,,SLAC,Labor
81464,1.03,1.03.03,1.03.03.20,1.03.03.20.72,1.03.03.20.72,HPRF - Waveguide Bundle Installation,AS_HPRF_CAP_9860,Penetration - Installation & Checkout - Set 14,3.0,20.0,20.0,20.0,04-30-25,05-02-25,"AS_HPRF_CAP_9850: FS, AS_HPRF_CAP_9540: FS",AS_HPRF_CAP_9870: FS,SLAC,0%,52178.52178_RF Vacuum Tube Fab,52178_RF Vacuum Tube Fab,Labor,0.0d,3.0,3.0,At Completion Units,4/30/2025,5/2/2025,0,0,0,0,0,0,0,0,0,0,1.03_Accelerator Systems (AS),1.03.03_AS Superconducting Linac System (ScL),1.03.03.20_AS Superconducting Linac System Installation,1.03.03.20.72_HPRF - Waveguide Bundle Installation,AS_HPRF_CAP_9860_Penetration - Installation & Checkout - Set 14,RF Fab,,SLAC,Labor
81465,1.03,1.03.03,1.03.03.20,1.03.03.20.72,1.03.03.20.72,HPRF - Waveguide Bundle Installation,AS_HPRF_CAP_9850,Penetration - Installation & Checkout - Set 13,3.0,4.0,4.0,4.0,04-25-25,04-29-25,"AS_HPRF_CAP_9840: FS, AS_HPRF_CAP_9530: FS",AS_HPRF_CAP_9860: FS,SLAC,0%,52198.52198_METSMANF (METSD Manufacturing),52198_METSMANF (METSD Manufacturing),Labor,0.0d,3.0,3.0,At Completion Units,4/25/2025,4/29/2025,0,0,0,0,0,0,0,0,0,0,1.03_Accelerator Systems (AS),1.03.03_AS Superconducting Linac System (ScL),1.03.03.20_AS Superconducting Linac System Installation,1.03.03.20.72_HPRF - Waveguide Bundle Installation,AS_HPRF_CAP_9850_Penetration - Installation & Checkout - Set 13,Manufacturing,,SLAC,Labor
81466,1.03,1.03.03,1.03.03.20,1.03.03.20.72,1.03.03.20.72,HPRF - Waveguide Bundle Installation,AS_HPRF_CAP_9850,Penetration - Installation & Checkout - Set 13,3.0,9.0,9.0,9.0,04-25-25,04-29-25,"AS_HPRF_CAP_9840: FS, AS_HPRF_CAP_9530: FS",AS_HPRF_CAP_9860: FS,SLAC,0%,52152.52152_FAC Fleet,52152_FAC Fleet,Labor,0.0d,3.0,3.0,At Completion Units,4/25/2025,4/29/2025,0,0,0,0,0,0,0,0,0,0,1.03_Accelerator Systems (AS),1.03.03_AS Superconducting Linac System (ScL),1.03.03.20_AS Superconducting Linac System Installation,1.03.03.20.72_HPRF - Waveguide Bundle Installation,AS_HPRF_CAP_9850_Penetration - Installation & Checkout - Set 13,Support System,,SLAC,Labor
81467,1.03,1.03.03,1.03.03.20,1.03.03.20.72,1.03.03.20.72,HPRF - Waveguide Bundle Installation,AS_HPRF_CAP_9850,Penetration - Installation & Checkout - Set 13,3.0,20.0,20.0,20.0,04-25-25,04-29-25,"AS_HPRF_CAP_9840: FS, AS_HPRF_CAP_9530: FS",AS_HPRF_CAP_9860: FS,SLAC,0%,52178.52178_RF Vacuum Tube Fab,52178_RF Vacuum Tube Fab,Labor,0.0d,3.0,3.0,At Completion Units,4/25/2025,4/29/2025,0,0,0,0,0,0,0,0,0,0,1.03_Accelerator Systems (AS),1.03.03_AS Superconducting Linac System (ScL),1.03.03.20_AS Superconducting Linac System Installation,1.03.03.20.72_HPRF - Waveguide Bundle Installation,AS_HPRF_CAP_9850_Penetration - Installation & Checkout - Set 13,RF Fab,,SLAC,Labor
81468,1.03,1.03.03,1.03.03.20,1.03.03.20.72,1.03.03.20.72,HPRF - Waveguide Bundle Installation,AS_HPRF_CAP_9840,Penetration - Installation & Checkout - Set 12,3.0,4.0,4.0,4.0,04-22-25,04-24-25,"AS_HPRF_CAP_9830: FS, AS_HPRF_CAP_9520: FS",AS_HPRF_CAP_9850: FS,SLAC,0%,52198.52198_METSMANF (METSD Manufacturing),52198_METSMANF (METSD Manufacturing),Labor,0.0d,3.0,3.0,At Completion Units,4/22/2025,4/24/2025,0,0,0,0,0,0,0,0,0,0,1.03_Accelerator Systems (AS),1.03.03_AS Superconducting Linac System (ScL),1.03.03.20_AS Superconducting Linac System Installation,1.03.03.20.72_HPRF - Waveguide Bundle Installation,AS_HPRF_CAP_9840_Penetration - Installation & Checkout - Set 12,Manufacturing,,SLAC,Labor
81469,1.03,1.03.03,1.03.03.20,1.03.03.20.72,1.03.03.20.72,HPRF - Waveguide Bundle Installation,AS_HPRF_CAP_9840,Penetration - Installation & Checkout - Set 12,3.0,9.0,9.0,9.0,04-22-25,04-24-25,"AS_HPRF_CAP_9830: FS, AS_HPRF_CAP_9520: FS",AS_HPRF_CAP_9850: FS,SLAC,0%,52152.52152_FAC Fleet,52152_FAC Fleet,Labor,0.0d,3.0,3.0,At Completion Units,4/22/2025,4/24/2025,0,0,0,0,0,0,0,0,0,0,1.03_Accelerator Systems (AS),1.03.03_AS Superconducting Linac System (ScL),1.03.03.20_AS Superconducting Linac System Installation,1.03.03.20.72_HPRF - Waveguide Bundle Installation,AS_HPRF_CAP_9840_Penetration - Installation & Checkout - Set 12,Support System,,SLAC,Labor
81470,1.03,1.03.03,1.03.03.20,1.03.03.20.72,1.03.03.20.72,HPRF - Waveguide Bundle Installation,AS_HPRF_CAP_9840,Penetration - Installation & Checkout - Set 12,3.0,20.0,20.0,20.0,04-22-25,04-24-25,"AS_HPRF_CAP_9830: FS, AS_HPRF_CAP_9520: FS",AS_HPRF_CAP_9850: FS,SLAC,0%,52178.52178_RF Vacuum Tube Fab,52178_RF Vacuum Tube Fab,Labor,0.0d,3.0,3.0,At Completion Units,4/22/2025,4/24/2025,0,0,0,0,0,0,0,0,0,0,1.03_Accelerator Systems (AS),1.03.03_AS Superconducting Linac System (ScL),1.03.03.20_AS Superconducting Linac System Installation,1.03.03.20.72_HPRF - Waveguide Bundle Installation,AS_HPRF_CAP_9840_Penetration - Installation & Checkout - Set 12,RF Fab,,SLAC,Labor
81471,1.03,1.03.03,1.03.03.20,1.03.03.20.72,1.03.03.20.72,HPRF - Waveguide Bundle Installation,AS_HPRF_CAP_9830,Penetration - Installation & Checkout - Set 11,3.0,4.0,4.0,4.0,04-17-25,04-21-25,"AS_HPRF_CAP_9820: FS, AS_HPRF_CAP_9510: FS",AS_HPRF_CAP_9840: FS,SLAC,0%,52198.52198_METSMANF (METSD Manufacturing),52198_METSMANF (METSD Manufacturing),Labor,0.0d,3.0,3.0,At Completion Units,4/17/2025,4/21/2025,0,0,0,0,0,0,0,0,0,0,1.03_Accelerator Systems (AS),1.03.03_AS Superconducting Linac System (ScL),1.03.03.20_AS Superconducting Linac System Installation,1.03.03.20.72_HPRF - Waveguide Bundle Installation,AS_HPRF_CAP_9830_Penetration - Installation & Checkout - Set 11,Manufacturing,,SLAC,Labor
81472,1.03,1.03.03,1.03.03.20,1.03.03.20.72,1.03.03.20.72,HPRF - Waveguide Bundle Installation,AS_HPRF_CAP_9830,Penetration - Installation & Checkout - Set 11,3.0,9.0,9.0,9.0,04-17-25,04-21-25,"AS_HPRF_CAP_9820: FS, AS_HPRF_CAP_9510: FS",AS_HPRF_CAP_9840: FS,SLAC,0%,52152.52152_FAC Fleet,52152_FAC Fleet,Labor,0.0d,3.0,3.0,At Completion Units,4/17/2025,4/21/2025,0,0,0,0,0,0,0,0,0,0,1.03_Accelerator Systems (AS),1.03.03_AS Superconducting Linac System (ScL),1.03.03.20_AS Superconducting Linac System Installation,1.03.03.20.72_HPRF - Waveguide Bundle Installation,AS_HPRF_CAP_9830_Penetration - Installation & Checkout - Set 11,Support System,,SLAC,Labor
81473,1.03,1.03.03,1.03.03.20,1.03.03.20.72,1.03.03.20.72,HPRF - Waveguide Bundle Installation,AS_HPRF_CAP_9830,Penetration - Installation & Checkout - Set 11,3.0,20.0,20.0,20.0,04-17-25,04-21-25,"AS_HPRF_CAP_9820: FS, AS_HPRF_CAP_9510: FS",AS_HPRF_CAP_9840: FS,SLAC,0%,52178.52178_RF Vacuum Tube Fab,52178_RF Vacuum Tube Fab,Labor,0.0d,3.0,3.0,At Completion Units,4/17/2025,4/21/2025,0,0,0,0,0,0,0,0,0,0,1.03_Accelerator Systems (AS),1.03.03_AS Superconducting Linac System (ScL),1.03.03.20_AS Superconducting Linac System Installation,1.03.03.20.72_HPRF - Waveguide Bundle Installation,AS_HPRF_CAP_9830_Penetration - Installation & Checkout - Set 11,RF Fab,,SLAC,Labor
81474,1.03,1.03.03,1.03.03.20,1.03.03.20.72,1.03.03.20.72,HPRF - Waveguide Bundle Installation,AS_HPRF_CAP_9820,Penetration - Installation & Checkout - Set 10,3.0,4.0,4.0,4.0,04-14-25,04-16-25,"AS_HPRF_CAP_9810: FS, AS_HPRF_CAP_9500: FS",AS_HPRF_CAP_9830: FS,SLAC,0%,52198.52198_METSMANF (METSD Manufacturing),52198_METSMANF (METSD Manufacturing),Labor,0.0d,3.0,3.0,At Completion Units,4/14/2025,4/16/2025,0,0,0,0,0,0,0,0,0,0,1.03_Accelerator Systems (AS),1.03.03_AS Superconducting Linac System (ScL),1.03.03.20_AS Superconducting Linac System Installation,1.03.03.20.72_HPRF - Waveguide Bundle Installation,AS_HPRF_CAP_9820_Penetration - Installation & Checkout - Set 10,Manufacturing,,SLAC,Labor
81475,1.03,1.03.03,1.03.03.20,1.03.03.20.72,1.03.03.20.72,HPRF - Waveguide Bundle Installation,AS_HPRF_CAP_9820,Penetration - Installation & Checkout - Set 10,3.0,9.0,9.0,9.0,04-14-25,04-16-25,"AS_HPRF_CAP_9810: FS, AS_HPRF_CAP_9500: FS",AS_HPRF_CAP_9830: FS,SLAC,0%,52152.52152_FAC Fleet,52152_FAC Fleet,Labor,0.0d,3.0,3.0,At Completion Units,4/14/2025,4/16/2025,0,0,0,0,0,0,0,0,0,0,1.03_Accelerator Systems (AS),1.03.03_AS Superconducting Linac System (ScL),1.03.03.20_AS Superconducting Linac System Installation,1.03.03.20.72_HPRF - Waveguide Bundle Installation,AS_HPRF_CAP_9820_Penetration - Installation & Checkout - Set 10,Support System,,SLAC,Labor
81476,1.03,1.03.03,1.03.03.20,1.03.03.20.72,1.03.03.20.72,HPRF - Waveguide Bundle Installation,AS_HPRF_CAP_9820,Penetration - Installation & Checkout - Set 10,3.0,20.0,20.0,20.0,04-14-25,04-16-25,"AS_HPRF_CAP_9810: FS, AS_HPRF_CAP_9500: FS",AS_HPRF_CAP_9830: FS,SLAC,0%,52178.52178_RF Vacuum Tube Fab,52178_RF Vacuum Tube Fab,Labor,0.0d,3.0,3.0,At Completion Units,4/14/2025,4/16/2025,0,0,0,0,0,0,0,0,0,0,1.03_Accelerator Systems (AS),1.03.03_AS Superconducting Linac System (ScL),1.03.03.20_AS Superconducting Linac System Installation,1.03.03.20.72_HPRF - Waveguide Bundle Installation,AS_HPRF_CAP_9820_Penetration - Installation & Checkout - Set 10,RF Fab,,SLAC,Labor
81477,1.03,1.03.03,1.03.03.20,1.03.03.20.72,1.03.03.20.72,HPRF - Waveguide Bundle Installation,AS_HPRF_CAP_9810,Penetration - Installation & Checkout - Set 9,3.0,4.0,4.0,4.0,04-09-25,04-11-25,"AS_HPRF_CAP_9800: FS, AS_HPRF_CAP_9490: FS",AS_HPRF_CAP_9820: FS,SLAC,0%,52198.52198_METSMANF (METSD Manufacturing),52198_METSMANF (METSD Manufacturing),Labor,0.0d,3.0,3.0,At Completion Units,4/9/2025,4/11/2025,0,0,0,0,0,0,0,0,0,0,1.03_Accelerator Systems (AS),1.03.03_AS Superconducting Linac System (ScL),1.03.03.20_AS Superconducting Linac System Installation,1.03.03.20.72_HPRF - Waveguide Bundle Installation,AS_HPRF_CAP_9810_Penetration - Installation & Checkout - Set 9,Manufacturing,,SLAC,Labor
81478,1.03,1.03.03,1.03.03.20,1.03.03.20.72,1.03.03.20.72,HPRF - Waveguide Bundle Installation,AS_HPRF_CAP_9810,Penetration - Installation & Checkout - Set 9,3.0,9.0,9.0,9.0,04-09-25,04-11-25,"AS_HPRF_CAP_9800: FS, AS_HPRF_CAP_9490: FS",AS_HPRF_CAP_9820: FS,SLAC,0%,52152.52152_FAC Fleet,52152_FAC Fleet,Labor,0.0d,3.0,3.0,At Completion Units,4/9/2025,4/11/2025,0,0,0,0,0,0,0,0,0,0,1.03_Accelerator Systems (AS),1.03.03_AS Superconducting Linac System (ScL),1.03.03.20_AS Superconducting Linac System Installation,1.03.03.20.72_HPRF - Waveguide Bundle Installation,AS_HPRF_CAP_9810_Penetration - Installation & Checkout - Set 9,Support System,,SLAC,Labor
81479,1.03,1.03.03,1.03.03.20,1.03.03.20.72,1.03.03.20.72,HPRF - Waveguide Bundle Installation,AS_HPRF_CAP_9810,Penetration - Installation & Checkout - Set 9,3.0,20.0,20.0,20.0,04-09-25,04-11-25,"AS_HPRF_CAP_9800: FS, AS_HPRF_CAP_9490: FS",AS_HPRF_CAP_9820: FS,SLAC,0%,52178.52178_RF Vacuum Tube Fab,52178_RF Vacuum Tube Fab,Labor,0.0d,3.0,3.0,At Completion Units,4/9/2025,4/11/2025,0,0,0,0,0,0,0,0,0,0,1.03_Accelerator Systems (AS),1.03.03_AS Superconducting Linac System (ScL),1.03.03.20_AS Superconducting Linac System Installation,1.03.03.20.72_HPRF - Waveguide Bundle Installation,AS_HPRF_CAP_9810_Penetration - Installation & Checkout - Set 9,RF Fab,,SLAC,Labor
81480,1.03,1.03.03,1.03.03.20,1.03.03.20.72,1.03.03.20.72,HPRF - Waveguide Bundle Installation,AS_HPRF_CAP_9800,Penetration - Installation & Checkout - Set 8,3.0,4.0,4.0,4.0,04-04-25,04-08-25,"AS_HPRF_CAP_9790: FS, AS_HPRF_CAP_9480: FS",AS_HPRF_CAP_9810: FS,SLAC,0%,52198.52198_METSMANF (METSD Manufacturing),52198_METSMANF (METSD Manufacturing),Labor,0.0d,3.0,3.0,At Completion Units,4/4/2025,4/8/2025,0,0,0,0,0,0,0,0,0,0,1.03_Accelerator Systems (AS),1.03.03_AS Superconducting Linac System (ScL),1.03.03.20_AS Superconducting Linac System Installation,1.03.03.20.72_HPRF - Waveguide Bundle Installation,AS_HPRF_CAP_9800_Penetration - Installation & Checkout - Set 8,Manufacturing,,SLAC,Labor
81481,1.03,1.03.03,1.03.03.20,1.03.03.20.72,1.03.03.20.72,HPRF - Waveguide Bundle Installation,AS_HPRF_CAP_9800,Penetration - Installation & Checkout - Set 8,3.0,9.0,9.0,9.0,04-04-25,04-08-25,"AS_HPRF_CAP_9790: FS, AS_HPRF_CAP_9480: FS",AS_HPRF_CAP_9810: FS,SLAC,0%,52152.52152_FAC Fleet,52152_FAC Fleet,Labor,0.0d,3.0,3.0,At Completion Units,4/4/2025,4/8/2025,0,0,0,0,0,0,0,0,0,0,1.03_Accelerator Systems (AS),1.03.03_AS Superconducting Linac System (ScL),1.03.03.20_AS Superconducting Linac System Installation,1.03.03.20.72_HPRF - Waveguide Bundle Installation,AS_HPRF_CAP_9800_Penetration - Installation & Checkout - Set 8,Support System,,SLAC,Labor
81482,1.03,1.03.03,1.03.03.20,1.03.03.20.72,1.03.03.20.72,HPRF - Waveguide Bundle Installation,AS_HPRF_CAP_9800,Penetration - Installation & Checkout - Set 8,3.0,20.0,20.0,20.0,04-04-25,04-08-25,"AS_HPRF_CAP_9790: FS, AS_HPRF_CAP_9480: FS",AS_HPRF_CAP_9810: FS,SLAC,0%,52178.52178_RF Vacuum Tube Fab,52178_RF Vacuum Tube Fab,Labor,0.0d,3.0,3.0,At Completion Units,4/4/2025,4/8/2025,0,0,0,0,0,0,0,0,0,0,1.03_Accelerator Systems (AS),1.03.03_AS Superconducting Linac System (ScL),1.03.03.20_AS Superconducting Linac System Installation,1.03.03.20.72_HPRF - Waveguide Bundle Installation,AS_HPRF_CAP_9800_Penetration - Installation & Checkout - Set 8,RF Fab,,SLAC,Labor
81483,1.03,1.03.03,1.03.03.20,1.03.03.20.72,1.03.03.20.72,HPRF - Waveguide Bundle Installation,AS_HPRF_CAP_9790,Penetration - Installation & Checkout - Set 7,3.0,4.0,4.0,4.0,04-01-25,04-03-25,"AS_HPRF_CAP_9780: FS, AS_HPRF_CAP_9470: FS, AS_M4_1010: FS",AS_HPRF_CAP_9800: FS,SLAC,0%,52198.52198_METSMANF (METSD Manufacturing),52198_METSMANF (METSD Manufacturing),Labor,0.0d,3.0,3.0,At Completion Units,4/1/2025,4/3/2025,0,0,0,0,0,0,0,0,0,0,1.03_Accelerator Systems (AS),1.03.03_AS Superconducting Linac System (ScL),1.03.03.20_AS Superconducting Linac System Installation,1.03.03.20.72_HPRF - Waveguide Bundle Installation,AS_HPRF_CAP_9790_Penetration - Installation & Checkout - Set 7,Manufacturing,,SLAC,Labor
81484,1.03,1.03.03,1.03.03.20,1.03.03.20.72,1.03.03.20.72,HPRF - Waveguide Bundle Installation,AS_HPRF_CAP_9790,Penetration - Installation & Checkout - Set 7,3.0,9.0,9.0,9.0,04-01-25,04-03-25,"AS_HPRF_CAP_9780: FS, AS_HPRF_CAP_9470: FS, AS_M4_1010: FS",AS_HPRF_CAP_9800: FS,SLAC,0%,52152.52152_FAC Fleet,52152_FAC Fleet,Labor,0.0d,3.0,3.0,At Completion Units,4/1/2025,4/3/2025,0,0,0,0,0,0,0,0,0,0,1.03_Accelerator Systems (AS),1.03.03_AS Superconducting Linac System (ScL),1.03.03.20_AS Superconducting Linac System Installation,1.03.03.20.72_HPRF - Waveguide Bundle Installation,AS_HPRF_CAP_9790_Penetration - Installation & Checkout - Set 7,Support System,,SLAC,Labor
81485,1.03,1.03.03,1.03.03.20,1.03.03.20.72,1.03.03.20.72,HPRF - Waveguide Bundle Installation,AS_HPRF_CAP_9790,Penetration - Installation & Checkout - Set 7,3.0,20.0,20.0,20.0,04-01-25,04-03-25,"AS_HPRF_CAP_9780: FS, AS_HPRF_CAP_9470: FS, AS_M4_1010: FS",AS_HPRF_CAP_9800: FS,SLAC,0%,52178.52178_RF Vacuum Tube Fab,52178_RF Vacuum Tube Fab,Labor,0.0d,3.0,3.0,At Completion Units,4/1/2025,4/3/2025,0,0,0,0,0,0,0,0,0,0,1.03_Accelerator Systems (AS),1.03.03_AS Superconducting Linac System (ScL),1.03.03.20_AS Superconducting Linac System Installation,1.03.03.20.72_HPRF - Waveguide Bundle Installation,AS_HPRF_CAP_9790_Penetration - Installation & Checkout - Set 7,RF Fab,,SLAC,Labor
81486,1.03,1.03.03,1.03.03.20,1.03.03.20.72,1.03.03.20.72,HPRF - Waveguide Bundle Installation,AS_HPRF_CAP_9780,Penetration - Installation & Checkout - Set 6,3.0,4.0,4.0,4.0,09-30-24,10-02-24,"AS_HPRF_CAP_9770: FS, AS_HPRF_CAP_9460: FS",AS_HPRF_CAP_9790: FS,SLAC,0%,52198.52198_METSMANF (METSD Manufacturing),52198_METSMANF (METSD Manufacturing),Labor,0.0d,3.0,3.0,At Completion Units,9/18/2024,9/20/2024,0,0,0,0,0,0,0,0,0,0,1.03_Accelerator Systems (AS),1.03.03_AS Superconducting Linac System (ScL),1.03.03.20_AS Superconducting Linac System Installation,1.03.03.20.72_HPRF - Waveguide Bundle Installation,AS_HPRF_CAP_9780_Penetration - Installation & Checkout - Set 6,Manufacturing,,SLAC,Labor
81487,1.03,1.03.03,1.03.03.20,1.03.03.20.72,1.03.03.20.72,HPRF - Waveguide Bundle Installation,AS_HPRF_CAP_9780,Penetration - Installation & Checkout - Set 6,3.0,9.0,9.0,9.0,09-30-24,10-02-24,"AS_HPRF_CAP_9770: FS, AS_HPRF_CAP_9460: FS",AS_HPRF_CAP_9790: FS,SLAC,0%,52152.52152_FAC Fleet,52152_FAC Fleet,Labor,0.0d,3.0,3.0,At Completion Units,9/18/2024,9/20/2024,0,0,0,0,0,0,0,0,0,0,1.03_Accelerator Systems (AS),1.03.03_AS Superconducting Linac System (ScL),1.03.03.20_AS Superconducting Linac System Installation,1.03.03.20.72_HPRF - Waveguide Bundle Installation,AS_HPRF_CAP_9780_Penetration - Installation & Checkout - Set 6,Support System,,SLAC,Labor
81488,1.03,1.03.03,1.03.03.20,1.03.03.20.72,1.03.03.20.72,HPRF - Waveguide Bundle Installation,AS_HPRF_CAP_9780,Penetration - Installation & Checkout - Set 6,3.0,20.0,20.0,20.0,09-30-24,10-02-24,"AS_HPRF_CAP_9770: FS, AS_HPRF_CAP_9460: FS",AS_HPRF_CAP_9790: FS,SLAC,0%,52178.52178_RF Vacuum Tube Fab,52178_RF Vacuum Tube Fab,Labor,0.0d,3.0,3.0,At Completion Units,9/18/2024,9/20/2024,0,0,0,0,0,0,0,0,0,0,1.03_Accelerator Systems (AS),1.03.03_AS Superconducting Linac System (ScL),1.03.03.20_AS Superconducting Linac System Installation,1.03.03.20.72_HPRF - Waveguide Bundle Installation,AS_HPRF_CAP_9780_Penetration - Installation & Checkout - Set 6,RF Fab,,SLAC,Labor
81489,1.03,1.03.03,1.03.03.20,1.03.03.20.72,1.03.03.20.72,HPRF - Waveguide Bundle Installation,AS_HPRF_CAP_9770,Penetration - Installation & Checkout - Set 5,3.0,4.0,4.0,4.0,09-25-24,09-27-24,"AS_HPRF_CAP_9690: FS, AS_HPRF_CAP_9450: FS",AS_HPRF_CAP_9780: FS,SLAC,0%,52198.52198_METSMANF (METSD Manufacturing),52198_METSMANF (METSD Manufacturing),Labor,0.0d,3.0,3.0,At Completion Units,9/13/2024,9/17/2024,0,0,0,0,0,0,0,0,0,0,1.03_Accelerator Systems (AS),1.03.03_AS Superconducting Linac System (ScL),1.03.03.20_AS Superconducting Linac System Installation,1.03.03.20.72_HPRF - Waveguide Bundle Installation,AS_HPRF_CAP_9770_Penetration - Installation & Checkout - Set 5,Manufacturing,,SLAC,Labor
81490,1.03,1.03.03,1.03.03.20,1.03.03.20.72,1.03.03.20.72,HPRF - Waveguide Bundle Installation,AS_HPRF_CAP_9770,Penetration - Installation & Checkout - Set 5,3.0,9.0,9.0,9.0,09-25-24,09-27-24,"AS_HPRF_CAP_9690: FS, AS_HPRF_CAP_9450: FS",AS_HPRF_CAP_9780: FS,SLAC,0%,52152.52152_FAC Fleet,52152_FAC Fleet,Labor,0.0d,3.0,3.0,At Completion Units,9/13/2024,9/17/2024,0,0,0,0,0,0,0,0,0,0,1.03_Accelerator Systems (AS),1.03.03_AS Superconducting Linac System (ScL),1.03.03.20_AS Superconducting Linac System Installation,1.03.03.20.72_HPRF - Waveguide Bundle Installation,AS_HPRF_CAP_9770_Penetration - Installation & Checkout - Set 5,Support System,,SLAC,Labor
81491,1.03,1.03.03,1.03.03.20,1.03.03.20.72,1.03.03.20.72,HPRF - Waveguide Bundle Installation,AS_HPRF_CAP_9770,Penetration - Installation & Checkout - Set 5,3.0,20.0,20.0,20.0,09-25-24,09-27-24,"AS_HPRF_CAP_9690: FS, AS_HPRF_CAP_9450: FS",AS_HPRF_CAP_9780: FS,SLAC,0%,52178.52178_RF Vacuum Tube Fab,52178_RF Vacuum Tube Fab,Labor,0.0d,3.0,3.0,At Completion Units,9/13/2024,9/17/2024,0,0,0,0,0,0,0,0,0,0,1.03_Accelerator Systems (AS),1.03.03_AS Superconducting Linac System (ScL),1.03.03.20_AS Superconducting Linac System Installation,1.03.03.20.72_HPRF - Waveguide Bundle Installation,AS_HPRF_CAP_9770_Penetration - Installation & Checkout - Set 5,RF Fab,,SLAC,Labor
81492,1.03,1.03.03,1.03.03.20,1.03.03.20.72,1.03.03.20.72,HPRF - Waveguide Bundle Installation,AS_HPRF_CAP_9690,Penetration - Installation & Checkout - Set 4,5.0,4.0,4.0,4.0,09-18-24,09-24-24,"AS_HPRF_CAP_9680: FS, AS_HPRF_CAP_9440: FS",AS_HPRF_CAP_9770: FS,SLAC,0%,52198.52198_METSMANF (METSD Manufacturing),52198_METSMANF (METSD Manufacturing),Labor,0.0d,5.0,5.0,At Completion Units,9/6/2024,9/12/2024,0,0,0,0,0,0,0,0,0,0,1.03_Accelerator Systems (AS),1.03.03_AS Superconducting Linac System (ScL),1.03.03.20_AS Superconducting Linac System Installation,1.03.03.20.72_HPRF - Waveguide Bundle Installation,AS_HPRF_CAP_9690_Penetration - Installation & Checkout - Set 4,Manufacturing,,SLAC,Labor
81493,1.03,1.03.03,1.03.03.20,1.03.03.20.72,1.03.03.20.72,HPRF - Waveguide Bundle Installation,AS_HPRF_CAP_9690,Penetration - Installation & Checkout - Set 4,5.0,9.0,9.0,9.0,09-18-24,09-24-24,"AS_HPRF_CAP_9680: FS, AS_HPRF_CAP_9440: FS",AS_HPRF_CAP_9770: FS,SLAC,0%,52152.52152_FAC Fleet,52152_FAC Fleet,Labor,0.0d,5.0,5.0,At Completion Units,9/6/2024,9/12/2024,0,0,0,0,0,0,0,0,0,0,1.03_Accelerator Systems (AS),1.03.03_AS Superconducting Linac System (ScL),1.03.03.20_AS Superconducting Linac System Installation,1.03.03.20.72_HPRF - Waveguide Bundle Installation,AS_HPRF_CAP_9690_Penetration - Installation & Checkout - Set 4,Support System,,SLAC,Labor
81494,1.03,1.03.03,1.03.03.20,1.03.03.20.72,1.03.03.20.72,HPRF - Waveguide Bundle Installation,AS_HPRF_CAP_9690,Penetration - Installation & Checkout - Set 4,5.0,20.0,20.0,20.0,09-18-24,09-24-24,"AS_HPRF_CAP_9680: FS, AS_HPRF_CAP_9440: FS",AS_HPRF_CAP_9770: FS,SLAC,0%,52178.52178_RF Vacuum Tube Fab,52178_RF Vacuum Tube Fab,Labor,0.0d,5.0,5.0,At Completion Units,9/6/2024,9/12/2024,0,0,0,0,0,0,0,0,0,0,1.03_Accelerator Systems (AS),1.03.03_AS Superconducting Linac System (ScL),1.03.03.20_AS Superconducting Linac System Installation,1.03.03.20.72_HPRF - Waveguide Bundle Installation,AS_HPRF_CAP_9690_Penetration - Installation & Checkout - Set 4,RF Fab,,SLAC,Labor
81495,1.03,1.03.03,1.03.03.20,1.03.03.20.72,1.03.03.20.72,HPRF - Waveguide Bundle Installation,AS_HPRF_CAP_9680,Penetration - Installation & Checkout - Set 3,5.0,4.0,4.0,4.0,09-11-24,09-17-24,"AS_HPRF_CAP_9670: FS, AS_HPRF_CAP_9430: FS",AS_HPRF_CAP_9690: FS,SLAC,0%,52198.52198_METSMANF (METSD Manufacturing),52198_METSMANF (METSD Manufacturing),Labor,0.0d,5.0,5.0,At Completion Units,8/29/2024,9/5/2024,0,0,0,0,0,0,0,0,0,0,1.03_Accelerator Systems (AS),1.03.03_AS Superconducting Linac System (ScL),1.03.03.20_AS Superconducting Linac System Installation,1.03.03.20.72_HPRF - Waveguide Bundle Installation,AS_HPRF_CAP_9680_Penetration - Installation & Checkout - Set 3,Manufacturing,,SLAC,Labor
81496,1.03,1.03.03,1.03.03.20,1.03.03.20.72,1.03.03.20.72,HPRF - Waveguide Bundle Installation,AS_HPRF_CAP_9680,Penetration - Installation & Checkout - Set 3,5.0,9.0,9.0,9.0,09-11-24,09-17-24,"AS_HPRF_CAP_9670: FS, AS_HPRF_CAP_9430: FS",AS_HPRF_CAP_9690: FS,SLAC,0%,52152.52152_FAC Fleet,52152_FAC Fleet,Labor,0.0d,5.0,5.0,At Completion Units,8/29/2024,9/5/2024,0,0,0,0,0,0,0,0,0,0,1.03_Accelerator Systems (AS),1.03.03_AS Superconducting Linac System (ScL),1.03.03.20_AS Superconducting Linac System Installation,1.03.03.20.72_HPRF - Waveguide Bundle Installation,AS_HPRF_CAP_9680_Penetration - Installation & Checkout - Set 3,Support System,,SLAC,Labor
81497,1.03,1.03.03,1.03.03.20,1.03.03.20.72,1.03.03.20.72,HPRF - Waveguide Bundle Installation,AS_HPRF_CAP_9680,Penetration - Installation & Checkout - Set 3,5.0,20.0,20.0,20.0,09-11-24,09-17-24,"AS_HPRF_CAP_9670: FS, AS_HPRF_CAP_9430: FS",AS_HPRF_CAP_9690: FS,SLAC,0%,52178.52178_RF Vacuum Tube Fab,52178_RF Vacuum Tube Fab,Labor,0.0d,5.0,5.0,At Completion Units,8/29/2024,9/5/2024,0,0,0,0,0,0,0,0,0,0,1.03_Accelerator Systems (AS),1.03.03_AS Superconducting Linac System (ScL),1.03.03.20_AS Superconducting Linac System Installation,1.03.03.20.72_HPRF - Waveguide Bundle Installation,AS_HPRF_CAP_9680_Penetration - Installation & Checkout - Set 3,RF Fab,,SLAC,Labor
81498,1.03,1.03.03,1.03.03.20,1.03.03.20.72,1.03.03.20.72,HPRF - Waveguide Bundle Installation,AS_HPRF_CAP_9670,Penetration - Installation & Checkout - Set 2,5.0,4.0,4.0,4.0,09-04-24,09-10-24,"AS_HPRF_CAP_9660: FS, AS_HPRF_CAP_9420: FS",AS_HPRF_CAP_9680: FS,SLAC,0%,52198.52198_METSMANF (METSD Manufacturing),52198_METSMANF (METSD Manufacturing),Labor,0.0d,5.0,5.0,At Completion Units,8/22/2024,8/28/2024,0,0,0,0,0,0,0,0,0,0,1.03_Accelerator Systems (AS),1.03.03_AS Superconducting Linac System (ScL),1.03.03.20_AS Superconducting Linac System Installation,1.03.03.20.72_HPRF - Waveguide Bundle Installation,AS_HPRF_CAP_9670_Penetration - Installation & Checkout - Set 2,Manufacturing,,SLAC,Labor
81499,1.03,1.03.03,1.03.03.20,1.03.03.20.72,1.03.03.20.72,HPRF - Waveguide Bundle Installation,AS_HPRF_CAP_9670,Penetration - Installation & Checkout - Set 2,5.0,9.0,9.0,9.0,09-04-24,09-10-24,"AS_HPRF_CAP_9660: FS, AS_HPRF_CAP_9420: FS",AS_HPRF_CAP_9680: FS,SLAC,0%,52152.52152_FAC Fleet,52152_FAC Fleet,Labor,0.0d,5.0,5.0,At Completion Units,8/22/2024,8/28/2024,0,0,0,0,0,0,0,0,0,0,1.03_Accelerator Systems (AS),1.03.03_AS Superconducting Linac System (ScL),1.03.03.20_AS Superconducting Linac System Installation,1.03.03.20.72_HPRF - Waveguide Bundle Installation,AS_HPRF_CAP_9670_Penetration - Installation & Checkout - Set 2,Support System,,SLAC,Labor
81500,1.03,1.03.03,1.03.03.20,1.03.03.20.72,1.03.03.20.72,HPRF - Waveguide Bundle Installation,AS_HPRF_CAP_9670,Penetration - Installation & Checkout - Set 2,5.0,20.0,20.0,20.0,09-04-24,09-10-24,"AS_HPRF_CAP_9660: FS, AS_HPRF_CAP_9420: FS",AS_HPRF_CAP_9680: FS,SLAC,0%,52178.52178_RF Vacuum Tube Fab,52178_RF Vacuum Tube Fab,Labor,0.0d,5.0,5.0,At Completion Units,8/22/2024,8/28/2024,0,0,0,0,0,0,0,0,0,0,1.03_Accelerator Systems (AS),1.03.03_AS Superconducting Linac System (ScL),1.03.03.20_AS Superconducting Linac System Installation,1.03.03.20.72_HPRF - Waveguide Bundle Installation,AS_HPRF_CAP_9670_Penetration - Installation & Checkout - Set 2,RF Fab,,SLAC,Labor
81501,1.03,1.03.03,1.03.03.20,1.03.03.20.72,1.03.03.20.72,HPRF - Waveguide Bundle Installation,AS_HPRF_CAP_9660,Penetration - Installation & Checkout - Set 1,5.0,4.0,4.0,4.0,08-27-24,09-03-24,"AS_HPRF_CAP_9650: FS, AS_HPRF_CAP_9410: FS","AS_HPRF_CAP_9670: FS, AS_HPRF_WGTU_9200: FS",SLAC,0%,52198.52198_METSMANF (METSD Manufacturing),52198_METSMANF (METSD Manufacturing),Labor,0.0d,5.0,5.0,At Completion Units,8/15/2024,8/21/2024,0,0,0,0,0,0,0,0,0,0,1.03_Accelerator Systems (AS),1.03.03_AS Superconducting Linac System (ScL),1.03.03.20_AS Superconducting Linac System Installation,1.03.03.20.72_HPRF - Waveguide Bundle Installation,AS_HPRF_CAP_9660_Penetration - Installation & Checkout - Set 1,Manufacturing,,SLAC,Labor
81502,1.03,1.03.03,1.03.03.20,1.03.03.20.72,1.03.03.20.72,HPRF - Waveguide Bundle Installation,AS_HPRF_CAP_9660,Penetration - Installation & Checkout - Set 1,5.0,9.0,9.0,9.0,08-27-24,09-03-24,"AS_HPRF_CAP_9650: FS, AS_HPRF_CAP_9410: FS","AS_HPRF_CAP_9670: FS, AS_HPRF_WGTU_9200: FS",SLAC,0%,52152.52152_FAC Fleet,52152_FAC Fleet,Labor,0.0d,5.0,5.0,At Completion Units,8/15/2024,8/21/2024,0,0,0,0,0,0,0,0,0,0,1.03_Accelerator Systems (AS),1.03.03_AS Superconducting Linac System (ScL),1.03.03.20_AS Superconducting Linac System Installation,1.03.03.20.72_HPRF - Waveguide Bundle Installation,AS_HPRF_CAP_9660_Penetration - Installation & Checkout - Set 1,Support System,,SLAC,Labor
81503,1.03,1.03.03,1.03.03.20,1.03.03.20.72,1.03.03.20.72,HPRF - Waveguide Bundle Installation,AS_HPRF_CAP_9660,Penetration - Installation & Checkout - Set 1,5.0,20.0,20.0,20.0,08-27-24,09-03-24,"AS_HPRF_CAP_9650: FS, AS_HPRF_CAP_9410: FS","AS_HPRF_CAP_9670: FS, AS_HPRF_WGTU_9200: FS",SLAC,0%,52178.52178_RF Vacuum Tube Fab,52178_RF Vacuum Tube Fab,Labor,0.0d,5.0,5.0,At Completion Units,8/15/2024,8/21/2024,0,0,0,0,0,0,0,0,0,0,1.03_Accelerator Systems (AS),1.03.03_AS Superconducting Linac System (ScL),1.03.03.20_AS Superconducting Linac System Installation,1.03.03.20.72_HPRF - Waveguide Bundle Installation,AS_HPRF_CAP_9660_Penetration - Installation & Checkout - Set 1,RF Fab,,SLAC,Labor
81504,1.03,1.03.03,1.03.03.20,1.03.03.20.72,1.03.03.20.72,HPRF - Waveguide Bundle Installation,AS_HPRF_CAP_9650,Penetration - Installation & Checkout - Set 0 (Moved one),10.0,4.0,4.0,4.0,08-13-24,08-26-24,"AS_HPRF_CAP_9400: FS, AS_HPRF_CAP_9090: SS, AS_M4_1030: FS",AS_HPRF_CAP_9660: FS,SLAC,0%,52198.52198_METSMANF (METSD Manufacturing),52198_METSMANF (METSD Manufacturing),Labor,0.0d,10.0,10.0,At Completion Units,8/1/2024,8/14/2024,0,0,0,0,0,0,0,0,0,0,1.03_Accelerator Systems (AS),1.03.03_AS Superconducting Linac System (ScL),1.03.03.20_AS Superconducting Linac System Installation,1.03.03.20.72_HPRF - Waveguide Bundle Installation,AS_HPRF_CAP_9650_Penetration - Installation & Checkout - Set 0 (Moved one),Manufacturing,,SLAC,Labor
81505,1.03,1.03.03,1.03.03.20,1.03.03.20.72,1.03.03.20.72,HPRF - Waveguide Bundle Installation,AS_HPRF_CAP_9650,Penetration - Installation & Checkout - Set 0 (Moved one),10.0,9.0,9.0,9.0,08-13-24,08-26-24,"AS_HPRF_CAP_9400: FS, AS_HPRF_CAP_9090: SS, AS_M4_1030: FS",AS_HPRF_CAP_9660: FS,SLAC,0%,52152.52152_FAC Fleet,52152_FAC Fleet,Labor,0.0d,10.0,10.0,At Completion Units,8/1/2024,8/14/2024,0,0,0,0,0,0,0,0,0,0,1.03_Accelerator Systems (AS),1.03.03_AS Superconducting Linac System (ScL),1.03.03.20_AS Superconducting Linac System Installation,1.03.03.20.72_HPRF - Waveguide Bundle Installation,AS_HPRF_CAP_9650_Penetration - Installation & Checkout - Set 0 (Moved one),Support System,,SLAC,Labor
81506,1.03,1.03.03,1.03.03.20,1.03.03.20.72,1.03.03.20.72,HPRF - Waveguide Bundle Installation,AS_HPRF_CAP_9650,Penetration - Installation & Checkout - Set 0 (Moved one),10.0,20.0,20.0,20.0,08-13-24,08-26-24,"AS_HPRF_CAP_9400: FS, AS_HPRF_CAP_9090: SS, AS_M4_1030: FS",AS_HPRF_CAP_9660: FS,SLAC,0%,52178.52178_RF Vacuum Tube Fab,52178_RF Vacuum Tube Fab,Labor,0.0d,10.0,10.0,At Completion Units,8/1/2024,8/14/2024,0,0,0,0,0,0,0,0,0,0,1.03_Accelerator Systems (AS),1.03.03_AS Superconducting Linac System (ScL),1.03.03.20_AS Superconducting Linac System Installation,1.03.03.20.72_HPRF - Waveguide Bundle Installation,AS_HPRF_CAP_9650_Penetration - Installation & Checkout - Set 0 (Moved one),RF Fab,,SLAC,Labor
81826,1.03,1.03.03,1.03.03.20,1.03.03.20.73,1.03.03.20.73,HPRF - Waveguide Accelerator Housing Ceiling Preparation (PP),AS_HPRF_WGTU_9200,Waveguides in Accelerator Housing Ready for Installation - Set 0 Thru Set 23,96.0,1252.0,1252.0,1252.0,09-29-25,03-02-26,"AS_HPRF_CAP_9660: FS, AS_HPRF_WAV_6230: FS, AS_HPRF_CAP_9310: FS, AS_HPRF_ST_9070: FS",AS_HPRF_WGTU_9100: SS,SLAC,0%,52178.52178_RF Vacuum Tube Fab,52178_RF Vacuum Tube Fab,Labor,0.0d,96.0,96.0,At Completion Units,8/5/2025,12/19/2025,0,0,0,0,0,0,0,0,0,0,1.03_Accelerator Systems (AS),1.03.03_AS Superconducting Linac System (ScL),1.03.03.20_AS Superconducting Linac System Installation,1.03.03.20.73_HPRF - Waveguide Accelerator Housing Ceiling Preparation (PP),AS_HPRF_WGTU_9200_Waveguides in Accelerator Housing Ready for Installation - Set 0 Thru Set 23,RF Fab,,SLAC,Labor
82146,1.03,1.03.03,1.03.03.20,1.03.03.20.74,1.03.03.20.74,HPRF - Waveguide Accelerator Housing Ceiling Installation (PP),AS_HPRF_WGTU_9100,Waveguide in Accelerator Housing Installation & Checking - Set 0 Thru Set 23,192.0,2266.0,2266.0,2266.0,09-29-25,07-16-26,"AS_HPRF_WGTU_9200: SS, AS_HPRF_WGTU_9000: FS",AS_HPRF_WGCM_9900: FF,SLAC,0%,52178.52178_RF Vacuum Tube Fab,52178_RF Vacuum Tube Fab,Labor,0.0d,192.0,192.0,At Completion Units,8/5/2025,5/20/2026,0,0,0,0,0,0,0,0,0,0,1.03_Accelerator Systems (AS),1.03.03_AS Superconducting Linac System (ScL),1.03.03.20_AS Superconducting Linac System Installation,1.03.03.20.74_HPRF - Waveguide Accelerator Housing Ceiling Installation (PP),AS_HPRF_WGTU_9100_Waveguide in Accelerator Housing Installation & Checking - Set 0 Thru Set 23,RF Fab,,SLAC,Labor
82466,1.03,1.03.03,1.03.03.20,1.03.03.20.75,1.03.03.20.75,HPRF - Waveguide Klystron Gallery Preparation,AS_HPRF_WGKG_9330,Prepare Waveguide Klystron Gallery - Set 23,8.0,17.5,17.5,17.5,07-09-25,07-18-25,AS_HPRF_WGKG_9320: FS,AS_HPRF_WGKG_9730: FS,SLAC,0%,52198.52198_METSMANF (METSD Manufacturing),52198_METSMANF (METSD Manufacturing),Labor,0.0d,8.0,8.0,At Completion Units,7/9/2025,7/18/2025,0,0,0,0,0,0,0,0,0,0,1.03_Accelerator Systems (AS),1.03.03_AS Superconducting Linac System (ScL),1.03.03.20_AS Superconducting Linac System Installation,1.03.03.20.75_HPRF - Waveguide Klystron Gallery Preparation,AS_HPRF_WGKG_9330_Prepare Waveguide Klystron Gallery - Set 23,Manufacturing,,SLAC,Labor
82467,1.03,1.03.03,1.03.03.20,1.03.03.20.75,1.03.03.20.75,HPRF - Waveguide Klystron Gallery Preparation,AS_HPRF_WGKG_9330,Prepare Waveguide Klystron Gallery - Set 23,8.0,65.0,65.0,65.0,07-09-25,07-18-25,AS_HPRF_WGKG_9320: FS,AS_HPRF_WGKG_9730: FS,SLAC,0%,52178.52178_RF Vacuum Tube Fab,52178_RF Vacuum Tube Fab,Labor,0.0d,8.0,8.0,At Completion Units,7/9/2025,7/18/2025,0,0,0,0,0,0,0,0,0,0,1.03_Accelerator Systems (AS),1.03.03_AS Superconducting Linac System (ScL),1.03.03.20_AS Superconducting Linac System Installation,1.03.03.20.75_HPRF - Waveguide Klystron Gallery Preparation,AS_HPRF_WGKG_9330_Prepare Waveguide Klystron Gallery - Set 23,RF Fab,,SLAC,Labor
82468,1.03,1.03.03,1.03.03.20,1.03.03.20.75,1.03.03.20.75,HPRF - Waveguide Klystron Gallery Preparation,AS_HPRF_WGKG_9320,Prepare Waveguide Klystron Gallery - Set 22,8.0,17.5,17.5,17.5,06-26-25,07-08-25,AS_HPRF_WGKG_9310: FS,AS_HPRF_WGKG_9330: FS,SLAC,0%,52198.52198_METSMANF (METSD Manufacturing),52198_METSMANF (METSD Manufacturing),Labor,0.0d,8.0,8.0,At Completion Units,6/26/2025,7/8/2025,0,0,0,0,0,0,0,0,0,0,1.03_Accelerator Systems (AS),1.03.03_AS Superconducting Linac System (ScL),1.03.03.20_AS Superconducting Linac System Installation,1.03.03.20.75_HPRF - Waveguide Klystron Gallery Preparation,AS_HPRF_WGKG_9320_Prepare Waveguide Klystron Gallery - Set 22,Manufacturing,,SLAC,Labor
82469,1.03,1.03.03,1.03.03.20,1.03.03.20.75,1.03.03.20.75,HPRF - Waveguide Klystron Gallery Preparation,AS_HPRF_WGKG_9320,Prepare Waveguide Klystron Gallery - Set 22,8.0,65.0,65.0,65.0,06-26-25,07-08-25,AS_HPRF_WGKG_9310: FS,AS_HPRF_WGKG_9330: FS,SLAC,0%,52178.52178_RF Vacuum Tube Fab,52178_RF Vacuum Tube Fab,Labor,0.0d,8.0,8.0,At Completion Units,6/26/2025,7/8/2025,0,0,0,0,0,0,0,0,0,0,1.03_Accelerator Systems (AS),1.03.03_AS Superconducting Linac System (ScL),1.03.03.20_AS Superconducting Linac System Installation,1.03.03.20.75_HPRF - Waveguide Klystron Gallery Preparation,AS_HPRF_WGKG_9320_Prepare Waveguide Klystron Gallery - Set 22,RF Fab,,SLAC,Labor
82470,1.03,1.03.03,1.03.03.20,1.03.03.20.75,1.03.03.20.75,HPRF - Waveguide Klystron Gallery Preparation,AS_HPRF_WGKG_9310,Prepare Waveguide Klystron Gallery - Set 21,8.0,17.5,17.5,17.5,06-16-25,06-25-25,AS_HPRF_WGKG_9300: FS,AS_HPRF_WGKG_9320: FS,SLAC,0%,52198.52198_METSMANF (METSD Manufacturing),52198_METSMANF (METSD Manufacturing),Labor,0.0d,8.0,8.0,At Completion Units,6/16/2025,6/25/2025,0,0,0,0,0,0,0,0,0,0,1.03_Accelerator Systems (AS),1.03.03_AS Superconducting Linac System (ScL),1.03.03.20_AS Superconducting Linac System Installation,1.03.03.20.75_HPRF - Waveguide Klystron Gallery Preparation,AS_HPRF_WGKG_9310_Prepare Waveguide Klystron Gallery - Set 21,Manufacturing,,SLAC,Labor
82471,1.03,1.03.03,1.03.03.20,1.03.03.20.75,1.03.03.20.75,HPRF - Waveguide Klystron Gallery Preparation,AS_HPRF_WGKG_9310,Prepare Waveguide Klystron Gallery - Set 21,8.0,65.0,65.0,65.0,06-16-25,06-25-25,AS_HPRF_WGKG_9300: FS,AS_HPRF_WGKG_9320: FS,SLAC,0%,52178.52178_RF Vacuum Tube Fab,52178_RF Vacuum Tube Fab,Labor,0.0d,8.0,8.0,At Completion Units,6/16/2025,6/25/2025,0,0,0,0,0,0,0,0,0,0,1.03_Accelerator Systems (AS),1.03.03_AS Superconducting Linac System (ScL),1.03.03.20_AS Superconducting Linac System Installation,1.03.03.20.75_HPRF - Waveguide Klystron Gallery Preparation,AS_HPRF_WGKG_9310_Prepare Waveguide Klystron Gallery - Set 21,RF Fab,,SLAC,Labor
82472,1.03,1.03.03,1.03.03.20,1.03.03.20.75,1.03.03.20.75,HPRF - Waveguide Klystron Gallery Preparation,AS_HPRF_WGKG_9300,Prepare Waveguide Klystron Gallery - Set 20,8.0,17.5,17.5,17.5,06-04-25,06-13-25,AS_HPRF_WGKG_9290: FS,AS_HPRF_WGKG_9310: FS,SLAC,0%,52198.52198_METSMANF (METSD Manufacturing),52198_METSMANF (METSD Manufacturing),Labor,0.0d,8.0,8.0,At Completion Units,6/4/2025,6/13/2025,0,0,0,0,0,0,0,0,0,0,1.03_Accelerator Systems (AS),1.03.03_AS Superconducting Linac System (ScL),1.03.03.20_AS Superconducting Linac System Installation,1.03.03.20.75_HPRF - Waveguide Klystron Gallery Preparation,AS_HPRF_WGKG_9300_Prepare Waveguide Klystron Gallery - Set 20,Manufacturing,,SLAC,Labor
82473,1.03,1.03.03,1.03.03.20,1.03.03.20.75,1.03.03.20.75,HPRF - Waveguide Klystron Gallery Preparation,AS_HPRF_WGKG_9300,Prepare Waveguide Klystron Gallery - Set 20,8.0,65.0,65.0,65.0,06-04-25,06-13-25,AS_HPRF_WGKG_9290: FS,AS_HPRF_WGKG_9310: FS,SLAC,0%,52178.52178_RF Vacuum Tube Fab,52178_RF Vacuum Tube Fab,Labor,0.0d,8.0,8.0,At Completion Units,6/4/2025,6/13/2025,0,0,0,0,0,0,0,0,0,0,1.03_Accelerator Systems (AS),1.03.03_AS Superconducting Linac System (ScL),1.03.03.20_AS Superconducting Linac System Installation,1.03.03.20.75_HPRF - Waveguide Klystron Gallery Preparation,AS_HPRF_WGKG_9300_Prepare Waveguide Klystron Gallery - Set 20,RF Fab,,SLAC,Labor
82474,1.03,1.03.03,1.03.03.20,1.03.03.20.75,1.03.03.20.75,HPRF - Waveguide Klystron Gallery Preparation,AS_HPRF_WGKG_9290,Prepare Waveguide Klystron Gallery - Set 19,8.0,17.5,17.5,17.5,05-22-25,06-03-25,AS_HPRF_WGKG_9280: FS,AS_HPRF_WGKG_9300: FS,SLAC,0%,52198.52198_METSMANF (METSD Manufacturing),52198_METSMANF (METSD Manufacturing),Labor,0.0d,8.0,8.0,At Completion Units,5/22/2025,6/3/2025,0,0,0,0,0,0,0,0,0,0,1.03_Accelerator Systems (AS),1.03.03_AS Superconducting Linac System (ScL),1.03.03.20_AS Superconducting Linac System Installation,1.03.03.20.75_HPRF - Waveguide Klystron Gallery Preparation,AS_HPRF_WGKG_9290_Prepare Waveguide Klystron Gallery - Set 19,Manufacturing,,SLAC,Labor
82475,1.03,1.03.03,1.03.03.20,1.03.03.20.75,1.03.03.20.75,HPRF - Waveguide Klystron Gallery Preparation,AS_HPRF_WGKG_9290,Prepare Waveguide Klystron Gallery - Set 19,8.0,65.0,65.0,65.0,05-22-25,06-03-25,AS_HPRF_WGKG_9280: FS,AS_HPRF_WGKG_9300: FS,SLAC,0%,52178.52178_RF Vacuum Tube Fab,52178_RF Vacuum Tube Fab,Labor,0.0d,8.0,8.0,At Completion Units,5/22/2025,6/3/2025,0,0,0,0,0,0,0,0,0,0,1.03_Accelerator Systems (AS),1.03.03_AS Superconducting Linac System (ScL),1.03.03.20_AS Superconducting Linac System Installation,1.03.03.20.75_HPRF - Waveguide Klystron Gallery Preparation,AS_HPRF_WGKG_9290_Prepare Waveguide Klystron Gallery - Set 19,RF Fab,,SLAC,Labor
82476,1.03,1.03.03,1.03.03.20,1.03.03.20.75,1.03.03.20.75,HPRF - Waveguide Klystron Gallery Preparation,AS_HPRF_WGKG_9280,Prepare Waveguide Klystron Gallery - Set 18,8.0,17.5,17.5,17.5,05-12-25,05-21-25,AS_HPRF_WGKG_9270: FS,AS_HPRF_WGKG_9290: FS,SLAC,0%,52198.52198_METSMANF (METSD Manufacturing),52198_METSMANF (METSD Manufacturing),Labor,0.0d,8.0,8.0,At Completion Units,5/12/2025,5/21/2025,0,0,0,0,0,0,0,0,0,0,1.03_Accelerator Systems (AS),1.03.03_AS Superconducting Linac System (ScL),1.03.03.20_AS Superconducting Linac System Installation,1.03.03.20.75_HPRF - Waveguide Klystron Gallery Preparation,AS_HPRF_WGKG_9280_Prepare Waveguide Klystron Gallery - Set 18,Manufacturing,,SLAC,Labor
82477,1.03,1.03.03,1.03.03.20,1.03.03.20.75,1.03.03.20.75,HPRF - Waveguide Klystron Gallery Preparation,AS_HPRF_WGKG_9280,Prepare Waveguide Klystron Gallery - Set 18,8.0,65.0,65.0,65.0,05-12-25,05-21-25,AS_HPRF_WGKG_9270: FS,AS_HPRF_WGKG_9290: FS,SLAC,0%,52178.52178_RF Vacuum Tube Fab,52178_RF Vacuum Tube Fab,Labor,0.0d,8.0,8.0,At Completion Units,5/12/2025,5/21/2025,0,0,0,0,0,0,0,0,0,0,1.03_Accelerator Systems (AS),1.03.03_AS Superconducting Linac System (ScL),1.03.03.20_AS Superconducting Linac System Installation,1.03.03.20.75_HPRF - Waveguide Klystron Gallery Preparation,AS_HPRF_WGKG_9280_Prepare Waveguide Klystron Gallery - Set 18,RF Fab,,SLAC,Labor
82478,1.03,1.03.03,1.03.03.20,1.03.03.20.75,1.03.03.20.75,HPRF - Waveguide Klystron Gallery Preparation,AS_HPRF_WGKG_9270,Prepare Waveguide Klystron Gallery - Set 17,8.0,17.5,17.5,17.5,04-30-25,05-09-25,AS_HPRF_WGKG_9260: FS,AS_HPRF_WGKG_9280: FS,SLAC,0%,52198.52198_METSMANF (METSD Manufacturing),52198_METSMANF (METSD Manufacturing),Labor,0.0d,8.0,8.0,At Completion Units,4/30/2025,5/9/2025,0,0,0,0,0,0,0,0,0,0,1.03_Accelerator Systems (AS),1.03.03_AS Superconducting Linac System (ScL),1.03.03.20_AS Superconducting Linac System Installation,1.03.03.20.75_HPRF - Waveguide Klystron Gallery Preparation,AS_HPRF_WGKG_9270_Prepare Waveguide Klystron Gallery - Set 17,Manufacturing,,SLAC,Labor
82479,1.03,1.03.03,1.03.03.20,1.03.03.20.75,1.03.03.20.75,HPRF - Waveguide Klystron Gallery Preparation,AS_HPRF_WGKG_9270,Prepare Waveguide Klystron Gallery - Set 17,8.0,65.0,65.0,65.0,04-30-25,05-09-25,AS_HPRF_WGKG_9260: FS,AS_HPRF_WGKG_9280: FS,SLAC,0%,52178.52178_RF Vacuum Tube Fab,52178_RF Vacuum Tube Fab,Labor,0.0d,8.0,8.0,At Completion Units,4/30/2025,5/9/2025,0,0,0,0,0,0,0,0,0,0,1.03_Accelerator Systems (AS),1.03.03_AS Superconducting Linac System (ScL),1.03.03.20_AS Superconducting Linac System Installation,1.03.03.20.75_HPRF - Waveguide Klystron Gallery Preparation,AS_HPRF_WGKG_9270_Prepare Waveguide Klystron Gallery - Set 17,RF Fab,,SLAC,Labor
82480,1.03,1.03.03,1.03.03.20,1.03.03.20.75,1.03.03.20.75,HPRF - Waveguide Klystron Gallery Preparation,AS_HPRF_WGKG_9260,Prepare Waveguide Klystron Gallery - Set 16,8.0,17.5,17.5,17.5,04-18-25,04-29-25,AS_HPRF_WGKG_9250: FS,AS_HPRF_WGKG_9270: FS,SLAC,0%,52198.52198_METSMANF (METSD Manufacturing),52198_METSMANF (METSD Manufacturing),Labor,0.0d,8.0,8.0,At Completion Units,4/18/2025,4/29/2025,0,0,0,0,0,0,0,0,0,0,1.03_Accelerator Systems (AS),1.03.03_AS Superconducting Linac System (ScL),1.03.03.20_AS Superconducting Linac System Installation,1.03.03.20.75_HPRF - Waveguide Klystron Gallery Preparation,AS_HPRF_WGKG_9260_Prepare Waveguide Klystron Gallery - Set 16,Manufacturing,,SLAC,Labor
82481,1.03,1.03.03,1.03.03.20,1.03.03.20.75,1.03.03.20.75,HPRF - Waveguide Klystron Gallery Preparation,AS_HPRF_WGKG_9260,Prepare Waveguide Klystron Gallery - Set 16,8.0,65.0,65.0,65.0,04-18-25,04-29-25,AS_HPRF_WGKG_9250: FS,AS_HPRF_WGKG_9270: FS,SLAC,0%,52178.52178_RF Vacuum Tube Fab,52178_RF Vacuum Tube Fab,Labor,0.0d,8.0,8.0,At Completion Units,4/18/2025,4/29/2025,0,0,0,0,0,0,0,0,0,0,1.03_Accelerator Systems (AS),1.03.03_AS Superconducting Linac System (ScL),1.03.03.20_AS Superconducting Linac System Installation,1.03.03.20.75_HPRF - Waveguide Klystron Gallery Preparation,AS_HPRF_WGKG_9260_Prepare Waveguide Klystron Gallery - Set 16,RF Fab,,SLAC,Labor
82482,1.03,1.03.03,1.03.03.20,1.03.03.20.75,1.03.03.20.75,HPRF - Waveguide Klystron Gallery Preparation,AS_HPRF_WGKG_9250,Prepare Waveguide Klystron Gallery - Set 15,8.0,17.5,17.5,17.5,04-08-25,04-17-25,AS_HPRF_WGKG_9240: FS,AS_HPRF_WGKG_9260: FS,SLAC,0%,52198.52198_METSMANF (METSD Manufacturing),52198_METSMANF (METSD Manufacturing),Labor,0.0d,8.0,8.0,At Completion Units,4/8/2025,4/17/2025,0,0,0,0,0,0,0,0,0,0,1.03_Accelerator Systems (AS),1.03.03_AS Superconducting Linac System (ScL),1.03.03.20_AS Superconducting Linac System Installation,1.03.03.20.75_HPRF - Waveguide Klystron Gallery Preparation,AS_HPRF_WGKG_9250_Prepare Waveguide Klystron Gallery - Set 15,Manufacturing,,SLAC,Labor
82483,1.03,1.03.03,1.03.03.20,1.03.03.20.75,1.03.03.20.75,HPRF - Waveguide Klystron Gallery Preparation,AS_HPRF_WGKG_9250,Prepare Waveguide Klystron Gallery - Set 15,8.0,65.0,65.0,65.0,04-08-25,04-17-25,AS_HPRF_WGKG_9240: FS,AS_HPRF_WGKG_9260: FS,SLAC,0%,52178.52178_RF Vacuum Tube Fab,52178_RF Vacuum Tube Fab,Labor,0.0d,8.0,8.0,At Completion Units,4/8/2025,4/17/2025,0,0,0,0,0,0,0,0,0,0,1.03_Accelerator Systems (AS),1.03.03_AS Superconducting Linac System (ScL),1.03.03.20_AS Superconducting Linac System Installation,1.03.03.20.75_HPRF - Waveguide Klystron Gallery Preparation,AS_HPRF_WGKG_9250_Prepare Waveguide Klystron Gallery - Set 15,RF Fab,,SLAC,Labor
82484,1.03,1.03.03,1.03.03.20,1.03.03.20.75,1.03.03.20.75,HPRF - Waveguide Klystron Gallery Preparation,AS_HPRF_WGKG_9240,Prepare Waveguide Klystron Gallery - Set 14,8.0,17.5,17.5,17.5,03-27-25,04-07-25,AS_HPRF_WGKG_9230: FS,AS_HPRF_WGKG_9250: FS,SLAC,0%,52198.52198_METSMANF (METSD Manufacturing),52198_METSMANF (METSD Manufacturing),Labor,0.0d,8.0,8.0,At Completion Units,3/27/2025,4/7/2025,0,0,0,0,0,0,0,0,0,0,1.03_Accelerator Systems (AS),1.03.03_AS Superconducting Linac System (ScL),1.03.03.20_AS Superconducting Linac System Installation,1.03.03.20.75_HPRF - Waveguide Klystron Gallery Preparation,AS_HPRF_WGKG_9240_Prepare Waveguide Klystron Gallery - Set 14,Manufacturing,,SLAC,Labor
82485,1.03,1.03.03,1.03.03.20,1.03.03.20.75,1.03.03.20.75,HPRF - Waveguide Klystron Gallery Preparation,AS_HPRF_WGKG_9240,Prepare Waveguide Klystron Gallery - Set 14,8.0,65.0,65.0,65.0,03-27-25,04-07-25,AS_HPRF_WGKG_9230: FS,AS_HPRF_WGKG_9250: FS,SLAC,0%,52178.52178_RF Vacuum Tube Fab,52178_RF Vacuum Tube Fab,Labor,0.0d,8.0,8.0,At Completion Units,3/27/2025,4/7/2025,0,0,0,0,0,0,0,0,0,0,1.03_Accelerator Systems (AS),1.03.03_AS Superconducting Linac System (ScL),1.03.03.20_AS Superconducting Linac System Installation,1.03.03.20.75_HPRF - Waveguide Klystron Gallery Preparation,AS_HPRF_WGKG_9240_Prepare Waveguide Klystron Gallery - Set 14,RF Fab,,SLAC,Labor
82486,1.03,1.03.03,1.03.03.20,1.03.03.20.75,1.03.03.20.75,HPRF - Waveguide Klystron Gallery Preparation,AS_HPRF_WGKG_9230,Prepare Waveguide Klystron Gallery - Set 13,8.0,17.5,17.5,17.5,03-17-25,03-26-25,AS_HPRF_WGKG_9220: FS,AS_HPRF_WGKG_9240: FS,SLAC,0%,52198.52198_METSMANF (METSD Manufacturing),52198_METSMANF (METSD Manufacturing),Labor,0.0d,8.0,8.0,At Completion Units,3/17/2025,3/26/2025,0,0,0,0,0,0,0,0,0,0,1.03_Accelerator Systems (AS),1.03.03_AS Superconducting Linac System (ScL),1.03.03.20_AS Superconducting Linac System Installation,1.03.03.20.75_HPRF - Waveguide Klystron Gallery Preparation,AS_HPRF_WGKG_9230_Prepare Waveguide Klystron Gallery - Set 13,Manufacturing,,SLAC,Labor
82487,1.03,1.03.03,1.03.03.20,1.03.03.20.75,1.03.03.20.75,HPRF - Waveguide Klystron Gallery Preparation,AS_HPRF_WGKG_9230,Prepare Waveguide Klystron Gallery - Set 13,8.0,65.0,65.0,65.0,03-17-25,03-26-25,AS_HPRF_WGKG_9220: FS,AS_HPRF_WGKG_9240: FS,SLAC,0%,52178.52178_RF Vacuum Tube Fab,52178_RF Vacuum Tube Fab,Labor,0.0d,8.0,8.0,At Completion Units,3/17/2025,3/26/2025,0,0,0,0,0,0,0,0,0,0,1.03_Accelerator Systems (AS),1.03.03_AS Superconducting Linac System (ScL),1.03.03.20_AS Superconducting Linac System Installation,1.03.03.20.75_HPRF - Waveguide Klystron Gallery Preparation,AS_HPRF_WGKG_9230_Prepare Waveguide Klystron Gallery - Set 13,RF Fab,,SLAC,Labor
82488,1.03,1.03.03,1.03.03.20,1.03.03.20.75,1.03.03.20.75,HPRF - Waveguide Klystron Gallery Preparation,AS_HPRF_WGKG_9220,Prepare Waveguide Klystron Gallery - Set 12,8.0,17.5,17.5,17.5,03-05-25,03-14-25,AS_HPRF_WGKG_9210: FS,AS_HPRF_WGKG_9230: FS,SLAC,0%,52198.52198_METSMANF (METSD Manufacturing),52198_METSMANF (METSD Manufacturing),Labor,0.0d,8.0,8.0,At Completion Units,3/5/2025,3/14/2025,0,0,0,0,0,0,0,0,0,0,1.03_Accelerator Systems (AS),1.03.03_AS Superconducting Linac System (ScL),1.03.03.20_AS Superconducting Linac System Installation,1.03.03.20.75_HPRF - Waveguide Klystron Gallery Preparation,AS_HPRF_WGKG_9220_Prepare Waveguide Klystron Gallery - Set 12,Manufacturing,,SLAC,Labor
82489,1.03,1.03.03,1.03.03.20,1.03.03.20.75,1.03.03.20.75,HPRF - Waveguide Klystron Gallery Preparation,AS_HPRF_WGKG_9220,Prepare Waveguide Klystron Gallery - Set 12,8.0,65.0,65.0,65.0,03-05-25,03-14-25,AS_HPRF_WGKG_9210: FS,AS_HPRF_WGKG_9230: FS,SLAC,0%,52178.52178_RF Vacuum Tube Fab,52178_RF Vacuum Tube Fab,Labor,0.0d,8.0,8.0,At Completion Units,3/5/2025,3/14/2025,0,0,0,0,0,0,0,0,0,0,1.03_Accelerator Systems (AS),1.03.03_AS Superconducting Linac System (ScL),1.03.03.20_AS Superconducting Linac System Installation,1.03.03.20.75_HPRF - Waveguide Klystron Gallery Preparation,AS_HPRF_WGKG_9220_Prepare Waveguide Klystron Gallery - Set 12,RF Fab,,SLAC,Labor
82490,1.03,1.03.03,1.03.03.20,1.03.03.20.75,1.03.03.20.75,HPRF - Waveguide Klystron Gallery Preparation,AS_HPRF_WGKG_9210,Prepare Waveguide Klystron Gallery - Set 11,8.0,17.5,17.5,17.5,02-21-25,03-04-25,AS_HPRF_WGKG_9200: FS,AS_HPRF_WGKG_9220: FS,SLAC,0%,52198.52198_METSMANF (METSD Manufacturing),52198_METSMANF (METSD Manufacturing),Labor,0.0d,8.0,8.0,At Completion Units,2/21/2025,3/4/2025,0,0,0,0,0,0,0,0,0,0,1.03_Accelerator Systems (AS),1.03.03_AS Superconducting Linac System (ScL),1.03.03.20_AS Superconducting Linac System Installation,1.03.03.20.75_HPRF - Waveguide Klystron Gallery Preparation,AS_HPRF_WGKG_9210_Prepare Waveguide Klystron Gallery - Set 11,Manufacturing,,SLAC,Labor
82491,1.03,1.03.03,1.03.03.20,1.03.03.20.75,1.03.03.20.75,HPRF - Waveguide Klystron Gallery Preparation,AS_HPRF_WGKG_9210,Prepare Waveguide Klystron Gallery - Set 11,8.0,65.0,65.0,65.0,02-21-25,03-04-25,AS_HPRF_WGKG_9200: FS,AS_HPRF_WGKG_9220: FS,SLAC,0%,52178.52178_RF Vacuum Tube Fab,52178_RF Vacuum Tube Fab,Labor,0.0d,8.0,8.0,At Completion Units,2/21/2025,3/4/2025,0,0,0,0,0,0,0,0,0,0,1.03_Accelerator Systems (AS),1.03.03_AS Superconducting Linac System (ScL),1.03.03.20_AS Superconducting Linac System Installation,1.03.03.20.75_HPRF - Waveguide Klystron Gallery Preparation,AS_HPRF_WGKG_9210_Prepare Waveguide Klystron Gallery - Set 11,RF Fab,,SLAC,Labor
82492,1.03,1.03.03,1.03.03.20,1.03.03.20.75,1.03.03.20.75,HPRF - Waveguide Klystron Gallery Preparation,AS_HPRF_WGKG_9200,Prepare Waveguide Klystron Gallery - Set 10,8.0,17.5,17.5,17.5,02-10-25,02-20-25,AS_HPRF_WGKG_9190: FS,AS_HPRF_WGKG_9210: FS,SLAC,0%,52198.52198_METSMANF (METSD Manufacturing),52198_METSMANF (METSD Manufacturing),Labor,0.0d,8.0,8.0,At Completion Units,2/10/2025,2/20/2025,0,0,0,0,0,0,0,0,0,0,1.03_Accelerator Systems (AS),1.03.03_AS Superconducting Linac System (ScL),1.03.03.20_AS Superconducting Linac System Installation,1.03.03.20.75_HPRF - Waveguide Klystron Gallery Preparation,AS_HPRF_WGKG_9200_Prepare Waveguide Klystron Gallery - Set 10,Manufacturing,,SLAC,Labor
82493,1.03,1.03.03,1.03.03.20,1.03.03.20.75,1.03.03.20.75,HPRF - Waveguide Klystron Gallery Preparation,AS_HPRF_WGKG_9200,Prepare Waveguide Klystron Gallery - Set 10,8.0,65.0,65.0,65.0,02-10-25,02-20-25,AS_HPRF_WGKG_9190: FS,AS_HPRF_WGKG_9210: FS,SLAC,0%,52178.52178_RF Vacuum Tube Fab,52178_RF Vacuum Tube Fab,Labor,0.0d,8.0,8.0,At Completion Units,2/10/2025,2/20/2025,0,0,0,0,0,0,0,0,0,0,1.03_Accelerator Systems (AS),1.03.03_AS Superconducting Linac System (ScL),1.03.03.20_AS Superconducting Linac System Installation,1.03.03.20.75_HPRF - Waveguide Klystron Gallery Preparation,AS_HPRF_WGKG_9200_Prepare Waveguide Klystron Gallery - Set 10,RF Fab,,SLAC,Labor
82494,1.03,1.03.03,1.03.03.20,1.03.03.20.75,1.03.03.20.75,HPRF - Waveguide Klystron Gallery Preparation,AS_HPRF_WGKG_9190,Prepare Waveguide Klystron Gallery - Set 9,8.0,17.5,17.5,17.5,01-29-25,02-07-25,AS_HPRF_WGKG_9180: FS,AS_HPRF_WGKG_9200: FS,SLAC,0%,52198.52198_METSMANF (METSD Manufacturing),52198_METSMANF (METSD Manufacturing),Labor,0.0d,8.0,8.0,At Completion Units,1/29/2025,2/7/2025,0,0,0,0,0,0,0,0,0,0,1.03_Accelerator Systems (AS),1.03.03_AS Superconducting Linac System (ScL),1.03.03.20_AS Superconducting Linac System Installation,1.03.03.20.75_HPRF - Waveguide Klystron Gallery Preparation,AS_HPRF_WGKG_9190_Prepare Waveguide Klystron Gallery - Set 9,Manufacturing,,SLAC,Labor
82495,1.03,1.03.03,1.03.03.20,1.03.03.20.75,1.03.03.20.75,HPRF - Waveguide Klystron Gallery Preparation,AS_HPRF_WGKG_9190,Prepare Waveguide Klystron Gallery - Set 9,8.0,65.0,65.0,65.0,01-29-25,02-07-25,AS_HPRF_WGKG_9180: FS,AS_HPRF_WGKG_9200: FS,SLAC,0%,52178.52178_RF Vacuum Tube Fab,52178_RF Vacuum Tube Fab,Labor,0.0d,8.0,8.0,At Completion Units,1/29/2025,2/7/2025,0,0,0,0,0,0,0,0,0,0,1.03_Accelerator Systems (AS),1.03.03_AS Superconducting Linac System (ScL),1.03.03.20_AS Superconducting Linac System Installation,1.03.03.20.75_HPRF - Waveguide Klystron Gallery Preparation,AS_HPRF_WGKG_9190_Prepare Waveguide Klystron Gallery - Set 9,RF Fab,,SLAC,Labor
82496,1.03,1.03.03,1.03.03.20,1.03.03.20.75,1.03.03.20.75,HPRF - Waveguide Klystron Gallery Preparation,AS_HPRF_WGKG_9180,Prepare Waveguide Klystron Gallery - Set 8,8.0,17.5,17.5,17.5,01-16-25,01-28-25,AS_HPRF_WGKG_9170: FS,AS_HPRF_WGKG_9190: FS,SLAC,0%,52198.52198_METSMANF (METSD Manufacturing),52198_METSMANF (METSD Manufacturing),Labor,0.0d,8.0,8.0,At Completion Units,1/16/2025,1/28/2025,0,0,0,0,0,0,0,0,0,0,1.03_Accelerator Systems (AS),1.03.03_AS Superconducting Linac System (ScL),1.03.03.20_AS Superconducting Linac System Installation,1.03.03.20.75_HPRF - Waveguide Klystron Gallery Preparation,AS_HPRF_WGKG_9180_Prepare Waveguide Klystron Gallery - Set 8,Manufacturing,,SLAC,Labor
82497,1.03,1.03.03,1.03.03.20,1.03.03.20.75,1.03.03.20.75,HPRF - Waveguide Klystron Gallery Preparation,AS_HPRF_WGKG_9180,Prepare Waveguide Klystron Gallery - Set 8,8.0,65.0,65.0,65.0,01-16-25,01-28-25,AS_HPRF_WGKG_9170: FS,AS_HPRF_WGKG_9190: FS,SLAC,0%,52178.52178_RF Vacuum Tube Fab,52178_RF Vacuum Tube Fab,Labor,0.0d,8.0,8.0,At Completion Units,1/16/2025,1/28/2025,0,0,0,0,0,0,0,0,0,0,1.03_Accelerator Systems (AS),1.03.03_AS Superconducting Linac System (ScL),1.03.03.20_AS Superconducting Linac System Installation,1.03.03.20.75_HPRF - Waveguide Klystron Gallery Preparation,AS_HPRF_WGKG_9180_Prepare Waveguide Klystron Gallery - Set 8,RF Fab,,SLAC,Labor
82498,1.03,1.03.03,1.03.03.20,1.03.03.20.75,1.03.03.20.75,HPRF - Waveguide Klystron Gallery Preparation,AS_HPRF_WGKG_9170,Prepare Waveguide Klystron Gallery - Set 7,8.0,17.5,17.5,17.5,01-06-25,01-15-25,AS_HPRF_WGKG_9160: FS,AS_HPRF_WGKG_9180: FS,SLAC,0%,52198.52198_METSMANF (METSD Manufacturing),52198_METSMANF (METSD Manufacturing),Labor,0.0d,8.0,8.0,At Completion Units,1/6/2025,1/15/2025,0,0,0,0,0,0,0,0,0,0,1.03_Accelerator Systems (AS),1.03.03_AS Superconducting Linac System (ScL),1.03.03.20_AS Superconducting Linac System Installation,1.03.03.20.75_HPRF - Waveguide Klystron Gallery Preparation,AS_HPRF_WGKG_9170_Prepare Waveguide Klystron Gallery - Set 7,Manufacturing,,SLAC,Labor
82499,1.03,1.03.03,1.03.03.20,1.03.03.20.75,1.03.03.20.75,HPRF - Waveguide Klystron Gallery Preparation,AS_HPRF_WGKG_9170,Prepare Waveguide Klystron Gallery - Set 7,8.0,65.0,65.0,65.0,01-06-25,01-15-25,AS_HPRF_WGKG_9160: FS,AS_HPRF_WGKG_9180: FS,SLAC,0%,52178.52178_RF Vacuum Tube Fab,52178_RF Vacuum Tube Fab,Labor,0.0d,8.0,8.0,At Completion Units,1/6/2025,1/15/2025,0,0,0,0,0,0,0,0,0,0,1.03_Accelerator Systems (AS),1.03.03_AS Superconducting Linac System (ScL),1.03.03.20_AS Superconducting Linac System Installation,1.03.03.20.75_HPRF - Waveguide Klystron Gallery Preparation,AS_HPRF_WGKG_9170_Prepare Waveguide Klystron Gallery - Set 7,RF Fab,,SLAC,Labor
82500,1.03,1.03.03,1.03.03.20,1.03.03.20.75,1.03.03.20.75,HPRF - Waveguide Klystron Gallery Preparation,AS_HPRF_WGKG_9160,Prepare Waveguide Klystron Gallery - Set 6,8.0,17.5,17.5,17.5,12-11-24,12-20-24,AS_HPRF_WGKG_9150: FS,AS_HPRF_WGKG_9170: FS,SLAC,0%,52198.52198_METSMANF (METSD Manufacturing),52198_METSMANF (METSD Manufacturing),Labor,0.0d,8.0,8.0,At Completion Units,12/11/2024,12/20/2024,0,0,0,0,0,0,0,0,0,0,1.03_Accelerator Systems (AS),1.03.03_AS Superconducting Linac System (ScL),1.03.03.20_AS Superconducting Linac System Installation,1.03.03.20.75_HPRF - Waveguide Klystron Gallery Preparation,AS_HPRF_WGKG_9160_Prepare Waveguide Klystron Gallery - Set 6,Manufacturing,,SLAC,Labor
82501,1.03,1.03.03,1.03.03.20,1.03.03.20.75,1.03.03.20.75,HPRF - Waveguide Klystron Gallery Preparation,AS_HPRF_WGKG_9160,Prepare Waveguide Klystron Gallery - Set 6,8.0,65.0,65.0,65.0,12-11-24,12-20-24,AS_HPRF_WGKG_9150: FS,AS_HPRF_WGKG_9170: FS,SLAC,0%,52178.52178_RF Vacuum Tube Fab,52178_RF Vacuum Tube Fab,Labor,0.0d,8.0,8.0,At Completion Units,12/11/2024,12/20/2024,0,0,0,0,0,0,0,0,0,0,1.03_Accelerator Systems (AS),1.03.03_AS Superconducting Linac System (ScL),1.03.03.20_AS Superconducting Linac System Installation,1.03.03.20.75_HPRF - Waveguide Klystron Gallery Preparation,AS_HPRF_WGKG_9160_Prepare Waveguide Klystron Gallery - Set 6,RF Fab,,SLAC,Labor
82502,1.03,1.03.03,1.03.03.20,1.03.03.20.75,1.03.03.20.75,HPRF - Waveguide Klystron Gallery Preparation,AS_HPRF_WGKG_9150,Prepare Waveguide Klystron Gallery - Set 5,8.0,17.5,17.5,17.5,11-27-24,12-10-24,AS_HPRF_WGKG_9140: FS,AS_HPRF_WGKG_9160: FS,SLAC,0%,52198.52198_METSMANF (METSD Manufacturing),52198_METSMANF (METSD Manufacturing),Labor,0.0d,8.0,8.0,At Completion Units,11/27/2024,12/10/2024,0,0,0,0,0,0,0,0,0,0,1.03_Accelerator Systems (AS),1.03.03_AS Superconducting Linac System (ScL),1.03.03.20_AS Superconducting Linac System Installation,1.03.03.20.75_HPRF - Waveguide Klystron Gallery Preparation,AS_HPRF_WGKG_9150_Prepare Waveguide Klystron Gallery - Set 5,Manufacturing,,SLAC,Labor
82503,1.03,1.03.03,1.03.03.20,1.03.03.20.75,1.03.03.20.75,HPRF - Waveguide Klystron Gallery Preparation,AS_HPRF_WGKG_9150,Prepare Waveguide Klystron Gallery - Set 5,8.0,65.0,65.0,65.0,11-27-24,12-10-24,AS_HPRF_WGKG_9140: FS,AS_HPRF_WGKG_9160: FS,SLAC,0%,52178.52178_RF Vacuum Tube Fab,52178_RF Vacuum Tube Fab,Labor,0.0d,8.0,8.0,At Completion Units,11/27/2024,12/10/2024,0,0,0,0,0,0,0,0,0,0,1.03_Accelerator Systems (AS),1.03.03_AS Superconducting Linac System (ScL),1.03.03.20_AS Superconducting Linac System Installation,1.03.03.20.75_HPRF - Waveguide Klystron Gallery Preparation,AS_HPRF_WGKG_9150_Prepare Waveguide Klystron Gallery - Set 5,RF Fab,,SLAC,Labor
82504,1.03,1.03.03,1.03.03.20,1.03.03.20.75,1.03.03.20.75,HPRF - Waveguide Klystron Gallery Preparation,AS_HPRF_WGKG_9140,Prepare Waveguide Klystron Gallery - Set 4,8.0,17.5,17.5,17.5,11-15-24,11-26-24,AS_HPRF_WGKG_9130: FS,"AS_HPRF_WGKG_9150: FS, AS_HPRF_WGKG_9500: FS, AS_HPRF_RQD_9320: FS",SLAC,0%,52198.52198_METSMANF (METSD Manufacturing),52198_METSMANF (METSD Manufacturing),Labor,0.0d,8.0,8.0,At Completion Units,11/15/2024,11/26/2024,0,0,0,0,0,0,0,0,0,0,1.03_Accelerator Systems (AS),1.03.03_AS Superconducting Linac System (ScL),1.03.03.20_AS Superconducting Linac System Installation,1.03.03.20.75_HPRF - Waveguide Klystron Gallery Preparation,AS_HPRF_WGKG_9140_Prepare Waveguide Klystron Gallery - Set 4,Manufacturing,,SLAC,Labor
82505,1.03,1.03.03,1.03.03.20,1.03.03.20.75,1.03.03.20.75,HPRF - Waveguide Klystron Gallery Preparation,AS_HPRF_WGKG_9140,Prepare Waveguide Klystron Gallery - Set 4,8.0,65.0,65.0,65.0,11-15-24,11-26-24,AS_HPRF_WGKG_9130: FS,"AS_HPRF_WGKG_9150: FS, AS_HPRF_WGKG_9500: FS, AS_HPRF_RQD_9320: FS",SLAC,0%,52178.52178_RF Vacuum Tube Fab,52178_RF Vacuum Tube Fab,Labor,0.0d,8.0,8.0,At Completion Units,11/15/2024,11/26/2024,0,0,0,0,0,0,0,0,0,0,1.03_Accelerator Systems (AS),1.03.03_AS Superconducting Linac System (ScL),1.03.03.20_AS Superconducting Linac System Installation,1.03.03.20.75_HPRF - Waveguide Klystron Gallery Preparation,AS_HPRF_WGKG_9140_Prepare Waveguide Klystron Gallery - Set 4,RF Fab,,SLAC,Labor
82506,1.03,1.03.03,1.03.03.20,1.03.03.20.75,1.03.03.20.75,HPRF - Waveguide Klystron Gallery Preparation,AS_HPRF_WGKG_9130,Prepare Waveguide Klystron Gallery - Set 3,8.0,17.5,17.5,17.5,11-05-24,11-14-24,AS_HPRF_WGKG_9120: FS,AS_HPRF_WGKG_9140: FS,SLAC,0%,52198.52198_METSMANF (METSD Manufacturing),52198_METSMANF (METSD Manufacturing),Labor,0.0d,8.0,8.0,At Completion Units,11/5/2024,11/14/2024,0,0,0,0,0,0,0,0,0,0,1.03_Accelerator Systems (AS),1.03.03_AS Superconducting Linac System (ScL),1.03.03.20_AS Superconducting Linac System Installation,1.03.03.20.75_HPRF - Waveguide Klystron Gallery Preparation,AS_HPRF_WGKG_9130_Prepare Waveguide Klystron Gallery - Set 3,Manufacturing,,SLAC,Labor
82507,1.03,1.03.03,1.03.03.20,1.03.03.20.75,1.03.03.20.75,HPRF - Waveguide Klystron Gallery Preparation,AS_HPRF_WGKG_9130,Prepare Waveguide Klystron Gallery - Set 3,8.0,65.0,65.0,65.0,11-05-24,11-14-24,AS_HPRF_WGKG_9120: FS,AS_HPRF_WGKG_9140: FS,SLAC,0%,52178.52178_RF Vacuum Tube Fab,52178_RF Vacuum Tube Fab,Labor,0.0d,8.0,8.0,At Completion Units,11/5/2024,11/14/2024,0,0,0,0,0,0,0,0,0,0,1.03_Accelerator Systems (AS),1.03.03_AS Superconducting Linac System (ScL),1.03.03.20_AS Superconducting Linac System Installation,1.03.03.20.75_HPRF - Waveguide Klystron Gallery Preparation,AS_HPRF_WGKG_9130_Prepare Waveguide Klystron Gallery - Set 3,RF Fab,,SLAC,Labor
82508,1.03,1.03.03,1.03.03.20,1.03.03.20.75,1.03.03.20.75,HPRF - Waveguide Klystron Gallery Preparation,AS_HPRF_WGKG_9120,Prepare Waveguide Klystron Gallery - Set 2,8.0,17.5,17.5,17.5,10-24-24,11-04-24,AS_HPRF_WGKG_9110: FS,AS_HPRF_WGKG_9130: FS,SLAC,0%,52198.52198_METSMANF (METSD Manufacturing),52198_METSMANF (METSD Manufacturing),Labor,0.0d,8.0,8.0,At Completion Units,10/24/2024,11/4/2024,0,0,0,0,0,0,0,0,0,0,1.03_Accelerator Systems (AS),1.03.03_AS Superconducting Linac System (ScL),1.03.03.20_AS Superconducting Linac System Installation,1.03.03.20.75_HPRF - Waveguide Klystron Gallery Preparation,AS_HPRF_WGKG_9120_Prepare Waveguide Klystron Gallery - Set 2,Manufacturing,,SLAC,Labor
82509,1.03,1.03.03,1.03.03.20,1.03.03.20.75,1.03.03.20.75,HPRF - Waveguide Klystron Gallery Preparation,AS_HPRF_WGKG_9120,Prepare Waveguide Klystron Gallery - Set 2,8.0,65.0,65.0,65.0,10-24-24,11-04-24,AS_HPRF_WGKG_9110: FS,AS_HPRF_WGKG_9130: FS,SLAC,0%,52178.52178_RF Vacuum Tube Fab,52178_RF Vacuum Tube Fab,Labor,0.0d,8.0,8.0,At Completion Units,10/24/2024,11/4/2024,0,0,0,0,0,0,0,0,0,0,1.03_Accelerator Systems (AS),1.03.03_AS Superconducting Linac System (ScL),1.03.03.20_AS Superconducting Linac System Installation,1.03.03.20.75_HPRF - Waveguide Klystron Gallery Preparation,AS_HPRF_WGKG_9120_Prepare Waveguide Klystron Gallery - Set 2,RF Fab,,SLAC,Labor
82510,1.03,1.03.03,1.03.03.20,1.03.03.20.75,1.03.03.20.75,HPRF - Waveguide Klystron Gallery Preparation,AS_HPRF_WGKG_9110,Prepare Waveguide Klystron Gallery - Set 1,8.0,17.5,17.5,17.5,10-14-24,10-23-24,AS_HPRF_WGKG_9100: FS,AS_HPRF_WGKG_9120: FS,SLAC,0%,52198.52198_METSMANF (METSD Manufacturing),52198_METSMANF (METSD Manufacturing),Labor,0.0d,8.0,8.0,At Completion Units,10/14/2024,10/23/2024,0,0,0,0,0,0,0,0,0,0,1.03_Accelerator Systems (AS),1.03.03_AS Superconducting Linac System (ScL),1.03.03.20_AS Superconducting Linac System Installation,1.03.03.20.75_HPRF - Waveguide Klystron Gallery Preparation,AS_HPRF_WGKG_9110_Prepare Waveguide Klystron Gallery - Set 1,Manufacturing,,SLAC,Labor
82511,1.03,1.03.03,1.03.03.20,1.03.03.20.75,1.03.03.20.75,HPRF - Waveguide Klystron Gallery Preparation,AS_HPRF_WGKG_9110,Prepare Waveguide Klystron Gallery - Set 1,8.0,65.0,65.0,65.0,10-14-24,10-23-24,AS_HPRF_WGKG_9100: FS,AS_HPRF_WGKG_9120: FS,SLAC,0%,52178.52178_RF Vacuum Tube Fab,52178_RF Vacuum Tube Fab,Labor,0.0d,8.0,8.0,At Completion Units,10/14/2024,10/23/2024,0,0,0,0,0,0,0,0,0,0,1.03_Accelerator Systems (AS),1.03.03_AS Superconducting Linac System (ScL),1.03.03.20_AS Superconducting Linac System Installation,1.03.03.20.75_HPRF - Waveguide Klystron Gallery Preparation,AS_HPRF_WGKG_9110_Prepare Waveguide Klystron Gallery - Set 1,RF Fab,,SLAC,Labor
82512,1.03,1.03.03,1.03.03.20,1.03.03.20.75,1.03.03.20.75,HPRF - Waveguide Klystron Gallery Preparation,AS_HPRF_WGKG_9100,Prepare Waveguide Klystron Gallery - Set 0,8.0,17.5,17.5,17.5,10-02-24,10-11-24,MS_FY_2025_Q1: FS,AS_HPRF_WGKG_9110: FS,SLAC,0%,52198.52198_METSMANF (METSD Manufacturing),52198_METSMANF (METSD Manufacturing),Labor,0.0d,8.0,8.0,At Completion Units,10/2/2024,10/11/2024,0,0,0,0,0,0,0,0,0,0,1.03_Accelerator Systems (AS),1.03.03_AS Superconducting Linac System (ScL),1.03.03.20_AS Superconducting Linac System Installation,1.03.03.20.75_HPRF - Waveguide Klystron Gallery Preparation,AS_HPRF_WGKG_9100_Prepare Waveguide Klystron Gallery - Set 0,Manufacturing,,SLAC,Labor
82513,1.03,1.03.03,1.03.03.20,1.03.03.20.75,1.03.03.20.75,HPRF - Waveguide Klystron Gallery Preparation,AS_HPRF_WGKG_9100,Prepare Waveguide Klystron Gallery - Set 0,8.0,65.0,65.0,65.0,10-02-24,10-11-24,MS_FY_2025_Q1: FS,AS_HPRF_WGKG_9110: FS,SLAC,0%,52178.52178_RF Vacuum Tube Fab,52178_RF Vacuum Tube Fab,Labor,0.0d,8.0,8.0,At Completion Units,10/2/2024,10/11/2024,0,0,0,0,0,0,0,0,0,0,1.03_Accelerator Systems (AS),1.03.03_AS Superconducting Linac System (ScL),1.03.03.20_AS Superconducting Linac System Installation,1.03.03.20.75_HPRF - Waveguide Klystron Gallery Preparation,AS_HPRF_WGKG_9100_Prepare Waveguide Klystron Gallery - Set 0,RF Fab,,SLAC,Labor
82833,1.03,1.03.03,1.03.03.20,1.03.03.20.76,1.03.03.20.76,HPRF - Waveguide Klystron Gallery Installation,AS_HPRF_WGKG_9730,Install Waveguide Klystron Gallery - Set 23,8.0,17.0,17.0,17.0,05-03-27,05-12-27,"AS_HPRF_WGKG_9720: FS, AS_HPRF_WGKG_9330: FS, AS_HPRF_WG_9900: FF","AS_HPRF_WGCM_9900: FF, AS_HPRF_WGKG_9740: FS",SLAC,0%,52191.52191_METSMET Metrology,52191_METSMET Metrology,Labor,0.0d,8.0,8.0,At Completion Units,5/1/2026,5/12/2026,0,0,0,0,0,0,0,0,0,0,1.03_Accelerator Systems (AS),1.03.03_AS Superconducting Linac System (ScL),1.03.03.20_AS Superconducting Linac System Installation,1.03.03.20.76_HPRF - Waveguide Klystron Gallery Installation,AS_HPRF_WGKG_9730_Install Waveguide Klystron Gallery - Set 23,Metrology,,SLAC,Labor
82834,1.03,1.03.03,1.03.03.20,1.03.03.20.76,1.03.03.20.76,HPRF - Waveguide Klystron Gallery Installation,AS_HPRF_WGKG_9730,Install Waveguide Klystron Gallery - Set 23,8.0,12.0,12.0,12.0,05-03-27,05-12-27,"AS_HPRF_WGKG_9720: FS, AS_HPRF_WGKG_9330: FS, AS_HPRF_WG_9900: FF","AS_HPRF_WGCM_9900: FF, AS_HPRF_WGKG_9740: FS",SLAC,0%,52152.52152_FAC Fleet,52152_FAC Fleet,Labor,0.0d,8.0,8.0,At Completion Units,5/1/2026,5/12/2026,0,0,0,0,0,0,0,0,0,0,1.03_Accelerator Systems (AS),1.03.03_AS Superconducting Linac System (ScL),1.03.03.20_AS Superconducting Linac System Installation,1.03.03.20.76_HPRF - Waveguide Klystron Gallery Installation,AS_HPRF_WGKG_9730_Install Waveguide Klystron Gallery - Set 23,Support System,,SLAC,Labor
82835,1.03,1.03.03,1.03.03.20,1.03.03.20.76,1.03.03.20.76,HPRF - Waveguide Klystron Gallery Installation,AS_HPRF_WGKG_9730,Install Waveguide Klystron Gallery - Set 23,8.0,3.0,3.0,3.0,05-03-27,05-12-27,"AS_HPRF_WGKG_9720: FS, AS_HPRF_WGKG_9330: FS, AS_HPRF_WG_9900: FF","AS_HPRF_WGCM_9900: FF, AS_HPRF_WGKG_9740: FS",SLAC,0%,52143.52143_Instrumentation,52143_Instrumentation,Labor,0.0d,8.0,8.0,At Completion Units,5/1/2026,5/12/2026,0,0,0,0,0,0,0,0,0,0,1.03_Accelerator Systems (AS),1.03.03_AS Superconducting Linac System (ScL),1.03.03.20_AS Superconducting Linac System Installation,1.03.03.20.76_HPRF - Waveguide Klystron Gallery Installation,AS_HPRF_WGKG_9730_Install Waveguide Klystron Gallery - Set 23,Controls,,SLAC,Labor
82836,1.03,1.03.03,1.03.03.20,1.03.03.20.76,1.03.03.20.76,HPRF - Waveguide Klystron Gallery Installation,AS_HPRF_WGKG_9720,Install Waveguide Klystron Gallery - Set 22,8.0,17.0,17.0,17.0,04-21-27,04-30-27,AS_HPRF_WGKG_9710: FS,AS_HPRF_WGKG_9730: FS,SLAC,0%,52191.52191_METSMET Metrology,52191_METSMET Metrology,Labor,0.0d,8.0,8.0,At Completion Units,4/21/2026,4/30/2026,0,0,0,0,0,0,0,0,0,0,1.03_Accelerator Systems (AS),1.03.03_AS Superconducting Linac System (ScL),1.03.03.20_AS Superconducting Linac System Installation,1.03.03.20.76_HPRF - Waveguide Klystron Gallery Installation,AS_HPRF_WGKG_9720_Install Waveguide Klystron Gallery - Set 22,Metrology,,SLAC,Labor
82837,1.03,1.03.03,1.03.03.20,1.03.03.20.76,1.03.03.20.76,HPRF - Waveguide Klystron Gallery Installation,AS_HPRF_WGKG_9720,Install Waveguide Klystron Gallery - Set 22,8.0,12.0,12.0,12.0,04-21-27,04-30-27,AS_HPRF_WGKG_9710: FS,AS_HPRF_WGKG_9730: FS,SLAC,0%,52152.52152_FAC Fleet,52152_FAC Fleet,Labor,0.0d,8.0,8.0,At Completion Units,4/21/2026,4/30/2026,0,0,0,0,0,0,0,0,0,0,1.03_Accelerator Systems (AS),1.03.03_AS Superconducting Linac System (ScL),1.03.03.20_AS Superconducting Linac System Installation,1.03.03.20.76_HPRF - Waveguide Klystron Gallery Installation,AS_HPRF_WGKG_9720_Install Waveguide Klystron Gallery - Set 22,Support System,,SLAC,Labor
82838,1.03,1.03.03,1.03.03.20,1.03.03.20.76,1.03.03.20.76,HPRF - Waveguide Klystron Gallery Installation,AS_HPRF_WGKG_9720,Install Waveguide Klystron Gallery - Set 22,8.0,3.0,3.0,3.0,04-21-27,04-30-27,AS_HPRF_WGKG_9710: FS,AS_HPRF_WGKG_9730: FS,SLAC,0%,52143.52143_Instrumentation,52143_Instrumentation,Labor,0.0d,8.0,8.0,At Completion Units,4/21/2026,4/30/2026,0,0,0,0,0,0,0,0,0,0,1.03_Accelerator Systems (AS),1.03.03_AS Superconducting Linac System (ScL),1.03.03.20_AS Superconducting Linac System Installation,1.03.03.20.76_HPRF - Waveguide Klystron Gallery Installation,AS_HPRF_WGKG_9720_Install Waveguide Klystron Gallery - Set 22,Controls,,SLAC,Labor
82839,1.03,1.03.03,1.03.03.20,1.03.03.20.76,1.03.03.20.76,HPRF - Waveguide Klystron Gallery Installation,AS_HPRF_WGKG_9710,Install Waveguide Klystron Gallery - Set 21,8.0,17.0,17.0,17.0,04-09-27,04-20-27,AS_HPRF_WGKG_9700: FS,AS_HPRF_WGKG_9720: FS,SLAC,0%,52191.52191_METSMET Metrology,52191_METSMET Metrology,Labor,0.0d,8.0,8.0,At Completion Units,4/9/2026,4/20/2026,0,0,0,0,0,0,0,0,0,0,1.03_Accelerator Systems (AS),1.03.03_AS Superconducting Linac System (ScL),1.03.03.20_AS Superconducting Linac System Installation,1.03.03.20.76_HPRF - Waveguide Klystron Gallery Installation,AS_HPRF_WGKG_9710_Install Waveguide Klystron Gallery - Set 21,Metrology,,SLAC,Labor
82840,1.03,1.03.03,1.03.03.20,1.03.03.20.76,1.03.03.20.76,HPRF - Waveguide Klystron Gallery Installation,AS_HPRF_WGKG_9710,Install Waveguide Klystron Gallery - Set 21,8.0,12.0,12.0,12.0,04-09-27,04-20-27,AS_HPRF_WGKG_9700: FS,AS_HPRF_WGKG_9720: FS,SLAC,0%,52152.52152_FAC Fleet,52152_FAC Fleet,Labor,0.0d,8.0,8.0,At Completion Units,4/9/2026,4/20/2026,0,0,0,0,0,0,0,0,0,0,1.03_Accelerator Systems (AS),1.03.03_AS Superconducting Linac System (ScL),1.03.03.20_AS Superconducting Linac System Installation,1.03.03.20.76_HPRF - Waveguide Klystron Gallery Installation,AS_HPRF_WGKG_9710_Install Waveguide Klystron Gallery - Set 21,Support System,,SLAC,Labor
82841,1.03,1.03.03,1.03.03.20,1.03.03.20.76,1.03.03.20.76,HPRF - Waveguide Klystron Gallery Installation,AS_HPRF_WGKG_9710,Install Waveguide Klystron Gallery - Set 21,8.0,3.0,3.0,3.0,04-09-27,04-20-27,AS_HPRF_WGKG_9700: FS,AS_HPRF_WGKG_9720: FS,SLAC,0%,52143.52143_Instrumentation,52143_Instrumentation,Labor,0.0d,8.0,8.0,At Completion Units,4/9/2026,4/20/2026,0,0,0,0,0,0,0,0,0,0,1.03_Accelerator Systems (AS),1.03.03_AS Superconducting Linac System (ScL),1.03.03.20_AS Superconducting Linac System Installation,1.03.03.20.76_HPRF - Waveguide Klystron Gallery Installation,AS_HPRF_WGKG_9710_Install Waveguide Klystron Gallery - Set 21,Controls,,SLAC,Labor
82842,1.03,1.03.03,1.03.03.20,1.03.03.20.76,1.03.03.20.76,HPRF - Waveguide Klystron Gallery Installation,AS_HPRF_WGKG_9700,Install Waveguide Klystron Gallery - Set 20,8.0,17.0,17.0,17.0,03-30-27,04-08-27,AS_HPRF_WGKG_9690: FS,AS_HPRF_WGKG_9710: FS,SLAC,0%,52191.52191_METSMET Metrology,52191_METSMET Metrology,Labor,0.0d,8.0,8.0,At Completion Units,3/30/2026,4/8/2026,0,0,0,0,0,0,0,0,0,0,1.03_Accelerator Systems (AS),1.03.03_AS Superconducting Linac System (ScL),1.03.03.20_AS Superconducting Linac System Installation,1.03.03.20.76_HPRF - Waveguide Klystron Gallery Installation,AS_HPRF_WGKG_9700_Install Waveguide Klystron Gallery - Set 20,Metrology,,SLAC,Labor
82843,1.03,1.03.03,1.03.03.20,1.03.03.20.76,1.03.03.20.76,HPRF - Waveguide Klystron Gallery Installation,AS_HPRF_WGKG_9700,Install Waveguide Klystron Gallery - Set 20,8.0,12.0,12.0,12.0,03-30-27,04-08-27,AS_HPRF_WGKG_9690: FS,AS_HPRF_WGKG_9710: FS,SLAC,0%,52152.52152_FAC Fleet,52152_FAC Fleet,Labor,0.0d,8.0,8.0,At Completion Units,3/30/2026,4/8/2026,0,0,0,0,0,0,0,0,0,0,1.03_Accelerator Systems (AS),1.03.03_AS Superconducting Linac System (ScL),1.03.03.20_AS Superconducting Linac System Installation,1.03.03.20.76_HPRF - Waveguide Klystron Gallery Installation,AS_HPRF_WGKG_9700_Install Waveguide Klystron Gallery - Set 20,Support System,,SLAC,Labor
82844,1.03,1.03.03,1.03.03.20,1.03.03.20.76,1.03.03.20.76,HPRF - Waveguide Klystron Gallery Installation,AS_HPRF_WGKG_9700,Install Waveguide Klystron Gallery - Set 20,8.0,3.0,3.0,3.0,03-30-27,04-08-27,AS_HPRF_WGKG_9690: FS,AS_HPRF_WGKG_9710: FS,SLAC,0%,52143.52143_Instrumentation,52143_Instrumentation,Labor,0.0d,8.0,8.0,At Completion Units,3/30/2026,4/8/2026,0,0,0,0,0,0,0,0,0,0,1.03_Accelerator Systems (AS),1.03.03_AS Superconducting Linac System (ScL),1.03.03.20_AS Superconducting Linac System Installation,1.03.03.20.76_HPRF - Waveguide Klystron Gallery Installation,AS_HPRF_WGKG_9700_Install Waveguide Klystron Gallery - Set 20,Controls,,SLAC,Labor
82845,1.03,1.03.03,1.03.03.20,1.03.03.20.76,1.03.03.20.76,HPRF - Waveguide Klystron Gallery Installation,AS_HPRF_WGKG_9690,Install Waveguide Klystron Gallery - Set 19,8.0,17.0,17.0,17.0,03-18-27,03-29-27,AS_HPRF_WGKG_9680: FS,AS_HPRF_WGKG_9700: FS,SLAC,0%,52191.52191_METSMET Metrology,52191_METSMET Metrology,Labor,0.0d,8.0,8.0,At Completion Units,3/18/2026,3/27/2026,0,0,0,0,0,0,0,0,0,0,1.03_Accelerator Systems (AS),1.03.03_AS Superconducting Linac System (ScL),1.03.03.20_AS Superconducting Linac System Installation,1.03.03.20.76_HPRF - Waveguide Klystron Gallery Installation,AS_HPRF_WGKG_9690_Install Waveguide Klystron Gallery - Set 19,Metrology,,SLAC,Labor
82846,1.03,1.03.03,1.03.03.20,1.03.03.20.76,1.03.03.20.76,HPRF - Waveguide Klystron Gallery Installation,AS_HPRF_WGKG_9690,Install Waveguide Klystron Gallery - Set 19,8.0,12.0,12.0,12.0,03-18-27,03-29-27,AS_HPRF_WGKG_9680: FS,AS_HPRF_WGKG_9700: FS,SLAC,0%,52152.52152_FAC Fleet,52152_FAC Fleet,Labor,0.0d,8.0,8.0,At Completion Units,3/18/2026,3/27/2026,0,0,0,0,0,0,0,0,0,0,1.03_Accelerator Systems (AS),1.03.03_AS Superconducting Linac System (ScL),1.03.03.20_AS Superconducting Linac System Installation,1.03.03.20.76_HPRF - Waveguide Klystron Gallery Installation,AS_HPRF_WGKG_9690_Install Waveguide Klystron Gallery - Set 19,Support System,,SLAC,Labor
82847,1.03,1.03.03,1.03.03.20,1.03.03.20.76,1.03.03.20.76,HPRF - Waveguide Klystron Gallery Installation,AS_HPRF_WGKG_9690,Install Waveguide Klystron Gallery - Set 19,8.0,3.0,3.0,3.0,03-18-27,03-29-27,AS_HPRF_WGKG_9680: FS,AS_HPRF_WGKG_9700: FS,SLAC,0%,52143.52143_Instrumentation,52143_Instrumentation,Labor,0.0d,8.0,8.0,At Completion Units,3/18/2026,3/27/2026,0,0,0,0,0,0,0,0,0,0,1.03_Accelerator Systems (AS),1.03.03_AS Superconducting Linac System (ScL),1.03.03.20_AS Superconducting Linac System Installation,1.03.03.20.76_HPRF - Waveguide Klystron Gallery Installation,AS_HPRF_WGKG_9690_Install Waveguide Klystron Gallery - Set 19,Controls,,SLAC,Labor
82848,1.03,1.03.03,1.03.03.20,1.03.03.20.76,1.03.03.20.76,HPRF - Waveguide Klystron Gallery Installation,AS_HPRF_WGKG_9680,Install Waveguide Klystron Gallery - Set 18,8.0,17.0,17.0,17.0,03-08-27,03-17-27,AS_HPRF_WGKG_9670: FS,AS_HPRF_WGKG_9690: FS,SLAC,0%,52191.52191_METSMET Metrology,52191_METSMET Metrology,Labor,0.0d,8.0,8.0,At Completion Units,3/6/2026,3/17/2026,0,0,0,0,0,0,0,0,0,0,1.03_Accelerator Systems (AS),1.03.03_AS Superconducting Linac System (ScL),1.03.03.20_AS Superconducting Linac System Installation,1.03.03.20.76_HPRF - Waveguide Klystron Gallery Installation,AS_HPRF_WGKG_9680_Install Waveguide Klystron Gallery - Set 18,Metrology,,SLAC,Labor
82849,1.03,1.03.03,1.03.03.20,1.03.03.20.76,1.03.03.20.76,HPRF - Waveguide Klystron Gallery Installation,AS_HPRF_WGKG_9680,Install Waveguide Klystron Gallery - Set 18,8.0,12.0,12.0,12.0,03-08-27,03-17-27,AS_HPRF_WGKG_9670: FS,AS_HPRF_WGKG_9690: FS,SLAC,0%,52152.52152_FAC Fleet,52152_FAC Fleet,Labor,0.0d,8.0,8.0,At Completion Units,3/6/2026,3/17/2026,0,0,0,0,0,0,0,0,0,0,1.03_Accelerator Systems (AS),1.03.03_AS Superconducting Linac System (ScL),1.03.03.20_AS Superconducting Linac System Installation,1.03.03.20.76_HPRF - Waveguide Klystron Gallery Installation,AS_HPRF_WGKG_9680_Install Waveguide Klystron Gallery - Set 18,Support System,,SLAC,Labor
82850,1.03,1.03.03,1.03.03.20,1.03.03.20.76,1.03.03.20.76,HPRF - Waveguide Klystron Gallery Installation,AS_HPRF_WGKG_9680,Install Waveguide Klystron Gallery - Set 18,8.0,3.0,3.0,3.0,03-08-27,03-17-27,AS_HPRF_WGKG_9670: FS,AS_HPRF_WGKG_9690: FS,SLAC,0%,52143.52143_Instrumentation,52143_Instrumentation,Labor,0.0d,8.0,8.0,At Completion Units,3/6/2026,3/17/2026,0,0,0,0,0,0,0,0,0,0,1.03_Accelerator Systems (AS),1.03.03_AS Superconducting Linac System (ScL),1.03.03.20_AS Superconducting Linac System Installation,1.03.03.20.76_HPRF - Waveguide Klystron Gallery Installation,AS_HPRF_WGKG_9680_Install Waveguide Klystron Gallery - Set 18,Controls,,SLAC,Labor
82851,1.03,1.03.03,1.03.03.20,1.03.03.20.76,1.03.03.20.76,HPRF - Waveguide Klystron Gallery Installation,AS_HPRF_WGKG_9670,Install Waveguide Klystron Gallery - Set 17,8.0,17.0,17.0,17.0,02-24-27,03-05-27,AS_HPRF_WGKG_9660: FS,AS_HPRF_WGKG_9680: FS,SLAC,0%,52191.52191_METSMET Metrology,52191_METSMET Metrology,Labor,0.0d,8.0,8.0,At Completion Units,2/24/2026,3/5/2026,0,0,0,0,0,0,0,0,0,0,1.03_Accelerator Systems (AS),1.03.03_AS Superconducting Linac System (ScL),1.03.03.20_AS Superconducting Linac System Installation,1.03.03.20.76_HPRF - Waveguide Klystron Gallery Installation,AS_HPRF_WGKG_9670_Install Waveguide Klystron Gallery - Set 17,Metrology,,SLAC,Labor
82852,1.03,1.03.03,1.03.03.20,1.03.03.20.76,1.03.03.20.76,HPRF - Waveguide Klystron Gallery Installation,AS_HPRF_WGKG_9670,Install Waveguide Klystron Gallery - Set 17,8.0,12.0,12.0,12.0,02-24-27,03-05-27,AS_HPRF_WGKG_9660: FS,AS_HPRF_WGKG_9680: FS,SLAC,0%,52152.52152_FAC Fleet,52152_FAC Fleet,Labor,0.0d,8.0,8.0,At Completion Units,2/24/2026,3/5/2026,0,0,0,0,0,0,0,0,0,0,1.03_Accelerator Systems (AS),1.03.03_AS Superconducting Linac System (ScL),1.03.03.20_AS Superconducting Linac System Installation,1.03.03.20.76_HPRF - Waveguide Klystron Gallery Installation,AS_HPRF_WGKG_9670_Install Waveguide Klystron Gallery - Set 17,Support System,,SLAC,Labor
82853,1.03,1.03.03,1.03.03.20,1.03.03.20.76,1.03.03.20.76,HPRF - Waveguide Klystron Gallery Installation,AS_HPRF_WGKG_9670,Install Waveguide Klystron Gallery - Set 17,8.0,3.0,3.0,3.0,02-24-27,03-05-27,AS_HPRF_WGKG_9660: FS,AS_HPRF_WGKG_9680: FS,SLAC,0%,52143.52143_Instrumentation,52143_Instrumentation,Labor,0.0d,8.0,8.0,At Completion Units,2/24/2026,3/5/2026,0,0,0,0,0,0,0,0,0,0,1.03_Accelerator Systems (AS),1.03.03_AS Superconducting Linac System (ScL),1.03.03.20_AS Superconducting Linac System Installation,1.03.03.20.76_HPRF - Waveguide Klystron Gallery Installation,AS_HPRF_WGKG_9670_Install Waveguide Klystron Gallery - Set 17,Controls,,SLAC,Labor
82854,1.03,1.03.03,1.03.03.20,1.03.03.20.76,1.03.03.20.76,HPRF - Waveguide Klystron Gallery Installation,AS_HPRF_WGKG_9660,Install Waveguide Klystron Gallery - Set 16,8.0,17.0,17.0,17.0,02-11-27,02-23-27,AS_HPRF_WGKG_9650: FS,AS_HPRF_WGKG_9670: FS,SLAC,0%,52191.52191_METSMET Metrology,52191_METSMET Metrology,Labor,0.0d,8.0,8.0,At Completion Units,2/11/2026,2/23/2026,0,0,0,0,0,0,0,0,0,0,1.03_Accelerator Systems (AS),1.03.03_AS Superconducting Linac System (ScL),1.03.03.20_AS Superconducting Linac System Installation,1.03.03.20.76_HPRF - Waveguide Klystron Gallery Installation,AS_HPRF_WGKG_9660_Install Waveguide Klystron Gallery - Set 16,Metrology,,SLAC,Labor
82855,1.03,1.03.03,1.03.03.20,1.03.03.20.76,1.03.03.20.76,HPRF - Waveguide Klystron Gallery Installation,AS_HPRF_WGKG_9660,Install Waveguide Klystron Gallery - Set 16,8.0,12.0,12.0,12.0,02-11-27,02-23-27,AS_HPRF_WGKG_9650: FS,AS_HPRF_WGKG_9670: FS,SLAC,0%,52152.52152_FAC Fleet,52152_FAC Fleet,Labor,0.0d,8.0,8.0,At Completion Units,2/11/2026,2/23/2026,0,0,0,0,0,0,0,0,0,0,1.03_Accelerator Systems (AS),1.03.03_AS Superconducting Linac System (ScL),1.03.03.20_AS Superconducting Linac System Installation,1.03.03.20.76_HPRF - Waveguide Klystron Gallery Installation,AS_HPRF_WGKG_9660_Install Waveguide Klystron Gallery - Set 16,Support System,,SLAC,Labor
82856,1.03,1.03.03,1.03.03.20,1.03.03.20.76,1.03.03.20.76,HPRF - Waveguide Klystron Gallery Installation,AS_HPRF_WGKG_9660,Install Waveguide Klystron Gallery - Set 16,8.0,3.0,3.0,3.0,02-11-27,02-23-27,AS_HPRF_WGKG_9650: FS,AS_HPRF_WGKG_9670: FS,SLAC,0%,52143.52143_Instrumentation,52143_Instrumentation,Labor,0.0d,8.0,8.0,At Completion Units,2/11/2026,2/23/2026,0,0,0,0,0,0,0,0,0,0,1.03_Accelerator Systems (AS),1.03.03_AS Superconducting Linac System (ScL),1.03.03.20_AS Superconducting Linac System Installation,1.03.03.20.76_HPRF - Waveguide Klystron Gallery Installation,AS_HPRF_WGKG_9660_Install Waveguide Klystron Gallery - Set 16,Controls,,SLAC,Labor
82857,1.03,1.03.03,1.03.03.20,1.03.03.20.76,1.03.03.20.76,HPRF - Waveguide Klystron Gallery Installation,AS_HPRF_WGKG_9650,Install Waveguide Klystron Gallery - Set 15,8.0,17.0,17.0,17.0,02-01-27,02-10-27,AS_HPRF_WGKG_9640: FS,AS_HPRF_WGKG_9660: FS,SLAC,0%,52191.52191_METSMET Metrology,52191_METSMET Metrology,Labor,0.0d,8.0,8.0,At Completion Units,1/30/2026,2/10/2026,0,0,0,0,0,0,0,0,0,0,1.03_Accelerator Systems (AS),1.03.03_AS Superconducting Linac System (ScL),1.03.03.20_AS Superconducting Linac System Installation,1.03.03.20.76_HPRF - Waveguide Klystron Gallery Installation,AS_HPRF_WGKG_9650_Install Waveguide Klystron Gallery - Set 15,Metrology,,SLAC,Labor
82858,1.03,1.03.03,1.03.03.20,1.03.03.20.76,1.03.03.20.76,HPRF - Waveguide Klystron Gallery Installation,AS_HPRF_WGKG_9650,Install Waveguide Klystron Gallery - Set 15,8.0,12.0,12.0,12.0,02-01-27,02-10-27,AS_HPRF_WGKG_9640: FS,AS_HPRF_WGKG_9660: FS,SLAC,0%,52152.52152_FAC Fleet,52152_FAC Fleet,Labor,0.0d,8.0,8.0,At Completion Units,1/30/2026,2/10/2026,0,0,0,0,0,0,0,0,0,0,1.03_Accelerator Systems (AS),1.03.03_AS Superconducting Linac System (ScL),1.03.03.20_AS Superconducting Linac System Installation,1.03.03.20.76_HPRF - Waveguide Klystron Gallery Installation,AS_HPRF_WGKG_9650_Install Waveguide Klystron Gallery - Set 15,Support System,,SLAC,Labor
82859,1.03,1.03.03,1.03.03.20,1.03.03.20.76,1.03.03.20.76,HPRF - Waveguide Klystron Gallery Installation,AS_HPRF_WGKG_9650,Install Waveguide Klystron Gallery - Set 15,8.0,3.0,3.0,3.0,02-01-27,02-10-27,AS_HPRF_WGKG_9640: FS,AS_HPRF_WGKG_9660: FS,SLAC,0%,52143.52143_Instrumentation,52143_Instrumentation,Labor,0.0d,8.0,8.0,At Completion Units,1/30/2026,2/10/2026,0,0,0,0,0,0,0,0,0,0,1.03_Accelerator Systems (AS),1.03.03_AS Superconducting Linac System (ScL),1.03.03.20_AS Superconducting Linac System Installation,1.03.03.20.76_HPRF - Waveguide Klystron Gallery Installation,AS_HPRF_WGKG_9650_Install Waveguide Klystron Gallery - Set 15,Controls,,SLAC,Labor
82860,1.03,1.03.03,1.03.03.20,1.03.03.20.76,1.03.03.20.76,HPRF - Waveguide Klystron Gallery Installation,AS_HPRF_WGKG_9640,Install Waveguide Klystron Gallery - Set 14,8.0,17.0,17.0,17.0,01-20-27,01-29-27,AS_HPRF_WGKG_9630: FS,AS_HPRF_WGKG_9650: FS,SLAC,0%,52191.52191_METSMET Metrology,52191_METSMET Metrology,Labor,0.0d,8.0,8.0,At Completion Units,1/20/2026,1/29/2026,0,0,0,0,0,0,0,0,0,0,1.03_Accelerator Systems (AS),1.03.03_AS Superconducting Linac System (ScL),1.03.03.20_AS Superconducting Linac System Installation,1.03.03.20.76_HPRF - Waveguide Klystron Gallery Installation,AS_HPRF_WGKG_9640_Install Waveguide Klystron Gallery - Set 14,Metrology,,SLAC,Labor
82861,1.03,1.03.03,1.03.03.20,1.03.03.20.76,1.03.03.20.76,HPRF - Waveguide Klystron Gallery Installation,AS_HPRF_WGKG_9640,Install Waveguide Klystron Gallery - Set 14,8.0,12.0,12.0,12.0,01-20-27,01-29-27,AS_HPRF_WGKG_9630: FS,AS_HPRF_WGKG_9650: FS,SLAC,0%,52152.52152_FAC Fleet,52152_FAC Fleet,Labor,0.0d,8.0,8.0,At Completion Units,1/20/2026,1/29/2026,0,0,0,0,0,0,0,0,0,0,1.03_Accelerator Systems (AS),1.03.03_AS Superconducting Linac System (ScL),1.03.03.20_AS Superconducting Linac System Installation,1.03.03.20.76_HPRF - Waveguide Klystron Gallery Installation,AS_HPRF_WGKG_9640_Install Waveguide Klystron Gallery - Set 14,Support System,,SLAC,Labor
82862,1.03,1.03.03,1.03.03.20,1.03.03.20.76,1.03.03.20.76,HPRF - Waveguide Klystron Gallery Installation,AS_HPRF_WGKG_9640,Install Waveguide Klystron Gallery - Set 14,8.0,3.0,3.0,3.0,01-20-27,01-29-27,AS_HPRF_WGKG_9630: FS,AS_HPRF_WGKG_9650: FS,SLAC,0%,52143.52143_Instrumentation,52143_Instrumentation,Labor,0.0d,8.0,8.0,At Completion Units,1/20/2026,1/29/2026,0,0,0,0,0,0,0,0,0,0,1.03_Accelerator Systems (AS),1.03.03_AS Superconducting Linac System (ScL),1.03.03.20_AS Superconducting Linac System Installation,1.03.03.20.76_HPRF - Waveguide Klystron Gallery Installation,AS_HPRF_WGKG_9640_Install Waveguide Klystron Gallery - Set 14,Controls,,SLAC,Labor
82863,1.03,1.03.03,1.03.03.20,1.03.03.20.76,1.03.03.20.76,HPRF - Waveguide Klystron Gallery Installation,AS_HPRF_WGKG_9630,Install Waveguide Klystron Gallery - Set 13,8.0,17.0,17.0,17.0,01-07-27,01-19-27,AS_HPRF_WGKG_9620: FS,AS_HPRF_WGKG_9640: FS,SLAC,0%,52191.52191_METSMET Metrology,52191_METSMET Metrology,Labor,0.0d,8.0,8.0,At Completion Units,1/7/2026,1/16/2026,0,0,0,0,0,0,0,0,0,0,1.03_Accelerator Systems (AS),1.03.03_AS Superconducting Linac System (ScL),1.03.03.20_AS Superconducting Linac System Installation,1.03.03.20.76_HPRF - Waveguide Klystron Gallery Installation,AS_HPRF_WGKG_9630_Install Waveguide Klystron Gallery - Set 13,Metrology,,SLAC,Labor
82864,1.03,1.03.03,1.03.03.20,1.03.03.20.76,1.03.03.20.76,HPRF - Waveguide Klystron Gallery Installation,AS_HPRF_WGKG_9630,Install Waveguide Klystron Gallery - Set 13,8.0,12.0,12.0,12.0,01-07-27,01-19-27,AS_HPRF_WGKG_9620: FS,AS_HPRF_WGKG_9640: FS,SLAC,0%,52152.52152_FAC Fleet,52152_FAC Fleet,Labor,0.0d,8.0,8.0,At Completion Units,1/7/2026,1/16/2026,0,0,0,0,0,0,0,0,0,0,1.03_Accelerator Systems (AS),1.03.03_AS Superconducting Linac System (ScL),1.03.03.20_AS Superconducting Linac System Installation,1.03.03.20.76_HPRF - Waveguide Klystron Gallery Installation,AS_HPRF_WGKG_9630_Install Waveguide Klystron Gallery - Set 13,Support System,,SLAC,Labor
82865,1.03,1.03.03,1.03.03.20,1.03.03.20.76,1.03.03.20.76,HPRF - Waveguide Klystron Gallery Installation,AS_HPRF_WGKG_9630,Install Waveguide Klystron Gallery - Set 13,8.0,3.0,3.0,3.0,01-07-27,01-19-27,AS_HPRF_WGKG_9620: FS,AS_HPRF_WGKG_9640: FS,SLAC,0%,52143.52143_Instrumentation,52143_Instrumentation,Labor,0.0d,8.0,8.0,At Completion Units,1/7/2026,1/16/2026,0,0,0,0,0,0,0,0,0,0,1.03_Accelerator Systems (AS),1.03.03_AS Superconducting Linac System (ScL),1.03.03.20_AS Superconducting Linac System Installation,1.03.03.20.76_HPRF - Waveguide Klystron Gallery Installation,AS_HPRF_WGKG_9630_Install Waveguide Klystron Gallery - Set 13,Controls,,SLAC,Labor
82866,1.03,1.03.03,1.03.03.20,1.03.03.20.76,1.03.03.20.76,HPRF - Waveguide Klystron Gallery Installation,AS_HPRF_WGKG_9620,Install Waveguide Klystron Gallery - Set 12,8.0,17.0,17.0,17.0,12-14-26,01-06-27,AS_HPRF_WGKG_9610: FS,AS_HPRF_WGKG_9630: FS,SLAC,0%,52191.52191_METSMET Metrology,52191_METSMET Metrology,Labor,0.0d,8.0,8.0,At Completion Units,12/12/2025,1/6/2026,0,0,0,0,0,0,0,0,0,0,1.03_Accelerator Systems (AS),1.03.03_AS Superconducting Linac System (ScL),1.03.03.20_AS Superconducting Linac System Installation,1.03.03.20.76_HPRF - Waveguide Klystron Gallery Installation,AS_HPRF_WGKG_9620_Install Waveguide Klystron Gallery - Set 12,Metrology,,SLAC,Labor
82867,1.03,1.03.03,1.03.03.20,1.03.03.20.76,1.03.03.20.76,HPRF - Waveguide Klystron Gallery Installation,AS_HPRF_WGKG_9620,Install Waveguide Klystron Gallery - Set 12,8.0,12.0,12.0,12.0,12-14-26,01-06-27,AS_HPRF_WGKG_9610: FS,AS_HPRF_WGKG_9630: FS,SLAC,0%,52152.52152_FAC Fleet,52152_FAC Fleet,Labor,0.0d,8.0,8.0,At Completion Units,12/12/2025,1/6/2026,0,0,0,0,0,0,0,0,0,0,1.03_Accelerator Systems (AS),1.03.03_AS Superconducting Linac System (ScL),1.03.03.20_AS Superconducting Linac System Installation,1.03.03.20.76_HPRF - Waveguide Klystron Gallery Installation,AS_HPRF_WGKG_9620_Install Waveguide Klystron Gallery - Set 12,Support System,,SLAC,Labor
82868,1.03,1.03.03,1.03.03.20,1.03.03.20.76,1.03.03.20.76,HPRF - Waveguide Klystron Gallery Installation,AS_HPRF_WGKG_9620,Install Waveguide Klystron Gallery - Set 12,8.0,3.0,3.0,3.0,12-14-26,01-06-27,AS_HPRF_WGKG_9610: FS,AS_HPRF_WGKG_9630: FS,SLAC,0%,52143.52143_Instrumentation,52143_Instrumentation,Labor,0.0d,8.0,8.0,At Completion Units,12/12/2025,1/6/2026,0,0,0,0,0,0,0,0,0,0,1.03_Accelerator Systems (AS),1.03.03_AS Superconducting Linac System (ScL),1.03.03.20_AS Superconducting Linac System Installation,1.03.03.20.76_HPRF - Waveguide Klystron Gallery Installation,AS_HPRF_WGKG_9620_Install Waveguide Klystron Gallery - Set 12,Controls,,SLAC,Labor
82869,1.03,1.03.03,1.03.03.20,1.03.03.20.76,1.03.03.20.76,HPRF - Waveguide Klystron Gallery Installation,AS_HPRF_WGKG_9610,Install Waveguide Klystron Gallery - Set 11,8.0,17.0,17.0,17.0,12-02-26,12-11-26,AS_HPRF_WGKG_9600: FS,AS_HPRF_WGKG_9620: FS,SLAC,0%,52191.52191_METSMET Metrology,52191_METSMET Metrology,Labor,0.0d,8.0,8.0,At Completion Units,12/2/2025,12/11/2025,0,0,0,0,0,0,0,0,0,0,1.03_Accelerator Systems (AS),1.03.03_AS Superconducting Linac System (ScL),1.03.03.20_AS Superconducting Linac System Installation,1.03.03.20.76_HPRF - Waveguide Klystron Gallery Installation,AS_HPRF_WGKG_9610_Install Waveguide Klystron Gallery - Set 11,Metrology,,SLAC,Labor
82870,1.03,1.03.03,1.03.03.20,1.03.03.20.76,1.03.03.20.76,HPRF - Waveguide Klystron Gallery Installation,AS_HPRF_WGKG_9610,Install Waveguide Klystron Gallery - Set 11,8.0,12.0,12.0,12.0,12-02-26,12-11-26,AS_HPRF_WGKG_9600: FS,AS_HPRF_WGKG_9620: FS,SLAC,0%,52152.52152_FAC Fleet,52152_FAC Fleet,Labor,0.0d,8.0,8.0,At Completion Units,12/2/2025,12/11/2025,0,0,0,0,0,0,0,0,0,0,1.03_Accelerator Systems (AS),1.03.03_AS Superconducting Linac System (ScL),1.03.03.20_AS Superconducting Linac System Installation,1.03.03.20.76_HPRF - Waveguide Klystron Gallery Installation,AS_HPRF_WGKG_9610_Install Waveguide Klystron Gallery - Set 11,Support System,,SLAC,Labor
82871,1.03,1.03.03,1.03.03.20,1.03.03.20.76,1.03.03.20.76,HPRF - Waveguide Klystron Gallery Installation,AS_HPRF_WGKG_9610,Install Waveguide Klystron Gallery - Set 11,8.0,3.0,3.0,3.0,12-02-26,12-11-26,AS_HPRF_WGKG_9600: FS,AS_HPRF_WGKG_9620: FS,SLAC,0%,52143.52143_Instrumentation,52143_Instrumentation,Labor,0.0d,8.0,8.0,At Completion Units,12/2/2025,12/11/2025,0,0,0,0,0,0,0,0,0,0,1.03_Accelerator Systems (AS),1.03.03_AS Superconducting Linac System (ScL),1.03.03.20_AS Superconducting Linac System Installation,1.03.03.20.76_HPRF - Waveguide Klystron Gallery Installation,AS_HPRF_WGKG_9610_Install Waveguide Klystron Gallery - Set 11,Controls,,SLAC,Labor
82872,1.03,1.03.03,1.03.03.20,1.03.03.20.76,1.03.03.20.76,HPRF - Waveguide Klystron Gallery Installation,AS_HPRF_WGKG_9600,Install Waveguide Klystron Gallery - Set 10,8.0,17.0,17.0,17.0,11-18-26,12-01-26,AS_HPRF_WGKG_9590: FS,AS_HPRF_WGKG_9610: FS,SLAC,0%,52191.52191_METSMET Metrology,52191_METSMET Metrology,Labor,0.0d,8.0,8.0,At Completion Units,11/18/2025,12/1/2025,0,0,0,0,0,0,0,0,0,0,1.03_Accelerator Systems (AS),1.03.03_AS Superconducting Linac System (ScL),1.03.03.20_AS Superconducting Linac System Installation,1.03.03.20.76_HPRF - Waveguide Klystron Gallery Installation,AS_HPRF_WGKG_9600_Install Waveguide Klystron Gallery - Set 10,Metrology,,SLAC,Labor
82873,1.03,1.03.03,1.03.03.20,1.03.03.20.76,1.03.03.20.76,HPRF - Waveguide Klystron Gallery Installation,AS_HPRF_WGKG_9600,Install Waveguide Klystron Gallery - Set 10,8.0,12.0,12.0,12.0,11-18-26,12-01-26,AS_HPRF_WGKG_9590: FS,AS_HPRF_WGKG_9610: FS,SLAC,0%,52152.52152_FAC Fleet,52152_FAC Fleet,Labor,0.0d,8.0,8.0,At Completion Units,11/18/2025,12/1/2025,0,0,0,0,0,0,0,0,0,0,1.03_Accelerator Systems (AS),1.03.03_AS Superconducting Linac System (ScL),1.03.03.20_AS Superconducting Linac System Installation,1.03.03.20.76_HPRF - Waveguide Klystron Gallery Installation,AS_HPRF_WGKG_9600_Install Waveguide Klystron Gallery - Set 10,Support System,,SLAC,Labor
82874,1.03,1.03.03,1.03.03.20,1.03.03.20.76,1.03.03.20.76,HPRF - Waveguide Klystron Gallery Installation,AS_HPRF_WGKG_9600,Install Waveguide Klystron Gallery - Set 10,8.0,3.0,3.0,3.0,11-18-26,12-01-26,AS_HPRF_WGKG_9590: FS,AS_HPRF_WGKG_9610: FS,SLAC,0%,52143.52143_Instrumentation,52143_Instrumentation,Labor,0.0d,8.0,8.0,At Completion Units,11/18/2025,12/1/2025,0,0,0,0,0,0,0,0,0,0,1.03_Accelerator Systems (AS),1.03.03_AS Superconducting Linac System (ScL),1.03.03.20_AS Superconducting Linac System Installation,1.03.03.20.76_HPRF - Waveguide Klystron Gallery Installation,AS_HPRF_WGKG_9600_Install Waveguide Klystron Gallery - Set 10,Controls,,SLAC,Labor
82875,1.03,1.03.03,1.03.03.20,1.03.03.20.76,1.03.03.20.76,HPRF - Waveguide Klystron Gallery Installation,AS_HPRF_WGKG_9590,Install Waveguide Klystron Gallery - Set 9,8.0,17.0,17.0,17.0,11-06-26,11-17-26,AS_HPRF_WGKG_9580: FS,AS_HPRF_WGKG_9600: FS,SLAC,0%,52191.52191_METSMET Metrology,52191_METSMET Metrology,Labor,0.0d,8.0,8.0,At Completion Units,11/6/2025,11/17/2025,0,0,0,0,0,0,0,0,0,0,1.03_Accelerator Systems (AS),1.03.03_AS Superconducting Linac System (ScL),1.03.03.20_AS Superconducting Linac System Installation,1.03.03.20.76_HPRF - Waveguide Klystron Gallery Installation,AS_HPRF_WGKG_9590_Install Waveguide Klystron Gallery - Set 9,Metrology,,SLAC,Labor
82876,1.03,1.03.03,1.03.03.20,1.03.03.20.76,1.03.03.20.76,HPRF - Waveguide Klystron Gallery Installation,AS_HPRF_WGKG_9590,Install Waveguide Klystron Gallery - Set 9,8.0,12.0,12.0,12.0,11-06-26,11-17-26,AS_HPRF_WGKG_9580: FS,AS_HPRF_WGKG_9600: FS,SLAC,0%,52152.52152_FAC Fleet,52152_FAC Fleet,Labor,0.0d,8.0,8.0,At Completion Units,11/6/2025,11/17/2025,0,0,0,0,0,0,0,0,0,0,1.03_Accelerator Systems (AS),1.03.03_AS Superconducting Linac System (ScL),1.03.03.20_AS Superconducting Linac System Installation,1.03.03.20.76_HPRF - Waveguide Klystron Gallery Installation,AS_HPRF_WGKG_9590_Install Waveguide Klystron Gallery - Set 9,Support System,,SLAC,Labor
82877,1.03,1.03.03,1.03.03.20,1.03.03.20.76,1.03.03.20.76,HPRF - Waveguide Klystron Gallery Installation,AS_HPRF_WGKG_9590,Install Waveguide Klystron Gallery - Set 9,8.0,3.0,3.0,3.0,11-06-26,11-17-26,AS_HPRF_WGKG_9580: FS,AS_HPRF_WGKG_9600: FS,SLAC,0%,52143.52143_Instrumentation,52143_Instrumentation,Labor,0.0d,8.0,8.0,At Completion Units,11/6/2025,11/17/2025,0,0,0,0,0,0,0,0,0,0,1.03_Accelerator Systems (AS),1.03.03_AS Superconducting Linac System (ScL),1.03.03.20_AS Superconducting Linac System Installation,1.03.03.20.76_HPRF - Waveguide Klystron Gallery Installation,AS_HPRF_WGKG_9590_Install Waveguide Klystron Gallery - Set 9,Controls,,SLAC,Labor
82878,1.03,1.03.03,1.03.03.20,1.03.03.20.76,1.03.03.20.76,HPRF - Waveguide Klystron Gallery Installation,AS_HPRF_WGKG_9580,Install Waveguide Klystron Gallery - Set 8,8.0,17.0,17.0,17.0,10-27-26,11-05-26,AS_HPRF_WGKG_9570: FS,AS_HPRF_WGKG_9590: FS,SLAC,0%,52191.52191_METSMET Metrology,52191_METSMET Metrology,Labor,0.0d,8.0,8.0,At Completion Units,10/27/2025,11/5/2025,0,0,0,0,0,0,0,0,0,0,1.03_Accelerator Systems (AS),1.03.03_AS Superconducting Linac System (ScL),1.03.03.20_AS Superconducting Linac System Installation,1.03.03.20.76_HPRF - Waveguide Klystron Gallery Installation,AS_HPRF_WGKG_9580_Install Waveguide Klystron Gallery - Set 8,Metrology,,SLAC,Labor
82879,1.03,1.03.03,1.03.03.20,1.03.03.20.76,1.03.03.20.76,HPRF - Waveguide Klystron Gallery Installation,AS_HPRF_WGKG_9580,Install Waveguide Klystron Gallery - Set 8,8.0,12.0,12.0,12.0,10-27-26,11-05-26,AS_HPRF_WGKG_9570: FS,AS_HPRF_WGKG_9590: FS,SLAC,0%,52152.52152_FAC Fleet,52152_FAC Fleet,Labor,0.0d,8.0,8.0,At Completion Units,10/27/2025,11/5/2025,0,0,0,0,0,0,0,0,0,0,1.03_Accelerator Systems (AS),1.03.03_AS Superconducting Linac System (ScL),1.03.03.20_AS Superconducting Linac System Installation,1.03.03.20.76_HPRF - Waveguide Klystron Gallery Installation,AS_HPRF_WGKG_9580_Install Waveguide Klystron Gallery - Set 8,Support System,,SLAC,Labor
82880,1.03,1.03.03,1.03.03.20,1.03.03.20.76,1.03.03.20.76,HPRF - Waveguide Klystron Gallery Installation,AS_HPRF_WGKG_9580,Install Waveguide Klystron Gallery - Set 8,8.0,3.0,3.0,3.0,10-27-26,11-05-26,AS_HPRF_WGKG_9570: FS,AS_HPRF_WGKG_9590: FS,SLAC,0%,52143.52143_Instrumentation,52143_Instrumentation,Labor,0.0d,8.0,8.0,At Completion Units,10/27/2025,11/5/2025,0,0,0,0,0,0,0,0,0,0,1.03_Accelerator Systems (AS),1.03.03_AS Superconducting Linac System (ScL),1.03.03.20_AS Superconducting Linac System Installation,1.03.03.20.76_HPRF - Waveguide Klystron Gallery Installation,AS_HPRF_WGKG_9580_Install Waveguide Klystron Gallery - Set 8,Controls,,SLAC,Labor
82881,1.03,1.03.03,1.03.03.20,1.03.03.20.76,1.03.03.20.76,HPRF - Waveguide Klystron Gallery Installation,AS_HPRF_WGKG_9570,Install Waveguide Klystron Gallery - Set 7,8.0,17.0,17.0,17.0,10-15-26,10-26-26,AS_HPRF_WGKG_9560: FS,AS_HPRF_WGKG_9580: FS,SLAC,0%,52191.52191_METSMET Metrology,52191_METSMET Metrology,Labor,0.0d,8.0,8.0,At Completion Units,10/15/2025,10/24/2025,0,0,0,0,0,0,0,0,0,0,1.03_Accelerator Systems (AS),1.03.03_AS Superconducting Linac System (ScL),1.03.03.20_AS Superconducting Linac System Installation,1.03.03.20.76_HPRF - Waveguide Klystron Gallery Installation,AS_HPRF_WGKG_9570_Install Waveguide Klystron Gallery - Set 7,Metrology,,SLAC,Labor
82882,1.03,1.03.03,1.03.03.20,1.03.03.20.76,1.03.03.20.76,HPRF - Waveguide Klystron Gallery Installation,AS_HPRF_WGKG_9570,Install Waveguide Klystron Gallery - Set 7,8.0,12.0,12.0,12.0,10-15-26,10-26-26,AS_HPRF_WGKG_9560: FS,AS_HPRF_WGKG_9580: FS,SLAC,0%,52152.52152_FAC Fleet,52152_FAC Fleet,Labor,0.0d,8.0,8.0,At Completion Units,10/15/2025,10/24/2025,0,0,0,0,0,0,0,0,0,0,1.03_Accelerator Systems (AS),1.03.03_AS Superconducting Linac System (ScL),1.03.03.20_AS Superconducting Linac System Installation,1.03.03.20.76_HPRF - Waveguide Klystron Gallery Installation,AS_HPRF_WGKG_9570_Install Waveguide Klystron Gallery - Set 7,Support System,,SLAC,Labor
82883,1.03,1.03.03,1.03.03.20,1.03.03.20.76,1.03.03.20.76,HPRF - Waveguide Klystron Gallery Installation,AS_HPRF_WGKG_9570,Install Waveguide Klystron Gallery - Set 7,8.0,3.0,3.0,3.0,10-15-26,10-26-26,AS_HPRF_WGKG_9560: FS,AS_HPRF_WGKG_9580: FS,SLAC,0%,52143.52143_Instrumentation,52143_Instrumentation,Labor,0.0d,8.0,8.0,At Completion Units,10/15/2025,10/24/2025,0,0,0,0,0,0,0,0,0,0,1.03_Accelerator Systems (AS),1.03.03_AS Superconducting Linac System (ScL),1.03.03.20_AS Superconducting Linac System Installation,1.03.03.20.76_HPRF - Waveguide Klystron Gallery Installation,AS_HPRF_WGKG_9570_Install Waveguide Klystron Gallery - Set 7,Controls,,SLAC,Labor
82884,1.03,1.03.03,1.03.03.20,1.03.03.20.76,1.03.03.20.76,HPRF - Waveguide Klystron Gallery Installation,AS_HPRF_WGKG_9560,Install Waveguide Klystron Gallery - Set 6,8.0,17.0,17.0,17.0,10-05-26,10-14-26,AS_HPRF_WGKG_9550: FS,AS_HPRF_WGKG_9570: FS,SLAC,0%,52191.52191_METSMET Metrology,52191_METSMET Metrology,Labor,0.0d,8.0,8.0,At Completion Units,10/3/2025,10/14/2025,0,0,0,0,0,0,0,0,0,0,1.03_Accelerator Systems (AS),1.03.03_AS Superconducting Linac System (ScL),1.03.03.20_AS Superconducting Linac System Installation,1.03.03.20.76_HPRF - Waveguide Klystron Gallery Installation,AS_HPRF_WGKG_9560_Install Waveguide Klystron Gallery - Set 6,Metrology,,SLAC,Labor
82885,1.03,1.03.03,1.03.03.20,1.03.03.20.76,1.03.03.20.76,HPRF - Waveguide Klystron Gallery Installation,AS_HPRF_WGKG_9560,Install Waveguide Klystron Gallery - Set 6,8.0,12.0,12.0,12.0,10-05-26,10-14-26,AS_HPRF_WGKG_9550: FS,AS_HPRF_WGKG_9570: FS,SLAC,0%,52152.52152_FAC Fleet,52152_FAC Fleet,Labor,0.0d,8.0,8.0,At Completion Units,10/3/2025,10/14/2025,0,0,0,0,0,0,0,0,0,0,1.03_Accelerator Systems (AS),1.03.03_AS Superconducting Linac System (ScL),1.03.03.20_AS Superconducting Linac System Installation,1.03.03.20.76_HPRF - Waveguide Klystron Gallery Installation,AS_HPRF_WGKG_9560_Install Waveguide Klystron Gallery - Set 6,Support System,,SLAC,Labor
82886,1.03,1.03.03,1.03.03.20,1.03.03.20.76,1.03.03.20.76,HPRF - Waveguide Klystron Gallery Installation,AS_HPRF_WGKG_9560,Install Waveguide Klystron Gallery - Set 6,8.0,3.0,3.0,3.0,10-05-26,10-14-26,AS_HPRF_WGKG_9550: FS,AS_HPRF_WGKG_9570: FS,SLAC,0%,52143.52143_Instrumentation,52143_Instrumentation,Labor,0.0d,8.0,8.0,At Completion Units,10/3/2025,10/14/2025,0,0,0,0,0,0,0,0,0,0,1.03_Accelerator Systems (AS),1.03.03_AS Superconducting Linac System (ScL),1.03.03.20_AS Superconducting Linac System Installation,1.03.03.20.76_HPRF - Waveguide Klystron Gallery Installation,AS_HPRF_WGKG_9560_Install Waveguide Klystron Gallery - Set 6,Controls,,SLAC,Labor
82887,1.03,1.03.03,1.03.03.20,1.03.03.20.76,1.03.03.20.76,HPRF - Waveguide Klystron Gallery Installation,AS_HPRF_WGKG_9550,Install Waveguide Klystron Gallery - Set 5,8.0,17.0,17.0,17.0,09-23-26,10-02-26,AS_HPRF_WGKG_9540: FS,AS_HPRF_WGKG_9560: FS,SLAC,0%,52191.52191_METSMET Metrology,52191_METSMET Metrology,Labor,0.0d,8.0,8.0,At Completion Units,9/23/2025,10/2/2025,0,0,0,0,0,0,0,0,0,0,1.03_Accelerator Systems (AS),1.03.03_AS Superconducting Linac System (ScL),1.03.03.20_AS Superconducting Linac System Installation,1.03.03.20.76_HPRF - Waveguide Klystron Gallery Installation,AS_HPRF_WGKG_9550_Install Waveguide Klystron Gallery - Set 5,Metrology,,SLAC,Labor
82888,1.03,1.03.03,1.03.03.20,1.03.03.20.76,1.03.03.20.76,HPRF - Waveguide Klystron Gallery Installation,AS_HPRF_WGKG_9550,Install Waveguide Klystron Gallery - Set 5,8.0,12.0,12.0,12.0,09-23-26,10-02-26,AS_HPRF_WGKG_9540: FS,AS_HPRF_WGKG_9560: FS,SLAC,0%,52152.52152_FAC Fleet,52152_FAC Fleet,Labor,0.0d,8.0,8.0,At Completion Units,9/23/2025,10/2/2025,0,0,0,0,0,0,0,0,0,0,1.03_Accelerator Systems (AS),1.03.03_AS Superconducting Linac System (ScL),1.03.03.20_AS Superconducting Linac System Installation,1.03.03.20.76_HPRF - Waveguide Klystron Gallery Installation,AS_HPRF_WGKG_9550_Install Waveguide Klystron Gallery - Set 5,Support System,,SLAC,Labor
82889,1.03,1.03.03,1.03.03.20,1.03.03.20.76,1.03.03.20.76,HPRF - Waveguide Klystron Gallery Installation,AS_HPRF_WGKG_9550,Install Waveguide Klystron Gallery - Set 5,8.0,3.0,3.0,3.0,09-23-26,10-02-26,AS_HPRF_WGKG_9540: FS,AS_HPRF_WGKG_9560: FS,SLAC,0%,52143.52143_Instrumentation,52143_Instrumentation,Labor,0.0d,8.0,8.0,At Completion Units,9/23/2025,10/2/2025,0,0,0,0,0,0,0,0,0,0,1.03_Accelerator Systems (AS),1.03.03_AS Superconducting Linac System (ScL),1.03.03.20_AS Superconducting Linac System Installation,1.03.03.20.76_HPRF - Waveguide Klystron Gallery Installation,AS_HPRF_WGKG_9550_Install Waveguide Klystron Gallery - Set 5,Controls,,SLAC,Labor
82890,1.03,1.03.03,1.03.03.20,1.03.03.20.76,1.03.03.20.76,HPRF - Waveguide Klystron Gallery Installation,AS_HPRF_WGKG_9540,Install Waveguide Klystron Gallery - Set 4,8.0,17.0,17.0,17.0,09-11-26,09-22-26,AS_HPRF_WGKG_9530: FS,AS_HPRF_WGKG_9550: FS,SLAC,0%,52191.52191_METSMET Metrology,52191_METSMET Metrology,Labor,0.0d,8.0,8.0,At Completion Units,9/11/2025,9/22/2025,0,0,0,0,0,0,0,0,0,0,1.03_Accelerator Systems (AS),1.03.03_AS Superconducting Linac System (ScL),1.03.03.20_AS Superconducting Linac System Installation,1.03.03.20.76_HPRF - Waveguide Klystron Gallery Installation,AS_HPRF_WGKG_9540_Install Waveguide Klystron Gallery - Set 4,Metrology,,SLAC,Labor
82891,1.03,1.03.03,1.03.03.20,1.03.03.20.76,1.03.03.20.76,HPRF - Waveguide Klystron Gallery Installation,AS_HPRF_WGKG_9540,Install Waveguide Klystron Gallery - Set 4,8.0,12.0,12.0,12.0,09-11-26,09-22-26,AS_HPRF_WGKG_9530: FS,AS_HPRF_WGKG_9550: FS,SLAC,0%,52152.52152_FAC Fleet,52152_FAC Fleet,Labor,0.0d,8.0,8.0,At Completion Units,9/11/2025,9/22/2025,0,0,0,0,0,0,0,0,0,0,1.03_Accelerator Systems (AS),1.03.03_AS Superconducting Linac System (ScL),1.03.03.20_AS Superconducting Linac System Installation,1.03.03.20.76_HPRF - Waveguide Klystron Gallery Installation,AS_HPRF_WGKG_9540_Install Waveguide Klystron Gallery - Set 4,Support System,,SLAC,Labor
82892,1.03,1.03.03,1.03.03.20,1.03.03.20.76,1.03.03.20.76,HPRF - Waveguide Klystron Gallery Installation,AS_HPRF_WGKG_9540,Install Waveguide Klystron Gallery - Set 4,8.0,3.0,3.0,3.0,09-11-26,09-22-26,AS_HPRF_WGKG_9530: FS,AS_HPRF_WGKG_9550: FS,SLAC,0%,52143.52143_Instrumentation,52143_Instrumentation,Labor,0.0d,8.0,8.0,At Completion Units,9/11/2025,9/22/2025,0,0,0,0,0,0,0,0,0,0,1.03_Accelerator Systems (AS),1.03.03_AS Superconducting Linac System (ScL),1.03.03.20_AS Superconducting Linac System Installation,1.03.03.20.76_HPRF - Waveguide Klystron Gallery Installation,AS_HPRF_WGKG_9540_Install Waveguide Klystron Gallery - Set 4,Controls,,SLAC,Labor
82893,1.03,1.03.03,1.03.03.20,1.03.03.20.76,1.03.03.20.76,HPRF - Waveguide Klystron Gallery Installation,AS_HPRF_WGKG_9530,Install Waveguide Klystron Gallery - Set 3,8.0,17.0,17.0,17.0,08-31-26,09-10-26,AS_HPRF_WGKG_9520: FS,AS_HPRF_WGKG_9540: FS,SLAC,0%,52191.52191_METSMET Metrology,52191_METSMET Metrology,Labor,0.0d,8.0,8.0,At Completion Units,8/29/2025,9/10/2025,0,0,0,0,0,0,0,0,0,0,1.03_Accelerator Systems (AS),1.03.03_AS Superconducting Linac System (ScL),1.03.03.20_AS Superconducting Linac System Installation,1.03.03.20.76_HPRF - Waveguide Klystron Gallery Installation,AS_HPRF_WGKG_9530_Install Waveguide Klystron Gallery - Set 3,Metrology,,SLAC,Labor
82894,1.03,1.03.03,1.03.03.20,1.03.03.20.76,1.03.03.20.76,HPRF - Waveguide Klystron Gallery Installation,AS_HPRF_WGKG_9530,Install Waveguide Klystron Gallery - Set 3,8.0,12.0,12.0,12.0,08-31-26,09-10-26,AS_HPRF_WGKG_9520: FS,AS_HPRF_WGKG_9540: FS,SLAC,0%,52152.52152_FAC Fleet,52152_FAC Fleet,Labor,0.0d,8.0,8.0,At Completion Units,8/29/2025,9/10/2025,0,0,0,0,0,0,0,0,0,0,1.03_Accelerator Systems (AS),1.03.03_AS Superconducting Linac System (ScL),1.03.03.20_AS Superconducting Linac System Installation,1.03.03.20.76_HPRF - Waveguide Klystron Gallery Installation,AS_HPRF_WGKG_9530_Install Waveguide Klystron Gallery - Set 3,Support System,,SLAC,Labor
82895,1.03,1.03.03,1.03.03.20,1.03.03.20.76,1.03.03.20.76,HPRF - Waveguide Klystron Gallery Installation,AS_HPRF_WGKG_9530,Install Waveguide Klystron Gallery - Set 3,8.0,3.0,3.0,3.0,08-31-26,09-10-26,AS_HPRF_WGKG_9520: FS,AS_HPRF_WGKG_9540: FS,SLAC,0%,52143.52143_Instrumentation,52143_Instrumentation,Labor,0.0d,8.0,8.0,At Completion Units,8/29/2025,9/10/2025,0,0,0,0,0,0,0,0,0,0,1.03_Accelerator Systems (AS),1.03.03_AS Superconducting Linac System (ScL),1.03.03.20_AS Superconducting Linac System Installation,1.03.03.20.76_HPRF - Waveguide Klystron Gallery Installation,AS_HPRF_WGKG_9530_Install Waveguide Klystron Gallery - Set 3,Controls,,SLAC,Labor
82896,1.03,1.03.03,1.03.03.20,1.03.03.20.76,1.03.03.20.76,HPRF - Waveguide Klystron Gallery Installation,AS_HPRF_WGKG_9520,Install Waveguide Klystron Gallery - Set 2,8.0,17.0,17.0,17.0,08-19-26,08-28-26,AS_HPRF_WGKG_9510: FS,AS_HPRF_WGKG_9530: FS,SLAC,0%,52191.52191_METSMET Metrology,52191_METSMET Metrology,Labor,0.0d,8.0,8.0,At Completion Units,8/19/2025,8/28/2025,0,0,0,0,0,0,0,0,0,0,1.03_Accelerator Systems (AS),1.03.03_AS Superconducting Linac System (ScL),1.03.03.20_AS Superconducting Linac System Installation,1.03.03.20.76_HPRF - Waveguide Klystron Gallery Installation,AS_HPRF_WGKG_9520_Install Waveguide Klystron Gallery - Set 2,Metrology,,SLAC,Labor
82897,1.03,1.03.03,1.03.03.20,1.03.03.20.76,1.03.03.20.76,HPRF - Waveguide Klystron Gallery Installation,AS_HPRF_WGKG_9520,Install Waveguide Klystron Gallery - Set 2,8.0,12.0,12.0,12.0,08-19-26,08-28-26,AS_HPRF_WGKG_9510: FS,AS_HPRF_WGKG_9530: FS,SLAC,0%,52152.52152_FAC Fleet,52152_FAC Fleet,Labor,0.0d,8.0,8.0,At Completion Units,8/19/2025,8/28/2025,0,0,0,0,0,0,0,0,0,0,1.03_Accelerator Systems (AS),1.03.03_AS Superconducting Linac System (ScL),1.03.03.20_AS Superconducting Linac System Installation,1.03.03.20.76_HPRF - Waveguide Klystron Gallery Installation,AS_HPRF_WGKG_9520_Install Waveguide Klystron Gallery - Set 2,Support System,,SLAC,Labor
82898,1.03,1.03.03,1.03.03.20,1.03.03.20.76,1.03.03.20.76,HPRF - Waveguide Klystron Gallery Installation,AS_HPRF_WGKG_9520,Install Waveguide Klystron Gallery - Set 2,8.0,3.0,3.0,3.0,08-19-26,08-28-26,AS_HPRF_WGKG_9510: FS,AS_HPRF_WGKG_9530: FS,SLAC,0%,52143.52143_Instrumentation,52143_Instrumentation,Labor,0.0d,8.0,8.0,At Completion Units,8/19/2025,8/28/2025,0,0,0,0,0,0,0,0,0,0,1.03_Accelerator Systems (AS),1.03.03_AS Superconducting Linac System (ScL),1.03.03.20_AS Superconducting Linac System Installation,1.03.03.20.76_HPRF - Waveguide Klystron Gallery Installation,AS_HPRF_WGKG_9520_Install Waveguide Klystron Gallery - Set 2,Controls,,SLAC,Labor
82899,1.03,1.03.03,1.03.03.20,1.03.03.20.76,1.03.03.20.76,HPRF - Waveguide Klystron Gallery Installation,AS_HPRF_WGKG_9510,Install Waveguide Klystron Gallery - Set 1,8.0,17.0,17.0,17.0,08-07-26,08-18-26,AS_HPRF_WGKG_9500: FS,AS_HPRF_WGKG_9520: FS,SLAC,0%,52191.52191_METSMET Metrology,52191_METSMET Metrology,Labor,0.0d,8.0,8.0,At Completion Units,8/7/2025,8/18/2025,0,0,0,0,0,0,0,0,0,0,1.03_Accelerator Systems (AS),1.03.03_AS Superconducting Linac System (ScL),1.03.03.20_AS Superconducting Linac System Installation,1.03.03.20.76_HPRF - Waveguide Klystron Gallery Installation,AS_HPRF_WGKG_9510_Install Waveguide Klystron Gallery - Set 1,Metrology,,SLAC,Labor
82900,1.03,1.03.03,1.03.03.20,1.03.03.20.76,1.03.03.20.76,HPRF - Waveguide Klystron Gallery Installation,AS_HPRF_WGKG_9510,Install Waveguide Klystron Gallery - Set 1,8.0,12.0,12.0,12.0,08-07-26,08-18-26,AS_HPRF_WGKG_9500: FS,AS_HPRF_WGKG_9520: FS,SLAC,0%,52152.52152_FAC Fleet,52152_FAC Fleet,Labor,0.0d,8.0,8.0,At Completion Units,8/7/2025,8/18/2025,0,0,0,0,0,0,0,0,0,0,1.03_Accelerator Systems (AS),1.03.03_AS Superconducting Linac System (ScL),1.03.03.20_AS Superconducting Linac System Installation,1.03.03.20.76_HPRF - Waveguide Klystron Gallery Installation,AS_HPRF_WGKG_9510_Install Waveguide Klystron Gallery - Set 1,Support System,,SLAC,Labor
82901,1.03,1.03.03,1.03.03.20,1.03.03.20.76,1.03.03.20.76,HPRF - Waveguide Klystron Gallery Installation,AS_HPRF_WGKG_9510,Install Waveguide Klystron Gallery - Set 1,8.0,3.0,3.0,3.0,08-07-26,08-18-26,AS_HPRF_WGKG_9500: FS,AS_HPRF_WGKG_9520: FS,SLAC,0%,52143.52143_Instrumentation,52143_Instrumentation,Labor,0.0d,8.0,8.0,At Completion Units,8/7/2025,8/18/2025,0,0,0,0,0,0,0,0,0,0,1.03_Accelerator Systems (AS),1.03.03_AS Superconducting Linac System (ScL),1.03.03.20_AS Superconducting Linac System Installation,1.03.03.20.76_HPRF - Waveguide Klystron Gallery Installation,AS_HPRF_WGKG_9510_Install Waveguide Klystron Gallery - Set 1,Controls,,SLAC,Labor
82902,1.03,1.03.03,1.03.03.20,1.03.03.20.76,1.03.03.20.76,HPRF - Waveguide Klystron Gallery Installation,AS_HPRF_WGKG_9500,Install Waveguide Klystron Gallery - Set 0,8.0,5.0,5.0,5.0,07-28-26,08-06-26,"AS_HPRF_WGKG_9140: FS, AS_HPRF_RQD_9320: FS, AS_HPRF_RQD_9310: FS, AS_HPRF_SSA_9240: FS, AS_HPRF_NPA_6130: FS","AS_HPRF_WGKG_9510: FS, AS_HPRF_WG_9900: FS",SLAC,0%,52143.52143_Instrumentation,52143_Instrumentation,Labor,0.0d,8.0,8.0,At Completion Units,7/28/2025,8/6/2025,0,0,0,0,0,0,0,0,0,0,1.03_Accelerator Systems (AS),1.03.03_AS Superconducting Linac System (ScL),1.03.03.20_AS Superconducting Linac System Installation,1.03.03.20.76_HPRF - Waveguide Klystron Gallery Installation,AS_HPRF_WGKG_9500_Install Waveguide Klystron Gallery - Set 0,Controls,,SLAC,Labor
82903,1.03,1.03.03,1.03.03.20,1.03.03.20.76,1.03.03.20.76,HPRF - Waveguide Klystron Gallery Installation,AS_HPRF_WGKG_9500,Install Waveguide Klystron Gallery - Set 0,8.0,14.0,14.0,14.0,07-28-26,08-06-26,"AS_HPRF_WGKG_9140: FS, AS_HPRF_RQD_9320: FS, AS_HPRF_RQD_9310: FS, AS_HPRF_SSA_9240: FS, AS_HPRF_NPA_6130: FS","AS_HPRF_WGKG_9510: FS, AS_HPRF_WG_9900: FS",SLAC,0%,52152.52152_FAC Fleet,52152_FAC Fleet,Labor,0.0d,8.0,8.0,At Completion Units,7/28/2025,8/6/2025,0,0,0,0,0,0,0,0,0,0,1.03_Accelerator Systems (AS),1.03.03_AS Superconducting Linac System (ScL),1.03.03.20_AS Superconducting Linac System Installation,1.03.03.20.76_HPRF - Waveguide Klystron Gallery Installation,AS_HPRF_WGKG_9500_Install Waveguide Klystron Gallery - Set 0,Support System,,SLAC,Labor
82904,1.03,1.03.03,1.03.03.20,1.03.03.20.76,1.03.03.20.76,HPRF - Waveguide Klystron Gallery Installation,AS_HPRF_WGKG_9500,Install Waveguide Klystron Gallery - Set 0,8.0,18.0,18.0,18.0,07-28-26,08-06-26,"AS_HPRF_WGKG_9140: FS, AS_HPRF_RQD_9320: FS, AS_HPRF_RQD_9310: FS, AS_HPRF_SSA_9240: FS, AS_HPRF_NPA_6130: FS","AS_HPRF_WGKG_9510: FS, AS_HPRF_WG_9900: FS",SLAC,0%,52191.52191_METSMET Metrology,52191_METSMET Metrology,Labor,0.0d,8.0,8.0,At Completion Units,7/28/2025,8/6/2025,0,0,0,0,0,0,0,0,0,0,1.03_Accelerator Systems (AS),1.03.03_AS Superconducting Linac System (ScL),1.03.03.20_AS Superconducting Linac System Installation,1.03.03.20.76_HPRF - Waveguide Klystron Gallery Installation,AS_HPRF_WGKG_9500_Install Waveguide Klystron Gallery - Set 0,Metrology,,SLAC,Labor
82905,1.03,1.03.03,1.03.03.20,1.03.03.20.76,1.03.03.20.76,HPRF - Waveguide Klystron Gallery Installation,AS_HPRF_WGKG_9730,Install Waveguide Klystron Gallery - Set 23,8.0,12.0,12.0,12.0,05-03-27,05-12-27,"AS_HPRF_WGKG_9720: FS, AS_HPRF_WGKG_9330: FS, AS_HPRF_WG_9900: FF","AS_HPRF_WGCM_9900: FF, AS_HPRF_WGKG_9740: FS",SLAC,0%,52198.52198_METSMANF (METSD Manufacturing),52198_METSMANF (METSD Manufacturing),Labor,0.0d,8.0,8.0,At Completion Units,5/1/2026,5/12/2026,0,0,0,0,0,0,0,0,0,0,1.03_Accelerator Systems (AS),1.03.03_AS Superconducting Linac System (ScL),1.03.03.20_AS Superconducting Linac System Installation,1.03.03.20.76_HPRF - Waveguide Klystron Gallery Installation,AS_HPRF_WGKG_9730_Install Waveguide Klystron Gallery - Set 23,Manufacturing,,SLAC,Labor
82906,1.03,1.03.03,1.03.03.20,1.03.03.20.76,1.03.03.20.76,HPRF - Waveguide Klystron Gallery Installation,AS_HPRF_WGKG_9730,Install Waveguide Klystron Gallery - Set 23,8.0,295.0,295.0,295.0,05-03-27,05-12-27,"AS_HPRF_WGKG_9720: FS, AS_HPRF_WGKG_9330: FS, AS_HPRF_WG_9900: FF","AS_HPRF_WGCM_9900: FF, AS_HPRF_WGKG_9740: FS",SLAC,0%,52178.52178_RF Vacuum Tube Fab,52178_RF Vacuum Tube Fab,Labor,0.0d,8.0,8.0,At Completion Units,5/1/2026,5/12/2026,0,0,0,0,0,0,0,0,0,0,1.03_Accelerator Systems (AS),1.03.03_AS Superconducting Linac System (ScL),1.03.03.20_AS Superconducting Linac System Installation,1.03.03.20.76_HPRF - Waveguide Klystron Gallery Installation,AS_HPRF_WGKG_9730_Install Waveguide Klystron Gallery - Set 23,RF Fab,,SLAC,Labor
82907,1.03,1.03.03,1.03.03.20,1.03.03.20.76,1.03.03.20.76,HPRF - Waveguide Klystron Gallery Installation,AS_HPRF_WGKG_9720,Install Waveguide Klystron Gallery - Set 22,8.0,12.0,12.0,12.0,04-21-27,04-30-27,AS_HPRF_WGKG_9710: FS,AS_HPRF_WGKG_9730: FS,SLAC,0%,52198.52198_METSMANF (METSD Manufacturing),52198_METSMANF (METSD Manufacturing),Labor,0.0d,8.0,8.0,At Completion Units,4/21/2026,4/30/2026,0,0,0,0,0,0,0,0,0,0,1.03_Accelerator Systems (AS),1.03.03_AS Superconducting Linac System (ScL),1.03.03.20_AS Superconducting Linac System Installation,1.03.03.20.76_HPRF - Waveguide Klystron Gallery Installation,AS_HPRF_WGKG_9720_Install Waveguide Klystron Gallery - Set 22,Manufacturing,,SLAC,Labor
82908,1.03,1.03.03,1.03.03.20,1.03.03.20.76,1.03.03.20.76,HPRF - Waveguide Klystron Gallery Installation,AS_HPRF_WGKG_9720,Install Waveguide Klystron Gallery - Set 22,8.0,295.0,295.0,295.0,04-21-27,04-30-27,AS_HPRF_WGKG_9710: FS,AS_HPRF_WGKG_9730: FS,SLAC,0%,52178.52178_RF Vacuum Tube Fab,52178_RF Vacuum Tube Fab,Labor,0.0d,8.0,8.0,At Completion Units,4/21/2026,4/30/2026,0,0,0,0,0,0,0,0,0,0,1.03_Accelerator Systems (AS),1.03.03_AS Superconducting Linac System (ScL),1.03.03.20_AS Superconducting Linac System Installation,1.03.03.20.76_HPRF - Waveguide Klystron Gallery Installation,AS_HPRF_WGKG_9720_Install Waveguide Klystron Gallery - Set 22,RF Fab,,SLAC,Labor
82909,1.03,1.03.03,1.03.03.20,1.03.03.20.76,1.03.03.20.76,HPRF - Waveguide Klystron Gallery Installation,AS_HPRF_WGKG_9710,Install Waveguide Klystron Gallery - Set 21,8.0,12.0,12.0,12.0,04-09-27,04-20-27,AS_HPRF_WGKG_9700: FS,AS_HPRF_WGKG_9720: FS,SLAC,0%,52198.52198_METSMANF (METSD Manufacturing),52198_METSMANF (METSD Manufacturing),Labor,0.0d,8.0,8.0,At Completion Units,4/9/2026,4/20/2026,0,0,0,0,0,0,0,0,0,0,1.03_Accelerator Systems (AS),1.03.03_AS Superconducting Linac System (ScL),1.03.03.20_AS Superconducting Linac System Installation,1.03.03.20.76_HPRF - Waveguide Klystron Gallery Installation,AS_HPRF_WGKG_9710_Install Waveguide Klystron Gallery - Set 21,Manufacturing,,SLAC,Labor
82910,1.03,1.03.03,1.03.03.20,1.03.03.20.76,1.03.03.20.76,HPRF - Waveguide Klystron Gallery Installation,AS_HPRF_WGKG_9710,Install Waveguide Klystron Gallery - Set 21,8.0,295.0,295.0,295.0,04-09-27,04-20-27,AS_HPRF_WGKG_9700: FS,AS_HPRF_WGKG_9720: FS,SLAC,0%,52178.52178_RF Vacuum Tube Fab,52178_RF Vacuum Tube Fab,Labor,0.0d,8.0,8.0,At Completion Units,4/9/2026,4/20/2026,0,0,0,0,0,0,0,0,0,0,1.03_Accelerator Systems (AS),1.03.03_AS Superconducting Linac System (ScL),1.03.03.20_AS Superconducting Linac System Installation,1.03.03.20.76_HPRF - Waveguide Klystron Gallery Installation,AS_HPRF_WGKG_9710_Install Waveguide Klystron Gallery - Set 21,RF Fab,,SLAC,Labor
82911,1.03,1.03.03,1.03.03.20,1.03.03.20.76,1.03.03.20.76,HPRF - Waveguide Klystron Gallery Installation,AS_HPRF_WGKG_9700,Install Waveguide Klystron Gallery - Set 20,8.0,12.0,12.0,12.0,03-30-27,04-08-27,AS_HPRF_WGKG_9690: FS,AS_HPRF_WGKG_9710: FS,SLAC,0%,52198.52198_METSMANF (METSD Manufacturing),52198_METSMANF (METSD Manufacturing),Labor,0.0d,8.0,8.0,At Completion Units,3/30/2026,4/8/2026,0,0,0,0,0,0,0,0,0,0,1.03_Accelerator Systems (AS),1.03.03_AS Superconducting Linac System (ScL),1.03.03.20_AS Superconducting Linac System Installation,1.03.03.20.76_HPRF - Waveguide Klystron Gallery Installation,AS_HPRF_WGKG_9700_Install Waveguide Klystron Gallery - Set 20,Manufacturing,,SLAC,Labor
82912,1.03,1.03.03,1.03.03.20,1.03.03.20.76,1.03.03.20.76,HPRF - Waveguide Klystron Gallery Installation,AS_HPRF_WGKG_9700,Install Waveguide Klystron Gallery - Set 20,8.0,295.0,295.0,295.0,03-30-27,04-08-27,AS_HPRF_WGKG_9690: FS,AS_HPRF_WGKG_9710: FS,SLAC,0%,52178.52178_RF Vacuum Tube Fab,52178_RF Vacuum Tube Fab,Labor,0.0d,8.0,8.0,At Completion Units,3/30/2026,4/8/2026,0,0,0,0,0,0,0,0,0,0,1.03_Accelerator Systems (AS),1.03.03_AS Superconducting Linac System (ScL),1.03.03.20_AS Superconducting Linac System Installation,1.03.03.20.76_HPRF - Waveguide Klystron Gallery Installation,AS_HPRF_WGKG_9700_Install Waveguide Klystron Gallery - Set 20,RF Fab,,SLAC,Labor
82913,1.03,1.03.03,1.03.03.20,1.03.03.20.76,1.03.03.20.76,HPRF - Waveguide Klystron Gallery Installation,AS_HPRF_WGKG_9690,Install Waveguide Klystron Gallery - Set 19,8.0,12.0,12.0,12.0,03-18-27,03-29-27,AS_HPRF_WGKG_9680: FS,AS_HPRF_WGKG_9700: FS,SLAC,0%,52198.52198_METSMANF (METSD Manufacturing),52198_METSMANF (METSD Manufacturing),Labor,0.0d,8.0,8.0,At Completion Units,3/18/2026,3/27/2026,0,0,0,0,0,0,0,0,0,0,1.03_Accelerator Systems (AS),1.03.03_AS Superconducting Linac System (ScL),1.03.03.20_AS Superconducting Linac System Installation,1.03.03.20.76_HPRF - Waveguide Klystron Gallery Installation,AS_HPRF_WGKG_9690_Install Waveguide Klystron Gallery - Set 19,Manufacturing,,SLAC,Labor
82914,1.03,1.03.03,1.03.03.20,1.03.03.20.76,1.03.03.20.76,HPRF - Waveguide Klystron Gallery Installation,AS_HPRF_WGKG_9690,Install Waveguide Klystron Gallery - Set 19,8.0,295.0,295.0,295.0,03-18-27,03-29-27,AS_HPRF_WGKG_9680: FS,AS_HPRF_WGKG_9700: FS,SLAC,0%,52178.52178_RF Vacuum Tube Fab,52178_RF Vacuum Tube Fab,Labor,0.0d,8.0,8.0,At Completion Units,3/18/2026,3/27/2026,0,0,0,0,0,0,0,0,0,0,1.03_Accelerator Systems (AS),1.03.03_AS Superconducting Linac System (ScL),1.03.03.20_AS Superconducting Linac System Installation,1.03.03.20.76_HPRF - Waveguide Klystron Gallery Installation,AS_HPRF_WGKG_9690_Install Waveguide Klystron Gallery - Set 19,RF Fab,,SLAC,Labor
82915,1.03,1.03.03,1.03.03.20,1.03.03.20.76,1.03.03.20.76,HPRF - Waveguide Klystron Gallery Installation,AS_HPRF_WGKG_9680,Install Waveguide Klystron Gallery - Set 18,8.0,12.0,12.0,12.0,03-08-27,03-17-27,AS_HPRF_WGKG_9670: FS,AS_HPRF_WGKG_9690: FS,SLAC,0%,52198.52198_METSMANF (METSD Manufacturing),52198_METSMANF (METSD Manufacturing),Labor,0.0d,8.0,8.0,At Completion Units,3/6/2026,3/17/2026,0,0,0,0,0,0,0,0,0,0,1.03_Accelerator Systems (AS),1.03.03_AS Superconducting Linac System (ScL),1.03.03.20_AS Superconducting Linac System Installation,1.03.03.20.76_HPRF - Waveguide Klystron Gallery Installation,AS_HPRF_WGKG_9680_Install Waveguide Klystron Gallery - Set 18,Manufacturing,,SLAC,Labor
82916,1.03,1.03.03,1.03.03.20,1.03.03.20.76,1.03.03.20.76,HPRF - Waveguide Klystron Gallery Installation,AS_HPRF_WGKG_9680,Install Waveguide Klystron Gallery - Set 18,8.0,295.0,295.0,295.0,03-08-27,03-17-27,AS_HPRF_WGKG_9670: FS,AS_HPRF_WGKG_9690: FS,SLAC,0%,52178.52178_RF Vacuum Tube Fab,52178_RF Vacuum Tube Fab,Labor,0.0d,8.0,8.0,At Completion Units,3/6/2026,3/17/2026,0,0,0,0,0,0,0,0,0,0,1.03_Accelerator Systems (AS),1.03.03_AS Superconducting Linac System (ScL),1.03.03.20_AS Superconducting Linac System Installation,1.03.03.20.76_HPRF - Waveguide Klystron Gallery Installation,AS_HPRF_WGKG_9680_Install Waveguide Klystron Gallery - Set 18,RF Fab,,SLAC,Labor
82917,1.03,1.03.03,1.03.03.20,1.03.03.20.76,1.03.03.20.76,HPRF - Waveguide Klystron Gallery Installation,AS_HPRF_WGKG_9670,Install Waveguide Klystron Gallery - Set 17,8.0,12.0,12.0,12.0,02-24-27,03-05-27,AS_HPRF_WGKG_9660: FS,AS_HPRF_WGKG_9680: FS,SLAC,0%,52198.52198_METSMANF (METSD Manufacturing),52198_METSMANF (METSD Manufacturing),Labor,0.0d,8.0,8.0,At Completion Units,2/24/2026,3/5/2026,0,0,0,0,0,0,0,0,0,0,1.03_Accelerator Systems (AS),1.03.03_AS Superconducting Linac System (ScL),1.03.03.20_AS Superconducting Linac System Installation,1.03.03.20.76_HPRF - Waveguide Klystron Gallery Installation,AS_HPRF_WGKG_9670_Install Waveguide Klystron Gallery - Set 17,Manufacturing,,SLAC,Labor
82918,1.03,1.03.03,1.03.03.20,1.03.03.20.76,1.03.03.20.76,HPRF - Waveguide Klystron Gallery Installation,AS_HPRF_WGKG_9670,Install Waveguide Klystron Gallery - Set 17,8.0,295.0,295.0,295.0,02-24-27,03-05-27,AS_HPRF_WGKG_9660: FS,AS_HPRF_WGKG_9680: FS,SLAC,0%,52178.52178_RF Vacuum Tube Fab,52178_RF Vacuum Tube Fab,Labor,0.0d,8.0,8.0,At Completion Units,2/24/2026,3/5/2026,0,0,0,0,0,0,0,0,0,0,1.03_Accelerator Systems (AS),1.03.03_AS Superconducting Linac System (ScL),1.03.03.20_AS Superconducting Linac System Installation,1.03.03.20.76_HPRF - Waveguide Klystron Gallery Installation,AS_HPRF_WGKG_9670_Install Waveguide Klystron Gallery - Set 17,RF Fab,,SLAC,Labor
82919,1.03,1.03.03,1.03.03.20,1.03.03.20.76,1.03.03.20.76,HPRF - Waveguide Klystron Gallery Installation,AS_HPRF_WGKG_9660,Install Waveguide Klystron Gallery - Set 16,8.0,12.0,12.0,12.0,02-11-27,02-23-27,AS_HPRF_WGKG_9650: FS,AS_HPRF_WGKG_9670: FS,SLAC,0%,52198.52198_METSMANF (METSD Manufacturing),52198_METSMANF (METSD Manufacturing),Labor,0.0d,8.0,8.0,At Completion Units,2/11/2026,2/23/2026,0,0,0,0,0,0,0,0,0,0,1.03_Accelerator Systems (AS),1.03.03_AS Superconducting Linac System (ScL),1.03.03.20_AS Superconducting Linac System Installation,1.03.03.20.76_HPRF - Waveguide Klystron Gallery Installation,AS_HPRF_WGKG_9660_Install Waveguide Klystron Gallery - Set 16,Manufacturing,,SLAC,Labor
82920,1.03,1.03.03,1.03.03.20,1.03.03.20.76,1.03.03.20.76,HPRF - Waveguide Klystron Gallery Installation,AS_HPRF_WGKG_9660,Install Waveguide Klystron Gallery - Set 16,8.0,295.0,295.0,295.0,02-11-27,02-23-27,AS_HPRF_WGKG_9650: FS,AS_HPRF_WGKG_9670: FS,SLAC,0%,52178.52178_RF Vacuum Tube Fab,52178_RF Vacuum Tube Fab,Labor,0.0d,8.0,8.0,At Completion Units,2/11/2026,2/23/2026,0,0,0,0,0,0,0,0,0,0,1.03_Accelerator Systems (AS),1.03.03_AS Superconducting Linac System (ScL),1.03.03.20_AS Superconducting Linac System Installation,1.03.03.20.76_HPRF - Waveguide Klystron Gallery Installation,AS_HPRF_WGKG_9660_Install Waveguide Klystron Gallery - Set 16,RF Fab,,SLAC,Labor
82921,1.03,1.03.03,1.03.03.20,1.03.03.20.76,1.03.03.20.76,HPRF - Waveguide Klystron Gallery Installation,AS_HPRF_WGKG_9650,Install Waveguide Klystron Gallery - Set 15,8.0,12.0,12.0,12.0,02-01-27,02-10-27,AS_HPRF_WGKG_9640: FS,AS_HPRF_WGKG_9660: FS,SLAC,0%,52198.52198_METSMANF (METSD Manufacturing),52198_METSMANF (METSD Manufacturing),Labor,0.0d,8.0,8.0,At Completion Units,1/30/2026,2/10/2026,0,0,0,0,0,0,0,0,0,0,1.03_Accelerator Systems (AS),1.03.03_AS Superconducting Linac System (ScL),1.03.03.20_AS Superconducting Linac System Installation,1.03.03.20.76_HPRF - Waveguide Klystron Gallery Installation,AS_HPRF_WGKG_9650_Install Waveguide Klystron Gallery - Set 15,Manufacturing,,SLAC,Labor
82922,1.03,1.03.03,1.03.03.20,1.03.03.20.76,1.03.03.20.76,HPRF - Waveguide Klystron Gallery Installation,AS_HPRF_WGKG_9650,Install Waveguide Klystron Gallery - Set 15,8.0,295.0,295.0,295.0,02-01-27,02-10-27,AS_HPRF_WGKG_9640: FS,AS_HPRF_WGKG_9660: FS,SLAC,0%,52178.52178_RF Vacuum Tube Fab,52178_RF Vacuum Tube Fab,Labor,0.0d,8.0,8.0,At Completion Units,1/30/2026,2/10/2026,0,0,0,0,0,0,0,0,0,0,1.03_Accelerator Systems (AS),1.03.03_AS Superconducting Linac System (ScL),1.03.03.20_AS Superconducting Linac System Installation,1.03.03.20.76_HPRF - Waveguide Klystron Gallery Installation,AS_HPRF_WGKG_9650_Install Waveguide Klystron Gallery - Set 15,RF Fab,,SLAC,Labor
82923,1.03,1.03.03,1.03.03.20,1.03.03.20.76,1.03.03.20.76,HPRF - Waveguide Klystron Gallery Installation,AS_HPRF_WGKG_9640,Install Waveguide Klystron Gallery - Set 14,8.0,12.0,12.0,12.0,01-20-27,01-29-27,AS_HPRF_WGKG_9630: FS,AS_HPRF_WGKG_9650: FS,SLAC,0%,52198.52198_METSMANF (METSD Manufacturing),52198_METSMANF (METSD Manufacturing),Labor,0.0d,8.0,8.0,At Completion Units,1/20/2026,1/29/2026,0,0,0,0,0,0,0,0,0,0,1.03_Accelerator Systems (AS),1.03.03_AS Superconducting Linac System (ScL),1.03.03.20_AS Superconducting Linac System Installation,1.03.03.20.76_HPRF - Waveguide Klystron Gallery Installation,AS_HPRF_WGKG_9640_Install Waveguide Klystron Gallery - Set 14,Manufacturing,,SLAC,Labor
82924,1.03,1.03.03,1.03.03.20,1.03.03.20.76,1.03.03.20.76,HPRF - Waveguide Klystron Gallery Installation,AS_HPRF_WGKG_9640,Install Waveguide Klystron Gallery - Set 14,8.0,295.0,295.0,295.0,01-20-27,01-29-27,AS_HPRF_WGKG_9630: FS,AS_HPRF_WGKG_9650: FS,SLAC,0%,52178.52178_RF Vacuum Tube Fab,52178_RF Vacuum Tube Fab,Labor,0.0d,8.0,8.0,At Completion Units,1/20/2026,1/29/2026,0,0,0,0,0,0,0,0,0,0,1.03_Accelerator Systems (AS),1.03.03_AS Superconducting Linac System (ScL),1.03.03.20_AS Superconducting Linac System Installation,1.03.03.20.76_HPRF - Waveguide Klystron Gallery Installation,AS_HPRF_WGKG_9640_Install Waveguide Klystron Gallery - Set 14,RF Fab,,SLAC,Labor
82925,1.03,1.03.03,1.03.03.20,1.03.03.20.76,1.03.03.20.76,HPRF - Waveguide Klystron Gallery Installation,AS_HPRF_WGKG_9630,Install Waveguide Klystron Gallery - Set 13,8.0,12.0,12.0,12.0,01-07-27,01-19-27,AS_HPRF_WGKG_9620: FS,AS_HPRF_WGKG_9640: FS,SLAC,0%,52198.52198_METSMANF (METSD Manufacturing),52198_METSMANF (METSD Manufacturing),Labor,0.0d,8.0,8.0,At Completion Units,1/7/2026,1/16/2026,0,0,0,0,0,0,0,0,0,0,1.03_Accelerator Systems (AS),1.03.03_AS Superconducting Linac System (ScL),1.03.03.20_AS Superconducting Linac System Installation,1.03.03.20.76_HPRF - Waveguide Klystron Gallery Installation,AS_HPRF_WGKG_9630_Install Waveguide Klystron Gallery - Set 13,Manufacturing,,SLAC,Labor
82926,1.03,1.03.03,1.03.03.20,1.03.03.20.76,1.03.03.20.76,HPRF - Waveguide Klystron Gallery Installation,AS_HPRF_WGKG_9630,Install Waveguide Klystron Gallery - Set 13,8.0,295.0,295.0,295.0,01-07-27,01-19-27,AS_HPRF_WGKG_9620: FS,AS_HPRF_WGKG_9640: FS,SLAC,0%,52178.52178_RF Vacuum Tube Fab,52178_RF Vacuum Tube Fab,Labor,0.0d,8.0,8.0,At Completion Units,1/7/2026,1/16/2026,0,0,0,0,0,0,0,0,0,0,1.03_Accelerator Systems (AS),1.03.03_AS Superconducting Linac System (ScL),1.03.03.20_AS Superconducting Linac System Installation,1.03.03.20.76_HPRF - Waveguide Klystron Gallery Installation,AS_HPRF_WGKG_9630_Install Waveguide Klystron Gallery - Set 13,RF Fab,,SLAC,Labor
82927,1.03,1.03.03,1.03.03.20,1.03.03.20.76,1.03.03.20.76,HPRF - Waveguide Klystron Gallery Installation,AS_HPRF_WGKG_9620,Install Waveguide Klystron Gallery - Set 12,8.0,12.0,12.0,12.0,12-14-26,01-06-27,AS_HPRF_WGKG_9610: FS,AS_HPRF_WGKG_9630: FS,SLAC,0%,52198.52198_METSMANF (METSD Manufacturing),52198_METSMANF (METSD Manufacturing),Labor,0.0d,8.0,8.0,At Completion Units,12/12/2025,1/6/2026,0,0,0,0,0,0,0,0,0,0,1.03_Accelerator Systems (AS),1.03.03_AS Superconducting Linac System (ScL),1.03.03.20_AS Superconducting Linac System Installation,1.03.03.20.76_HPRF - Waveguide Klystron Gallery Installation,AS_HPRF_WGKG_9620_Install Waveguide Klystron Gallery - Set 12,Manufacturing,,SLAC,Labor
82928,1.03,1.03.03,1.03.03.20,1.03.03.20.76,1.03.03.20.76,HPRF - Waveguide Klystron Gallery Installation,AS_HPRF_WGKG_9620,Install Waveguide Klystron Gallery - Set 12,8.0,295.0,295.0,295.0,12-14-26,01-06-27,AS_HPRF_WGKG_9610: FS,AS_HPRF_WGKG_9630: FS,SLAC,0%,52178.52178_RF Vacuum Tube Fab,52178_RF Vacuum Tube Fab,Labor,0.0d,8.0,8.0,At Completion Units,12/12/2025,1/6/2026,0,0,0,0,0,0,0,0,0,0,1.03_Accelerator Systems (AS),1.03.03_AS Superconducting Linac System (ScL),1.03.03.20_AS Superconducting Linac System Installation,1.03.03.20.76_HPRF - Waveguide Klystron Gallery Installation,AS_HPRF_WGKG_9620_Install Waveguide Klystron Gallery - Set 12,RF Fab,,SLAC,Labor
82929,1.03,1.03.03,1.03.03.20,1.03.03.20.76,1.03.03.20.76,HPRF - Waveguide Klystron Gallery Installation,AS_HPRF_WGKG_9610,Install Waveguide Klystron Gallery - Set 11,8.0,12.0,12.0,12.0,12-02-26,12-11-26,AS_HPRF_WGKG_9600: FS,AS_HPRF_WGKG_9620: FS,SLAC,0%,52198.52198_METSMANF (METSD Manufacturing),52198_METSMANF (METSD Manufacturing),Labor,0.0d,8.0,8.0,At Completion Units,12/2/2025,12/11/2025,0,0,0,0,0,0,0,0,0,0,1.03_Accelerator Systems (AS),1.03.03_AS Superconducting Linac System (ScL),1.03.03.20_AS Superconducting Linac System Installation,1.03.03.20.76_HPRF - Waveguide Klystron Gallery Installation,AS_HPRF_WGKG_9610_Install Waveguide Klystron Gallery - Set 11,Manufacturing,,SLAC,Labor
82930,1.03,1.03.03,1.03.03.20,1.03.03.20.76,1.03.03.20.76,HPRF - Waveguide Klystron Gallery Installation,AS_HPRF_WGKG_9610,Install Waveguide Klystron Gallery - Set 11,8.0,295.0,295.0,295.0,12-02-26,12-11-26,AS_HPRF_WGKG_9600: FS,AS_HPRF_WGKG_9620: FS,SLAC,0%,52178.52178_RF Vacuum Tube Fab,52178_RF Vacuum Tube Fab,Labor,0.0d,8.0,8.0,At Completion Units,12/2/2025,12/11/2025,0,0,0,0,0,0,0,0,0,0,1.03_Accelerator Systems (AS),1.03.03_AS Superconducting Linac System (ScL),1.03.03.20_AS Superconducting Linac System Installation,1.03.03.20.76_HPRF - Waveguide Klystron Gallery Installation,AS_HPRF_WGKG_9610_Install Waveguide Klystron Gallery - Set 11,RF Fab,,SLAC,Labor
82931,1.03,1.03.03,1.03.03.20,1.03.03.20.76,1.03.03.20.76,HPRF - Waveguide Klystron Gallery Installation,AS_HPRF_WGKG_9600,Install Waveguide Klystron Gallery - Set 10,8.0,12.0,12.0,12.0,11-18-26,12-01-26,AS_HPRF_WGKG_9590: FS,AS_HPRF_WGKG_9610: FS,SLAC,0%,52198.52198_METSMANF (METSD Manufacturing),52198_METSMANF (METSD Manufacturing),Labor,0.0d,8.0,8.0,At Completion Units,11/18/2025,12/1/2025,0,0,0,0,0,0,0,0,0,0,1.03_Accelerator Systems (AS),1.03.03_AS Superconducting Linac System (ScL),1.03.03.20_AS Superconducting Linac System Installation,1.03.03.20.76_HPRF - Waveguide Klystron Gallery Installation,AS_HPRF_WGKG_9600_Install Waveguide Klystron Gallery - Set 10,Manufacturing,,SLAC,Labor
82932,1.03,1.03.03,1.03.03.20,1.03.03.20.76,1.03.03.20.76,HPRF - Waveguide Klystron Gallery Installation,AS_HPRF_WGKG_9600,Install Waveguide Klystron Gallery - Set 10,8.0,295.0,295.0,295.0,11-18-26,12-01-26,AS_HPRF_WGKG_9590: FS,AS_HPRF_WGKG_9610: FS,SLAC,0%,52178.52178_RF Vacuum Tube Fab,52178_RF Vacuum Tube Fab,Labor,0.0d,8.0,8.0,At Completion Units,11/18/2025,12/1/2025,0,0,0,0,0,0,0,0,0,0,1.03_Accelerator Systems (AS),1.03.03_AS Superconducting Linac System (ScL),1.03.03.20_AS Superconducting Linac System Installation,1.03.03.20.76_HPRF - Waveguide Klystron Gallery Installation,AS_HPRF_WGKG_9600_Install Waveguide Klystron Gallery - Set 10,RF Fab,,SLAC,Labor
82933,1.03,1.03.03,1.03.03.20,1.03.03.20.76,1.03.03.20.76,HPRF - Waveguide Klystron Gallery Installation,AS_HPRF_WGKG_9590,Install Waveguide Klystron Gallery - Set 9,8.0,12.0,12.0,12.0,11-06-26,11-17-26,AS_HPRF_WGKG_9580: FS,AS_HPRF_WGKG_9600: FS,SLAC,0%,52198.52198_METSMANF (METSD Manufacturing),52198_METSMANF (METSD Manufacturing),Labor,0.0d,8.0,8.0,At Completion Units,11/6/2025,11/17/2025,0,0,0,0,0,0,0,0,0,0,1.03_Accelerator Systems (AS),1.03.03_AS Superconducting Linac System (ScL),1.03.03.20_AS Superconducting Linac System Installation,1.03.03.20.76_HPRF - Waveguide Klystron Gallery Installation,AS_HPRF_WGKG_9590_Install Waveguide Klystron Gallery - Set 9,Manufacturing,,SLAC,Labor
82934,1.03,1.03.03,1.03.03.20,1.03.03.20.76,1.03.03.20.76,HPRF - Waveguide Klystron Gallery Installation,AS_HPRF_WGKG_9590,Install Waveguide Klystron Gallery - Set 9,8.0,295.0,295.0,295.0,11-06-26,11-17-26,AS_HPRF_WGKG_9580: FS,AS_HPRF_WGKG_9600: FS,SLAC,0%,52178.52178_RF Vacuum Tube Fab,52178_RF Vacuum Tube Fab,Labor,0.0d,8.0,8.0,At Completion Units,11/6/2025,11/17/2025,0,0,0,0,0,0,0,0,0,0,1.03_Accelerator Systems (AS),1.03.03_AS Superconducting Linac System (ScL),1.03.03.20_AS Superconducting Linac System Installation,1.03.03.20.76_HPRF - Waveguide Klystron Gallery Installation,AS_HPRF_WGKG_9590_Install Waveguide Klystron Gallery - Set 9,RF Fab,,SLAC,Labor
82935,1.03,1.03.03,1.03.03.20,1.03.03.20.76,1.03.03.20.76,HPRF - Waveguide Klystron Gallery Installation,AS_HPRF_WGKG_9580,Install Waveguide Klystron Gallery - Set 8,8.0,12.0,12.0,12.0,10-27-26,11-05-26,AS_HPRF_WGKG_9570: FS,AS_HPRF_WGKG_9590: FS,SLAC,0%,52198.52198_METSMANF (METSD Manufacturing),52198_METSMANF (METSD Manufacturing),Labor,0.0d,8.0,8.0,At Completion Units,10/27/2025,11/5/2025,0,0,0,0,0,0,0,0,0,0,1.03_Accelerator Systems (AS),1.03.03_AS Superconducting Linac System (ScL),1.03.03.20_AS Superconducting Linac System Installation,1.03.03.20.76_HPRF - Waveguide Klystron Gallery Installation,AS_HPRF_WGKG_9580_Install Waveguide Klystron Gallery - Set 8,Manufacturing,,SLAC,Labor
82936,1.03,1.03.03,1.03.03.20,1.03.03.20.76,1.03.03.20.76,HPRF - Waveguide Klystron Gallery Installation,AS_HPRF_WGKG_9580,Install Waveguide Klystron Gallery - Set 8,8.0,295.0,295.0,295.0,10-27-26,11-05-26,AS_HPRF_WGKG_9570: FS,AS_HPRF_WGKG_9590: FS,SLAC,0%,52178.52178_RF Vacuum Tube Fab,52178_RF Vacuum Tube Fab,Labor,0.0d,8.0,8.0,At Completion Units,10/27/2025,11/5/2025,0,0,0,0,0,0,0,0,0,0,1.03_Accelerator Systems (AS),1.03.03_AS Superconducting Linac System (ScL),1.03.03.20_AS Superconducting Linac System Installation,1.03.03.20.76_HPRF - Waveguide Klystron Gallery Installation,AS_HPRF_WGKG_9580_Install Waveguide Klystron Gallery - Set 8,RF Fab,,SLAC,Labor
82937,1.03,1.03.03,1.03.03.20,1.03.03.20.76,1.03.03.20.76,HPRF - Waveguide Klystron Gallery Installation,AS_HPRF_WGKG_9570,Install Waveguide Klystron Gallery - Set 7,8.0,12.0,12.0,12.0,10-15-26,10-26-26,AS_HPRF_WGKG_9560: FS,AS_HPRF_WGKG_9580: FS,SLAC,0%,52198.52198_METSMANF (METSD Manufacturing),52198_METSMANF (METSD Manufacturing),Labor,0.0d,8.0,8.0,At Completion Units,10/15/2025,10/24/2025,0,0,0,0,0,0,0,0,0,0,1.03_Accelerator Systems (AS),1.03.03_AS Superconducting Linac System (ScL),1.03.03.20_AS Superconducting Linac System Installation,1.03.03.20.76_HPRF - Waveguide Klystron Gallery Installation,AS_HPRF_WGKG_9570_Install Waveguide Klystron Gallery - Set 7,Manufacturing,,SLAC,Labor
82938,1.03,1.03.03,1.03.03.20,1.03.03.20.76,1.03.03.20.76,HPRF - Waveguide Klystron Gallery Installation,AS_HPRF_WGKG_9570,Install Waveguide Klystron Gallery - Set 7,8.0,295.0,295.0,295.0,10-15-26,10-26-26,AS_HPRF_WGKG_9560: FS,AS_HPRF_WGKG_9580: FS,SLAC,0%,52178.52178_RF Vacuum Tube Fab,52178_RF Vacuum Tube Fab,Labor,0.0d,8.0,8.0,At Completion Units,10/15/2025,10/24/2025,0,0,0,0,0,0,0,0,0,0,1.03_Accelerator Systems (AS),1.03.03_AS Superconducting Linac System (ScL),1.03.03.20_AS Superconducting Linac System Installation,1.03.03.20.76_HPRF - Waveguide Klystron Gallery Installation,AS_HPRF_WGKG_9570_Install Waveguide Klystron Gallery - Set 7,RF Fab,,SLAC,Labor
82939,1.03,1.03.03,1.03.03.20,1.03.03.20.76,1.03.03.20.76,HPRF - Waveguide Klystron Gallery Installation,AS_HPRF_WGKG_9560,Install Waveguide Klystron Gallery - Set 6,8.0,12.0,12.0,12.0,10-05-26,10-14-26,AS_HPRF_WGKG_9550: FS,AS_HPRF_WGKG_9570: FS,SLAC,0%,52198.52198_METSMANF (METSD Manufacturing),52198_METSMANF (METSD Manufacturing),Labor,0.0d,8.0,8.0,At Completion Units,10/3/2025,10/14/2025,0,0,0,0,0,0,0,0,0,0,1.03_Accelerator Systems (AS),1.03.03_AS Superconducting Linac System (ScL),1.03.03.20_AS Superconducting Linac System Installation,1.03.03.20.76_HPRF - Waveguide Klystron Gallery Installation,AS_HPRF_WGKG_9560_Install Waveguide Klystron Gallery - Set 6,Manufacturing,,SLAC,Labor
82940,1.03,1.03.03,1.03.03.20,1.03.03.20.76,1.03.03.20.76,HPRF - Waveguide Klystron Gallery Installation,AS_HPRF_WGKG_9560,Install Waveguide Klystron Gallery - Set 6,8.0,295.0,295.0,295.0,10-05-26,10-14-26,AS_HPRF_WGKG_9550: FS,AS_HPRF_WGKG_9570: FS,SLAC,0%,52178.52178_RF Vacuum Tube Fab,52178_RF Vacuum Tube Fab,Labor,0.0d,8.0,8.0,At Completion Units,10/3/2025,10/14/2025,0,0,0,0,0,0,0,0,0,0,1.03_Accelerator Systems (AS),1.03.03_AS Superconducting Linac System (ScL),1.03.03.20_AS Superconducting Linac System Installation,1.03.03.20.76_HPRF - Waveguide Klystron Gallery Installation,AS_HPRF_WGKG_9560_Install Waveguide Klystron Gallery - Set 6,RF Fab,,SLAC,Labor
82941,1.03,1.03.03,1.03.03.20,1.03.03.20.76,1.03.03.20.76,HPRF - Waveguide Klystron Gallery Installation,AS_HPRF_WGKG_9550,Install Waveguide Klystron Gallery - Set 5,8.0,12.0,12.0,12.0,09-23-26,10-02-26,AS_HPRF_WGKG_9540: FS,AS_HPRF_WGKG_9560: FS,SLAC,0%,52198.52198_METSMANF (METSD Manufacturing),52198_METSMANF (METSD Manufacturing),Labor,0.0d,8.0,8.0,At Completion Units,9/23/2025,10/2/2025,0,0,0,0,0,0,0,0,0,0,1.03_Accelerator Systems (AS),1.03.03_AS Superconducting Linac System (ScL),1.03.03.20_AS Superconducting Linac System Installation,1.03.03.20.76_HPRF - Waveguide Klystron Gallery Installation,AS_HPRF_WGKG_9550_Install Waveguide Klystron Gallery - Set 5,Manufacturing,,SLAC,Labor
82942,1.03,1.03.03,1.03.03.20,1.03.03.20.76,1.03.03.20.76,HPRF - Waveguide Klystron Gallery Installation,AS_HPRF_WGKG_9550,Install Waveguide Klystron Gallery - Set 5,8.0,295.0,295.0,295.0,09-23-26,10-02-26,AS_HPRF_WGKG_9540: FS,AS_HPRF_WGKG_9560: FS,SLAC,0%,52178.52178_RF Vacuum Tube Fab,52178_RF Vacuum Tube Fab,Labor,0.0d,8.0,8.0,At Completion Units,9/23/2025,10/2/2025,0,0,0,0,0,0,0,0,0,0,1.03_Accelerator Systems (AS),1.03.03_AS Superconducting Linac System (ScL),1.03.03.20_AS Superconducting Linac System Installation,1.03.03.20.76_HPRF - Waveguide Klystron Gallery Installation,AS_HPRF_WGKG_9550_Install Waveguide Klystron Gallery - Set 5,RF Fab,,SLAC,Labor
82943,1.03,1.03.03,1.03.03.20,1.03.03.20.76,1.03.03.20.76,HPRF - Waveguide Klystron Gallery Installation,AS_HPRF_WGKG_9540,Install Waveguide Klystron Gallery - Set 4,8.0,12.0,12.0,12.0,09-11-26,09-22-26,AS_HPRF_WGKG_9530: FS,AS_HPRF_WGKG_9550: FS,SLAC,0%,52198.52198_METSMANF (METSD Manufacturing),52198_METSMANF (METSD Manufacturing),Labor,0.0d,8.0,8.0,At Completion Units,9/11/2025,9/22/2025,0,0,0,0,0,0,0,0,0,0,1.03_Accelerator Systems (AS),1.03.03_AS Superconducting Linac System (ScL),1.03.03.20_AS Superconducting Linac System Installation,1.03.03.20.76_HPRF - Waveguide Klystron Gallery Installation,AS_HPRF_WGKG_9540_Install Waveguide Klystron Gallery - Set 4,Manufacturing,,SLAC,Labor
82944,1.03,1.03.03,1.03.03.20,1.03.03.20.76,1.03.03.20.76,HPRF - Waveguide Klystron Gallery Installation,AS_HPRF_WGKG_9540,Install Waveguide Klystron Gallery - Set 4,8.0,295.0,295.0,295.0,09-11-26,09-22-26,AS_HPRF_WGKG_9530: FS,AS_HPRF_WGKG_9550: FS,SLAC,0%,52178.52178_RF Vacuum Tube Fab,52178_RF Vacuum Tube Fab,Labor,0.0d,8.0,8.0,At Completion Units,9/11/2025,9/22/2025,0,0,0,0,0,0,0,0,0,0,1.03_Accelerator Systems (AS),1.03.03_AS Superconducting Linac System (ScL),1.03.03.20_AS Superconducting Linac System Installation,1.03.03.20.76_HPRF - Waveguide Klystron Gallery Installation,AS_HPRF_WGKG_9540_Install Waveguide Klystron Gallery - Set 4,RF Fab,,SLAC,Labor
82945,1.03,1.03.03,1.03.03.20,1.03.03.20.76,1.03.03.20.76,HPRF - Waveguide Klystron Gallery Installation,AS_HPRF_WGKG_9530,Install Waveguide Klystron Gallery - Set 3,8.0,12.0,12.0,12.0,08-31-26,09-10-26,AS_HPRF_WGKG_9520: FS,AS_HPRF_WGKG_9540: FS,SLAC,0%,52198.52198_METSMANF (METSD Manufacturing),52198_METSMANF (METSD Manufacturing),Labor,0.0d,8.0,8.0,At Completion Units,8/29/2025,9/10/2025,0,0,0,0,0,0,0,0,0,0,1.03_Accelerator Systems (AS),1.03.03_AS Superconducting Linac System (ScL),1.03.03.20_AS Superconducting Linac System Installation,1.03.03.20.76_HPRF - Waveguide Klystron Gallery Installation,AS_HPRF_WGKG_9530_Install Waveguide Klystron Gallery - Set 3,Manufacturing,,SLAC,Labor
82946,1.03,1.03.03,1.03.03.20,1.03.03.20.76,1.03.03.20.76,HPRF - Waveguide Klystron Gallery Installation,AS_HPRF_WGKG_9530,Install Waveguide Klystron Gallery - Set 3,8.0,295.0,295.0,295.0,08-31-26,09-10-26,AS_HPRF_WGKG_9520: FS,AS_HPRF_WGKG_9540: FS,SLAC,0%,52178.52178_RF Vacuum Tube Fab,52178_RF Vacuum Tube Fab,Labor,0.0d,8.0,8.0,At Completion Units,8/29/2025,9/10/2025,0,0,0,0,0,0,0,0,0,0,1.03_Accelerator Systems (AS),1.03.03_AS Superconducting Linac System (ScL),1.03.03.20_AS Superconducting Linac System Installation,1.03.03.20.76_HPRF - Waveguide Klystron Gallery Installation,AS_HPRF_WGKG_9530_Install Waveguide Klystron Gallery - Set 3,RF Fab,,SLAC,Labor
82947,1.03,1.03.03,1.03.03.20,1.03.03.20.76,1.03.03.20.76,HPRF - Waveguide Klystron Gallery Installation,AS_HPRF_WGKG_9520,Install Waveguide Klystron Gallery - Set 2,8.0,12.0,12.0,12.0,08-19-26,08-28-26,AS_HPRF_WGKG_9510: FS,AS_HPRF_WGKG_9530: FS,SLAC,0%,52198.52198_METSMANF (METSD Manufacturing),52198_METSMANF (METSD Manufacturing),Labor,0.0d,8.0,8.0,At Completion Units,8/19/2025,8/28/2025,0,0,0,0,0,0,0,0,0,0,1.03_Accelerator Systems (AS),1.03.03_AS Superconducting Linac System (ScL),1.03.03.20_AS Superconducting Linac System Installation,1.03.03.20.76_HPRF - Waveguide Klystron Gallery Installation,AS_HPRF_WGKG_9520_Install Waveguide Klystron Gallery - Set 2,Manufacturing,,SLAC,Labor
82948,1.03,1.03.03,1.03.03.20,1.03.03.20.76,1.03.03.20.76,HPRF - Waveguide Klystron Gallery Installation,AS_HPRF_WGKG_9520,Install Waveguide Klystron Gallery - Set 2,8.0,295.0,295.0,295.0,08-19-26,08-28-26,AS_HPRF_WGKG_9510: FS,AS_HPRF_WGKG_9530: FS,SLAC,0%,52178.52178_RF Vacuum Tube Fab,52178_RF Vacuum Tube Fab,Labor,0.0d,8.0,8.0,At Completion Units,8/19/2025,8/28/2025,0,0,0,0,0,0,0,0,0,0,1.03_Accelerator Systems (AS),1.03.03_AS Superconducting Linac System (ScL),1.03.03.20_AS Superconducting Linac System Installation,1.03.03.20.76_HPRF - Waveguide Klystron Gallery Installation,AS_HPRF_WGKG_9520_Install Waveguide Klystron Gallery - Set 2,RF Fab,,SLAC,Labor
82949,1.03,1.03.03,1.03.03.20,1.03.03.20.76,1.03.03.20.76,HPRF - Waveguide Klystron Gallery Installation,AS_HPRF_WGKG_9510,Install Waveguide Klystron Gallery - Set 1,8.0,12.0,12.0,12.0,08-07-26,08-18-26,AS_HPRF_WGKG_9500: FS,AS_HPRF_WGKG_9520: FS,SLAC,0%,52198.52198_METSMANF (METSD Manufacturing),52198_METSMANF (METSD Manufacturing),Labor,0.0d,8.0,8.0,At Completion Units,8/7/2025,8/18/2025,0,0,0,0,0,0,0,0,0,0,1.03_Accelerator Systems (AS),1.03.03_AS Superconducting Linac System (ScL),1.03.03.20_AS Superconducting Linac System Installation,1.03.03.20.76_HPRF - Waveguide Klystron Gallery Installation,AS_HPRF_WGKG_9510_Install Waveguide Klystron Gallery - Set 1,Manufacturing,,SLAC,Labor
82950,1.03,1.03.03,1.03.03.20,1.03.03.20.76,1.03.03.20.76,HPRF - Waveguide Klystron Gallery Installation,AS_HPRF_WGKG_9510,Install Waveguide Klystron Gallery - Set 1,8.0,295.0,295.0,295.0,08-07-26,08-18-26,AS_HPRF_WGKG_9500: FS,AS_HPRF_WGKG_9520: FS,SLAC,0%,52178.52178_RF Vacuum Tube Fab,52178_RF Vacuum Tube Fab,Labor,0.0d,8.0,8.0,At Completion Units,8/7/2025,8/18/2025,0,0,0,0,0,0,0,0,0,0,1.03_Accelerator Systems (AS),1.03.03_AS Superconducting Linac System (ScL),1.03.03.20_AS Superconducting Linac System Installation,1.03.03.20.76_HPRF - Waveguide Klystron Gallery Installation,AS_HPRF_WGKG_9510_Install Waveguide Klystron Gallery - Set 1,RF Fab,,SLAC,Labor
82951,1.03,1.03.03,1.03.03.20,1.03.03.20.76,1.03.03.20.76,HPRF - Waveguide Klystron Gallery Installation,AS_HPRF_WGKG_9500,Install Waveguide Klystron Gallery - Set 0,8.0,13.0,13.0,13.0,07-28-26,08-06-26,"AS_HPRF_WGKG_9140: FS, AS_HPRF_RQD_9320: FS, AS_HPRF_RQD_9310: FS, AS_HPRF_SSA_9240: FS, AS_HPRF_NPA_6130: FS","AS_HPRF_WGKG_9510: FS, AS_HPRF_WG_9900: FS",SLAC,0%,52198.52198_METSMANF (METSD Manufacturing),52198_METSMANF (METSD Manufacturing),Labor,0.0d,8.0,8.0,At Completion Units,7/28/2025,8/6/2025,0,0,0,0,0,0,0,0,0,0,1.03_Accelerator Systems (AS),1.03.03_AS Superconducting Linac System (ScL),1.03.03.20_AS Superconducting Linac System Installation,1.03.03.20.76_HPRF - Waveguide Klystron Gallery Installation,AS_HPRF_WGKG_9500_Install Waveguide Klystron Gallery - Set 0,Manufacturing,,SLAC,Labor
82952,1.03,1.03.03,1.03.03.20,1.03.03.20.76,1.03.03.20.76,HPRF - Waveguide Klystron Gallery Installation,AS_HPRF_WGKG_9500,Install Waveguide Klystron Gallery - Set 0,8.0,297.0,297.0,297.0,07-28-26,08-06-26,"AS_HPRF_WGKG_9140: FS, AS_HPRF_RQD_9320: FS, AS_HPRF_RQD_9310: FS, AS_HPRF_SSA_9240: FS, AS_HPRF_NPA_6130: FS","AS_HPRF_WGKG_9510: FS, AS_HPRF_WG_9900: FS",SLAC,0%,52178.52178_RF Vacuum Tube Fab,52178_RF Vacuum Tube Fab,Labor,0.0d,8.0,8.0,At Completion Units,7/28/2025,8/6/2025,0,0,0,0,0,0,0,0,0,0,1.03_Accelerator Systems (AS),1.03.03_AS Superconducting Linac System (ScL),1.03.03.20_AS Superconducting Linac System Installation,1.03.03.20.76_HPRF - Waveguide Klystron Gallery Installation,AS_HPRF_WGKG_9500_Install Waveguide Klystron Gallery - Set 0,RF Fab,,SLAC,Labor
83272,1.03,1.03.03,1.03.03.20,1.03.03.20.77,1.03.03.20.77,HPRF - Waveguide Connection to Cryomodule Preparation (PP),AS_HPRF_WGCM_9100,Housing Vertical - Ready for Installation Set 0 Thru Set 23,72.0,313.0,313.0,313.0,04-01-25,07-11-25,AS_M4_1010: FS,AS_HPRF_WGCM_9500: FS,SLAC,0%,52178.52178_RF Vacuum Tube Fab,52178_RF Vacuum Tube Fab,Labor,0.0d,72.0,72.0,At Completion Units,4/1/2025,7/11/2025,0,0,0,0,0,0,0,0,0,0,1.03_Accelerator Systems (AS),1.03.03_AS Superconducting Linac System (ScL),1.03.03.20_AS Superconducting Linac System Installation,1.03.03.20.77_HPRF - Waveguide Connection to Cryomodule Preparation (PP),AS_HPRF_WGCM_9100_Housing Vertical - Ready for Installation Set 0 Thru Set 23,RF Fab,,SLAC,Labor
83592,1.03,1.03.03,1.03.03.20,1.03.03.20.78,1.03.03.20.78,HPRF - Waveguide Connection to Cryomodule Installation (PP),AS_HPRF_WGCM_9500,Housing Vertical - Installation & Checkout - Set 0 Thru 23,96.0,417.0,417.0,417.0,07-14-25,11-25-25,AS_HPRF_WGCM_9100: FS,AS_HPRF_WGCM_9900: SS,SLAC,0%,52178.52178_RF Vacuum Tube Fab,52178_RF Vacuum Tube Fab,Labor,0.0d,96.0,96.0,At Completion Units,7/14/2025,11/25/2025,0,0,0,0,0,0,0,0,0,0,1.03_Accelerator Systems (AS),1.03.03_AS Superconducting Linac System (ScL),1.03.03.20_AS Superconducting Linac System Installation,1.03.03.20.78_HPRF - Waveguide Connection to Cryomodule Installation (PP),AS_HPRF_WGCM_9500_Housing Vertical - Installation & Checkout - Set 0 Thru 23,RF Fab,,SLAC,Labor
83912,1.03,1.03.03,1.03.03.20,1.03.03.20.80,1.03.03.20.80,HPRF - Final Checking (PP),AS_HPRF_WGCM_9900,Final Checking - Set 0 Thru 23,96.0,104.0,104.0,104.0,12-14-26,05-12-27,"AS_HPRF_WGCM_9500: SS, AS_HPRF_WGTU_9100: FF, AS_HPRF_WGKG_9730: FF","AS_M4_3030: FS, AS_M4_3110: FS, AS_M4_3100: FS",SLAC,0%,52210.52210_EEDRF,52210_EEDRF,Labor,0.0d,96.0,96.0,At Completion Units,1/5/2026,5/20/2026,0,0,0,0,0,0,0,0,0,0,1.03_Accelerator Systems (AS),1.03.03_AS Superconducting Linac System (ScL),1.03.03.20_AS Superconducting Linac System Installation,1.03.03.20.80_HPRF - Final Checking (PP),AS_HPRF_WGCM_9900_Final Checking - Set 0 Thru 23,RF,,SLAC,Labor
83913,1.03,1.03.03,1.03.03.20,1.03.03.20.80,1.03.03.20.80,HPRF - Final Checking (PP),AS_HPRF_WGCM_9900,Final Checking - Set 0 Thru 23,96.0,209.0,209.0,209.0,12-14-26,05-12-27,"AS_HPRF_WGCM_9500: SS, AS_HPRF_WGTU_9100: FF, AS_HPRF_WGKG_9730: FF","AS_M4_3030: FS, AS_M4_3110: FS, AS_M4_3100: FS",SLAC,0%,52178.52178_RF Vacuum Tube Fab,52178_RF Vacuum Tube Fab,Labor,0.0d,96.0,96.0,At Completion Units,1/5/2026,5/20/2026,0,0,0,0,0,0,0,0,0,0,1.03_Accelerator Systems (AS),1.03.03_AS Superconducting Linac System (ScL),1.03.03.20_AS Superconducting Linac System Installation,1.03.03.20.80_HPRF - Final Checking (PP),AS_HPRF_WGCM_9900_Final Checking - Set 0 Thru 23,RF Fab,,SLAC,Labor
84233,1.03,1.03.03,1.03.03.20,1.03.03.20.99,1.03.03.20.99,HPRF - Disassembling and Storages (PP),AS_HPRF_WG_9900,Disassemble HPRF CM32 and Move to New Position,76.5,13.0,13.0,13.0,08-07-26,11-24-26,AS_HPRF_WGKG_9500: FS,AS_HPRF_WGKG_9730: FF,SLAC,0%,52152.52152_FAC Fleet,52152_FAC Fleet,Labor,0.0d,76.5,76.5,At Completion Units,8/7/2025,11/24/2025,0,0,0,0,0,0,0,0,0,0,1.03_Accelerator Systems (AS),1.03.03_AS Superconducting Linac System (ScL),1.03.03.20_AS Superconducting Linac System Installation,1.03.03.20.99_HPRF - Disassembling and Storages (PP),AS_HPRF_WG_9900_Disassemble HPRF CM32 and Move to New Position,Support System,,SLAC,Labor
84234,1.03,1.03.03,1.03.03.20,1.03.03.20.99,1.03.03.20.99,HPRF - Disassembling and Storages (PP),AS_HPRF_WG_9900,Disassemble HPRF CM32 and Move to New Position,76.5,1600.0,1600.0,1600.0,08-07-26,11-24-26,AS_HPRF_WGKG_9500: FS,AS_HPRF_WGKG_9730: FF,SLAC,0%,SL_MSSC.SLAC M&S (<$500K) (gets G&A) (gets ESC),SLAC M&S (<$500K) (gets G&A) (gets ESC),Nonlabor,0.0d,76.5,76.5,At Completion Units,8/7/2025,11/24/2025,0,0,0,0,0,0,0,0,0,0,1.03_Accelerator Systems (AS),1.03.03_AS Superconducting Linac System (ScL),1.03.03.20_AS Superconducting Linac System Installation,1.03.03.20.99_HPRF - Disassembling and Storages (PP),AS_HPRF_WG_9900_Disassemble HPRF CM32 and Move to New Position,Material,,SLAC,M&S
84235,1.03,1.03.03,1.03.03.20,1.03.03.20.99,1.03.03.20.99,HPRF - Disassembling and Storages (PP),AS_HPRF_WG_9900,Disassemble HPRF CM32 and Move to New Position,76.5,15.0,15.0,15.0,08-07-26,11-24-26,AS_HPRF_WGKG_9500: FS,AS_HPRF_WGKG_9730: FF,SLAC,0%,8706.8706_Health & Safety Specialist,8706_Health & Safety Specialist,Labor,0.0d,76.5,76.5,At Completion Units,8/7/2025,11/24/2025,0,0,0,0,0,0,0,0,0,0,1.03_Accelerator Systems (AS),1.03.03_AS Superconducting Linac System (ScL),1.03.03.20_AS Superconducting Linac System Installation,1.03.03.20.99_HPRF - Disassembling and Storages (PP),AS_HPRF_WG_9900_Disassemble HPRF CM32 and Move to New Position,ESH,,SLAC,Labor
84236,1.03,1.03.03,1.03.03.20,1.03.03.20.99,1.03.03.20.99,HPRF - Disassembling and Storages (PP),AS_HPRF_WG_9900,Disassemble HPRF CM32 and Move to New Position,76.5,28.0,28.0,28.0,08-07-26,11-24-26,AS_HPRF_WGKG_9500: FS,AS_HPRF_WGKG_9730: FF,SLAC,0%,52210.52210_EEDRF,52210_EEDRF,Labor,0.0d,76.5,76.5,At Completion Units,8/7/2025,11/24/2025,0,0,0,0,0,0,0,0,0,0,1.03_Accelerator Systems (AS),1.03.03_AS Superconducting Linac System (ScL),1.03.03.20_AS Superconducting Linac System Installation,1.03.03.20.99_HPRF - Disassembling and Storages (PP),AS_HPRF_WG_9900_Disassemble HPRF CM32 and Move to New Position,RF,,SLAC,Labor
84237,1.03,1.03.03,1.03.03.20,1.03.03.20.99,1.03.03.20.99,HPRF - Disassembling and Storages (PP),AS_HPRF_WG_9900,Disassemble HPRF CM32 and Move to New Position,76.5,277.0,277.0,277.0,08-07-26,11-24-26,AS_HPRF_WGKG_9500: FS,AS_HPRF_WGKG_9730: FF,SLAC,0%,52178.52178_RF Vacuum Tube Fab,52178_RF Vacuum Tube Fab,Labor,0.0d,76.5,76.5,At Completion Units,8/7/2025,11/24/2025,0,0,0,0,0,0,0,0,0,0,1.03_Accelerator Systems (AS),1.03.03_AS Superconducting Linac System (ScL),1.03.03.20_AS Superconducting Linac System Installation,1.03.03.20.99_HPRF - Disassembling and Storages (PP),AS_HPRF_WG_9900_Disassemble HPRF CM32 and Move to New Position,RF Fab,,SLAC,Labor
84557,1.03,1.03.03,1.03.03.20,1.03.03.20.10,1.03.03.20.100,HPRF - Installation Coordination (PP),AS_HPRF_INST_5030,Installation Support/Coordination - HPRF Lead,243.0,1055.0,1055.0,1055.0,04-01-25,03-30-26,AS_ScL_CM00_SUP_115: SS,AS_M4_3030: FS,SLAC,0%,52178.52178_RF Vacuum Tube Fab,52178_RF Vacuum Tube Fab,Labor,0.0d,243.0,243.0,At Completion Units,4/1/2025,3/30/2026,0,0,0,0,0,0,0,0,0,0,1.03_Accelerator Systems (AS),1.03.03_AS Superconducting Linac System (ScL),1.03.03.20_AS Superconducting Linac System Installation,1.03.03.20.10_ScL - L3/L4 Transition Package (PP),AS_HPRF_INST_5030_Installation Support/Coordination - HPRF Lead,RF Fab,,SLAC,Labor
85196,1.03,1.03.04,1.03.04.05,1.03.04.05,1.03.04.05,AS Cryogenic Distribution System Engineering and Design,ACT_NL_1030405,1030405 Non Labor Actuals,22.0,0.0,0.0,0.0,06-01-2020,06-30-2020,CM_M4_2010: FS,0,SLAC,0%,HISTN.HIST_ACTUAL NonLabor,HIST_ACTUAL NonLabor,Nonlabor,22.0d,0.0,22.0,At Completion Units,nn,,0,0,0,0,0,0,0,0,0,0,1.03_Accelerator Systems (AS),1.03.04_AS Cryogenic Distribution System (CDS),1.03.04.05_AS Cryogenic Distribution System Engineering and Design,,ACT_NL_1030405_1030405 Non Labor Actuals,Financial,,SLAC,M&S
85197,1.03,1.03.04,1.03.04.05,1.03.04.05,1.03.04.05,AS Cryogenic Distribution System Engineering and Design,ACT_L_1030405,1030405 Labor Actuals,22.0,0.0,0.0,0.0,06-01-2020,06-30-2020,CM_M4_2010: FS,0,SLAC,0%,HISTL.HIST_ACTUAL Labor,HIST_ACTUAL Labor,Labor,22.0d,0.0,22.0,At Completion Units,nn,,0,0,0,0,0,0,0,0,0,0,1.03_Accelerator Systems (AS),1.03.04_AS Cryogenic Distribution System (CDS),1.03.04.05_AS Cryogenic Distribution System Engineering and Design,,ACT_L_1030405_1030405 Labor Actuals,Financial,,SLAC,M&S
85517,1.03,1.03.04,1.03.04.05,1.03.04.05.01,1.03.04.05.01,CDS Overall Design - Preliminary Design (PD),AS_CDS_PD_5030,Prepare PID - Overall Design CDS,159.0,40.0,0.0,40.0,10-30-2020,09-01-2021,AS_CDS_PD_5010: FF,"AS_CDS_PD_5040: FF -21.0d, AS_CDS_PD_5070: FF, AS_CDS_IB3_5010: SS",SLAC,100%,52169.52169_METS Mechanical Engineer,52169_METS Mechanical Engineer,Labor,203.0d,0.0,203.0,At Completion Units,10/2/2020,6/1/2021,0,0,0,0,0,0,0,0,0,0,1.03_Accelerator Systems (AS),1.03.04_AS Cryogenic Distribution System (CDS),1.03.04.05_AS Cryogenic Distribution System Engineering and Design,1.03.04.05.01_CDS Overall Design - Preliminary Design (PD),AS_CDS_PD_5030_Prepare PID - Overall Design CDS,Mechanical,,SLAC,Labor
85518,1.03,1.03.04,1.03.04.05,1.03.04.05.01,1.03.04.05.01,CDS Overall Design - Preliminary Design (PD),AS_CDS_PD_5030,Prepare PID - Overall Design CDS,159.0,60.0,0.0,60.0,10-30-2020,09-01-2021,AS_CDS_PD_5010: FF,"AS_CDS_PD_5040: FF -21.0d, AS_CDS_PD_5070: FF, AS_CDS_IB3_5010: SS",SLAC,100%,52168.52168_METS - Mechanical Design,52168_METS - Mechanical Design,Labor,203.0d,0.0,203.0,At Completion Units,10/2/2020,6/1/2021,0,0,0,0,0,0,0,0,0,0,1.03_Accelerator Systems (AS),1.03.04_AS Cryogenic Distribution System (CDS),1.03.04.05_AS Cryogenic Distribution System Engineering and Design,1.03.04.05.01_CDS Overall Design - Preliminary Design (PD),AS_CDS_PD_5030_Prepare PID - Overall Design CDS,Mechanical,,SLAC,Labor
85519,1.03,1.03.04,1.03.04.05,1.03.04.05.01,1.03.04.05.01,CDS Overall Design - Preliminary Design (PD),AS_CDS_PD_5040,Prepare 3D Overall Concept Layout - Overall Design CDS,158.0,60.0,0.0,60.0,06-01-2021,09-01-2021,AS_CDS_PD_5030: FF -21.0d,AS_CDS_PD_5070: FF,SLAC,100%,52168.52168_METS - Mechanical Design,52168_METS - Mechanical Design,Labor,65.0d,0.0,65.0,At Completion Units,6/2/2021,8/25/2021,0,0,0,0,0,0,0,0,0,0,1.03_Accelerator Systems (AS),1.03.04_AS Cryogenic Distribution System (CDS),1.03.04.05_AS Cryogenic Distribution System Engineering and Design,1.03.04.05.01_CDS Overall Design - Preliminary Design (PD),AS_CDS_PD_5040_Prepare 3D Overall Concept Layout - Overall Design CDS,Mechanical,,SLAC,Labor
85520,1.03,1.03.04,1.03.04.05,1.03.04.05.01,1.03.04.05.01,CDS Overall Design - Preliminary Design (PD),AS_CDS_PD_5050,Define Engineering Requirements - Overall Design CDS,20.0,20.0,0.0,53.3,06-24-2021,09-01-2021,AS_CDS_PD_5010: SS,AS_CDS_PD_5070: FF,SLAC,100%,0140_E3.0140_Engineer-Electrical_E3,0140_Engineer-Electrical_E3,Labor,48.0d,0.0,48.0,At Completion Units,4/26/2021,5/25/2021,0,0,0,0,0,0,0,0,0,0,1.03_Accelerator Systems (AS),1.03.04_AS Cryogenic Distribution System (CDS),1.03.04.05_AS Cryogenic Distribution System Engineering and Design,1.03.04.05.01_CDS Overall Design - Preliminary Design (PD),AS_CDS_PD_5050_Define Engineering Requirements - Overall Design CDS,Electrical,,SLAC,Labor
85521,1.03,1.03.04,1.03.04.05,1.03.04.05.01,1.03.04.05.01,CDS Overall Design - Preliminary Design (PD),AS_CDS_PD_5050,Define Engineering Requirements - Overall Design CDS,20.0,120.0,0.0,53.3,06-24-2021,09-01-2021,AS_CDS_PD_5010: SS,AS_CDS_PD_5070: FF,SLAC,100%,52169.52169_METS Mechanical Engineer,52169_METS Mechanical Engineer,Labor,48.0d,0.0,48.0,At Completion Units,4/26/2021,5/25/2021,0,0,0,0,0,0,0,0,0,0,1.03_Accelerator Systems (AS),1.03.04_AS Cryogenic Distribution System (CDS),1.03.04.05_AS Cryogenic Distribution System Engineering and Design,1.03.04.05.01_CDS Overall Design - Preliminary Design (PD),AS_CDS_PD_5050_Define Engineering Requirements - Overall Design CDS,Mechanical,,SLAC,Labor
85522,1.03,1.03.04,1.03.04.05,1.03.04.05.01,1.03.04.05.01,CDS Overall Design - Preliminary Design (PD),AS_CDS_PD_5050,Define Engineering Requirements - Overall Design CDS,20.0,20.0,0.0,53.3,06-24-2021,09-01-2021,AS_CDS_PD_5010: SS,AS_CDS_PD_5070: FF,SLAC,100%,2003.2003_Research Technical Manager,2003_Research Technical Manager,Labor,48.0d,0.0,48.0,At Completion Units,4/26/2021,5/25/2021,0,0,0,0,0,0,0,0,0,0,1.03_Accelerator Systems (AS),1.03.04_AS Cryogenic Distribution System (CDS),1.03.04.05_AS Cryogenic Distribution System Engineering and Design,1.03.04.05.01_CDS Overall Design - Preliminary Design (PD),AS_CDS_PD_5050_Define Engineering Requirements - Overall Design CDS,Technical Manager,Engineer,SLAC,Labor
85523,1.03,1.03.04,1.03.04.05,1.03.04.05.01,1.03.04.05.01,CDS Overall Design - Preliminary Design (PD),AS_CDS_PD_5080,Incorporate Recommendations - Overall Design CDS,10.0,40.0,34.5,40.0,09-02-2021,10-15-21,AS_CDS_PD_5070: FS,AS_CDS_PD_5089: FS,SLAC,13.75%,52169.52169_METS Mechanical Engineer,52169_METS Mechanical Engineer,Labor,20.0d,11.0,31.0,At Completion Units,8/30/2021,9/13/2021,0,0,0,0,0,0,0,0,0,0,1.03_Accelerator Systems (AS),1.03.04_AS Cryogenic Distribution System (CDS),1.03.04.05_AS Cryogenic Distribution System Engineering and Design,1.03.04.05.01_CDS Overall Design - Preliminary Design (PD),AS_CDS_PD_5080_Incorporate Recommendations - Overall Design CDS,Mechanical,,SLAC,Labor
85524,1.03,1.03.04,1.03.04.05,1.03.04.05.01,1.03.04.05.01,CDS Overall Design - Preliminary Design (PD),AS_CDS_PD_5080,Incorporate Recommendations - Overall Design CDS,10.0,16.0,10.5,16.0,09-02-2021,10-15-21,AS_CDS_PD_5070: FS,AS_CDS_PD_5089: FS,SLAC,34.38%,52168.52168_METS - Mechanical Design,52168_METS - Mechanical Design,Labor,20.0d,11.0,31.0,At Completion Units,8/30/2021,9/13/2021,0,0,0,0,0,0,0,0,0,0,1.03_Accelerator Systems (AS),1.03.04_AS Cryogenic Distribution System (CDS),1.03.04.05_AS Cryogenic Distribution System Engineering and Design,1.03.04.05.01_CDS Overall Design - Preliminary Design (PD),AS_CDS_PD_5080_Incorporate Recommendations - Overall Design CDS,Mechanical,,SLAC,Labor
85525,1.03,1.03.04,1.03.04.05,1.03.04.05.01,1.03.04.05.01,CDS Overall Design - Preliminary Design (PD),AS_CDS_PD_5070,R_RDR: Reference Design Review - Overall Design CDS,2.0,13.3,0.0,13.3,08-31-2021,09-01-2021,"AS_CDS_PD_5050: FF, AS_CDS_PD_5040: FF, AS_CDS_PD_5030: FF","AS_CDS_PD_5080: FS, AS_CDS_1040: FF",SLAC,100%,52168.52168_METS - Mechanical Design,52168_METS - Mechanical Design,Labor,1.0d,0.0,1.0,At Completion Units,8/26/2021,8/27/2021,DM-A10-90%,0,0,0,0,0,0,0,0,0,1.03_Accelerator Systems (AS),1.03.04_AS Cryogenic Distribution System (CDS),1.03.04.05_AS Cryogenic Distribution System Engineering and Design,1.03.04.05.01_CDS Overall Design - Preliminary Design (PD),AS_CDS_PD_5070_R_RDR: Reference Design Review - Overall Design CDS,Mechanical,,SLAC,Labor
85526,1.03,1.03.04,1.03.04.05,1.03.04.05.01,1.03.04.05.01,CDS Overall Design - Preliminary Design (PD),AS_CDS_PD_5070,R_RDR: Reference Design Review - Overall Design CDS,2.0,13.3,0.0,13.3,08-31-2021,09-01-2021,"AS_CDS_PD_5050: FF, AS_CDS_PD_5040: FF, AS_CDS_PD_5030: FF","AS_CDS_PD_5080: FS, AS_CDS_1040: FF",SLAC,100%,52169.52169_METS Mechanical Engineer,52169_METS Mechanical Engineer,Labor,1.0d,0.0,1.0,At Completion Units,8/26/2021,8/27/2021,DM-A10-90%,0,0,0,0,0,0,0,0,0,1.03_Accelerator Systems (AS),1.03.04_AS Cryogenic Distribution System (CDS),1.03.04.05_AS Cryogenic Distribution System Engineering and Design,1.03.04.05.01_CDS Overall Design - Preliminary Design (PD),AS_CDS_PD_5070_R_RDR: Reference Design Review - Overall Design CDS,Mechanical,,SLAC,Labor
85527,1.03,1.03.04,1.03.04.05,1.03.04.05.01,1.03.04.05.01,CDS Overall Design - Preliminary Design (PD),AS_CDS_PD_5070,R_RDR: Reference Design Review - Overall Design CDS,2.0,13.3,0.0,13.3,08-31-2021,09-01-2021,"AS_CDS_PD_5050: FF, AS_CDS_PD_5040: FF, AS_CDS_PD_5030: FF","AS_CDS_PD_5080: FS, AS_CDS_1040: FF",SLAC,100%,2003.2003_Research Technical Manager,2003_Research Technical Manager,Labor,1.0d,0.0,1.0,At Completion Units,8/26/2021,8/27/2021,DM-A10-90%,0,0,0,0,0,0,0,0,0,1.03_Accelerator Systems (AS),1.03.04_AS Cryogenic Distribution System (CDS),1.03.04.05_AS Cryogenic Distribution System Engineering and Design,1.03.04.05.01_CDS Overall Design - Preliminary Design (PD),AS_CDS_PD_5070_R_RDR: Reference Design Review - Overall Design CDS,Technical Manager,Engineer,SLAC,Labor
85528,1.03,1.03.04,1.03.04.05,1.03.04.05.01,1.03.04.05.01,CDS Overall Design - Preliminary Design (PD),AS_CDS_PD_5020,Prepare ICD - Overall Design CDS,21.0,45.0,45.0,45.0,10-01-21,10-29-21,AS_CDS_PD_5010: FS,AS_CDS_PD_5089: FS,SLAC,0%,52169.52169_METS Mechanical Engineer,52169_METS Mechanical Engineer,Labor,0.0d,21.0,21.0,At Completion Units,4/26/2021,9/13/2021,0,0,0,0,0,0,0,0,0,0,1.03_Accelerator Systems (AS),1.03.04_AS Cryogenic Distribution System (CDS),1.03.04.05_AS Cryogenic Distribution System Engineering and Design,1.03.04.05.01_CDS Overall Design - Preliminary Design (PD),AS_CDS_PD_5020_Prepare ICD - Overall Design CDS,Mechanical,,SLAC,Labor
85529,1.03,1.03.04,1.03.04.05,1.03.04.05.01,1.03.04.05.01,CDS Overall Design - Preliminary Design (PD),AS_CDS_PD_5020,Prepare ICD - Overall Design CDS,21.0,45.0,45.0,45.0,10-01-21,10-29-21,AS_CDS_PD_5010: FS,AS_CDS_PD_5089: FS,SLAC,0%,52168.52168_METS - Mechanical Design,52168_METS - Mechanical Design,Labor,0.0d,21.0,21.0,At Completion Units,4/26/2021,9/13/2021,0,0,0,0,0,0,0,0,0,0,1.03_Accelerator Systems (AS),1.03.04_AS Cryogenic Distribution System (CDS),1.03.04.05_AS Cryogenic Distribution System Engineering and Design,1.03.04.05.01_CDS Overall Design - Preliminary Design (PD),AS_CDS_PD_5020_Prepare ICD - Overall Design CDS,Mechanical,,SLAC,Labor
85849,1.03,1.03.04,1.03.04.05,1.03.04.05.02,1.03.04.05.02,CDS Preparation for CD-2/3,AS_CDS_1010,SLAC Engineering support to Prepare Technical Package for Request For Information to develop BOE - Distribution Box,52.0,16.0,0.0,16.0,04-02-2021,06-15-2021,AS_CDS_1000: SS,AS_CDS_1020: FS,SLAC,100%,52168.52168_METS - Mechanical Design,52168_METS - Mechanical Design,Labor,51.0d,0.0,51.0,At Completion Units,4/2/2021,4/15/2021,0,0,0,0,0,0,0,0,0,0,1.03_Accelerator Systems (AS),1.03.04_AS Cryogenic Distribution System (CDS),1.03.04.05_AS Cryogenic Distribution System Engineering and Design,1.03.04.05.02_CDS Preparation for CD-2/3,AS_CDS_1010_SLAC Engineering support to Prepare Technical Package for Request For Information to develop BOE - Distribution Box,Mechanical,,SLAC,Labor
85850,1.03,1.03.04,1.03.04.05,1.03.04.05.02,1.03.04.05.02,CDS Preparation for CD-2/3,AS_CDS_1050,SLAC Engineering support to Prepare Technical Package for Request For Information to develop BOE - Transfer Line,10.0,16.0,0.0,16.0,08-16-2021,09-01-2021,AS_CDS_1040: FF,AS_CDS_1060: FS,SLAC,100%,52168.52168_METS - Mechanical Design,52168_METS - Mechanical Design,Labor,12.0d,0.0,12.0,At Completion Units,8/30/2021,9/13/2021,0,0,0,0,0,0,0,0,0,0,1.03_Accelerator Systems (AS),1.03.04_AS Cryogenic Distribution System (CDS),1.03.04.05_AS Cryogenic Distribution System Engineering and Design,1.03.04.05.02_CDS Preparation for CD-2/3,AS_CDS_1050_SLAC Engineering support to Prepare Technical Package for Request For Information to develop BOE - Transfer Line,Mechanical,,SLAC,Labor
85851,1.03,1.03.04,1.03.04.05,1.03.04.05.02,1.03.04.05.02,CDS Preparation for CD-2/3,AS_CDS_1170,SLAC Engineering support to Prepare Technical Package for Request For Information to develop BOE -  Beam Tube,10.0,80.0,80.0,80.0,10-29-21,11-11-21,AS_CDS_1160: SS,AS_CDS_1180: FS,SLAC,0%,52168.52168_METS - Mechanical Design,52168_METS - Mechanical Design,Labor,0.0d,10.0,10.0,At Completion Units,10/12/2021,10/25/2021,0,0,0,0,0,0,0,0,0,0,1.03_Accelerator Systems (AS),1.03.04_AS Cryogenic Distribution System (CDS),1.03.04.05_AS Cryogenic Distribution System Engineering and Design,1.03.04.05.02_CDS Preparation for CD-2/3,AS_CDS_1170_SLAC Engineering support to Prepare Technical Package for Request For Information to develop BOE -  Beam Tube,Mechanical,,SLAC,Labor
85852,1.03,1.03.04,1.03.04.05,1.03.04.05.02,1.03.04.05.02,CDS Preparation for CD-2/3,AS_CDS_1130,"SLAC Engineering support to Prepare Technical Package for Request For Information to develop BOE - VB, Tee, VTL",10.0,16.0,16.0,16.0,10-15-21,10-28-21,AS_CDS_1120: SS,AS_CDS_1140: FS,SLAC,0%,52168.52168_METS - Mechanical Design,52168_METS - Mechanical Design,Labor,0.0d,10.0,10.0,At Completion Units,9/28/2021,10/11/2021,0,0,0,0,0,0,0,0,0,0,1.03_Accelerator Systems (AS),1.03.04_AS Cryogenic Distribution System (CDS),1.03.04.05_AS Cryogenic Distribution System Engineering and Design,1.03.04.05.02_CDS Preparation for CD-2/3,"AS_CDS_1130_SLAC Engineering support to Prepare Technical Package for Request For Information to develop BOE - VB, Tee, VTL",Mechanical,,SLAC,Labor
85853,1.03,1.03.04,1.03.04.05,1.03.04.05.02,1.03.04.05.02,CDS Preparation for CD-2/3,AS_CDS_1090,SLAC Engineering support to Prepare Technical Package for Request For Information to develop BOE - End Caps,10.0,16.0,16.0,16.0,10-01-21,10-14-21,AS_CDS_1080: SS,AS_CDS_1100: FS,SLAC,0%,52168.52168_METS - Mechanical Design,52168_METS - Mechanical Design,Labor,0.0d,10.0,10.0,At Completion Units,9/14/2021,9/27/2021,0,0,0,0,0,0,0,0,0,0,1.03_Accelerator Systems (AS),1.03.04_AS Cryogenic Distribution System (CDS),1.03.04.05_AS Cryogenic Distribution System Engineering and Design,1.03.04.05.02_CDS Preparation for CD-2/3,AS_CDS_1090_SLAC Engineering support to Prepare Technical Package for Request For Information to develop BOE - End Caps,Mechanical,,SLAC,Labor
86173,1.03,1.03.04,1.03.04.05,1.03.04.05.10,1.03.04.05.10,Interface Box 3 - Design Package,AS_CDS_IB3_5020,Prepare General Arrangement Drawings - Interface Box 3,21.7,197.6,0.0,201.7,02-15-2021,10-22-21,AS_CDS_IB3_5010: FF,"AS_CDS_IB3_5040: FS, AS_CDS_TL_5050: FS",SLAC,100%,52169.52169_METS Mechanical Engineer,52169_METS Mechanical Engineer,Labor,160.0d,16.0,176.0,At Completion Units,1/5/2021,5/14/2021,0,0,0,0,0,0,0,0,0,0,1.03_Accelerator Systems (AS),1.03.04_AS Cryogenic Distribution System (CDS),1.03.04.05_AS Cryogenic Distribution System Engineering and Design,1.03.04.05.10_Interface Box 3 - Design Package,AS_CDS_IB3_5020_Prepare General Arrangement Drawings - Interface Box 3,Mechanical,,SLAC,Labor
86174,1.03,1.03.04,1.03.04.05,1.03.04.05.10,1.03.04.05.10,Interface Box 3 - Design Package,AS_CDS_IB3_5020,Prepare General Arrangement Drawings - Interface Box 3,17.4,474.4,67.0,268.7,02-15-2021,10-22-21,AS_CDS_IB3_5010: FF,"AS_CDS_IB3_5040: FS, AS_CDS_TL_5050: FS",SLAC,75.06%,52168.52168_METS - Mechanical Design,52168_METS - Mechanical Design,Labor,160.0d,16.0,176.0,At Completion Units,1/5/2021,5/14/2021,0,0,0,0,0,0,0,0,0,0,1.03_Accelerator Systems (AS),1.03.04_AS Cryogenic Distribution System (CDS),1.03.04.05_AS Cryogenic Distribution System Engineering and Design,1.03.04.05.10_Interface Box 3 - Design Package,AS_CDS_IB3_5020_Prepare General Arrangement Drawings - Interface Box 3,Mechanical,,SLAC,Labor
86175,1.03,1.03.04,1.03.04.05,1.03.04.05.10,1.03.04.05.10,Interface Box 3 - Design Package,AS_CDS_IB3_5020,Prepare General Arrangement Drawings - Interface Box 3,0.0,0.0,0.0,201.7,02-15-2021,10-22-21,AS_CDS_IB3_5010: FF,"AS_CDS_IB3_5040: FS, AS_CDS_TL_5050: FS",SLAC,100%,2003.2003_Research Technical Manager,2003_Research Technical Manager,Labor,160.0d,16.0,176.0,At Completion Units,1/5/2021,5/14/2021,0,0,0,0,0,0,0,0,0,0,1.03_Accelerator Systems (AS),1.03.04_AS Cryogenic Distribution System (CDS),1.03.04.05_AS Cryogenic Distribution System Engineering and Design,1.03.04.05.10_Interface Box 3 - Design Package,AS_CDS_IB3_5020_Prepare General Arrangement Drawings - Interface Box 3,Technical Manager,Engineer,SLAC,Labor
86176,1.03,1.03.04,1.03.04.05,1.03.04.05.10,1.03.04.05.10,Interface Box 3 - Design Package,AS_CDS_IB3_5010,"Develop schematic (PID, electrical diagrams) - Interface Box 3",73.0,20.0,0.0,0.0,03-29-2021,09-01-2021,AS_CDS_PD_5030: SS,"AS_CDS_IB3_5020: FF, AS_CDS_IB3_5030: FS",SLAC,0%,52168.52168_METS - Mechanical Design,52168_METS - Mechanical Design,Labor,110.0d,0.0,110.0,At Completion Units,4/2/2021,5/17/2021,0,0,0,0,0,0,0,0,0,0,1.03_Accelerator Systems (AS),1.03.04_AS Cryogenic Distribution System (CDS),1.03.04.05_AS Cryogenic Distribution System Engineering and Design,1.03.04.05.10_Interface Box 3 - Design Package,"AS_CDS_IB3_5010_Develop schematic (PID, electrical diagrams) - Interface Box 3",Mechanical,,SLAC,Labor
86177,1.03,1.03.04,1.03.04.05,1.03.04.05.10,1.03.04.05.10,Interface Box 3 - Design Package,AS_CDS_IB3_5010,"Develop schematic (PID, electrical diagrams) - Interface Box 3",73.0,40.0,0.0,60.0,03-29-2021,09-01-2021,AS_CDS_PD_5030: SS,"AS_CDS_IB3_5020: FF, AS_CDS_IB3_5030: FS",SLAC,100%,52169.52169_METS Mechanical Engineer,52169_METS Mechanical Engineer,Labor,110.0d,0.0,110.0,At Completion Units,4/2/2021,5/17/2021,0,0,0,0,0,0,0,0,0,0,1.03_Accelerator Systems (AS),1.03.04_AS Cryogenic Distribution System (CDS),1.03.04.05_AS Cryogenic Distribution System Engineering and Design,1.03.04.05.10_Interface Box 3 - Design Package,"AS_CDS_IB3_5010_Develop schematic (PID, electrical diagrams) - Interface Box 3",Mechanical,,SLAC,Labor
86178,1.03,1.03.04,1.03.04.05,1.03.04.05.10,1.03.04.05.10,Interface Box 3 - Design Package,AS_CDS_IB3_5030,Define Engineering Requirements - Interface Box 3,60.0,160.0,62.0,119.0,06-24-2021,10-22-21,"AS_CDS_PD_5010: SS, AS_CDS_IB3_5010: FS",AS_CDS_IB3_5040: FS,SLAC,47.90%,52169.52169_METS Mechanical Engineer,52169_METS Mechanical Engineer,Labor,69.0d,16.0,85.0,At Completion Units,4/26/2021,9/30/2021,0,0,0,0,0,0,0,0,0,0,1.03_Accelerator Systems (AS),1.03.04_AS Cryogenic Distribution System (CDS),1.03.04.05_AS Cryogenic Distribution System Engineering and Design,1.03.04.05.10_Interface Box 3 - Design Package,AS_CDS_IB3_5030_Define Engineering Requirements - Interface Box 3,Mechanical,,SLAC,Labor
86179,1.03,1.03.04,1.03.04.05,1.03.04.05.10,1.03.04.05.10,Interface Box 3 - Design Package,AS_CDS_IB3_5030,Define Engineering Requirements - Interface Box 3,60.0,16.0,0.0,57.0,06-24-2021,10-22-21,"AS_CDS_PD_5010: SS, AS_CDS_IB3_5010: FS",AS_CDS_IB3_5040: FS,SLAC,100%,0140_E3.0140_Engineer-Electrical_E3,0140_Engineer-Electrical_E3,Labor,69.0d,16.0,85.0,At Completion Units,4/26/2021,9/30/2021,0,0,0,0,0,0,0,0,0,0,1.03_Accelerator Systems (AS),1.03.04_AS Cryogenic Distribution System (CDS),1.03.04.05_AS Cryogenic Distribution System Engineering and Design,1.03.04.05.10_Interface Box 3 - Design Package,AS_CDS_IB3_5030_Define Engineering Requirements - Interface Box 3,Electrical,,SLAC,Labor
86180,1.03,1.03.04,1.03.04.05,1.03.04.05.10,1.03.04.05.10,Interface Box 3 - Design Package,AS_CDS_IB3_5060,Incorporate Recommendations and issue ESD - Interface Box 3,20.0,80.0,80.0,80.0,01-13-22,02-10-22,AS_CDS_IB3_5050: FS,AS_CDS_IB3_5070: FS,SLAC,0%,52169.52169_METS Mechanical Engineer,52169_METS Mechanical Engineer,Labor,0.0d,20.0,20.0,At Completion Units,12/1/2021,1/11/2022,0,0,0,0,0,0,0,0,0,0,1.03_Accelerator Systems (AS),1.03.04_AS Cryogenic Distribution System (CDS),1.03.04.05_AS Cryogenic Distribution System Engineering and Design,1.03.04.05.10_Interface Box 3 - Design Package,AS_CDS_IB3_5060_Incorporate Recommendations and issue ESD - Interface Box 3,Mechanical,,SLAC,Labor
86181,1.03,1.03.04,1.03.04.05,1.03.04.05.10,1.03.04.05.10,Interface Box 3 - Design Package,AS_CDS_IB3_5060,Incorporate Recommendations and issue ESD - Interface Box 3,20.0,80.0,80.0,80.0,01-13-22,02-10-22,AS_CDS_IB3_5050: FS,AS_CDS_IB3_5070: FS,SLAC,0%,52168.52168_METS - Mechanical Design,52168_METS - Mechanical Design,Labor,0.0d,20.0,20.0,At Completion Units,12/1/2021,1/11/2022,0,0,0,0,0,0,0,0,0,0,1.03_Accelerator Systems (AS),1.03.04_AS Cryogenic Distribution System (CDS),1.03.04.05_AS Cryogenic Distribution System Engineering and Design,1.03.04.05.10_Interface Box 3 - Design Package,AS_CDS_IB3_5060_Incorporate Recommendations and issue ESD - Interface Box 3,Mechanical,,SLAC,Labor
86182,1.03,1.03.04,1.03.04.05,1.03.04.05.10,1.03.04.05.10,Interface Box 3 - Design Package,AS_CDS_IB3_5050,R_RDR: Reference Design Review - Interface Box 3,1.0,24.0,24.0,24.0,01-12-22,01-12-22,AS_CDS_IB3_5040: FS,AS_CDS_IB3_5060: FS,SLAC,0%,52169.52169_METS Mechanical Engineer,52169_METS Mechanical Engineer,Labor,0.0d,1.0,1.0,At Completion Units,11/30/2021,11/30/2021,Review,0,0,0,0,0,0,0,0,0,1.03_Accelerator Systems (AS),1.03.04_AS Cryogenic Distribution System (CDS),1.03.04.05_AS Cryogenic Distribution System Engineering and Design,1.03.04.05.10_Interface Box 3 - Design Package,AS_CDS_IB3_5050_R_RDR: Reference Design Review - Interface Box 3,Mechanical,,SLAC,Labor
86183,1.03,1.03.04,1.03.04.05,1.03.04.05.10,1.03.04.05.10,Interface Box 3 - Design Package,AS_CDS_IB3_5040,Write Engineering Specification - Interface Box 3,40.0,80.0,80.0,80.0,11-01-21,01-11-22,"AS_CDS_IB3_5030: FS, AS_CDS_IB3_5020: FS, AS_CDS_PD_5089: FS","AS_CDS_IB3_5050: FS, AS_CDS_TL_5040: FF",SLAC,0%,52169.52169_METS Mechanical Engineer,52169_METS Mechanical Engineer,Labor,0.0d,40.0,40.0,At Completion Units,10/1/2021,11/29/2021,DM-C01-10%,0,0,0,0,0,0,0,0,0,1.03_Accelerator Systems (AS),1.03.04_AS Cryogenic Distribution System (CDS),1.03.04.05_AS Cryogenic Distribution System Engineering and Design,1.03.04.05.10_Interface Box 3 - Design Package,AS_CDS_IB3_5040_Write Engineering Specification - Interface Box 3,Mechanical,,SLAC,Labor
86184,1.03,1.03.04,1.03.04.05,1.03.04.05.10,1.03.04.05.10,Interface Box 3 - Design Package,AS_CDS_IB3_5050,R_RDR: Reference Design Review - Interface Box 3,1.0,8.0,8.0,8.0,01-12-22,01-12-22,AS_CDS_IB3_5040: FS,AS_CDS_IB3_5060: FS,SLAC,0%,0140_E3.0140_Engineer-Electrical_E3,0140_Engineer-Electrical_E3,Labor,0.0d,1.0,1.0,At Completion Units,11/30/2021,11/30/2021,Review,0,0,0,0,0,0,0,0,0,1.03_Accelerator Systems (AS),1.03.04_AS Cryogenic Distribution System (CDS),1.03.04.05_AS Cryogenic Distribution System Engineering and Design,1.03.04.05.10_Interface Box 3 - Design Package,AS_CDS_IB3_5050_R_RDR: Reference Design Review - Interface Box 3,Electrical,,SLAC,Labor
86185,1.03,1.03.04,1.03.04.05,1.03.04.05.10,1.03.04.05.10,Interface Box 3 - Design Package,AS_CDS_IB3_5040,Write Engineering Specification - Interface Box 3,40.0,16.0,16.0,16.0,11-01-21,01-11-22,"AS_CDS_IB3_5030: FS, AS_CDS_IB3_5020: FS, AS_CDS_PD_5089: FS","AS_CDS_IB3_5050: FS, AS_CDS_TL_5040: FF",SLAC,0%,0140_E3.0140_Engineer-Electrical_E3,0140_Engineer-Electrical_E3,Labor,0.0d,40.0,40.0,At Completion Units,10/1/2021,11/29/2021,DM-C01-10%,0,0,0,0,0,0,0,0,0,1.03_Accelerator Systems (AS),1.03.04_AS Cryogenic Distribution System (CDS),1.03.04.05_AS Cryogenic Distribution System Engineering and Design,1.03.04.05.10_Interface Box 3 - Design Package,AS_CDS_IB3_5040_Write Engineering Specification - Interface Box 3,Electrical,,SLAC,Labor
86505,1.03,1.03.04,1.03.04.05,1.03.04.05.20,1.03.04.05.20,Transfer Line 3 - Design Package,AS_CDS_TL_5020,Prepare General Arrangement Drawings - Transfer Line 3,60.0,192.0,24.0,132.0,05-10-2021,10-22-21,AS_CDS_TL_5010: SS 5.0d,0,SLAC,81.83%,52168.52168_METS - Mechanical Design,52168_METS - Mechanical Design,Labor,101.0d,16.0,117.0,At Completion Units,5/3/2021,7/27/2021,0,0,0,0,0,0,0,0,0,0,1.03_Accelerator Systems (AS),1.03.04_AS Cryogenic Distribution System (CDS),1.03.04.05_AS Cryogenic Distribution System Engineering and Design,1.03.04.05.20_Transfer Line 3 - Design Package,AS_CDS_TL_5020_Prepare General Arrangement Drawings - Transfer Line 3,Mechanical,,SLAC,Labor
86506,1.03,1.03.04,1.03.04.05,1.03.04.05.20,1.03.04.05.20,Transfer Line 3 - Design Package,AS_CDS_TL_5020,Prepare General Arrangement Drawings - Transfer Line 3,60.0,160.0,12.0,120.0,05-10-2021,10-22-21,AS_CDS_TL_5010: SS 5.0d,0,SLAC,89.99%,52169.52169_METS Mechanical Engineer,52169_METS Mechanical Engineer,Labor,101.0d,16.0,117.0,At Completion Units,5/3/2021,7/27/2021,0,0,0,0,0,0,0,0,0,0,1.03_Accelerator Systems (AS),1.03.04_AS Cryogenic Distribution System (CDS),1.03.04.05_AS Cryogenic Distribution System Engineering and Design,1.03.04.05.20_Transfer Line 3 - Design Package,AS_CDS_TL_5020_Prepare General Arrangement Drawings - Transfer Line 3,Mechanical,,SLAC,Labor
86507,1.03,1.03.04,1.03.04.05,1.03.04.05.20,1.03.04.05.20,Transfer Line 3 - Design Package,AS_CDS_TL_5020,Prepare General Arrangement Drawings - Transfer Line 3,60.0,8.0,0.0,108.0,05-10-2021,10-22-21,AS_CDS_TL_5010: SS 5.0d,0,SLAC,100%,2003.2003_Research Technical Manager,2003_Research Technical Manager,Labor,101.0d,16.0,117.0,At Completion Units,5/3/2021,7/27/2021,0,0,0,0,0,0,0,0,0,0,1.03_Accelerator Systems (AS),1.03.04_AS Cryogenic Distribution System (CDS),1.03.04.05_AS Cryogenic Distribution System Engineering and Design,1.03.04.05.20_Transfer Line 3 - Design Package,AS_CDS_TL_5020_Prepare General Arrangement Drawings - Transfer Line 3,Technical Manager,Engineer,SLAC,Labor
86508,1.03,1.03.04,1.03.04.05,1.03.04.05.20,1.03.04.05.20,Transfer Line 3 - Design Package,AS_CDS_TL_5010,"Develop schematic (PID, electrical diagrams) -Transfer Line 3",5.0,10.0,0.0,10.0,05-19-2021,09-01-2021,AS_CDS_DB_5010: SS,"AS_CDS_TL_5020: SS 5.0d, AS_CDS_VL_5010: SS 2.0d, AS_CDS_EC_5010: SS 3.0d, AS_CDS_TL_5030: FS, AS_CDS_BT_5010: FS",SLAC,100%,52169.52169_METS Mechanical Engineer,52169_METS Mechanical Engineer,Labor,73.0d,0.0,73.0,At Completion Units,5/3/2021,5/7/2021,0,0,0,0,0,0,0,0,0,0,1.03_Accelerator Systems (AS),1.03.04_AS Cryogenic Distribution System (CDS),1.03.04.05_AS Cryogenic Distribution System Engineering and Design,1.03.04.05.20_Transfer Line 3 - Design Package,"AS_CDS_TL_5010_Develop schematic (PID, electrical diagrams) -Transfer Line 3",Mechanical,,SLAC,Labor
86509,1.03,1.03.04,1.03.04.05,1.03.04.05.20,1.03.04.05.20,Transfer Line 3 - Design Package,AS_CDS_TL_5030,Define Engineering Requirements - Transfer Line 3,10.0,40.0,0.0,40.0,05-10-2021,05-21-2021,"AS_CDS_PD_5010: SS, AS_CDS_TL_5010: FS",AS_CDS_TL_5040: FS,SLAC,100%,52169.52169_METS Mechanical Engineer,52169_METS Mechanical Engineer,Labor,9.0d,0.0,9.0,At Completion Units,5/10/2021,5/21/2021,0,0,0,0,0,0,0,0,0,0,1.03_Accelerator Systems (AS),1.03.04_AS Cryogenic Distribution System (CDS),1.03.04.05_AS Cryogenic Distribution System Engineering and Design,1.03.04.05.20_Transfer Line 3 - Design Package,AS_CDS_TL_5030_Define Engineering Requirements - Transfer Line 3,Mechanical,,SLAC,Labor
86510,1.03,1.03.04,1.03.04.05,1.03.04.05.20,1.03.04.05.20,Transfer Line 3 - Design Package,AS_CDS_TL_5060,Incorporate Recommendations and issue ESD - Transfer Line 3,10.0,20.0,20.0,20.0,01-13-22,01-27-22,AS_CDS_TL_5050: FS,AS_CDS_TL_5070: FS,SLAC,0%,52168.52168_METS - Mechanical Design,52168_METS - Mechanical Design,Labor,0.0d,10.0,10.0,At Completion Units,12/1/2021,12/14/2021,0,0,0,0,0,0,0,0,0,0,1.03_Accelerator Systems (AS),1.03.04_AS Cryogenic Distribution System (CDS),1.03.04.05_AS Cryogenic Distribution System Engineering and Design,1.03.04.05.20_Transfer Line 3 - Design Package,AS_CDS_TL_5060_Incorporate Recommendations and issue ESD - Transfer Line 3,Mechanical,,SLAC,Labor
86511,1.03,1.03.04,1.03.04.05,1.03.04.05.20,1.03.04.05.20,Transfer Line 3 - Design Package,AS_CDS_TL_5050,R_RDR: Reference Design Review -Transfer Line 3,1.0,24.0,24.0,24.0,01-12-22,01-12-22,"AS_CDS_TL_5040: FS, AS_CDS_IB3_5020: FS",AS_CDS_TL_5060: FS,SLAC,0%,52168.52168_METS - Mechanical Design,52168_METS - Mechanical Design,Labor,0.0d,1.0,1.0,At Completion Units,11/30/2021,11/30/2021,Review,0,0,0,0,0,0,0,0,0,1.03_Accelerator Systems (AS),1.03.04_AS Cryogenic Distribution System (CDS),1.03.04.05_AS Cryogenic Distribution System Engineering and Design,1.03.04.05.20_Transfer Line 3 - Design Package,AS_CDS_TL_5050_R_RDR: Reference Design Review -Transfer Line 3,Mechanical,,SLAC,Labor
86512,1.03,1.03.04,1.03.04.05,1.03.04.05.20,1.03.04.05.20,Transfer Line 3 - Design Package,AS_CDS_TL_5060,Incorporate Recommendations and issue ESD - Transfer Line 3,10.0,20.0,20.0,20.0,01-13-22,01-27-22,AS_CDS_TL_5050: FS,AS_CDS_TL_5070: FS,SLAC,0%,52169.52169_METS Mechanical Engineer,52169_METS Mechanical Engineer,Labor,0.0d,10.0,10.0,At Completion Units,12/1/2021,12/14/2021,0,0,0,0,0,0,0,0,0,0,1.03_Accelerator Systems (AS),1.03.04_AS Cryogenic Distribution System (CDS),1.03.04.05_AS Cryogenic Distribution System Engineering and Design,1.03.04.05.20_Transfer Line 3 - Design Package,AS_CDS_TL_5060_Incorporate Recommendations and issue ESD - Transfer Line 3,Mechanical,,SLAC,Labor
86513,1.03,1.03.04,1.03.04.05,1.03.04.05.20,1.03.04.05.20,Transfer Line 3 - Design Package,AS_CDS_TL_5050,R_RDR: Reference Design Review -Transfer Line 3,1.0,4.0,4.0,4.0,01-12-22,01-12-22,"AS_CDS_TL_5040: FS, AS_CDS_IB3_5020: FS",AS_CDS_TL_5060: FS,SLAC,0%,0140_E3.0140_Engineer-Electrical_E3,0140_Engineer-Electrical_E3,Labor,0.0d,1.0,1.0,At Completion Units,11/30/2021,11/30/2021,Review,0,0,0,0,0,0,0,0,0,1.03_Accelerator Systems (AS),1.03.04_AS Cryogenic Distribution System (CDS),1.03.04.05_AS Cryogenic Distribution System Engineering and Design,1.03.04.05.20_Transfer Line 3 - Design Package,AS_CDS_TL_5050_R_RDR: Reference Design Review -Transfer Line 3,Electrical,,SLAC,Labor
86514,1.03,1.03.04,1.03.04.05,1.03.04.05.20,1.03.04.05.20,Transfer Line 3 - Design Package,AS_CDS_TL_5050,R_RDR: Reference Design Review -Transfer Line 3,1.0,8.0,8.0,8.0,01-12-22,01-12-22,"AS_CDS_TL_5040: FS, AS_CDS_IB3_5020: FS",AS_CDS_TL_5060: FS,SLAC,0%,52169.52169_METS Mechanical Engineer,52169_METS Mechanical Engineer,Labor,0.0d,1.0,1.0,At Completion Units,11/30/2021,11/30/2021,Review,0,0,0,0,0,0,0,0,0,1.03_Accelerator Systems (AS),1.03.04_AS Cryogenic Distribution System (CDS),1.03.04.05_AS Cryogenic Distribution System Engineering and Design,1.03.04.05.20_Transfer Line 3 - Design Package,AS_CDS_TL_5050_R_RDR: Reference Design Review -Transfer Line 3,Mechanical,,SLAC,Labor
86515,1.03,1.03.04,1.03.04.05,1.03.04.05.20,1.03.04.05.20,Transfer Line 3 - Design Package,AS_CDS_TL_5050,R_RDR: Reference Design Review -Transfer Line 3,1.0,4.0,4.0,4.0,01-12-22,01-12-22,"AS_CDS_TL_5040: FS, AS_CDS_IB3_5020: FS",AS_CDS_TL_5060: FS,SLAC,0%,2003.2003_Research Technical Manager,2003_Research Technical Manager,Labor,0.0d,1.0,1.0,At Completion Units,11/30/2021,11/30/2021,Review,0,0,0,0,0,0,0,0,0,1.03_Accelerator Systems (AS),1.03.04_AS Cryogenic Distribution System (CDS),1.03.04.05_AS Cryogenic Distribution System Engineering and Design,1.03.04.05.20_Transfer Line 3 - Design Package,AS_CDS_TL_5050_R_RDR: Reference Design Review -Transfer Line 3,Technical Manager,Engineer,SLAC,Labor
86516,1.03,1.03.04,1.03.04.05,1.03.04.05.20,1.03.04.05.20,Transfer Line 3 - Design Package,AS_CDS_TL_5040,Write Engineering Specification - Transfer Line 3,40.0,80.0,80.0,80.0,11-01-21,01-11-22,"AS_CDS_TL_5030: FS, AS_CDS_IB3_5040: FF, AS_CDS_PD_5089: FS",AS_CDS_TL_5050: FS,SLAC,0%,52169.52169_METS Mechanical Engineer,52169_METS Mechanical Engineer,Labor,0.0d,40.0,40.0,At Completion Units,10/1/2021,11/29/2021,DM-C01-10%,0,0,0,0,0,0,0,0,0,1.03_Accelerator Systems (AS),1.03.04_AS Cryogenic Distribution System (CDS),1.03.04.05_AS Cryogenic Distribution System Engineering and Design,1.03.04.05.20_Transfer Line 3 - Design Package,AS_CDS_TL_5040_Write Engineering Specification - Transfer Line 3,Mechanical,,SLAC,Labor
86836,1.03,1.03.04,1.03.04.05,1.03.04.05.30,1.03.04.05.30,Distribution Box 3 - Design Package,AS_CDS_DB_5010,"Develop schematic (PID, electrical diagrams) - Distribution Box 3",47.0,20.0,0.0,15.0,05-19-2021,09-01-2021,AS_CDS_PD_5010: SS,"AS_CDS_DB_5020: SS 5.0d, AS_CDS_TL_5010: SS, AS_CDS_DB_5030: FS",SLAC,100%,52168.52168_METS - Mechanical Design,52168_METS - Mechanical Design,Labor,73.0d,0.0,73.0,At Completion Units,4/26/2021,4/30/2021,0,0,0,0,0,0,0,0,0,0,1.03_Accelerator Systems (AS),1.03.04_AS Cryogenic Distribution System (CDS),1.03.04.05_AS Cryogenic Distribution System Engineering and Design,1.03.04.05.30_Distribution Box 3 - Design Package,"AS_CDS_DB_5010_Develop schematic (PID, electrical diagrams) - Distribution Box 3",Mechanical,,SLAC,Labor
86837,1.03,1.03.04,1.03.04.05,1.03.04.05.30,1.03.04.05.30,Distribution Box 3 - Design Package,AS_CDS_DB_5010,"Develop schematic (PID, electrical diagrams) - Distribution Box 3",47.0,10.0,0.0,15.0,05-19-2021,09-01-2021,AS_CDS_PD_5010: SS,"AS_CDS_DB_5020: SS 5.0d, AS_CDS_TL_5010: SS, AS_CDS_DB_5030: FS",SLAC,100%,52169.52169_METS Mechanical Engineer,52169_METS Mechanical Engineer,Labor,73.0d,0.0,73.0,At Completion Units,4/26/2021,4/30/2021,0,0,0,0,0,0,0,0,0,0,1.03_Accelerator Systems (AS),1.03.04_AS Cryogenic Distribution System (CDS),1.03.04.05_AS Cryogenic Distribution System Engineering and Design,1.03.04.05.30_Distribution Box 3 - Design Package,"AS_CDS_DB_5010_Develop schematic (PID, electrical diagrams) - Distribution Box 3",Mechanical,,SLAC,Labor
86838,1.03,1.03.04,1.03.04.05,1.03.04.05.30,1.03.04.05.30,Distribution Box 3 - Design Package,AS_CDS_DB_5020,Prepare General Arrangement Drawings - Distribution Box 3,10.0,8.0,0.0,82.7,05-03-2021,05-14-2021,AS_CDS_DB_5010: SS 5.0d,AS_CDS_DB_5030: FS,SLAC,100%,2003.2003_Research Technical Manager,2003_Research Technical Manager,Labor,9.0d,0.0,9.0,At Completion Units,4/26/2021,5/7/2021,0,0,0,0,0,0,0,0,0,0,1.03_Accelerator Systems (AS),1.03.04_AS Cryogenic Distribution System (CDS),1.03.04.05_AS Cryogenic Distribution System Engineering and Design,1.03.04.05.30_Distribution Box 3 - Design Package,AS_CDS_DB_5020_Prepare General Arrangement Drawings - Distribution Box 3,Technical Manager,Engineer,SLAC,Labor
86839,1.03,1.03.04,1.03.04.05,1.03.04.05.30,1.03.04.05.30,Distribution Box 3 - Design Package,AS_CDS_DB_5020,Prepare General Arrangement Drawings - Distribution Box 3,10.0,160.0,0.0,82.7,05-03-2021,05-14-2021,AS_CDS_DB_5010: SS 5.0d,AS_CDS_DB_5030: FS,SLAC,100%,52168.52168_METS - Mechanical Design,52168_METS - Mechanical Design,Labor,9.0d,0.0,9.0,At Completion Units,4/26/2021,5/7/2021,0,0,0,0,0,0,0,0,0,0,1.03_Accelerator Systems (AS),1.03.04_AS Cryogenic Distribution System (CDS),1.03.04.05_AS Cryogenic Distribution System Engineering and Design,1.03.04.05.30_Distribution Box 3 - Design Package,AS_CDS_DB_5020_Prepare General Arrangement Drawings - Distribution Box 3,Mechanical,,SLAC,Labor
86840,1.03,1.03.04,1.03.04.05,1.03.04.05.30,1.03.04.05.30,Distribution Box 3 - Design Package,AS_CDS_DB_5060,Incorporate Recommendations and issue ESD - Distribution Box 3,10.0,40.0,0.0,40.0,06-16-2021,06-29-2021,AS_CDS_DB_5050: FS,AS_CDS_DB_5070: FS,SLAC,100%,52169.52169_METS Mechanical Engineer,52169_METS Mechanical Engineer,Labor,9.0d,0.0,9.0,At Completion Units,6/9/2021,6/22/2021,0,0,0,0,0,0,0,0,0,0,1.03_Accelerator Systems (AS),1.03.04_AS Cryogenic Distribution System (CDS),1.03.04.05_AS Cryogenic Distribution System Engineering and Design,1.03.04.05.30_Distribution Box 3 - Design Package,AS_CDS_DB_5060_Incorporate Recommendations and issue ESD - Distribution Box 3,Mechanical,,SLAC,Labor
86841,1.03,1.03.04,1.03.04.05,1.03.04.05.30,1.03.04.05.30,Distribution Box 3 - Design Package,AS_CDS_DB_5040,Write Engineering Specification - Distribution Box 3,10.0,8.0,0.0,44.0,06-01-2021,06-14-2021,AS_CDS_DB_5030: FS,AS_CDS_DB_5050: FS,SLAC,100%,0140_E3.0140_Engineer-Electrical_E3,0140_Engineer-Electrical_E3,Labor,9.0d,0.0,9.0,At Completion Units,5/24/2021,6/7/2021,DM-C01-10%,0,0,0,0,0,0,0,0,0,1.03_Accelerator Systems (AS),1.03.04_AS Cryogenic Distribution System (CDS),1.03.04.05_AS Cryogenic Distribution System Engineering and Design,1.03.04.05.30_Distribution Box 3 - Design Package,AS_CDS_DB_5040_Write Engineering Specification - Distribution Box 3,Electrical,,SLAC,Labor
86842,1.03,1.03.04,1.03.04.05,1.03.04.05.30,1.03.04.05.30,Distribution Box 3 - Design Package,AS_CDS_DB_5040,Write Engineering Specification - Distribution Box 3,10.0,80.0,0.0,44.0,06-01-2021,06-14-2021,AS_CDS_DB_5030: FS,AS_CDS_DB_5050: FS,SLAC,100%,52169.52169_METS Mechanical Engineer,52169_METS Mechanical Engineer,Labor,9.0d,0.0,9.0,At Completion Units,5/24/2021,6/7/2021,DM-C01-10%,0,0,0,0,0,0,0,0,0,1.03_Accelerator Systems (AS),1.03.04_AS Cryogenic Distribution System (CDS),1.03.04.05_AS Cryogenic Distribution System Engineering and Design,1.03.04.05.30_Distribution Box 3 - Design Package,AS_CDS_DB_5040_Write Engineering Specification - Distribution Box 3,Mechanical,,SLAC,Labor
86843,1.03,1.03.04,1.03.04.05,1.03.04.05.30,1.03.04.05.30,Distribution Box 3 - Design Package,AS_CDS_DB_5030,Define Engineering Requirements - Distribution Box 3,10.0,80.0,0.0,80.0,05-17-2021,05-28-2021,"AS_CDS_DB_5020: FS, AS_CDS_PD_5010: SS, AS_CDS_DB_5010: FS",AS_CDS_DB_5040: FS,SLAC,100%,52169.52169_METS Mechanical Engineer,52169_METS Mechanical Engineer,Labor,9.0d,0.0,9.0,At Completion Units,5/10/2021,5/21/2021,0,0,0,0,0,0,0,0,0,0,1.03_Accelerator Systems (AS),1.03.04_AS Cryogenic Distribution System (CDS),1.03.04.05_AS Cryogenic Distribution System Engineering and Design,1.03.04.05.30_Distribution Box 3 - Design Package,AS_CDS_DB_5030_Define Engineering Requirements - Distribution Box 3,Mechanical,,SLAC,Labor
86844,1.03,1.03.04,1.03.04.05,1.03.04.05.30,1.03.04.05.30,Distribution Box 3 - Design Package,AS_CDS_DB_5020,Prepare General Arrangement Drawings - Distribution Box 3,10.0,80.0,0.0,82.7,05-03-2021,05-14-2021,AS_CDS_DB_5010: SS 5.0d,AS_CDS_DB_5030: FS,SLAC,100%,52169.52169_METS Mechanical Engineer,52169_METS Mechanical Engineer,Labor,9.0d,0.0,9.0,At Completion Units,4/26/2021,5/7/2021,0,0,0,0,0,0,0,0,0,0,1.03_Accelerator Systems (AS),1.03.04_AS Cryogenic Distribution System (CDS),1.03.04.05_AS Cryogenic Distribution System Engineering and Design,1.03.04.05.30_Distribution Box 3 - Design Package,AS_CDS_DB_5020_Prepare General Arrangement Drawings - Distribution Box 3,Mechanical,,SLAC,Labor
86845,1.03,1.03.04,1.03.04.05,1.03.04.05.30,1.03.04.05.30,Distribution Box 3 - Design Package,AS_CDS_DB_5050,R_RDR: Reference Design Review - Distribution Box 3,1.0,8.4,0.0,16.0,06-15-2021,06-15-2021,AS_CDS_DB_5040: FS,AS_CDS_DB_5060: FS,SLAC,100%,0140_E3.0140_Engineer-Electrical_E3,0140_Engineer-Electrical_E3,Labor,0.0d,0.0,0.0,At Completion Units,6/8/2021,6/8/2021,Review,0,0,0,0,0,0,0,0,0,1.03_Accelerator Systems (AS),1.03.04_AS Cryogenic Distribution System (CDS),1.03.04.05_AS Cryogenic Distribution System Engineering and Design,1.03.04.05.30_Distribution Box 3 - Design Package,AS_CDS_DB_5050_R_RDR: Reference Design Review - Distribution Box 3,Electrical,,SLAC,Labor
86846,1.03,1.03.04,1.03.04.05,1.03.04.05.30,1.03.04.05.30,Distribution Box 3 - Design Package,AS_CDS_DB_5050,R_RDR: Reference Design Review - Distribution Box 3,1.0,24.0,0.0,16.0,06-15-2021,06-15-2021,AS_CDS_DB_5040: FS,AS_CDS_DB_5060: FS,SLAC,100%,52169.52169_METS Mechanical Engineer,52169_METS Mechanical Engineer,Labor,0.0d,0.0,0.0,At Completion Units,6/8/2021,6/8/2021,Review,0,0,0,0,0,0,0,0,0,1.03_Accelerator Systems (AS),1.03.04_AS Cryogenic Distribution System (CDS),1.03.04.05_AS Cryogenic Distribution System Engineering and Design,1.03.04.05.30_Distribution Box 3 - Design Package,AS_CDS_DB_5050_R_RDR: Reference Design Review - Distribution Box 3,Mechanical,,SLAC,Labor
87166,1.03,1.03.04,1.03.04.05,1.03.04.05.40,1.03.04.05.40,Vertical Line 3 and Tee - Design Package,AS_CDS_VL_5010,"Develop schematic (PID, electrical diagrams) - Vertical Line 3 and Tee",31.0,20.0,0.0,20.0,05-19-2021,09-01-2021,AS_CDS_TL_5010: SS 2.0d,"AS_CDS_VL_5030: FS, AS_CDS_VB_5010: SS 1.0d",SLAC,100%,52169.52169_METS Mechanical Engineer,52169_METS Mechanical Engineer,Labor,73.0d,0.0,73.0,At Completion Units,5/3/2021,5/7/2021,0,0,0,0,0,0,0,0,0,0,1.03_Accelerator Systems (AS),1.03.04_AS Cryogenic Distribution System (CDS),1.03.04.05_AS Cryogenic Distribution System Engineering and Design,1.03.04.05.40_Vertical Line 3 and Tee - Design Package,"AS_CDS_VL_5010_Develop schematic (PID, electrical diagrams) - Vertical Line 3 and Tee",Mechanical,,SLAC,Labor
87167,1.03,1.03.04,1.03.04.05,1.03.04.05.40,1.03.04.05.40,Vertical Line 3 and Tee - Design Package,AS_CDS_VL_5060,Incorporate Recommendations and issue ESD - Vertical Line 3 and Tee,10.0,20.0,20.0,20.0,03-15-22,03-28-22,AS_CDS_VL_5050: FS,"AS_CDS_VL_6010: FS, AS_CDS_VL_5070: FS",SLAC,0%,52168.52168_METS - Mechanical Design,52168_METS - Mechanical Design,Labor,0.0d,10.0,10.0,At Completion Units,1/7/2022,1/21/2022,0,0,0,0,0,0,0,0,0,0,1.03_Accelerator Systems (AS),1.03.04_AS Cryogenic Distribution System (CDS),1.03.04.05_AS Cryogenic Distribution System Engineering and Design,1.03.04.05.40_Vertical Line 3 and Tee - Design Package,AS_CDS_VL_5060_Incorporate Recommendations and issue ESD - Vertical Line 3 and Tee,Mechanical,,SLAC,Labor
87168,1.03,1.03.04,1.03.04.05,1.03.04.05.40,1.03.04.05.40,Vertical Line 3 and Tee - Design Package,AS_CDS_VL_5030,Define Engineering Requirements - Vertical Line 3 and Tee,40.0,20.0,20.0,20.0,11-16-21,01-27-22,"AS_CDS_VL_5020: SS, AS_CDS_VL_5010: FS, AS_CDS_PD_5010: FS",AS_CDS_VL_5040: FS,SLAC,0%,2003.2003_Research Technical Manager,2003_Research Technical Manager,Labor,0.0d,40.0,40.0,At Completion Units,9/14/2021,11/8/2021,0,0,0,0,0,0,0,0,0,0,1.03_Accelerator Systems (AS),1.03.04_AS Cryogenic Distribution System (CDS),1.03.04.05_AS Cryogenic Distribution System Engineering and Design,1.03.04.05.40_Vertical Line 3 and Tee - Design Package,AS_CDS_VL_5030_Define Engineering Requirements - Vertical Line 3 and Tee,Technical Manager,Engineer,SLAC,Labor
87169,1.03,1.03.04,1.03.04.05,1.03.04.05.40,1.03.04.05.40,Vertical Line 3 and Tee - Design Package,AS_CDS_VL_5030,Define Engineering Requirements - Vertical Line 3 and Tee,40.0,20.0,20.0,20.0,11-16-21,01-27-22,"AS_CDS_VL_5020: SS, AS_CDS_VL_5010: FS, AS_CDS_PD_5010: FS",AS_CDS_VL_5040: FS,SLAC,0%,52169.52169_METS Mechanical Engineer,52169_METS Mechanical Engineer,Labor,0.0d,40.0,40.0,At Completion Units,9/14/2021,11/8/2021,0,0,0,0,0,0,0,0,0,0,1.03_Accelerator Systems (AS),1.03.04_AS Cryogenic Distribution System (CDS),1.03.04.05_AS Cryogenic Distribution System Engineering and Design,1.03.04.05.40_Vertical Line 3 and Tee - Design Package,AS_CDS_VL_5030_Define Engineering Requirements - Vertical Line 3 and Tee,Mechanical,,SLAC,Labor
87170,1.03,1.03.04,1.03.04.05,1.03.04.05.40,1.03.04.05.40,Vertical Line 3 and Tee - Design Package,AS_CDS_VL_5020,Prepare General Arrangement Drawings - Vertical Line 3 and Tee,40.0,384.0,384.0,384.0,11-16-21,01-27-22,"AS_CDS_EC_5020: FS, AS_CDS_PD_5089: FS","AS_CDS_VL_5030: SS, AS_CDS_VL_5040: FS, AS_CDS_VB_5020: FS",SLAC,0%,52168.52168_METS - Mechanical Design,52168_METS - Mechanical Design,Labor,0.0d,40.0,40.0,At Completion Units,9/14/2021,11/8/2021,0,0,0,0,0,0,0,0,0,0,1.03_Accelerator Systems (AS),1.03.04_AS Cryogenic Distribution System (CDS),1.03.04.05_AS Cryogenic Distribution System Engineering and Design,1.03.04.05.40_Vertical Line 3 and Tee - Design Package,AS_CDS_VL_5020_Prepare General Arrangement Drawings - Vertical Line 3 and Tee,Mechanical,,SLAC,Labor
87171,1.03,1.03.04,1.03.04.05,1.03.04.05.40,1.03.04.05.40,Vertical Line 3 and Tee - Design Package,AS_CDS_VL_5060,Incorporate Recommendations and issue ESD - Vertical Line 3 and Tee,10.0,20.0,20.0,20.0,03-15-22,03-28-22,AS_CDS_VL_5050: FS,"AS_CDS_VL_6010: FS, AS_CDS_VL_5070: FS",SLAC,0%,52169.52169_METS Mechanical Engineer,52169_METS Mechanical Engineer,Labor,0.0d,10.0,10.0,At Completion Units,1/7/2022,1/21/2022,0,0,0,0,0,0,0,0,0,0,1.03_Accelerator Systems (AS),1.03.04_AS Cryogenic Distribution System (CDS),1.03.04.05_AS Cryogenic Distribution System Engineering and Design,1.03.04.05.40_Vertical Line 3 and Tee - Design Package,AS_CDS_VL_5060_Incorporate Recommendations and issue ESD - Vertical Line 3 and Tee,Mechanical,,SLAC,Labor
87172,1.03,1.03.04,1.03.04.05,1.03.04.05.40,1.03.04.05.40,Vertical Line 3 and Tee - Design Package,AS_CDS_VL_5050,R_RDR: Reference Design Review - Vertical Line 3 and Tee,1.0,4.0,4.0,4.0,03-14-22,03-14-22,AS_CDS_VL_5040: FS,AS_CDS_VL_5060: FS,SLAC,0%,0140_E3.0140_Engineer-Electrical_E3,0140_Engineer-Electrical_E3,Labor,0.0d,1.0,1.0,At Completion Units,1/6/2022,1/6/2022,Review,0,0,0,0,0,0,0,0,0,1.03_Accelerator Systems (AS),1.03.04_AS Cryogenic Distribution System (CDS),1.03.04.05_AS Cryogenic Distribution System Engineering and Design,1.03.04.05.40_Vertical Line 3 and Tee - Design Package,AS_CDS_VL_5050_R_RDR: Reference Design Review - Vertical Line 3 and Tee,Electrical,,SLAC,Labor
87173,1.03,1.03.04,1.03.04.05,1.03.04.05.40,1.03.04.05.40,Vertical Line 3 and Tee - Design Package,AS_CDS_VL_5050,R_RDR: Reference Design Review - Vertical Line 3 and Tee,1.0,4.0,4.0,4.0,03-14-22,03-14-22,AS_CDS_VL_5040: FS,AS_CDS_VL_5060: FS,SLAC,0%,52168.52168_METS - Mechanical Design,52168_METS - Mechanical Design,Labor,0.0d,1.0,1.0,At Completion Units,1/6/2022,1/6/2022,Review,0,0,0,0,0,0,0,0,0,1.03_Accelerator Systems (AS),1.03.04_AS Cryogenic Distribution System (CDS),1.03.04.05_AS Cryogenic Distribution System Engineering and Design,1.03.04.05.40_Vertical Line 3 and Tee - Design Package,AS_CDS_VL_5050_R_RDR: Reference Design Review - Vertical Line 3 and Tee,Mechanical,,SLAC,Labor
87174,1.03,1.03.04,1.03.04.05,1.03.04.05.40,1.03.04.05.40,Vertical Line 3 and Tee - Design Package,AS_CDS_VL_5050,R_RDR: Reference Design Review - Vertical Line 3 and Tee,1.0,24.0,24.0,24.0,03-14-22,03-14-22,AS_CDS_VL_5040: FS,AS_CDS_VL_5060: FS,SLAC,0%,52169.52169_METS Mechanical Engineer,52169_METS Mechanical Engineer,Labor,0.0d,1.0,1.0,At Completion Units,1/6/2022,1/6/2022,Review,0,0,0,0,0,0,0,0,0,1.03_Accelerator Systems (AS),1.03.04_AS Cryogenic Distribution System (CDS),1.03.04.05_AS Cryogenic Distribution System Engineering and Design,1.03.04.05.40_Vertical Line 3 and Tee - Design Package,AS_CDS_VL_5050_R_RDR: Reference Design Review - Vertical Line 3 and Tee,Mechanical,,SLAC,Labor
87175,1.03,1.03.04,1.03.04.05,1.03.04.05.40,1.03.04.05.40,Vertical Line 3 and Tee - Design Package,AS_CDS_VL_5050,R_RDR: Reference Design Review - Vertical Line 3 and Tee,1.0,4.0,4.0,4.0,03-14-22,03-14-22,AS_CDS_VL_5040: FS,AS_CDS_VL_5060: FS,SLAC,0%,2003.2003_Research Technical Manager,2003_Research Technical Manager,Labor,0.0d,1.0,1.0,At Completion Units,1/6/2022,1/6/2022,Review,0,0,0,0,0,0,0,0,0,1.03_Accelerator Systems (AS),1.03.04_AS Cryogenic Distribution System (CDS),1.03.04.05_AS Cryogenic Distribution System Engineering and Design,1.03.04.05.40_Vertical Line 3 and Tee - Design Package,AS_CDS_VL_5050_R_RDR: Reference Design Review - Vertical Line 3 and Tee,Technical Manager,Engineer,SLAC,Labor
87176,1.03,1.03.04,1.03.04.05,1.03.04.05.40,1.03.04.05.40,Vertical Line 3 and Tee - Design Package,AS_CDS_VL_5040,Write Engineering Specification - Vertical Line 3 and Tee,30.0,16.0,16.0,16.0,01-28-22,03-11-22,"AS_CDS_VL_5030: FS, AS_CDS_VL_5020: FS","AS_CDS_VL_5050: FS, AS_CDS_BT_5020: FS",SLAC,0%,0140_E3.0140_Engineer-Electrical_E3,0140_Engineer-Electrical_E3,Labor,0.0d,30.0,30.0,At Completion Units,11/9/2021,1/5/2022,DM-C01-10%,0,0,0,0,0,0,0,0,0,1.03_Accelerator Systems (AS),1.03.04_AS Cryogenic Distribution System (CDS),1.03.04.05_AS Cryogenic Distribution System Engineering and Design,1.03.04.05.40_Vertical Line 3 and Tee - Design Package,AS_CDS_VL_5040_Write Engineering Specification - Vertical Line 3 and Tee,Electrical,,SLAC,Labor
87177,1.03,1.03.04,1.03.04.05,1.03.04.05.40,1.03.04.05.40,Vertical Line 3 and Tee - Design Package,AS_CDS_VL_5040,Write Engineering Specification - Vertical Line 3 and Tee,30.0,120.0,120.0,120.0,01-28-22,03-11-22,"AS_CDS_VL_5030: FS, AS_CDS_VL_5020: FS","AS_CDS_VL_5050: FS, AS_CDS_BT_5020: FS",SLAC,0%,52169.52169_METS Mechanical Engineer,52169_METS Mechanical Engineer,Labor,0.0d,30.0,30.0,At Completion Units,11/9/2021,1/5/2022,DM-C01-10%,0,0,0,0,0,0,0,0,0,1.03_Accelerator Systems (AS),1.03.04_AS Cryogenic Distribution System (CDS),1.03.04.05_AS Cryogenic Distribution System Engineering and Design,1.03.04.05.40_Vertical Line 3 and Tee - Design Package,AS_CDS_VL_5040_Write Engineering Specification - Vertical Line 3 and Tee,Mechanical,,SLAC,Labor
87178,1.03,1.03.04,1.03.04.05,1.03.04.05.40,1.03.04.05.40,Vertical Line 3 and Tee - Design Package,AS_CDS_VL_5020,Prepare General Arrangement Drawings - Vertical Line 3 and Tee,40.0,80.0,80.0,80.0,11-16-21,01-27-22,"AS_CDS_EC_5020: FS, AS_CDS_PD_5089: FS","AS_CDS_VL_5030: SS, AS_CDS_VL_5040: FS, AS_CDS_VB_5020: FS",SLAC,0%,52169.52169_METS Mechanical Engineer,52169_METS Mechanical Engineer,Labor,0.0d,40.0,40.0,At Completion Units,9/14/2021,11/8/2021,0,0,0,0,0,0,0,0,0,0,1.03_Accelerator Systems (AS),1.03.04_AS Cryogenic Distribution System (CDS),1.03.04.05_AS Cryogenic Distribution System Engineering and Design,1.03.04.05.40_Vertical Line 3 and Tee - Design Package,AS_CDS_VL_5020_Prepare General Arrangement Drawings - Vertical Line 3 and Tee,Mechanical,,SLAC,Labor
87179,1.03,1.03.04,1.03.04.05,1.03.04.05.40,1.03.04.05.40,Vertical Line 3 and Tee - Design Package,AS_CDS_VL_5020,Prepare General Arrangement Drawings - Vertical Line 3 and Tee,40.0,16.0,16.0,16.0,11-16-21,01-27-22,"AS_CDS_EC_5020: FS, AS_CDS_PD_5089: FS","AS_CDS_VL_5030: SS, AS_CDS_VL_5040: FS, AS_CDS_VB_5020: FS",SLAC,0%,2003.2003_Research Technical Manager,2003_Research Technical Manager,Labor,0.0d,40.0,40.0,At Completion Units,9/14/2021,11/8/2021,0,0,0,0,0,0,0,0,0,0,1.03_Accelerator Systems (AS),1.03.04_AS Cryogenic Distribution System (CDS),1.03.04.05_AS Cryogenic Distribution System Engineering and Design,1.03.04.05.40_Vertical Line 3 and Tee - Design Package,AS_CDS_VL_5020_Prepare General Arrangement Drawings - Vertical Line 3 and Tee,Technical Manager,Engineer,SLAC,Labor
87499,1.03,1.03.04,1.03.04.05,1.03.04.05.50,1.03.04.05.50,Vacuum Box 2 - Design Package,AS_CDS_VB_5010,"Develop schematic (PID, electrical diagrams) - Vacuum Box 2",28.0,10.0,0.0,9.5,05-06-2021,09-01-2021,AS_CDS_VL_5010: SS 1.0d,"AS_CDS_VB_5030: SS, AS_CDS_VB_5020: FS",SLAC,100%,52169.52169_METS Mechanical Engineer,52169_METS Mechanical Engineer,Labor,82.0d,0.0,82.0,At Completion Units,5/3/2021,5/7/2021,0,0,0,0,0,0,0,0,0,0,1.03_Accelerator Systems (AS),1.03.04_AS Cryogenic Distribution System (CDS),1.03.04.05_AS Cryogenic Distribution System Engineering and Design,1.03.04.05.50_Vacuum Box 2 - Design Package,"AS_CDS_VB_5010_Develop schematic (PID, electrical diagrams) - Vacuum Box 2",Mechanical,,SLAC,Labor
87500,1.03,1.03.04,1.03.04.05,1.03.04.05.50,1.03.04.05.50,Vacuum Box 2 - Design Package,AS_CDS_VB_5030,Define Engineering Requirements - Vacuum Box 2,20.0,10.0,5.0,10.0,06-11-2021,02-25-22,"AS_CDS_VB_5020: FF, AS_CDS_VB_5010: SS, AS_CDS_PD_5010: SS",AS_CDS_VB_5040: FS,SLAC,50%,2003.2003_Research Technical Manager,2003_Research Technical Manager,Labor,78.0d,4.0,82.0,At Completion Units,10/12/2021,11/8/2021,0,0,0,0,0,0,0,0,0,0,1.03_Accelerator Systems (AS),1.03.04_AS Cryogenic Distribution System (CDS),1.03.04.05_AS Cryogenic Distribution System Engineering and Design,1.03.04.05.50_Vacuum Box 2 - Design Package,AS_CDS_VB_5030_Define Engineering Requirements - Vacuum Box 2,Technical Manager,Engineer,SLAC,Labor
87501,1.03,1.03.04,1.03.04.05,1.03.04.05.50,1.03.04.05.50,Vacuum Box 2 - Design Package,AS_CDS_VB_5030,Define Engineering Requirements - Vacuum Box 2,20.0,10.0,5.0,10.0,06-11-2021,02-25-22,"AS_CDS_VB_5020: FF, AS_CDS_VB_5010: SS, AS_CDS_PD_5010: SS",AS_CDS_VB_5040: FS,SLAC,50%,52169.52169_METS Mechanical Engineer,52169_METS Mechanical Engineer,Labor,78.0d,4.0,82.0,At Completion Units,10/12/2021,11/8/2021,0,0,0,0,0,0,0,0,0,0,1.03_Accelerator Systems (AS),1.03.04_AS Cryogenic Distribution System (CDS),1.03.04.05_AS Cryogenic Distribution System Engineering and Design,1.03.04.05.50_Vacuum Box 2 - Design Package,AS_CDS_VB_5030_Define Engineering Requirements - Vacuum Box 2,Mechanical,,SLAC,Labor
87502,1.03,1.03.04,1.03.04.05,1.03.04.05.50,1.03.04.05.50,Vacuum Box 2 - Design Package,AS_CDS_VB_5020,Prepare General Arrangement Drawings - Vacuum Box 2,20.0,80.0,80.0,80.0,01-28-22,02-25-22,"AS_CDS_VB_5010: FS, AS_CDS_VL_5020: FS","AS_CDS_VB_5030: FF, AS_CDS_BT_5020: FS",SLAC,0%,52168.52168_METS - Mechanical Design,52168_METS - Mechanical Design,Labor,0.0d,20.0,20.0,At Completion Units,9/14/2021,10/11/2021,0,0,0,0,0,0,0,0,0,0,1.03_Accelerator Systems (AS),1.03.04_AS Cryogenic Distribution System (CDS),1.03.04.05_AS Cryogenic Distribution System Engineering and Design,1.03.04.05.50_Vacuum Box 2 - Design Package,AS_CDS_VB_5020_Prepare General Arrangement Drawings - Vacuum Box 2,Mechanical,,SLAC,Labor
87503,1.03,1.03.04,1.03.04.05,1.03.04.05.50,1.03.04.05.50,Vacuum Box 2 - Design Package,AS_CDS_VB_5060,Incorporate Recommendations and issue ESD - Vacuum Box 2,10.0,10.0,10.0,10.0,03-29-22,04-11-22,AS_CDS_VB_5050: FS,AS_CDS_VB_5070: FS,SLAC,0%,52169.52169_METS Mechanical Engineer,52169_METS Mechanical Engineer,Labor,0.0d,10.0,10.0,At Completion Units,12/10/2021,1/6/2022,0,0,0,0,0,0,0,0,0,0,1.03_Accelerator Systems (AS),1.03.04_AS Cryogenic Distribution System (CDS),1.03.04.05_AS Cryogenic Distribution System Engineering and Design,1.03.04.05.50_Vacuum Box 2 - Design Package,AS_CDS_VB_5060_Incorporate Recommendations and issue ESD - Vacuum Box 2,Mechanical,,SLAC,Labor
87504,1.03,1.03.04,1.03.04.05,1.03.04.05.50,1.03.04.05.50,Vacuum Box 2 - Design Package,AS_CDS_VB_5050,R_RDR: Reference Design Review - Vacuum Box 2,1.0,8.0,8.0,8.0,03-28-22,03-28-22,AS_CDS_VB_5040: FS,AS_CDS_VB_5060: FS,SLAC,0%,0140_E3.0140_Engineer-Electrical_E3,0140_Engineer-Electrical_E3,Labor,0.0d,1.0,1.0,At Completion Units,12/9/2021,12/9/2021,Review,0,0,0,0,0,0,0,0,0,1.03_Accelerator Systems (AS),1.03.04_AS Cryogenic Distribution System (CDS),1.03.04.05_AS Cryogenic Distribution System Engineering and Design,1.03.04.05.50_Vacuum Box 2 - Design Package,AS_CDS_VB_5050_R_RDR: Reference Design Review - Vacuum Box 2,Electrical,,SLAC,Labor
87505,1.03,1.03.04,1.03.04.05,1.03.04.05.50,1.03.04.05.50,Vacuum Box 2 - Design Package,AS_CDS_VB_5050,R_RDR: Reference Design Review - Vacuum Box 2,1.0,32.0,32.0,32.0,03-28-22,03-28-22,AS_CDS_VB_5040: FS,AS_CDS_VB_5060: FS,SLAC,0%,52169.52169_METS Mechanical Engineer,52169_METS Mechanical Engineer,Labor,0.0d,1.0,1.0,At Completion Units,12/9/2021,12/9/2021,Review,0,0,0,0,0,0,0,0,0,1.03_Accelerator Systems (AS),1.03.04_AS Cryogenic Distribution System (CDS),1.03.04.05_AS Cryogenic Distribution System Engineering and Design,1.03.04.05.50_Vacuum Box 2 - Design Package,AS_CDS_VB_5050_R_RDR: Reference Design Review - Vacuum Box 2,Mechanical,,SLAC,Labor
87506,1.03,1.03.04,1.03.04.05,1.03.04.05.50,1.03.04.05.50,Vacuum Box 2 - Design Package,AS_CDS_VB_5040,Write Engineering Specification - Vacuum Box 2,20.0,8.0,8.0,8.0,02-28-22,03-25-22,"AS_CDS_VB_5030: FS, AS_CDS_PD_5089: FS","AS_CDS_VB_5050: FS, AS_CDS_BT_5030: FS",SLAC,0%,0140_E3.0140_Engineer-Electrical_E3,0140_Engineer-Electrical_E3,Labor,0.0d,20.0,20.0,At Completion Units,11/9/2021,12/8/2021,DM-C01-10%,0,0,0,0,0,0,0,0,0,1.03_Accelerator Systems (AS),1.03.04_AS Cryogenic Distribution System (CDS),1.03.04.05_AS Cryogenic Distribution System Engineering and Design,1.03.04.05.50_Vacuum Box 2 - Design Package,AS_CDS_VB_5040_Write Engineering Specification - Vacuum Box 2,Electrical,,SLAC,Labor
87507,1.03,1.03.04,1.03.04.05,1.03.04.05.50,1.03.04.05.50,Vacuum Box 2 - Design Package,AS_CDS_VB_5040,Write Engineering Specification - Vacuum Box 2,20.0,60.0,60.0,60.0,02-28-22,03-25-22,"AS_CDS_VB_5030: FS, AS_CDS_PD_5089: FS","AS_CDS_VB_5050: FS, AS_CDS_BT_5030: FS",SLAC,0%,52169.52169_METS Mechanical Engineer,52169_METS Mechanical Engineer,Labor,0.0d,20.0,20.0,At Completion Units,11/9/2021,12/8/2021,DM-C01-10%,0,0,0,0,0,0,0,0,0,1.03_Accelerator Systems (AS),1.03.04_AS Cryogenic Distribution System (CDS),1.03.04.05_AS Cryogenic Distribution System Engineering and Design,1.03.04.05.50_Vacuum Box 2 - Design Package,AS_CDS_VB_5040_Write Engineering Specification - Vacuum Box 2,Mechanical,,SLAC,Labor
87508,1.03,1.03.04,1.03.04.05,1.03.04.05.50,1.03.04.05.50,Vacuum Box 2 - Design Package,AS_CDS_VB_5020,Prepare General Arrangement Drawings - Vacuum Box 2,20.0,80.0,80.0,80.0,01-28-22,02-25-22,"AS_CDS_VB_5010: FS, AS_CDS_VL_5020: FS","AS_CDS_VB_5030: FF, AS_CDS_BT_5020: FS",SLAC,0%,2003.2003_Research Technical Manager,2003_Research Technical Manager,Labor,0.0d,20.0,20.0,At Completion Units,9/14/2021,10/11/2021,0,0,0,0,0,0,0,0,0,0,1.03_Accelerator Systems (AS),1.03.04_AS Cryogenic Distribution System (CDS),1.03.04.05_AS Cryogenic Distribution System Engineering and Design,1.03.04.05.50_Vacuum Box 2 - Design Package,AS_CDS_VB_5020_Prepare General Arrangement Drawings - Vacuum Box 2,Technical Manager,Engineer,SLAC,Labor
87509,1.03,1.03.04,1.03.04.05,1.03.04.05.50,1.03.04.05.50,Vacuum Box 2 - Design Package,AS_CDS_VB_5020,Prepare General Arrangement Drawings - Vacuum Box 2,20.0,80.0,80.0,80.0,01-28-22,02-25-22,"AS_CDS_VB_5010: FS, AS_CDS_VL_5020: FS","AS_CDS_VB_5030: FF, AS_CDS_BT_5020: FS",SLAC,0%,52169.52169_METS Mechanical Engineer,52169_METS Mechanical Engineer,Labor,0.0d,20.0,20.0,At Completion Units,9/14/2021,10/11/2021,0,0,0,0,0,0,0,0,0,0,1.03_Accelerator Systems (AS),1.03.04_AS Cryogenic Distribution System (CDS),1.03.04.05_AS Cryogenic Distribution System Engineering and Design,1.03.04.05.50_Vacuum Box 2 - Design Package,AS_CDS_VB_5020_Prepare General Arrangement Drawings - Vacuum Box 2,Mechanical,,SLAC,Labor
87829,1.03,1.03.04,1.03.04.05,1.03.04.05.60,1.03.04.05.60,End Caps (includes EC3 & Downstream One) - Design Package,AS_CDS_EC_5020,Prepare General Arrangement Drawings - End Caps,20.0,192.0,12.0,80.0,05-19-2021,11-15-21,AS_CDS_EC_5010: SS 5.0d,"AS_CDS_EC_5030: FS, AS_CDS_VL_5020: FS",SLAC,85%,52168.52168_METS - Mechanical Design,52168_METS - Mechanical Design,Labor,94.0d,32.0,126.0,At Completion Units,5/3/2021,5/28/2021,0,0,0,0,0,0,0,0,0,0,1.03_Accelerator Systems (AS),1.03.04_AS Cryogenic Distribution System (CDS),1.03.04.05_AS Cryogenic Distribution System Engineering and Design,1.03.04.05.60_End Caps (includes EC3 & Downstream One) - Design Package,AS_CDS_EC_5020_Prepare General Arrangement Drawings - End Caps,Mechanical,,SLAC,Labor
87830,1.03,1.03.04,1.03.04.05,1.03.04.05.60,1.03.04.05.60,End Caps (includes EC3 & Downstream One) - Design Package,AS_CDS_EC_5020,Prepare General Arrangement Drawings - End Caps,20.0,40.0,12.0,80.0,05-19-2021,11-15-21,AS_CDS_EC_5010: SS 5.0d,"AS_CDS_EC_5030: FS, AS_CDS_VL_5020: FS",SLAC,85%,52169.52169_METS Mechanical Engineer,52169_METS Mechanical Engineer,Labor,94.0d,32.0,126.0,At Completion Units,5/3/2021,5/28/2021,0,0,0,0,0,0,0,0,0,0,1.03_Accelerator Systems (AS),1.03.04_AS Cryogenic Distribution System (CDS),1.03.04.05_AS Cryogenic Distribution System Engineering and Design,1.03.04.05.60_End Caps (includes EC3 & Downstream One) - Design Package,AS_CDS_EC_5020_Prepare General Arrangement Drawings - End Caps,Mechanical,,SLAC,Labor
87831,1.03,1.03.04,1.03.04.05,1.03.04.05.60,1.03.04.05.60,End Caps (includes EC3 & Downstream One) - Design Package,AS_CDS_EC_5020,Prepare General Arrangement Drawings - End Caps,20.0,8.0,12.0,80.0,05-19-2021,11-15-21,AS_CDS_EC_5010: SS 5.0d,"AS_CDS_EC_5030: FS, AS_CDS_VL_5020: FS",SLAC,85%,2003.2003_Research Technical Manager,2003_Research Technical Manager,Labor,94.0d,32.0,126.0,At Completion Units,5/3/2021,5/28/2021,0,0,0,0,0,0,0,0,0,0,1.03_Accelerator Systems (AS),1.03.04_AS Cryogenic Distribution System (CDS),1.03.04.05_AS Cryogenic Distribution System Engineering and Design,1.03.04.05.60_End Caps (includes EC3 & Downstream One) - Design Package,AS_CDS_EC_5020_Prepare General Arrangement Drawings - End Caps,Technical Manager,Engineer,SLAC,Labor
87832,1.03,1.03.04,1.03.04.05,1.03.04.05.60,1.03.04.05.60,End Caps (includes EC3 & Downstream One) - Design Package,AS_CDS_EC_5010,"Develop schematic (PID, electrical diagrams) - End Caps",8.0,10.0,0.0,9.5,05-19-2021,09-01-2021,AS_CDS_TL_5010: SS 3.0d,"AS_CDS_EC_5020: SS 5.0d, AS_CDS_EC_5030: FS",SLAC,100%,52169.52169_METS Mechanical Engineer,52169_METS Mechanical Engineer,Labor,73.0d,0.0,73.0,At Completion Units,5/3/2021,5/7/2021,0,0,0,0,0,0,0,0,0,0,1.03_Accelerator Systems (AS),1.03.04_AS Cryogenic Distribution System (CDS),1.03.04.05_AS Cryogenic Distribution System Engineering and Design,1.03.04.05.60_End Caps (includes EC3 & Downstream One) - Design Package,"AS_CDS_EC_5010_Develop schematic (PID, electrical diagrams) - End Caps",Mechanical,,SLAC,Labor
87833,1.03,1.03.04,1.03.04.05,1.03.04.05.60,1.03.04.05.60,End Caps (includes EC3 & Downstream One) - Design Package,AS_CDS_EC_5030,Define Engineering Requirements - End Caps,20.0,10.0,10.0,10.0,11-16-21,12-15-21,"AS_CDS_EC_5020: FS, AS_CDS_EC_5010: FS, AS_CDS_PD_5010: FS",AS_CDS_EC_5040: FS,SLAC,0%,2003.2003_Research Technical Manager,2003_Research Technical Manager,Labor,0.0d,20.0,20.0,At Completion Units,11/9/2021,12/8/2021,0,0,0,0,0,0,0,0,0,0,1.03_Accelerator Systems (AS),1.03.04_AS Cryogenic Distribution System (CDS),1.03.04.05_AS Cryogenic Distribution System Engineering and Design,1.03.04.05.60_End Caps (includes EC3 & Downstream One) - Design Package,AS_CDS_EC_5030_Define Engineering Requirements - End Caps,Technical Manager,Engineer,SLAC,Labor
87834,1.03,1.03.04,1.03.04.05,1.03.04.05.60,1.03.04.05.60,End Caps (includes EC3 & Downstream One) - Design Package,AS_CDS_EC_5030,Define Engineering Requirements - End Caps,20.0,10.0,10.0,10.0,11-16-21,12-15-21,"AS_CDS_EC_5020: FS, AS_CDS_EC_5010: FS, AS_CDS_PD_5010: FS",AS_CDS_EC_5040: FS,SLAC,0%,52169.52169_METS Mechanical Engineer,52169_METS Mechanical Engineer,Labor,0.0d,20.0,20.0,At Completion Units,11/9/2021,12/8/2021,0,0,0,0,0,0,0,0,0,0,1.03_Accelerator Systems (AS),1.03.04_AS Cryogenic Distribution System (CDS),1.03.04.05_AS Cryogenic Distribution System Engineering and Design,1.03.04.05.60_End Caps (includes EC3 & Downstream One) - Design Package,AS_CDS_EC_5030_Define Engineering Requirements - End Caps,Mechanical,,SLAC,Labor
87835,1.03,1.03.04,1.03.04.05,1.03.04.05.60,1.03.04.05.60,End Caps (includes EC3 & Downstream One) - Design Package,AS_CDS_EC_5050,R_RDR: Reference Design Review - End Caps,2.0,48.0,48.0,48.0,01-28-22,01-31-22,AS_CDS_EC_5040: FS,AS_CDS_EC_5060: FS,SLAC,0%,52168.52168_METS - Mechanical Design,52168_METS - Mechanical Design,Labor,0.0d,2.0,2.0,At Completion Units,1/21/2022,1/24/2022,Review,0,0,0,0,0,0,0,0,0,1.03_Accelerator Systems (AS),1.03.04_AS Cryogenic Distribution System (CDS),1.03.04.05_AS Cryogenic Distribution System Engineering and Design,1.03.04.05.60_End Caps (includes EC3 & Downstream One) - Design Package,AS_CDS_EC_5050_R_RDR: Reference Design Review - End Caps,Mechanical,,SLAC,Labor
87836,1.03,1.03.04,1.03.04.05,1.03.04.05.60,1.03.04.05.60,End Caps (includes EC3 & Downstream One) - Design Package,AS_CDS_EC_5040,Write Engineering Specification - End Caps,20.0,8.0,8.0,8.0,12-16-21,01-27-22,"AS_CDS_EC_5030: FS, AS_CDS_PD_5089: FS",AS_CDS_EC_5050: FS,SLAC,0%,0140_E3.0140_Engineer-Electrical_E3,0140_Engineer-Electrical_E3,Labor,0.0d,20.0,20.0,At Completion Units,12/9/2021,1/20/2022,DM-C01-10%,0,0,0,0,0,0,0,0,0,1.03_Accelerator Systems (AS),1.03.04_AS Cryogenic Distribution System (CDS),1.03.04.05_AS Cryogenic Distribution System Engineering and Design,1.03.04.05.60_End Caps (includes EC3 & Downstream One) - Design Package,AS_CDS_EC_5040_Write Engineering Specification - End Caps,Electrical,,SLAC,Labor
87837,1.03,1.03.04,1.03.04.05,1.03.04.05.60,1.03.04.05.60,End Caps (includes EC3 & Downstream One) - Design Package,AS_CDS_EC_5060,Incorporate Recommendations and issue ESD - End Caps,8.0,10.0,10.0,10.0,02-01-22,02-10-22,AS_CDS_EC_5050: FS,AS_CDS_EC_5070: FS,SLAC,0%,52169.52169_METS Mechanical Engineer,52169_METS Mechanical Engineer,Labor,0.0d,8.0,8.0,At Completion Units,1/25/2022,2/3/2022,0,0,0,0,0,0,0,0,0,0,1.03_Accelerator Systems (AS),1.03.04_AS Cryogenic Distribution System (CDS),1.03.04.05_AS Cryogenic Distribution System Engineering and Design,1.03.04.05.60_End Caps (includes EC3 & Downstream One) - Design Package,AS_CDS_EC_5060_Incorporate Recommendations and issue ESD - End Caps,Mechanical,,SLAC,Labor
87838,1.03,1.03.04,1.03.04.05,1.03.04.05.60,1.03.04.05.60,End Caps (includes EC3 & Downstream One) - Design Package,AS_CDS_EC_5050,R_RDR: Reference Design Review - End Caps,2.0,8.0,8.0,8.0,01-28-22,01-31-22,AS_CDS_EC_5040: FS,AS_CDS_EC_5060: FS,SLAC,0%,0140_E3.0140_Engineer-Electrical_E3,0140_Engineer-Electrical_E3,Labor,0.0d,2.0,2.0,At Completion Units,1/21/2022,1/24/2022,Review,0,0,0,0,0,0,0,0,0,1.03_Accelerator Systems (AS),1.03.04_AS Cryogenic Distribution System (CDS),1.03.04.05_AS Cryogenic Distribution System Engineering and Design,1.03.04.05.60_End Caps (includes EC3 & Downstream One) - Design Package,AS_CDS_EC_5050_R_RDR: Reference Design Review - End Caps,Electrical,,SLAC,Labor
87839,1.03,1.03.04,1.03.04.05,1.03.04.05.60,1.03.04.05.60,End Caps (includes EC3 & Downstream One) - Design Package,AS_CDS_EC_5050,R_RDR: Reference Design Review - End Caps,2.0,32.0,32.0,32.0,01-28-22,01-31-22,AS_CDS_EC_5040: FS,AS_CDS_EC_5060: FS,SLAC,0%,52169.52169_METS Mechanical Engineer,52169_METS Mechanical Engineer,Labor,0.0d,2.0,2.0,At Completion Units,1/21/2022,1/24/2022,Review,0,0,0,0,0,0,0,0,0,1.03_Accelerator Systems (AS),1.03.04_AS Cryogenic Distribution System (CDS),1.03.04.05_AS Cryogenic Distribution System Engineering and Design,1.03.04.05.60_End Caps (includes EC3 & Downstream One) - Design Package,AS_CDS_EC_5050_R_RDR: Reference Design Review - End Caps,Mechanical,,SLAC,Labor
87840,1.03,1.03.04,1.03.04.05,1.03.04.05.60,1.03.04.05.60,End Caps (includes EC3 & Downstream One) - Design Package,AS_CDS_EC_5050,R_RDR: Reference Design Review - End Caps,2.0,8.0,8.0,8.0,01-28-22,01-31-22,AS_CDS_EC_5040: FS,AS_CDS_EC_5060: FS,SLAC,0%,2003.2003_Research Technical Manager,2003_Research Technical Manager,Labor,0.0d,2.0,2.0,At Completion Units,1/21/2022,1/24/2022,Review,0,0,0,0,0,0,0,0,0,1.03_Accelerator Systems (AS),1.03.04_AS Cryogenic Distribution System (CDS),1.03.04.05_AS Cryogenic Distribution System Engineering and Design,1.03.04.05.60_End Caps (includes EC3 & Downstream One) - Design Package,AS_CDS_EC_5050_R_RDR: Reference Design Review - End Caps,Technical Manager,Engineer,SLAC,Labor
87841,1.03,1.03.04,1.03.04.05,1.03.04.05.60,1.03.04.05.60,End Caps (includes EC3 & Downstream One) - Design Package,AS_CDS_EC_5040,Write Engineering Specification - End Caps,20.0,60.0,60.0,60.0,12-16-21,01-27-22,"AS_CDS_EC_5030: FS, AS_CDS_PD_5089: FS",AS_CDS_EC_5050: FS,SLAC,0%,52169.52169_METS Mechanical Engineer,52169_METS Mechanical Engineer,Labor,0.0d,20.0,20.0,At Completion Units,12/9/2021,1/20/2022,DM-C01-10%,0,0,0,0,0,0,0,0,0,1.03_Accelerator Systems (AS),1.03.04_AS Cryogenic Distribution System (CDS),1.03.04.05_AS Cryogenic Distribution System Engineering and Design,1.03.04.05.60_End Caps (includes EC3 & Downstream One) - Design Package,AS_CDS_EC_5040_Write Engineering Specification - End Caps,Mechanical,,SLAC,Labor
88161,1.03,1.03.04,1.03.04.05,1.03.04.05.70,1.03.04.05.70,Beam Tubes (ECs/Tee/VB) - Design Package,AS_CDS_BT_5010,"Develop schematic (PID, electrical diagrams) - Beam Tubes (ECs/Tee/VB)",5.0,20.0,20.0,20.0,10-01-21,10-07-21,"AS_CDS_PD_5010: FS, AS_CDS_TL_5010: FS",AS_CDS_BT_5030: FS,SLAC,0%,2003.2003_Research Technical Manager,2003_Research Technical Manager,Labor,0.0d,5.0,5.0,At Completion Units,5/3/2021,5/7/2021,0,0,0,0,0,0,0,0,0,0,1.03_Accelerator Systems (AS),1.03.04_AS Cryogenic Distribution System (CDS),1.03.04.05_AS Cryogenic Distribution System Engineering and Design,1.03.04.05.70_Beam Tubes (ECs/Tee/VB) - Design Package,"AS_CDS_BT_5010_Develop schematic (PID, electrical diagrams) - Beam Tubes (ECs/Tee/VB)",Technical Manager,Engineer,SLAC,Labor
88162,1.03,1.03.04,1.03.04.05,1.03.04.05.70,1.03.04.05.70,Beam Tubes (ECs/Tee/VB) - Design Package,AS_CDS_BT_5010,"Develop schematic (PID, electrical diagrams) - Beam Tubes (ECs/Tee/VB)",5.0,20.0,20.0,20.0,10-01-21,10-07-21,"AS_CDS_PD_5010: FS, AS_CDS_TL_5010: FS",AS_CDS_BT_5030: FS,SLAC,0%,52169.52169_METS Mechanical Engineer,52169_METS Mechanical Engineer,Labor,0.0d,5.0,5.0,At Completion Units,5/3/2021,5/7/2021,0,0,0,0,0,0,0,0,0,0,1.03_Accelerator Systems (AS),1.03.04_AS Cryogenic Distribution System (CDS),1.03.04.05_AS Cryogenic Distribution System Engineering and Design,1.03.04.05.70_Beam Tubes (ECs/Tee/VB) - Design Package,"AS_CDS_BT_5010_Develop schematic (PID, electrical diagrams) - Beam Tubes (ECs/Tee/VB)",Mechanical,,SLAC,Labor
88163,1.03,1.03.04,1.03.04.05,1.03.04.05.70,1.03.04.05.70,Beam Tubes (ECs/Tee/VB) - Design Package,AS_CDS_BT_5050,R_RDR: Reference Design Review - Beam Tubes (ECs/Tee/VB),2.0,48.0,48.0,48.0,07-06-22,07-07-22,AS_CDS_BT_5040: FS,AS_CDS_BT_5060: FS,SLAC,0%,52168.52168_METS - Mechanical Design,52168_METS - Mechanical Design,Labor,0.0d,2.0,2.0,At Completion Units,5/2/2022,5/3/2022,Review,0,0,0,0,0,0,0,0,0,1.03_Accelerator Systems (AS),1.03.04_AS Cryogenic Distribution System (CDS),1.03.04.05_AS Cryogenic Distribution System Engineering and Design,1.03.04.05.70_Beam Tubes (ECs/Tee/VB) - Design Package,AS_CDS_BT_5050_R_RDR: Reference Design Review - Beam Tubes (ECs/Tee/VB),Mechanical,,SLAC,Labor
88164,1.03,1.03.04,1.03.04.05,1.03.04.05.70,1.03.04.05.70,Beam Tubes (ECs/Tee/VB) - Design Package,AS_CDS_BT_5020,Prepare General Arrangement Drawings - Beam Tubes (ECs/Tee/VB),20.0,192.0,192.0,192.0,03-14-22,04-08-22,"AS_CDS_VB_5020: FS, AS_CDS_VL_5040: FS",AS_CDS_BT_5030: FS,SLAC,0%,52168.52168_METS - Mechanical Design,52168_METS - Mechanical Design,Labor,0.0d,20.0,20.0,At Completion Units,1/6/2022,2/3/2022,0,0,0,0,0,0,0,0,0,0,1.03_Accelerator Systems (AS),1.03.04_AS Cryogenic Distribution System (CDS),1.03.04.05_AS Cryogenic Distribution System Engineering and Design,1.03.04.05.70_Beam Tubes (ECs/Tee/VB) - Design Package,AS_CDS_BT_5020_Prepare General Arrangement Drawings - Beam Tubes (ECs/Tee/VB),Mechanical,,SLAC,Labor
88165,1.03,1.03.04,1.03.04.05,1.03.04.05.70,1.03.04.05.70,Beam Tubes (ECs/Tee/VB) - Design Package,AS_CDS_BT_5060,Incorporate Recommendations and issue ESD - Beam Tubes (ECs/Tee/VB),4.0,10.0,10.0,10.0,07-08-22,07-13-22,AS_CDS_BT_5050: FS,AS_CDS_BT_5070: FS,SLAC,0%,52169.52169_METS Mechanical Engineer,52169_METS Mechanical Engineer,Labor,0.0d,4.0,4.0,At Completion Units,5/4/2022,5/9/2022,0,0,0,0,0,0,0,0,0,0,1.03_Accelerator Systems (AS),1.03.04_AS Cryogenic Distribution System (CDS),1.03.04.05_AS Cryogenic Distribution System Engineering and Design,1.03.04.05.70_Beam Tubes (ECs/Tee/VB) - Design Package,AS_CDS_BT_5060_Incorporate Recommendations and issue ESD - Beam Tubes (ECs/Tee/VB),Mechanical,,SLAC,Labor
88166,1.03,1.03.04,1.03.04.05,1.03.04.05.70,1.03.04.05.70,Beam Tubes (ECs/Tee/VB) - Design Package,AS_CDS_BT_5050,R_RDR: Reference Design Review - Beam Tubes (ECs/Tee/VB),2.0,8.0,8.0,8.0,07-06-22,07-07-22,AS_CDS_BT_5040: FS,AS_CDS_BT_5060: FS,SLAC,0%,0140_E3.0140_Engineer-Electrical_E3,0140_Engineer-Electrical_E3,Labor,0.0d,2.0,2.0,At Completion Units,5/2/2022,5/3/2022,Review,0,0,0,0,0,0,0,0,0,1.03_Accelerator Systems (AS),1.03.04_AS Cryogenic Distribution System (CDS),1.03.04.05_AS Cryogenic Distribution System Engineering and Design,1.03.04.05.70_Beam Tubes (ECs/Tee/VB) - Design Package,AS_CDS_BT_5050_R_RDR: Reference Design Review - Beam Tubes (ECs/Tee/VB),Electrical,,SLAC,Labor
88167,1.03,1.03.04,1.03.04.05,1.03.04.05.70,1.03.04.05.70,Beam Tubes (ECs/Tee/VB) - Design Package,AS_CDS_BT_5050,R_RDR: Reference Design Review - Beam Tubes (ECs/Tee/VB),2.0,32.0,32.0,32.0,07-06-22,07-07-22,AS_CDS_BT_5040: FS,AS_CDS_BT_5060: FS,SLAC,0%,52169.52169_METS Mechanical Engineer,52169_METS Mechanical Engineer,Labor,0.0d,2.0,2.0,At Completion Units,5/2/2022,5/3/2022,Review,0,0,0,0,0,0,0,0,0,1.03_Accelerator Systems (AS),1.03.04_AS Cryogenic Distribution System (CDS),1.03.04.05_AS Cryogenic Distribution System Engineering and Design,1.03.04.05.70_Beam Tubes (ECs/Tee/VB) - Design Package,AS_CDS_BT_5050_R_RDR: Reference Design Review - Beam Tubes (ECs/Tee/VB),Mechanical,,SLAC,Labor
88168,1.03,1.03.04,1.03.04.05,1.03.04.05.70,1.03.04.05.70,Beam Tubes (ECs/Tee/VB) - Design Package,AS_CDS_BT_5050,R_RDR: Reference Design Review - Beam Tubes (ECs/Tee/VB),2.0,8.0,8.0,8.0,07-06-22,07-07-22,AS_CDS_BT_5040: FS,AS_CDS_BT_5060: FS,SLAC,0%,2003.2003_Research Technical Manager,2003_Research Technical Manager,Labor,0.0d,2.0,2.0,At Completion Units,5/2/2022,5/3/2022,Review,0,0,0,0,0,0,0,0,0,1.03_Accelerator Systems (AS),1.03.04_AS Cryogenic Distribution System (CDS),1.03.04.05_AS Cryogenic Distribution System Engineering and Design,1.03.04.05.70_Beam Tubes (ECs/Tee/VB) - Design Package,AS_CDS_BT_5050_R_RDR: Reference Design Review - Beam Tubes (ECs/Tee/VB),Technical Manager,Engineer,SLAC,Labor
88169,1.03,1.03.04,1.03.04.05,1.03.04.05.70,1.03.04.05.70,Beam Tubes (ECs/Tee/VB) - Design Package,AS_CDS_BT_5040,Write Engineering Specification - Beam Tubes (ECs/Tee/VB),20.0,8.3,8.3,8.3,06-07-22,07-05-22,AS_CDS_BT_5030: FS,AS_CDS_BT_5050: FS,SLAC,0%,0140_E3.0140_Engineer-Electrical_E3,0140_Engineer-Electrical_E3,Labor,0.0d,20.0,20.0,At Completion Units,4/4/2022,4/29/2022,0,0,0,0,0,0,0,0,0,0,1.03_Accelerator Systems (AS),1.03.04_AS Cryogenic Distribution System (CDS),1.03.04.05_AS Cryogenic Distribution System Engineering and Design,1.03.04.05.70_Beam Tubes (ECs/Tee/VB) - Design Package,AS_CDS_BT_5040_Write Engineering Specification - Beam Tubes (ECs/Tee/VB),Electrical,,SLAC,Labor
88170,1.03,1.03.04,1.03.04.05,1.03.04.05.70,1.03.04.05.70,Beam Tubes (ECs/Tee/VB) - Design Package,AS_CDS_BT_5040,Write Engineering Specification - Beam Tubes (ECs/Tee/VB),20.0,120.0,120.0,120.0,06-07-22,07-05-22,AS_CDS_BT_5030: FS,AS_CDS_BT_5050: FS,SLAC,0%,52169.52169_METS Mechanical Engineer,52169_METS Mechanical Engineer,Labor,0.0d,20.0,20.0,At Completion Units,4/4/2022,4/29/2022,0,0,0,0,0,0,0,0,0,0,1.03_Accelerator Systems (AS),1.03.04_AS Cryogenic Distribution System (CDS),1.03.04.05_AS Cryogenic Distribution System Engineering and Design,1.03.04.05.70_Beam Tubes (ECs/Tee/VB) - Design Package,AS_CDS_BT_5040_Write Engineering Specification - Beam Tubes (ECs/Tee/VB),Mechanical,,SLAC,Labor
88171,1.03,1.03.04,1.03.04.05,1.03.04.05.70,1.03.04.05.70,Beam Tubes (ECs/Tee/VB) - Design Package,AS_CDS_BT_5030,Particle Free and Copper Plating Requirement - Beam Tubes (ECs/Tee/VB),40.0,280.0,280.0,280.0,04-11-22,06-06-22,"AS_CDS_BT_5020: FS, AS_CDS_BT_5010: FS, AS_CDS_VB_5040: FS",AS_CDS_BT_5040: FS,SLAC,0%,2003.2003_Research Technical Manager,2003_Research Technical Manager,Labor,0.0d,40.0,40.0,At Completion Units,2/4/2022,4/1/2022,0,0,0,0,0,0,0,0,0,0,1.03_Accelerator Systems (AS),1.03.04_AS Cryogenic Distribution System (CDS),1.03.04.05_AS Cryogenic Distribution System Engineering and Design,1.03.04.05.70_Beam Tubes (ECs/Tee/VB) - Design Package,AS_CDS_BT_5030_Particle Free and Copper Plating Requirement - Beam Tubes (ECs/Tee/VB),Technical Manager,Engineer,SLAC,Labor
88172,1.03,1.03.04,1.03.04.05,1.03.04.05.70,1.03.04.05.70,Beam Tubes (ECs/Tee/VB) - Design Package,AS_CDS_BT_5020,Prepare General Arrangement Drawings - Beam Tubes (ECs/Tee/VB),20.0,40.0,40.0,40.0,03-14-22,04-08-22,"AS_CDS_VB_5020: FS, AS_CDS_VL_5040: FS",AS_CDS_BT_5030: FS,SLAC,0%,52169.52169_METS Mechanical Engineer,52169_METS Mechanical Engineer,Labor,0.0d,20.0,20.0,At Completion Units,1/6/2022,2/3/2022,0,0,0,0,0,0,0,0,0,0,1.03_Accelerator Systems (AS),1.03.04_AS Cryogenic Distribution System (CDS),1.03.04.05_AS Cryogenic Distribution System Engineering and Design,1.03.04.05.70_Beam Tubes (ECs/Tee/VB) - Design Package,AS_CDS_BT_5020_Prepare General Arrangement Drawings - Beam Tubes (ECs/Tee/VB),Mechanical,,SLAC,Labor
88173,1.03,1.03.04,1.03.04.05,1.03.04.05.70,1.03.04.05.70,Beam Tubes (ECs/Tee/VB) - Design Package,AS_CDS_BT_5020,Prepare General Arrangement Drawings - Beam Tubes (ECs/Tee/VB),20.0,8.0,8.0,8.0,03-14-22,04-08-22,"AS_CDS_VB_5020: FS, AS_CDS_VL_5040: FS",AS_CDS_BT_5030: FS,SLAC,0%,2003.2003_Research Technical Manager,2003_Research Technical Manager,Labor,0.0d,20.0,20.0,At Completion Units,1/6/2022,2/3/2022,0,0,0,0,0,0,0,0,0,0,1.03_Accelerator Systems (AS),1.03.04_AS Cryogenic Distribution System (CDS),1.03.04.05_AS Cryogenic Distribution System Engineering and Design,1.03.04.05.70_Beam Tubes (ECs/Tee/VB) - Design Package,AS_CDS_BT_5020_Prepare General Arrangement Drawings - Beam Tubes (ECs/Tee/VB),Technical Manager,Engineer,SLAC,Labor
88493,1.03,1.03.04,1.03.04.05,1.03.04.05.91,1.03.04.05.91,Surface Components - Design Installation Package,AS_CDS_SU_5060,Incorporate Recommendations and issue ESD - Surface Components Installation,20.0,40.0,40.0,40.0,10-13-23,11-09-23,AS_CDS_SU_5050: FS,AS_CDS_SU_5070: FS,SLAC,0%,52168.52168_METS - Mechanical Design,52168_METS - Mechanical Design,Labor,0.0d,20.0,20.0,At Completion Units,9/6/2023,10/3/2023,0,0,0,0,0,0,0,0,0,0,1.03_Accelerator Systems (AS),1.03.04_AS Cryogenic Distribution System (CDS),1.03.04.05_AS Cryogenic Distribution System Engineering and Design,1.03.04.05.91_Surface Components - Design Installation Package,AS_CDS_SU_5060_Incorporate Recommendations and issue ESD - Surface Components Installation,Mechanical,,SLAC,Labor
88494,1.03,1.03.04,1.03.04.05,1.03.04.05.91,1.03.04.05.91,Surface Components - Design Installation Package,AS_CDS_SU_5040,Prepare Installation Plan FDR - Surface Components Installation,60.0,160.0,160.0,160.0,07-18-23,10-10-23,AS_CDS_SU_5030: FS,AS_CDS_SU_5050: FS,SLAC,0%,52168.52168_METS - Mechanical Design,52168_METS - Mechanical Design,Labor,0.0d,60.0,60.0,At Completion Units,6/8/2023,8/31/2023,0,0,0,0,0,0,0,0,0,0,1.03_Accelerator Systems (AS),1.03.04_AS Cryogenic Distribution System (CDS),1.03.04.05_AS Cryogenic Distribution System Engineering and Design,1.03.04.05.91_Surface Components - Design Installation Package,AS_CDS_SU_5040_Prepare Installation Plan FDR - Surface Components Installation,Mechanical,,SLAC,Labor
88495,1.03,1.03.04,1.03.04.05,1.03.04.05.91,1.03.04.05.91,Surface Components - Design Installation Package,AS_CDS_SU_5030,Respond to Recommendations - Surface Components Installation,20.0,40.0,40.0,40.0,06-19-23,07-17-23,"AS_CDS_SU_5010: FS, AS_CDS_SU_5025: FS",AS_CDS_SU_5040: FS,SLAC,0%,52168.52168_METS - Mechanical Design,52168_METS - Mechanical Design,Labor,0.0d,20.0,20.0,At Completion Units,5/10/2023,6/7/2023,0,0,0,0,0,0,0,0,0,0,1.03_Accelerator Systems (AS),1.03.04_AS Cryogenic Distribution System (CDS),1.03.04.05_AS Cryogenic Distribution System Engineering and Design,1.03.04.05.91_Surface Components - Design Installation Package,AS_CDS_SU_5030_Respond to Recommendations - Surface Components Installation,Mechanical,,SLAC,Labor
88496,1.03,1.03.04,1.03.04.05,1.03.04.05.91,1.03.04.05.91,Surface Components - Design Installation Package,AS_CDS_SU_5030,Respond to Recommendations - Surface Components Installation,20.0,40.0,40.0,40.0,06-19-23,07-17-23,"AS_CDS_SU_5010: FS, AS_CDS_SU_5025: FS",AS_CDS_SU_5040: FS,SLAC,0%,52169.52169_METS Mechanical Engineer,52169_METS Mechanical Engineer,Labor,0.0d,20.0,20.0,At Completion Units,5/10/2023,6/7/2023,0,0,0,0,0,0,0,0,0,0,1.03_Accelerator Systems (AS),1.03.04_AS Cryogenic Distribution System (CDS),1.03.04.05_AS Cryogenic Distribution System Engineering and Design,1.03.04.05.91_Surface Components - Design Installation Package,AS_CDS_SU_5030_Respond to Recommendations - Surface Components Installation,Mechanical,,SLAC,Labor
88497,1.03,1.03.04,1.03.04.05,1.03.04.05.91,1.03.04.05.91,Surface Components - Design Installation Package,AS_CDS_SU_5020,R_PDR: Installation Plan Preliminary Design Review - Surface Components Installation,2.0,8.0,8.0,8.0,06-15-23,06-16-23,AS_CDS_SU_5010: FS 5.0d,AS_CDS_SU_5025: FS,SLAC,0%,0140_E3.0140_Engineer-Electrical_E3,0140_Engineer-Electrical_E3,Labor,0.0d,2.0,2.0,At Completion Units,5/8/2023,5/9/2023,Review,0,0,0,0,0,0,0,0,0,1.03_Accelerator Systems (AS),1.03.04_AS Cryogenic Distribution System (CDS),1.03.04.05_AS Cryogenic Distribution System Engineering and Design,1.03.04.05.91_Surface Components - Design Installation Package,AS_CDS_SU_5020_R_PDR: Installation Plan Preliminary Design Review - Surface Components Installation,Electrical,,SLAC,Labor
88498,1.03,1.03.04,1.03.04.05,1.03.04.05.91,1.03.04.05.91,Surface Components - Design Installation Package,AS_CDS_SU_5010,Prepare Installation PDR - Surface Components Installation,60.0,160.0,160.0,160.0,03-15-23,06-07-23,"AS_CDS_PD_5089: FS, AS_CDS_IB_6150: FS","AS_CDS_SU_5020: FS 5.0d, AS_CDS_SU_5030: FS",SLAC,0%,52168.52168_METS - Mechanical Design,52168_METS - Mechanical Design,Labor,0.0d,60.0,60.0,At Completion Units,2/10/2023,5/5/2023,0,0,0,0,0,0,0,0,0,0,1.03_Accelerator Systems (AS),1.03.04_AS Cryogenic Distribution System (CDS),1.03.04.05_AS Cryogenic Distribution System Engineering and Design,1.03.04.05.91_Surface Components - Design Installation Package,AS_CDS_SU_5010_Prepare Installation PDR - Surface Components Installation,Mechanical,,SLAC,Labor
88499,1.03,1.03.04,1.03.04.05,1.03.04.05.91,1.03.04.05.91,Surface Components - Design Installation Package,AS_CDS_SU_5010,Prepare Installation PDR - Surface Components Installation,60.0,160.0,160.0,160.0,03-15-23,06-07-23,"AS_CDS_PD_5089: FS, AS_CDS_IB_6150: FS","AS_CDS_SU_5020: FS 5.0d, AS_CDS_SU_5030: FS",SLAC,0%,52169.52169_METS Mechanical Engineer,52169_METS Mechanical Engineer,Labor,0.0d,60.0,60.0,At Completion Units,2/10/2023,5/5/2023,0,0,0,0,0,0,0,0,0,0,1.03_Accelerator Systems (AS),1.03.04_AS Cryogenic Distribution System (CDS),1.03.04.05_AS Cryogenic Distribution System Engineering and Design,1.03.04.05.91_Surface Components - Design Installation Package,AS_CDS_SU_5010_Prepare Installation PDR - Surface Components Installation,Mechanical,,SLAC,Labor
88500,1.03,1.03.04,1.03.04.05,1.03.04.05.91,1.03.04.05.91,Surface Components - Design Installation Package,AS_CDS_SU_5050,R_FDR: Installation Plan Final Design Review - Surface Components Installation,2.0,16.0,16.0,16.0,10-11-23,10-12-23,AS_CDS_SU_5040: FS,"AS_CDS_SU_5060: FS, AS_M4_3060: FS, AS_M4_3070: FS",SLAC,0%,52168.52168_METS - Mechanical Design,52168_METS - Mechanical Design,Labor,0.0d,2.0,2.0,At Completion Units,9/1/2023,9/5/2023,Review,0,0,0,0,0,0,0,0,0,1.03_Accelerator Systems (AS),1.03.04_AS Cryogenic Distribution System (CDS),1.03.04.05_AS Cryogenic Distribution System Engineering and Design,1.03.04.05.91_Surface Components - Design Installation Package,AS_CDS_SU_5050_R_FDR: Installation Plan Final Design Review - Surface Components Installation,Mechanical,,SLAC,Labor
88501,1.03,1.03.04,1.03.04.05,1.03.04.05.91,1.03.04.05.91,Surface Components - Design Installation Package,AS_CDS_SU_5020,R_PDR: Installation Plan Preliminary Design Review - Surface Components Installation,2.0,16.0,16.0,16.0,06-15-23,06-16-23,AS_CDS_SU_5010: FS 5.0d,AS_CDS_SU_5025: FS,SLAC,0%,52168.52168_METS - Mechanical Design,52168_METS - Mechanical Design,Labor,0.0d,2.0,2.0,At Completion Units,5/8/2023,5/9/2023,Review,0,0,0,0,0,0,0,0,0,1.03_Accelerator Systems (AS),1.03.04_AS Cryogenic Distribution System (CDS),1.03.04.05_AS Cryogenic Distribution System Engineering and Design,1.03.04.05.91_Surface Components - Design Installation Package,AS_CDS_SU_5020_R_PDR: Installation Plan Preliminary Design Review - Surface Components Installation,Mechanical,,SLAC,Labor
88502,1.03,1.03.04,1.03.04.05,1.03.04.05.91,1.03.04.05.91,Surface Components - Design Installation Package,AS_CDS_SU_5060,Incorporate Recommendations and issue ESD - Surface Components Installation,20.0,40.0,40.0,40.0,10-13-23,11-09-23,AS_CDS_SU_5050: FS,AS_CDS_SU_5070: FS,SLAC,0%,52169.52169_METS Mechanical Engineer,52169_METS Mechanical Engineer,Labor,0.0d,20.0,20.0,At Completion Units,9/6/2023,10/3/2023,0,0,0,0,0,0,0,0,0,0,1.03_Accelerator Systems (AS),1.03.04_AS Cryogenic Distribution System (CDS),1.03.04.05_AS Cryogenic Distribution System Engineering and Design,1.03.04.05.91_Surface Components - Design Installation Package,AS_CDS_SU_5060_Incorporate Recommendations and issue ESD - Surface Components Installation,Mechanical,,SLAC,Labor
88503,1.03,1.03.04,1.03.04.05,1.03.04.05.91,1.03.04.05.91,Surface Components - Design Installation Package,AS_CDS_SU_5050,R_FDR: Installation Plan Final Design Review - Surface Components Installation,2.0,8.0,8.0,8.0,10-11-23,10-12-23,AS_CDS_SU_5040: FS,"AS_CDS_SU_5060: FS, AS_M4_3060: FS, AS_M4_3070: FS",SLAC,0%,0140_E3.0140_Engineer-Electrical_E3,0140_Engineer-Electrical_E3,Labor,0.0d,2.0,2.0,At Completion Units,9/1/2023,9/5/2023,Review,0,0,0,0,0,0,0,0,0,1.03_Accelerator Systems (AS),1.03.04_AS Cryogenic Distribution System (CDS),1.03.04.05_AS Cryogenic Distribution System Engineering and Design,1.03.04.05.91_Surface Components - Design Installation Package,AS_CDS_SU_5050_R_FDR: Installation Plan Final Design Review - Surface Components Installation,Electrical,,SLAC,Labor
88504,1.03,1.03.04,1.03.04.05,1.03.04.05.91,1.03.04.05.91,Surface Components - Design Installation Package,AS_CDS_SU_5050,R_FDR: Installation Plan Final Design Review - Surface Components Installation,2.0,16.0,16.0,16.0,10-11-23,10-12-23,AS_CDS_SU_5040: FS,"AS_CDS_SU_5060: FS, AS_M4_3060: FS, AS_M4_3070: FS",SLAC,0%,52169.52169_METS Mechanical Engineer,52169_METS Mechanical Engineer,Labor,0.0d,2.0,2.0,At Completion Units,9/1/2023,9/5/2023,Review,0,0,0,0,0,0,0,0,0,1.03_Accelerator Systems (AS),1.03.04_AS Cryogenic Distribution System (CDS),1.03.04.05_AS Cryogenic Distribution System Engineering and Design,1.03.04.05.91_Surface Components - Design Installation Package,AS_CDS_SU_5050_R_FDR: Installation Plan Final Design Review - Surface Components Installation,Mechanical,,SLAC,Labor
88505,1.03,1.03.04,1.03.04.05,1.03.04.05.91,1.03.04.05.91,Surface Components - Design Installation Package,AS_CDS_SU_5050,R_FDR: Installation Plan Final Design Review - Surface Components Installation,2.0,32.0,32.0,32.0,10-11-23,10-12-23,AS_CDS_SU_5040: FS,"AS_CDS_SU_5060: FS, AS_M4_3060: FS, AS_M4_3070: FS",SLAC,0%,2003.2003_Research Technical Manager,2003_Research Technical Manager,Labor,0.0d,2.0,2.0,At Completion Units,9/1/2023,9/5/2023,Review,0,0,0,0,0,0,0,0,0,1.03_Accelerator Systems (AS),1.03.04_AS Cryogenic Distribution System (CDS),1.03.04.05_AS Cryogenic Distribution System Engineering and Design,1.03.04.05.91_Surface Components - Design Installation Package,AS_CDS_SU_5050_R_FDR: Installation Plan Final Design Review - Surface Components Installation,Technical Manager,Engineer,SLAC,Labor
88506,1.03,1.03.04,1.03.04.05,1.03.04.05.91,1.03.04.05.91,Surface Components - Design Installation Package,AS_CDS_SU_5040,Prepare Installation Plan FDR - Surface Components Installation,60.0,160.0,160.0,160.0,07-18-23,10-10-23,AS_CDS_SU_5030: FS,AS_CDS_SU_5050: FS,SLAC,0%,52169.52169_METS Mechanical Engineer,52169_METS Mechanical Engineer,Labor,0.0d,60.0,60.0,At Completion Units,6/8/2023,8/31/2023,0,0,0,0,0,0,0,0,0,0,1.03_Accelerator Systems (AS),1.03.04_AS Cryogenic Distribution System (CDS),1.03.04.05_AS Cryogenic Distribution System Engineering and Design,1.03.04.05.91_Surface Components - Design Installation Package,AS_CDS_SU_5040_Prepare Installation Plan FDR - Surface Components Installation,Mechanical,,SLAC,Labor
88507,1.03,1.03.04,1.03.04.05,1.03.04.05.91,1.03.04.05.91,Surface Components - Design Installation Package,AS_CDS_SU_5020,R_PDR: Installation Plan Preliminary Design Review - Surface Components Installation,2.0,16.0,16.0,16.0,06-15-23,06-16-23,AS_CDS_SU_5010: FS 5.0d,AS_CDS_SU_5025: FS,SLAC,0%,52169.52169_METS Mechanical Engineer,52169_METS Mechanical Engineer,Labor,0.0d,2.0,2.0,At Completion Units,5/8/2023,5/9/2023,Review,0,0,0,0,0,0,0,0,0,1.03_Accelerator Systems (AS),1.03.04_AS Cryogenic Distribution System (CDS),1.03.04.05_AS Cryogenic Distribution System Engineering and Design,1.03.04.05.91_Surface Components - Design Installation Package,AS_CDS_SU_5020_R_PDR: Installation Plan Preliminary Design Review - Surface Components Installation,Mechanical,,SLAC,Labor
88508,1.03,1.03.04,1.03.04.05,1.03.04.05.91,1.03.04.05.91,Surface Components - Design Installation Package,AS_CDS_SU_5020,R_PDR: Installation Plan Preliminary Design Review - Surface Components Installation,2.0,32.0,32.0,32.0,06-15-23,06-16-23,AS_CDS_SU_5010: FS 5.0d,AS_CDS_SU_5025: FS,SLAC,0%,2003.2003_Research Technical Manager,2003_Research Technical Manager,Labor,0.0d,2.0,2.0,At Completion Units,5/8/2023,5/9/2023,Review,0,0,0,0,0,0,0,0,0,1.03_Accelerator Systems (AS),1.03.04_AS Cryogenic Distribution System (CDS),1.03.04.05_AS Cryogenic Distribution System Engineering and Design,1.03.04.05.91_Surface Components - Design Installation Package,AS_CDS_SU_5020_R_PDR: Installation Plan Preliminary Design Review - Surface Components Installation,Technical Manager,Engineer,SLAC,Labor
88828,1.03,1.03.04,1.03.04.05,1.03.04.05.92,1.03.04.05.92,Tunnel Components - Design Installation Package,AS_CDS_TU_5060,Incorporate Recommendations and issue ESD - Tunnel Components Installation,20.0,40.0,40.0,40.0,04-04-24,05-01-24,AS_CDS_TU_5050: FS,AS_CDS_TU_5070: FS,SLAC,0%,52168.52168_METS - Mechanical Design,52168_METS - Mechanical Design,Labor,0.0d,20.0,20.0,At Completion Units,1/31/2024,2/28/2024,0,0,0,0,0,0,0,0,0,0,1.03_Accelerator Systems (AS),1.03.04_AS Cryogenic Distribution System (CDS),1.03.04.05_AS Cryogenic Distribution System Engineering and Design,1.03.04.05.92_Tunnel Components - Design Installation Package,AS_CDS_TU_5060_Incorporate Recommendations and issue ESD - Tunnel Components Installation,Mechanical,,SLAC,Labor
88829,1.03,1.03.04,1.03.04.05,1.03.04.05.92,1.03.04.05.92,Tunnel Components - Design Installation Package,AS_CDS_TU_5040,Prepare Installation Plan FDR - Tunnel Components Installation,60.0,160.0,160.0,160.0,01-05-24,04-01-24,AS_CDS_TU_5030: FS,AS_CDS_TU_5050: FS,SLAC,0%,52168.52168_METS - Mechanical Design,52168_METS - Mechanical Design,Labor,0.0d,60.0,60.0,At Completion Units,10/17/2023,1/26/2024,0,0,0,0,0,0,0,0,0,0,1.03_Accelerator Systems (AS),1.03.04_AS Cryogenic Distribution System (CDS),1.03.04.05_AS Cryogenic Distribution System Engineering and Design,1.03.04.05.92_Tunnel Components - Design Installation Package,AS_CDS_TU_5040_Prepare Installation Plan FDR - Tunnel Components Installation,Mechanical,,SLAC,Labor
88830,1.03,1.03.04,1.03.04.05,1.03.04.05.92,1.03.04.05.92,Tunnel Components - Design Installation Package,AS_CDS_TU_5030,Respond to Recommendations - Tunnel Components Installation,20.0,40.0,40.0,40.0,11-21-23,01-04-24,"AS_CDS_TU_5010: FS, AS_CDS_TU_5025: FS",AS_CDS_TU_5040: FS,SLAC,0%,52168.52168_METS - Mechanical Design,52168_METS - Mechanical Design,Labor,0.0d,20.0,20.0,At Completion Units,9/19/2023,10/16/2023,0,0,0,0,0,0,0,0,0,0,1.03_Accelerator Systems (AS),1.03.04_AS Cryogenic Distribution System (CDS),1.03.04.05_AS Cryogenic Distribution System Engineering and Design,1.03.04.05.92_Tunnel Components - Design Installation Package,AS_CDS_TU_5030_Respond to Recommendations - Tunnel Components Installation,Mechanical,,SLAC,Labor
88831,1.03,1.03.04,1.03.04.05,1.03.04.05.92,1.03.04.05.92,Tunnel Components - Design Installation Package,AS_CDS_TU_5030,Respond to Recommendations - Tunnel Components Installation,20.0,40.0,40.0,40.0,11-21-23,01-04-24,"AS_CDS_TU_5010: FS, AS_CDS_TU_5025: FS",AS_CDS_TU_5040: FS,SLAC,0%,52169.52169_METS Mechanical Engineer,52169_METS Mechanical Engineer,Labor,0.0d,20.0,20.0,At Completion Units,9/19/2023,10/16/2023,0,0,0,0,0,0,0,0,0,0,1.03_Accelerator Systems (AS),1.03.04_AS Cryogenic Distribution System (CDS),1.03.04.05_AS Cryogenic Distribution System Engineering and Design,1.03.04.05.92_Tunnel Components - Design Installation Package,AS_CDS_TU_5030_Respond to Recommendations - Tunnel Components Installation,Mechanical,,SLAC,Labor
88832,1.03,1.03.04,1.03.04.05,1.03.04.05.92,1.03.04.05.92,Tunnel Components - Design Installation Package,AS_CDS_TU_5020,R_PDR: Installation Plan Preliminary Design Review - Tunnel Components Installation,2.0,8.0,8.0,8.0,09-05-23,09-06-23,AS_CDS_TU_5010: SS 5.0d,AS_CDS_TU_5025: FS,SLAC,0%,0140_E3.0140_Engineer-Electrical_E3,0140_Engineer-Electrical_E3,Labor,0.0d,2.0,2.0,At Completion Units,6/23/2023,6/26/2023,Review,0,0,0,0,0,0,0,0,0,1.03_Accelerator Systems (AS),1.03.04_AS Cryogenic Distribution System (CDS),1.03.04.05_AS Cryogenic Distribution System Engineering and Design,1.03.04.05.92_Tunnel Components - Design Installation Package,AS_CDS_TU_5020_R_PDR: Installation Plan Preliminary Design Review - Tunnel Components Installation,Electrical,,SLAC,Labor
88833,1.03,1.03.04,1.03.04.05,1.03.04.05.92,1.03.04.05.92,Tunnel Components - Design Installation Package,AS_CDS_TU_5010,Prepare Installation Plan PDR - Tunnel Components Installation,60.0,160.0,160.0,160.0,08-28-23,11-20-23,"AS_CDS_PD_5089: FS, AS_CDS_BT_5070: FS, AS_CDS_EC_5070: FS, AS_CDS_VL_6170: FS","AS_CDS_TU_5020: SS 5.0d, AS_CDS_TU_5030: FS",SLAC,0%,52168.52168_METS - Mechanical Design,52168_METS - Mechanical Design,Labor,0.0d,60.0,60.0,At Completion Units,6/23/2023,9/18/2023,0,0,0,0,0,0,0,0,0,0,1.03_Accelerator Systems (AS),1.03.04_AS Cryogenic Distribution System (CDS),1.03.04.05_AS Cryogenic Distribution System Engineering and Design,1.03.04.05.92_Tunnel Components - Design Installation Package,AS_CDS_TU_5010_Prepare Installation Plan PDR - Tunnel Components Installation,Mechanical,,SLAC,Labor
88834,1.03,1.03.04,1.03.04.05,1.03.04.05.92,1.03.04.05.92,Tunnel Components - Design Installation Package,AS_CDS_TU_5010,Prepare Installation Plan PDR - Tunnel Components Installation,60.0,160.0,160.0,160.0,08-28-23,11-20-23,"AS_CDS_PD_5089: FS, AS_CDS_BT_5070: FS, AS_CDS_EC_5070: FS, AS_CDS_VL_6170: FS","AS_CDS_TU_5020: SS 5.0d, AS_CDS_TU_5030: FS",SLAC,0%,52169.52169_METS Mechanical Engineer,52169_METS Mechanical Engineer,Labor,0.0d,60.0,60.0,At Completion Units,6/23/2023,9/18/2023,0,0,0,0,0,0,0,0,0,0,1.03_Accelerator Systems (AS),1.03.04_AS Cryogenic Distribution System (CDS),1.03.04.05_AS Cryogenic Distribution System Engineering and Design,1.03.04.05.92_Tunnel Components - Design Installation Package,AS_CDS_TU_5010_Prepare Installation Plan PDR - Tunnel Components Installation,Mechanical,,SLAC,Labor
88835,1.03,1.03.04,1.03.04.05,1.03.04.05.92,1.03.04.05.92,Tunnel Components - Design Installation Package,AS_CDS_TU_5050,R_FDR: Installation Plan Final Design Review - Tunnel Components Installation,2.0,16.0,16.0,16.0,04-02-24,04-03-24,AS_CDS_TU_5040: FS,"AS_CDS_TU_5060: FS, AS_M4_3060: FS, AS_M4_3070: FS",SLAC,0%,52168.52168_METS - Mechanical Design,52168_METS - Mechanical Design,Labor,0.0d,2.0,2.0,At Completion Units,1/29/2024,1/30/2024,Review,0,0,0,0,0,0,0,0,0,1.03_Accelerator Systems (AS),1.03.04_AS Cryogenic Distribution System (CDS),1.03.04.05_AS Cryogenic Distribution System Engineering and Design,1.03.04.05.92_Tunnel Components - Design Installation Package,AS_CDS_TU_5050_R_FDR: Installation Plan Final Design Review - Tunnel Components Installation,Mechanical,,SLAC,Labor
88836,1.03,1.03.04,1.03.04.05,1.03.04.05.92,1.03.04.05.92,Tunnel Components - Design Installation Package,AS_CDS_TU_5020,R_PDR: Installation Plan Preliminary Design Review - Tunnel Components Installation,2.0,16.0,16.0,16.0,09-05-23,09-06-23,AS_CDS_TU_5010: SS 5.0d,AS_CDS_TU_5025: FS,SLAC,0%,52168.52168_METS - Mechanical Design,52168_METS - Mechanical Design,Labor,0.0d,2.0,2.0,At Completion Units,6/23/2023,6/26/2023,Review,0,0,0,0,0,0,0,0,0,1.03_Accelerator Systems (AS),1.03.04_AS Cryogenic Distribution System (CDS),1.03.04.05_AS Cryogenic Distribution System Engineering and Design,1.03.04.05.92_Tunnel Components - Design Installation Package,AS_CDS_TU_5020_R_PDR: Installation Plan Preliminary Design Review - Tunnel Components Installation,Mechanical,,SLAC,Labor
88837,1.03,1.03.04,1.03.04.05,1.03.04.05.92,1.03.04.05.92,Tunnel Components - Design Installation Package,AS_CDS_TU_5060,Incorporate Recommendations and issue ESD - Tunnel Components Installation,20.0,40.0,40.0,40.0,04-04-24,05-01-24,AS_CDS_TU_5050: FS,AS_CDS_TU_5070: FS,SLAC,0%,52169.52169_METS Mechanical Engineer,52169_METS Mechanical Engineer,Labor,0.0d,20.0,20.0,At Completion Units,1/31/2024,2/28/2024,0,0,0,0,0,0,0,0,0,0,1.03_Accelerator Systems (AS),1.03.04_AS Cryogenic Distribution System (CDS),1.03.04.05_AS Cryogenic Distribution System Engineering and Design,1.03.04.05.92_Tunnel Components - Design Installation Package,AS_CDS_TU_5060_Incorporate Recommendations and issue ESD - Tunnel Components Installation,Mechanical,,SLAC,Labor
88838,1.03,1.03.04,1.03.04.05,1.03.04.05.92,1.03.04.05.92,Tunnel Components - Design Installation Package,AS_CDS_TU_5050,R_FDR: Installation Plan Final Design Review - Tunnel Components Installation,2.0,8.0,8.0,8.0,04-02-24,04-03-24,AS_CDS_TU_5040: FS,"AS_CDS_TU_5060: FS, AS_M4_3060: FS, AS_M4_3070: FS",SLAC,0%,0140_E3.0140_Engineer-Electrical_E3,0140_Engineer-Electrical_E3,Labor,0.0d,2.0,2.0,At Completion Units,1/29/2024,1/30/2024,Review,0,0,0,0,0,0,0,0,0,1.03_Accelerator Systems (AS),1.03.04_AS Cryogenic Distribution System (CDS),1.03.04.05_AS Cryogenic Distribution System Engineering and Design,1.03.04.05.92_Tunnel Components - Design Installation Package,AS_CDS_TU_5050_R_FDR: Installation Plan Final Design Review - Tunnel Components Installation,Electrical,,SLAC,Labor
88839,1.03,1.03.04,1.03.04.05,1.03.04.05.92,1.03.04.05.92,Tunnel Components - Design Installation Package,AS_CDS_TU_5050,R_FDR: Installation Plan Final Design Review - Tunnel Components Installation,2.0,16.0,16.0,16.0,04-02-24,04-03-24,AS_CDS_TU_5040: FS,"AS_CDS_TU_5060: FS, AS_M4_3060: FS, AS_M4_3070: FS",SLAC,0%,52169.52169_METS Mechanical Engineer,52169_METS Mechanical Engineer,Labor,0.0d,2.0,2.0,At Completion Units,1/29/2024,1/30/2024,Review,0,0,0,0,0,0,0,0,0,1.03_Accelerator Systems (AS),1.03.04_AS Cryogenic Distribution System (CDS),1.03.04.05_AS Cryogenic Distribution System Engineering and Design,1.03.04.05.92_Tunnel Components - Design Installation Package,AS_CDS_TU_5050_R_FDR: Installation Plan Final Design Review - Tunnel Components Installation,Mechanical,,SLAC,Labor
88840,1.03,1.03.04,1.03.04.05,1.03.04.05.92,1.03.04.05.92,Tunnel Components - Design Installation Package,AS_CDS_TU_5050,R_FDR: Installation Plan Final Design Review - Tunnel Components Installation,2.0,32.0,32.0,32.0,04-02-24,04-03-24,AS_CDS_TU_5040: FS,"AS_CDS_TU_5060: FS, AS_M4_3060: FS, AS_M4_3070: FS",SLAC,0%,2003.2003_Research Technical Manager,2003_Research Technical Manager,Labor,0.0d,2.0,2.0,At Completion Units,1/29/2024,1/30/2024,Review,0,0,0,0,0,0,0,0,0,1.03_Accelerator Systems (AS),1.03.04_AS Cryogenic Distribution System (CDS),1.03.04.05_AS Cryogenic Distribution System Engineering and Design,1.03.04.05.92_Tunnel Components - Design Installation Package,AS_CDS_TU_5050_R_FDR: Installation Plan Final Design Review - Tunnel Components Installation,Technical Manager,Engineer,SLAC,Labor
88841,1.03,1.03.04,1.03.04.05,1.03.04.05.92,1.03.04.05.92,Tunnel Components - Design Installation Package,AS_CDS_TU_5040,Prepare Installation Plan FDR - Tunnel Components Installation,60.0,160.0,160.0,160.0,01-05-24,04-01-24,AS_CDS_TU_5030: FS,AS_CDS_TU_5050: FS,SLAC,0%,52169.52169_METS Mechanical Engineer,52169_METS Mechanical Engineer,Labor,0.0d,60.0,60.0,At Completion Units,10/17/2023,1/26/2024,0,0,0,0,0,0,0,0,0,0,1.03_Accelerator Systems (AS),1.03.04_AS Cryogenic Distribution System (CDS),1.03.04.05_AS Cryogenic Distribution System Engineering and Design,1.03.04.05.92_Tunnel Components - Design Installation Package,AS_CDS_TU_5040_Prepare Installation Plan FDR - Tunnel Components Installation,Mechanical,,SLAC,Labor
88842,1.03,1.03.04,1.03.04.05,1.03.04.05.92,1.03.04.05.92,Tunnel Components - Design Installation Package,AS_CDS_TU_5020,R_PDR: Installation Plan Preliminary Design Review - Tunnel Components Installation,2.0,16.0,16.0,16.0,09-05-23,09-06-23,AS_CDS_TU_5010: SS 5.0d,AS_CDS_TU_5025: FS,SLAC,0%,52169.52169_METS Mechanical Engineer,52169_METS Mechanical Engineer,Labor,0.0d,2.0,2.0,At Completion Units,6/23/2023,6/26/2023,Review,0,0,0,0,0,0,0,0,0,1.03_Accelerator Systems (AS),1.03.04_AS Cryogenic Distribution System (CDS),1.03.04.05_AS Cryogenic Distribution System Engineering and Design,1.03.04.05.92_Tunnel Components - Design Installation Package,AS_CDS_TU_5020_R_PDR: Installation Plan Preliminary Design Review - Tunnel Components Installation,Mechanical,,SLAC,Labor
88843,1.03,1.03.04,1.03.04.05,1.03.04.05.92,1.03.04.05.92,Tunnel Components - Design Installation Package,AS_CDS_TU_5020,R_PDR: Installation Plan Preliminary Design Review - Tunnel Components Installation,2.0,32.0,32.0,32.0,09-05-23,09-06-23,AS_CDS_TU_5010: SS 5.0d,AS_CDS_TU_5025: FS,SLAC,0%,2003.2003_Research Technical Manager,2003_Research Technical Manager,Labor,0.0d,2.0,2.0,At Completion Units,6/23/2023,6/26/2023,Review,0,0,0,0,0,0,0,0,0,1.03_Accelerator Systems (AS),1.03.04_AS Cryogenic Distribution System (CDS),1.03.04.05_AS Cryogenic Distribution System Engineering and Design,1.03.04.05.92_Tunnel Components - Design Installation Package,AS_CDS_TU_5020_R_PDR: Installation Plan Preliminary Design Review - Tunnel Components Installation,Technical Manager,Engineer,SLAC,Labor
89482,1.03,1.03.04,1.03.04.06,1.03.04.06.10,1.03.04.06.10,Interface Box 3 - Procurement & Fab,AS_CDS_IB_6180,AWARD: Fabrication - Interface Box 3,2.0,1880467.0,1880467.0,1880467.0,10-02-23,10-03-23,"AS_CDS_IB_6170: FS, AS_CDS_IB_6175: FS, AS_M4_3010: FS",AS_CDS_IB_6190: FS,SLAC,0%,AWARD_USE.AWARD - Use this AWARD,AWARD - Use this AWARD,Nonlabor,0.0d,2.0,2.0,At Completion Units,7/7/2023,7/10/2023,AWARD > $500K,0,0,0,0,0,0,0,0,0,1.03_Accelerator Systems (AS),1.03.04_AS Cryogenic Distribution System (CDS),1.03.04.06_AS Cryogenic Distribution System Procurement and Fabrication,1.03.04.06.10_Interface Box 3 - Procurement & Fab,AS_CDS_IB_6180_AWARD: Fabrication - Interface Box 3,Material,,SLAC,M&S
89483,1.03,1.03.04,1.03.04.06,1.03.04.06.10,1.03.04.06.10,Interface Box 3 - Procurement & Fab,AS_CDS_IB_6175,RCV: Final Design -  Interface Box 3,1.0,470116.0,470116.0,470116.0,08-22-23,08-22-23,"AS_CDS_IB_6170: FS, AS_CDS_IB_6173: FS",AS_CDS_IB_6180: FS,SLAC,0%,SL_MSSC.SLAC M&S (<$500K) (gets G&A) (gets ESC),SLAC M&S (<$500K) (gets G&A) (gets ESC),Nonlabor,0.0d,1.0,1.0,At Completion Units,nn,,0,0,0,0,0,0,0,0,0,0,1.03_Accelerator Systems (AS),1.03.04_AS Cryogenic Distribution System (CDS),1.03.04.06_AS Cryogenic Distribution System Procurement and Fabrication,1.03.04.06.10_Interface Box 3 - Procurement & Fab,AS_CDS_IB_6175_RCV: Final Design -  Interface Box 3,Material,,SLAC,M&S
89484,1.03,1.03.04,1.03.04.06,1.03.04.06.10,1.03.04.06.10,Interface Box 3 - Procurement & Fab,AS_CDS_IB_6030,"Prepare RFP (ASP, PRR, TPRR, etc.) - Interface Box 3",35.0,16.0,16.0,16.0,04-20-22,06-08-22,AS_CDS_IB_6020: FS,AS_CDS_IB_6040: FS,SLAC,0%,52168.52168_METS - Mechanical Design,52168_METS - Mechanical Design,Labor,0.0d,35.0,35.0,At Completion Units,3/21/2022,5/6/2022,0,0,0,0,0,0,0,0,0,0,1.03_Accelerator Systems (AS),1.03.04_AS Cryogenic Distribution System (CDS),1.03.04.06_AS Cryogenic Distribution System Procurement and Fabrication,1.03.04.06.10_Interface Box 3 - Procurement & Fab,"AS_CDS_IB_6030_Prepare RFP (ASP, PRR, TPRR, etc.) - Interface Box 3",Mechanical,,SLAC,Labor
89485,1.03,1.03.04,1.03.04.06,1.03.04.06.10,1.03.04.06.10,Interface Box 3 - Procurement & Fab,AS_CDS_IB_6030,"Prepare RFP (ASP, PRR, TPRR, etc.) - Interface Box 3",35.0,2.0,2.0,2.0,04-20-22,06-08-22,AS_CDS_IB_6020: FS,AS_CDS_IB_6040: FS,SLAC,0%,0140_E3.0140_Engineer-Electrical_E3,0140_Engineer-Electrical_E3,Labor,0.0d,35.0,35.0,At Completion Units,3/21/2022,5/6/2022,0,0,0,0,0,0,0,0,0,0,1.03_Accelerator Systems (AS),1.03.04_AS Cryogenic Distribution System (CDS),1.03.04.06_AS Cryogenic Distribution System Procurement and Fabrication,1.03.04.06.10_Interface Box 3 - Procurement & Fab,"AS_CDS_IB_6030_Prepare RFP (ASP, PRR, TPRR, etc.) - Interface Box 3",Electrical,,SLAC,Labor
89486,1.03,1.03.04,1.03.04.06,1.03.04.06.10,1.03.04.06.10,Interface Box 3 - Procurement & Fab,AS_CDS_IB_6030,"Prepare RFP (ASP, PRR, TPRR, etc.) - Interface Box 3",35.0,6.0,6.0,6.0,04-20-22,06-08-22,AS_CDS_IB_6020: FS,AS_CDS_IB_6040: FS,SLAC,0%,2003.2003_Research Technical Manager,2003_Research Technical Manager,Labor,0.0d,35.0,35.0,At Completion Units,3/21/2022,5/6/2022,0,0,0,0,0,0,0,0,0,0,1.03_Accelerator Systems (AS),1.03.04_AS Cryogenic Distribution System (CDS),1.03.04.06_AS Cryogenic Distribution System Procurement and Fabrication,1.03.04.06.10_Interface Box 3 - Procurement & Fab,"AS_CDS_IB_6030_Prepare RFP (ASP, PRR, TPRR, etc.) - Interface Box 3",Technical Manager,Engineer,SLAC,Labor
89487,1.03,1.03.04,1.03.04.06,1.03.04.06.10,1.03.04.06.10,Interface Box 3 - Procurement & Fab,AS_CDS_IB_6080,Evaluations/Negotiations - Interface Box 3,55.0,4.0,4.0,4.0,08-12-22,10-28-22,AS_CDS_IB_6070: FS,AS_CDS_IB_6090: FS,SLAC,0%,0140_E3.0140_Engineer-Electrical_E3,0140_Engineer-Electrical_E3,Labor,0.0d,55.0,55.0,At Completion Units,7/13/2022,9/28/2022,0,0,0,0,0,0,0,0,0,0,1.03_Accelerator Systems (AS),1.03.04_AS Cryogenic Distribution System (CDS),1.03.04.06_AS Cryogenic Distribution System Procurement and Fabrication,1.03.04.06.10_Interface Box 3 - Procurement & Fab,AS_CDS_IB_6080_Evaluations/Negotiations - Interface Box 3,Electrical,,SLAC,Labor
89488,1.03,1.03.04,1.03.04.06,1.03.04.06.10,1.03.04.06.10,Interface Box 3 - Procurement & Fab,AS_CDS_IB_6080,Evaluations/Negotiations - Interface Box 3,55.0,4.0,4.0,4.0,08-12-22,10-28-22,AS_CDS_IB_6070: FS,AS_CDS_IB_6090: FS,SLAC,0%,2003.2003_Research Technical Manager,2003_Research Technical Manager,Labor,0.0d,55.0,55.0,At Completion Units,7/13/2022,9/28/2022,0,0,0,0,0,0,0,0,0,0,1.03_Accelerator Systems (AS),1.03.04_AS Cryogenic Distribution System (CDS),1.03.04.06_AS Cryogenic Distribution System Procurement and Fabrication,1.03.04.06.10_Interface Box 3 - Procurement & Fab,AS_CDS_IB_6080_Evaluations/Negotiations - Interface Box 3,Technical Manager,Engineer,SLAC,Labor
89489,1.03,1.03.04,1.03.04.06,1.03.04.06.10,1.03.04.06.10,Interface Box 3 - Procurement & Fab,AS_CDS_IB_6080,Evaluations/Negotiations - Interface Box 3,55.0,64.0,64.0,64.0,08-12-22,10-28-22,AS_CDS_IB_6070: FS,AS_CDS_IB_6090: FS,SLAC,0%,52169.52169_METS Mechanical Engineer,52169_METS Mechanical Engineer,Labor,0.0d,55.0,55.0,At Completion Units,7/13/2022,9/28/2022,0,0,0,0,0,0,0,0,0,0,1.03_Accelerator Systems (AS),1.03.04_AS Cryogenic Distribution System (CDS),1.03.04.06_AS Cryogenic Distribution System Procurement and Fabrication,1.03.04.06.10_Interface Box 3 - Procurement & Fab,AS_CDS_IB_6080_Evaluations/Negotiations - Interface Box 3,Mechanical,,SLAC,Labor
89490,1.03,1.03.04,1.03.04.06,1.03.04.06.10,1.03.04.06.10,Interface Box 3 - Procurement & Fab,AS_CDS_IB_6030,"Prepare RFP (ASP, PRR, TPRR, etc.) - Interface Box 3",35.0,16.0,16.0,16.0,04-20-22,06-08-22,AS_CDS_IB_6020: FS,AS_CDS_IB_6040: FS,SLAC,0%,52169.52169_METS Mechanical Engineer,52169_METS Mechanical Engineer,Labor,0.0d,35.0,35.0,At Completion Units,3/21/2022,5/6/2022,0,0,0,0,0,0,0,0,0,0,1.03_Accelerator Systems (AS),1.03.04_AS Cryogenic Distribution System (CDS),1.03.04.06_AS Cryogenic Distribution System Procurement and Fabrication,1.03.04.06.10_Interface Box 3 - Procurement & Fab,"AS_CDS_IB_6030_Prepare RFP (ASP, PRR, TPRR, etc.) - Interface Box 3",Mechanical,,SLAC,Labor
89491,1.03,1.03.04,1.03.04.06,1.03.04.06.10,1.03.04.06.10,Interface Box 3 - Procurement & Fab,AS_CDS_IB_6010,Prepare Requisition - Interface Box 3,45.0,40.0,40.0,40.0,02-11-22,04-15-22,AS_CDS_IB3_5070: FS,"AS_CDS_TL_6000: FS, AS_CDS_IB_6020: FS",SLAC,0%,52169.52169_METS Mechanical Engineer,52169_METS Mechanical Engineer,Labor,0.0d,45.0,45.0,At Completion Units,1/12/2022,3/17/2022,0,0,0,0,0,0,0,0,0,0,1.03_Accelerator Systems (AS),1.03.04_AS Cryogenic Distribution System (CDS),1.03.04.06_AS Cryogenic Distribution System Procurement and Fabrication,1.03.04.06.10_Interface Box 3 - Procurement & Fab,AS_CDS_IB_6010_Prepare Requisition - Interface Box 3,Mechanical,,SLAC,Labor
89492,1.03,1.03.04,1.03.04.06,1.03.04.06.10,1.03.04.06.10,Interface Box 3 - Procurement & Fab,AS_CDS_IB_6210,Factory Acceptance Test (FAT) - Interface Box 3,2.0,8.0,8.0,8.0,07-05-24,07-08-24,"AS_CDS_IB_6200: FF, AS_CDS_IB_6190: FS",AS_CDS_IB_6220: FS,SLAC,0%,0140_E3.0140_Engineer-Electrical_E3,0140_Engineer-Electrical_E3,Labor,0.0d,2.0,2.0,At Completion Units,4/10/2024,4/11/2024,0,0,0,0,0,0,0,0,0,0,1.03_Accelerator Systems (AS),1.03.04_AS Cryogenic Distribution System (CDS),1.03.04.06_AS Cryogenic Distribution System Procurement and Fabrication,1.03.04.06.10_Interface Box 3 - Procurement & Fab,AS_CDS_IB_6210_Factory Acceptance Test (FAT) - Interface Box 3,Electrical,,SLAC,Labor
89493,1.03,1.03.04,1.03.04.06,1.03.04.06.10,1.03.04.06.10,Interface Box 3 - Procurement & Fab,AS_CDS_IB_6200,SLAC Support for Contractor Fabrication - Interface Box 3,182.0,8.0,8.0,8.0,08-08-23,05-09-24,AS_CDS_IB_6170: FS,"AS_CDS_IB_6210: FF, AS_CDS_IB_6240: FS",SLAC,0%,0140_E3.0140_Engineer-Electrical_E3,0140_Engineer-Electrical_E3,Labor,0.0d,182.0,182.0,At Completion Units,7/7/2023,4/9/2024,0,0,0,0,0,0,0,0,0,0,1.03_Accelerator Systems (AS),1.03.04_AS Cryogenic Distribution System (CDS),1.03.04.06_AS Cryogenic Distribution System Procurement and Fabrication,1.03.04.06.10_Interface Box 3 - Procurement & Fab,AS_CDS_IB_6200_SLAC Support for Contractor Fabrication - Interface Box 3,Electrical,,SLAC,Labor
89494,1.03,1.03.04,1.03.04.06,1.03.04.06.10,1.03.04.06.10,Interface Box 3 - Procurement & Fab,AS_CDS_IB_6170,R_FDR: Final Design Review - Interface Box 3,2.0,8.0,8.0,8.0,08-04-23,08-07-23,"AS_CDS_IB_6150: FS, AS_CDS_IB_6160: FS, AS_CDS_IB_6140: FF","AS_CDS_IB_6200: FS, AS_CDS_IB_6190: FS, AS_CDS_IB_6180: FS, AS_M4_3060: FS, AS_M4_3070: FS, AS_CDS_IB_6175: FS, AS_CDS_IB_6173: FS",SLAC,0%,0140_E3.0140_Engineer-Electrical_E3,0140_Engineer-Electrical_E3,Labor,0.0d,2.0,2.0,At Completion Units,7/5/2023,7/6/2023,DM-C12-20%,0,0,0,0,0,0,0,0,0,1.03_Accelerator Systems (AS),1.03.04_AS Cryogenic Distribution System (CDS),1.03.04.06_AS Cryogenic Distribution System Procurement and Fabrication,1.03.04.06.10_Interface Box 3 - Procurement & Fab,AS_CDS_IB_6170_R_FDR: Final Design Review - Interface Box 3,Electrical,,SLAC,Labor
89495,1.03,1.03.04,1.03.04.06,1.03.04.06.10,1.03.04.06.10,Interface Box 3 - Procurement & Fab,AS_CDS_IB_6150,R_PDR: Prelim. Design Review - Interface Box 3,2.0,8.0,8.0,8.0,03-13-23,03-14-23,AS_CDS_IB_6130: FS,"AS_CDS_IB_6170: FS, AS_CDS_IB_6160: FS, AS_CDS_SU_5010: FS",SLAC,0%,0140_E3.0140_Engineer-Electrical_E3,0140_Engineer-Electrical_E3,Labor,0.0d,2.0,2.0,At Completion Units,2/8/2023,2/9/2023,DM-C11-30%,0,0,0,0,0,0,0,0,0,1.03_Accelerator Systems (AS),1.03.04_AS Cryogenic Distribution System (CDS),1.03.04.06_AS Cryogenic Distribution System Procurement and Fabrication,1.03.04.06.10_Interface Box 3 - Procurement & Fab,AS_CDS_IB_6150_R_PDR: Prelim. Design Review - Interface Box 3,Electrical,,SLAC,Labor
89496,1.03,1.03.04,1.03.04.06,1.03.04.06.10,1.03.04.06.10,Interface Box 3 - Procurement & Fab,AS_CDS_IB_6210,Factory Acceptance Test (FAT) - Interface Box 3,2.0,72.0,72.0,72.0,07-05-24,07-08-24,"AS_CDS_IB_6200: FF, AS_CDS_IB_6190: FS",AS_CDS_IB_6220: FS,SLAC,0%,2003.2003_Research Technical Manager,2003_Research Technical Manager,Labor,0.0d,2.0,2.0,At Completion Units,4/10/2024,4/11/2024,0,0,0,0,0,0,0,0,0,0,1.03_Accelerator Systems (AS),1.03.04_AS Cryogenic Distribution System (CDS),1.03.04.06_AS Cryogenic Distribution System Procurement and Fabrication,1.03.04.06.10_Interface Box 3 - Procurement & Fab,AS_CDS_IB_6210_Factory Acceptance Test (FAT) - Interface Box 3,Technical Manager,Engineer,SLAC,Labor
89497,1.03,1.03.04,1.03.04.06,1.03.04.06.10,1.03.04.06.10,Interface Box 3 - Procurement & Fab,AS_CDS_IB_6200,SLAC Support for Contractor Fabrication - Interface Box 3,182.0,72.0,72.0,72.0,08-08-23,05-09-24,AS_CDS_IB_6170: FS,"AS_CDS_IB_6210: FF, AS_CDS_IB_6240: FS",SLAC,0%,2003.2003_Research Technical Manager,2003_Research Technical Manager,Labor,0.0d,182.0,182.0,At Completion Units,7/7/2023,4/9/2024,0,0,0,0,0,0,0,0,0,0,1.03_Accelerator Systems (AS),1.03.04_AS Cryogenic Distribution System (CDS),1.03.04.06_AS Cryogenic Distribution System Procurement and Fabrication,1.03.04.06.10_Interface Box 3 - Procurement & Fab,AS_CDS_IB_6200_SLAC Support for Contractor Fabrication - Interface Box 3,Technical Manager,Engineer,SLAC,Labor
89498,1.03,1.03.04,1.03.04.06,1.03.04.06.10,1.03.04.06.10,Interface Box 3 - Procurement & Fab,AS_CDS_IB_6170,R_FDR: Final Design Review - Interface Box 3,2.0,8.0,8.0,8.0,08-04-23,08-07-23,"AS_CDS_IB_6150: FS, AS_CDS_IB_6160: FS, AS_CDS_IB_6140: FF","AS_CDS_IB_6200: FS, AS_CDS_IB_6190: FS, AS_CDS_IB_6180: FS, AS_M4_3060: FS, AS_M4_3070: FS, AS_CDS_IB_6175: FS, AS_CDS_IB_6173: FS",SLAC,0%,2003.2003_Research Technical Manager,2003_Research Technical Manager,Labor,0.0d,2.0,2.0,At Completion Units,7/5/2023,7/6/2023,DM-C12-20%,0,0,0,0,0,0,0,0,0,1.03_Accelerator Systems (AS),1.03.04_AS Cryogenic Distribution System (CDS),1.03.04.06_AS Cryogenic Distribution System Procurement and Fabrication,1.03.04.06.10_Interface Box 3 - Procurement & Fab,AS_CDS_IB_6170_R_FDR: Final Design Review - Interface Box 3,Technical Manager,Engineer,SLAC,Labor
89499,1.03,1.03.04,1.03.04.06,1.03.04.06.10,1.03.04.06.10,Interface Box 3 - Procurement & Fab,AS_CDS_IB_6150,R_PDR: Prelim. Design Review - Interface Box 3,2.0,8.0,8.0,8.0,03-13-23,03-14-23,AS_CDS_IB_6130: FS,"AS_CDS_IB_6170: FS, AS_CDS_IB_6160: FS, AS_CDS_SU_5010: FS",SLAC,0%,2003.2003_Research Technical Manager,2003_Research Technical Manager,Labor,0.0d,2.0,2.0,At Completion Units,2/8/2023,2/9/2023,DM-C11-30%,0,0,0,0,0,0,0,0,0,1.03_Accelerator Systems (AS),1.03.04_AS Cryogenic Distribution System (CDS),1.03.04.06_AS Cryogenic Distribution System Procurement and Fabrication,1.03.04.06.10_Interface Box 3 - Procurement & Fab,AS_CDS_IB_6150_R_PDR: Prelim. Design Review - Interface Box 3,Technical Manager,Engineer,SLAC,Labor
89500,1.03,1.03.04,1.03.04.06,1.03.04.06.10,1.03.04.06.10,Interface Box 3 - Procurement & Fab,AS_CDS_IB_6210,Factory Acceptance Test (FAT) - Interface Box 3,2.0,36.0,36.0,36.0,07-05-24,07-08-24,"AS_CDS_IB_6200: FF, AS_CDS_IB_6190: FS",AS_CDS_IB_6220: FS,SLAC,0%,52168.52168_METS - Mechanical Design,52168_METS - Mechanical Design,Labor,0.0d,2.0,2.0,At Completion Units,4/10/2024,4/11/2024,0,0,0,0,0,0,0,0,0,0,1.03_Accelerator Systems (AS),1.03.04_AS Cryogenic Distribution System (CDS),1.03.04.06_AS Cryogenic Distribution System Procurement and Fabrication,1.03.04.06.10_Interface Box 3 - Procurement & Fab,AS_CDS_IB_6210_Factory Acceptance Test (FAT) - Interface Box 3,Mechanical,,SLAC,Labor
89501,1.03,1.03.04,1.03.04.06,1.03.04.06.10,1.03.04.06.10,Interface Box 3 - Procurement & Fab,AS_CDS_IB_6200,SLAC Support for Contractor Fabrication - Interface Box 3,182.0,200.0,200.0,200.0,08-08-23,05-09-24,AS_CDS_IB_6170: FS,"AS_CDS_IB_6210: FF, AS_CDS_IB_6240: FS",SLAC,0%,52168.52168_METS - Mechanical Design,52168_METS - Mechanical Design,Labor,0.0d,182.0,182.0,At Completion Units,7/7/2023,4/9/2024,0,0,0,0,0,0,0,0,0,0,1.03_Accelerator Systems (AS),1.03.04_AS Cryogenic Distribution System (CDS),1.03.04.06_AS Cryogenic Distribution System Procurement and Fabrication,1.03.04.06.10_Interface Box 3 - Procurement & Fab,AS_CDS_IB_6200_SLAC Support for Contractor Fabrication - Interface Box 3,Mechanical,,SLAC,Labor
89502,1.03,1.03.04,1.03.04.06,1.03.04.06.10,1.03.04.06.10,Interface Box 3 - Procurement & Fab,AS_CDS_IB_6170,R_FDR: Final Design Review - Interface Box 3,2.0,32.0,32.0,32.0,08-04-23,08-07-23,"AS_CDS_IB_6150: FS, AS_CDS_IB_6160: FS, AS_CDS_IB_6140: FF","AS_CDS_IB_6200: FS, AS_CDS_IB_6190: FS, AS_CDS_IB_6180: FS, AS_M4_3060: FS, AS_M4_3070: FS, AS_CDS_IB_6175: FS, AS_CDS_IB_6173: FS",SLAC,0%,52168.52168_METS - Mechanical Design,52168_METS - Mechanical Design,Labor,0.0d,2.0,2.0,At Completion Units,7/5/2023,7/6/2023,DM-C12-20%,0,0,0,0,0,0,0,0,0,1.03_Accelerator Systems (AS),1.03.04_AS Cryogenic Distribution System (CDS),1.03.04.06_AS Cryogenic Distribution System Procurement and Fabrication,1.03.04.06.10_Interface Box 3 - Procurement & Fab,AS_CDS_IB_6170_R_FDR: Final Design Review - Interface Box 3,Mechanical,,SLAC,Labor
89503,1.03,1.03.04,1.03.04.06,1.03.04.06.10,1.03.04.06.10,Interface Box 3 - Procurement & Fab,AS_CDS_IB_6150,R_PDR: Prelim. Design Review - Interface Box 3,2.0,32.0,32.0,32.0,03-13-23,03-14-23,AS_CDS_IB_6130: FS,"AS_CDS_IB_6170: FS, AS_CDS_IB_6160: FS, AS_CDS_SU_5010: FS",SLAC,0%,52168.52168_METS - Mechanical Design,52168_METS - Mechanical Design,Labor,0.0d,2.0,2.0,At Completion Units,2/8/2023,2/9/2023,DM-C11-30%,0,0,0,0,0,0,0,0,0,1.03_Accelerator Systems (AS),1.03.04_AS Cryogenic Distribution System (CDS),1.03.04.06_AS Cryogenic Distribution System Procurement and Fabrication,1.03.04.06.10_Interface Box 3 - Procurement & Fab,AS_CDS_IB_6150_R_PDR: Prelim. Design Review - Interface Box 3,Mechanical,,SLAC,Labor
89504,1.03,1.03.04,1.03.04.06,1.03.04.06.10,1.03.04.06.10,Interface Box 3 - Procurement & Fab,AS_CDS_IB_6140,SLAC Support for Contractor Design - Interface Box 3,160.0,110.0,110.0,110.0,12-01-22,08-01-23,AS_CDS_IB_6130: SS,AS_CDS_IB_6170: FF,SLAC,0%,52168.52168_METS - Mechanical Design,52168_METS - Mechanical Design,Labor,0.0d,160.0,160.0,At Completion Units,10/28/2022,6/29/2023,0,0,0,0,0,0,0,0,0,0,1.03_Accelerator Systems (AS),1.03.04_AS Cryogenic Distribution System (CDS),1.03.04.06_AS Cryogenic Distribution System Procurement and Fabrication,1.03.04.06.10_Interface Box 3 - Procurement & Fab,AS_CDS_IB_6140_SLAC Support for Contractor Design - Interface Box 3,Mechanical,,SLAC,Labor
89505,1.03,1.03.04,1.03.04.06,1.03.04.06.10,1.03.04.06.10,Interface Box 3 - Procurement & Fab,AS_CDS_IB_6220,Shipping & Delivery - Interface Box 3,40.0,16.0,16.0,16.0,07-09-24,09-03-24,AS_CDS_IB_6210: FS,AS_CDS_IB_6230: FS,SLAC,0%,52169.52169_METS Mechanical Engineer,52169_METS Mechanical Engineer,Labor,0.0d,40.0,40.0,At Completion Units,4/12/2024,6/7/2024,0,0,0,0,0,0,0,0,0,0,1.03_Accelerator Systems (AS),1.03.04_AS Cryogenic Distribution System (CDS),1.03.04.06_AS Cryogenic Distribution System Procurement and Fabrication,1.03.04.06.10_Interface Box 3 - Procurement & Fab,AS_CDS_IB_6220_Shipping & Delivery - Interface Box 3,Mechanical,,SLAC,Labor
89506,1.03,1.03.04,1.03.04.06,1.03.04.06.10,1.03.04.06.10,Interface Box 3 - Procurement & Fab,AS_CDS_IB_6210,Factory Acceptance Test (FAT) - Interface Box 3,2.0,64.0,64.0,64.0,07-05-24,07-08-24,"AS_CDS_IB_6200: FF, AS_CDS_IB_6190: FS",AS_CDS_IB_6220: FS,SLAC,0%,52169.52169_METS Mechanical Engineer,52169_METS Mechanical Engineer,Labor,0.0d,2.0,2.0,At Completion Units,4/10/2024,4/11/2024,0,0,0,0,0,0,0,0,0,0,1.03_Accelerator Systems (AS),1.03.04_AS Cryogenic Distribution System (CDS),1.03.04.06_AS Cryogenic Distribution System Procurement and Fabrication,1.03.04.06.10_Interface Box 3 - Procurement & Fab,AS_CDS_IB_6210_Factory Acceptance Test (FAT) - Interface Box 3,Mechanical,,SLAC,Labor
89507,1.03,1.03.04,1.03.04.06,1.03.04.06.10,1.03.04.06.10,Interface Box 3 - Procurement & Fab,AS_CDS_IB_6200,SLAC Support for Contractor Fabrication - Interface Box 3,182.0,232.0,232.0,232.0,08-08-23,05-09-24,AS_CDS_IB_6170: FS,"AS_CDS_IB_6210: FF, AS_CDS_IB_6240: FS",SLAC,0%,52169.52169_METS Mechanical Engineer,52169_METS Mechanical Engineer,Labor,0.0d,182.0,182.0,At Completion Units,7/7/2023,4/9/2024,0,0,0,0,0,0,0,0,0,0,1.03_Accelerator Systems (AS),1.03.04_AS Cryogenic Distribution System (CDS),1.03.04.06_AS Cryogenic Distribution System Procurement and Fabrication,1.03.04.06.10_Interface Box 3 - Procurement & Fab,AS_CDS_IB_6200_SLAC Support for Contractor Fabrication - Interface Box 3,Mechanical,,SLAC,Labor
89508,1.03,1.03.04,1.03.04.06,1.03.04.06.10,1.03.04.06.10,Interface Box 3 - Procurement & Fab,AS_CDS_IB_6170,R_FDR: Final Design Review - Interface Box 3,2.0,32.0,32.0,32.0,08-04-23,08-07-23,"AS_CDS_IB_6150: FS, AS_CDS_IB_6160: FS, AS_CDS_IB_6140: FF","AS_CDS_IB_6200: FS, AS_CDS_IB_6190: FS, AS_CDS_IB_6180: FS, AS_M4_3060: FS, AS_M4_3070: FS, AS_CDS_IB_6175: FS, AS_CDS_IB_6173: FS",SLAC,0%,52169.52169_METS Mechanical Engineer,52169_METS Mechanical Engineer,Labor,0.0d,2.0,2.0,At Completion Units,7/5/2023,7/6/2023,DM-C12-20%,0,0,0,0,0,0,0,0,0,1.03_Accelerator Systems (AS),1.03.04_AS Cryogenic Distribution System (CDS),1.03.04.06_AS Cryogenic Distribution System Procurement and Fabrication,1.03.04.06.10_Interface Box 3 - Procurement & Fab,AS_CDS_IB_6170_R_FDR: Final Design Review - Interface Box 3,Mechanical,,SLAC,Labor
89509,1.03,1.03.04,1.03.04.06,1.03.04.06.10,1.03.04.06.10,Interface Box 3 - Procurement & Fab,AS_CDS_IB_6150,R_PDR: Prelim. Design Review - Interface Box 3,2.0,32.0,32.0,32.0,03-13-23,03-14-23,AS_CDS_IB_6130: FS,"AS_CDS_IB_6170: FS, AS_CDS_IB_6160: FS, AS_CDS_SU_5010: FS",SLAC,0%,52169.52169_METS Mechanical Engineer,52169_METS Mechanical Engineer,Labor,0.0d,2.0,2.0,At Completion Units,2/8/2023,2/9/2023,DM-C11-30%,0,0,0,0,0,0,0,0,0,1.03_Accelerator Systems (AS),1.03.04_AS Cryogenic Distribution System (CDS),1.03.04.06_AS Cryogenic Distribution System Procurement and Fabrication,1.03.04.06.10_Interface Box 3 - Procurement & Fab,AS_CDS_IB_6150_R_PDR: Prelim. Design Review - Interface Box 3,Mechanical,,SLAC,Labor
89510,1.03,1.03.04,1.03.04.06,1.03.04.06.10,1.03.04.06.10,Interface Box 3 - Procurement & Fab,AS_CDS_IB_6140,SLAC Support for Contractor Design - Interface Box 3,160.0,250.0,250.0,250.0,12-01-22,08-01-23,AS_CDS_IB_6130: SS,AS_CDS_IB_6170: FF,SLAC,0%,52169.52169_METS Mechanical Engineer,52169_METS Mechanical Engineer,Labor,0.0d,160.0,160.0,At Completion Units,10/28/2022,6/29/2023,0,0,0,0,0,0,0,0,0,0,1.03_Accelerator Systems (AS),1.03.04_AS Cryogenic Distribution System (CDS),1.03.04.06_AS Cryogenic Distribution System Procurement and Fabrication,1.03.04.06.10_Interface Box 3 - Procurement & Fab,AS_CDS_IB_6140_SLAC Support for Contractor Design - Interface Box 3,Mechanical,,SLAC,Labor
89511,1.03,1.03.04,1.03.04.06,1.03.04.06.10,1.03.04.06.10,Interface Box 3 - Procurement & Fab,AS_CDS_IB_6230,RCV: Interface Box 3,1.0,1850584.0,1850584.0,1850584.0,09-04-24,09-04-24,AS_CDS_IB_6220: FS,"AS_CDS_IB_6240: FS, AS_CDS_IB_9000: FS",SLAC,0%,SL_MSSY.SLAC M&S (>$500K) (NO G&A) (gets ESC),SLAC M&S (>$500K) (NO G&A) (gets ESC),Nonlabor,0.0d,1.0,1.0,At Completion Units,6/10/2024,6/10/2024,0,0,0,0,0,0,0,0,0,0,1.03_Accelerator Systems (AS),1.03.04_AS Cryogenic Distribution System (CDS),1.03.04.06_AS Cryogenic Distribution System Procurement and Fabrication,1.03.04.06.10_Interface Box 3 - Procurement & Fab,AS_CDS_IB_6230_RCV: Interface Box 3,Material,,SLAC,M&S
89512,1.03,1.03.04,1.03.04.06,1.03.04.06.10,1.03.04.06.10,Interface Box 3 - Procurement & Fab,AS_CDS_IB_6230,RCV: Interface Box 3,1.0,29883.0,29883.0,29883.0,09-04-24,09-04-24,AS_CDS_IB_6220: FS,"AS_CDS_IB_6240: FS, AS_CDS_IB_9000: FS",SLAC,0%,SL_MSSC.SLAC M&S (<$500K) (gets G&A) (gets ESC),SLAC M&S (<$500K) (gets G&A) (gets ESC),Nonlabor,0.0d,1.0,1.0,At Completion Units,6/10/2024,6/10/2024,0,0,0,0,0,0,0,0,0,0,1.03_Accelerator Systems (AS),1.03.04_AS Cryogenic Distribution System (CDS),1.03.04.06_AS Cryogenic Distribution System Procurement and Fabrication,1.03.04.06.10_Interface Box 3 - Procurement & Fab,AS_CDS_IB_6230_RCV: Interface Box 3,Material,,SLAC,M&S
89513,1.03,1.03.04,1.03.04.06,1.03.04.06.10,1.03.04.06.10,Interface Box 3 - Procurement & Fab,AS_CDS_IB_6120,AWARD: Design - Interface Box 3,1.0,470116.0,470116.0,470116.0,11-30-22,11-30-22,AS_CDS_IB_6110: FS,AS_CDS_IB_6130: FS,SLAC,0%,AWARD_USE.AWARD - Use this AWARD,AWARD - Use this AWARD,Nonlabor,0.0d,1.0,1.0,At Completion Units,10/27/2022,10/27/2022,AWARD > $500K,0,0,0,0,0,0,0,0,0,1.03_Accelerator Systems (AS),1.03.04_AS Cryogenic Distribution System (CDS),1.03.04.06_AS Cryogenic Distribution System Procurement and Fabrication,1.03.04.06.10_Interface Box 3 - Procurement & Fab,AS_CDS_IB_6120_AWARD: Design - Interface Box 3,Material,,SLAC,M&S
89514,1.03,1.03.04,1.03.04.06,1.03.04.06.10,1.03.04.06.10,Interface Box 3 - Procurement & Fab,AS_CDS_IB_6020,RQN: Approval of Requisition - Interface Box 3,2.0,2350583.0,2350583.0,2350583.0,04-18-22,04-19-22,AS_CDS_IB_6010: FS,AS_CDS_IB_6030: FS,SLAC,0%,REQ.Requisition,Requisition,Nonlabor,0.0d,2.0,2.0,At Completion Units,3/18/2022,3/18/2022,RQN,0,0,0,0,0,0,0,0,0,1.03_Accelerator Systems (AS),1.03.04_AS Cryogenic Distribution System (CDS),1.03.04.06_AS Cryogenic Distribution System Procurement and Fabrication,1.03.04.06.10_Interface Box 3 - Procurement & Fab,AS_CDS_IB_6020_RQN: Approval of Requisition - Interface Box 3,Material,,SLAC,M&S
89834,1.03,1.03.04,1.03.04.06,1.03.04.06.20,1.03.04.06.20,Transfer Line 3 - Procurement & Fab,AS_CDS_TL_6165,RCV: Design - Transfer Line 3,1.0,391484.0,391484.0,391484.0,09-26-23,09-26-23,"AS_CDS_TL_6160: FS, AS_CDS_TL_6163: FS",AS_CDS_TL_6170: FS,SLAC,0%,SL_MSSY.SLAC M&S (>$500K) (NO G&A) (gets ESC),SLAC M&S (>$500K) (NO G&A) (gets ESC),Nonlabor,0.0d,1.0,1.0,At Completion Units,nn,,0,0,0,0,0,0,0,0,0,0,1.03_Accelerator Systems (AS),1.03.04_AS Cryogenic Distribution System (CDS),1.03.04.06_AS Cryogenic Distribution System Procurement and Fabrication,1.03.04.06.20_Transfer Line 3 - Procurement & Fab,AS_CDS_TL_6165_RCV: Design - Transfer Line 3,Material,,SLAC,M&S
89835,1.03,1.03.04,1.03.04.06,1.03.04.06.20,1.03.04.06.20,Transfer Line 3 - Procurement & Fab,AS_CDS_TL_6165,RCV: Design - Transfer Line 3,1.0,500000.0,500000.0,500000.0,09-26-23,09-26-23,"AS_CDS_TL_6160: FS, AS_CDS_TL_6163: FS",AS_CDS_TL_6170: FS,SLAC,0%,SL_MSSC.SLAC M&S (<$500K) (gets G&A) (gets ESC),SLAC M&S (<$500K) (gets G&A) (gets ESC),Nonlabor,0.0d,1.0,1.0,At Completion Units,nn,,0,0,0,0,0,0,0,0,0,0,1.03_Accelerator Systems (AS),1.03.04_AS Cryogenic Distribution System (CDS),1.03.04.06_AS Cryogenic Distribution System Procurement and Fabrication,1.03.04.06.20_Transfer Line 3 - Procurement & Fab,AS_CDS_TL_6165_RCV: Design - Transfer Line 3,Material,,SLAC,M&S
89836,1.03,1.03.04,1.03.04.06,1.03.04.06.20,1.03.04.06.20,Transfer Line 3 - Procurement & Fab,AS_CDS_TL_6170,AWARD: Fabrication - Transfer Line 3,2.0,1337226.0,1337226.0,1337226.0,10-02-23,10-03-23,"AS_CDS_TL_6160: FS, AS_M4_3010: FS, AS_CDS_TL_6165: FS",AS_CDS_TL_6180: FS,SLAC,0%,AWARD_USE.AWARD - Use this AWARD,AWARD - Use this AWARD,Nonlabor,0.0d,2.0,2.0,At Completion Units,6/8/2023,6/9/2023,AWARD > $500K,0,0,0,0,0,0,0,0,0,1.03_Accelerator Systems (AS),1.03.04_AS Cryogenic Distribution System (CDS),1.03.04.06_AS Cryogenic Distribution System Procurement and Fabrication,1.03.04.06.20_Transfer Line 3 - Procurement & Fab,AS_CDS_TL_6170_AWARD: Fabrication - Transfer Line 3,Material,,SLAC,M&S
89837,1.03,1.03.04,1.03.04.06,1.03.04.06.20,1.03.04.06.20,Transfer Line 3 - Procurement & Fab,AS_CDS_TL_6020,"Prepare RFP (ASP, PRR, TPRR, etc.) - Transfer Line 3",35.0,2.0,2.0,2.0,06-22-22,08-10-22,AS_CDS_TL_6010: FS,AS_CDS_TL_6030: FS,SLAC,0%,0140_E3.0140_Engineer-Electrical_E3,0140_Engineer-Electrical_E3,Labor,0.0d,35.0,35.0,At Completion Units,3/21/2022,5/6/2022,0,0,0,0,0,0,0,0,0,0,1.03_Accelerator Systems (AS),1.03.04_AS Cryogenic Distribution System (CDS),1.03.04.06_AS Cryogenic Distribution System Procurement and Fabrication,1.03.04.06.20_Transfer Line 3 - Procurement & Fab,"AS_CDS_TL_6020_Prepare RFP (ASP, PRR, TPRR, etc.) - Transfer Line 3",Electrical,,SLAC,Labor
89838,1.03,1.03.04,1.03.04.06,1.03.04.06.20,1.03.04.06.20,Transfer Line 3 - Procurement & Fab,AS_CDS_TL_6070,Evaluations/Negotiations - Transfer Line 3,55.0,4.0,4.0,4.0,10-14-22,01-17-23,AS_CDS_TL_6060: FS,AS_CDS_TL_6080: FS,SLAC,0%,0140_E3.0140_Engineer-Electrical_E3,0140_Engineer-Electrical_E3,Labor,0.0d,55.0,55.0,At Completion Units,7/13/2022,9/28/2022,0,0,0,0,0,0,0,0,0,0,1.03_Accelerator Systems (AS),1.03.04_AS Cryogenic Distribution System (CDS),1.03.04.06_AS Cryogenic Distribution System Procurement and Fabrication,1.03.04.06.20_Transfer Line 3 - Procurement & Fab,AS_CDS_TL_6070_Evaluations/Negotiations - Transfer Line 3,Electrical,,SLAC,Labor
89839,1.03,1.03.04,1.03.04.06,1.03.04.06.20,1.03.04.06.20,Transfer Line 3 - Procurement & Fab,AS_CDS_TL_6070,Evaluations/Negotiations - Transfer Line 3,55.0,4.0,4.0,4.0,10-14-22,01-17-23,AS_CDS_TL_6060: FS,AS_CDS_TL_6080: FS,SLAC,0%,2003.2003_Research Technical Manager,2003_Research Technical Manager,Labor,0.0d,55.0,55.0,At Completion Units,7/13/2022,9/28/2022,0,0,0,0,0,0,0,0,0,0,1.03_Accelerator Systems (AS),1.03.04_AS Cryogenic Distribution System (CDS),1.03.04.06_AS Cryogenic Distribution System Procurement and Fabrication,1.03.04.06.20_Transfer Line 3 - Procurement & Fab,AS_CDS_TL_6070_Evaluations/Negotiations - Transfer Line 3,Technical Manager,Engineer,SLAC,Labor
89840,1.03,1.03.04,1.03.04.06,1.03.04.06.20,1.03.04.06.20,Transfer Line 3 - Procurement & Fab,AS_CDS_TL_6020,"Prepare RFP (ASP, PRR, TPRR, etc.) - Transfer Line 3",35.0,4.0,4.0,4.0,06-22-22,08-10-22,AS_CDS_TL_6010: FS,AS_CDS_TL_6030: FS,SLAC,0%,2003.2003_Research Technical Manager,2003_Research Technical Manager,Labor,0.0d,35.0,35.0,At Completion Units,3/21/2022,5/6/2022,0,0,0,0,0,0,0,0,0,0,1.03_Accelerator Systems (AS),1.03.04_AS Cryogenic Distribution System (CDS),1.03.04.06_AS Cryogenic Distribution System Procurement and Fabrication,1.03.04.06.20_Transfer Line 3 - Procurement & Fab,"AS_CDS_TL_6020_Prepare RFP (ASP, PRR, TPRR, etc.) - Transfer Line 3",Technical Manager,Engineer,SLAC,Labor
89841,1.03,1.03.04,1.03.04.06,1.03.04.06.20,1.03.04.06.20,Transfer Line 3 - Procurement & Fab,AS_CDS_TL_6020,"Prepare RFP (ASP, PRR, TPRR, etc.) - Transfer Line 3",35.0,8.0,8.0,8.0,06-22-22,08-10-22,AS_CDS_TL_6010: FS,AS_CDS_TL_6030: FS,SLAC,0%,52168.52168_METS - Mechanical Design,52168_METS - Mechanical Design,Labor,0.0d,35.0,35.0,At Completion Units,3/21/2022,5/6/2022,0,0,0,0,0,0,0,0,0,0,1.03_Accelerator Systems (AS),1.03.04_AS Cryogenic Distribution System (CDS),1.03.04.06_AS Cryogenic Distribution System Procurement and Fabrication,1.03.04.06.20_Transfer Line 3 - Procurement & Fab,"AS_CDS_TL_6020_Prepare RFP (ASP, PRR, TPRR, etc.) - Transfer Line 3",Mechanical,,SLAC,Labor
89842,1.03,1.03.04,1.03.04.06,1.03.04.06.20,1.03.04.06.20,Transfer Line 3 - Procurement & Fab,AS_CDS_TL_6070,Evaluations/Negotiations - Transfer Line 3,55.0,32.0,32.0,32.0,10-14-22,01-17-23,AS_CDS_TL_6060: FS,AS_CDS_TL_6080: FS,SLAC,0%,52169.52169_METS Mechanical Engineer,52169_METS Mechanical Engineer,Labor,0.0d,55.0,55.0,At Completion Units,7/13/2022,9/28/2022,0,0,0,0,0,0,0,0,0,0,1.03_Accelerator Systems (AS),1.03.04_AS Cryogenic Distribution System (CDS),1.03.04.06_AS Cryogenic Distribution System Procurement and Fabrication,1.03.04.06.20_Transfer Line 3 - Procurement & Fab,AS_CDS_TL_6070_Evaluations/Negotiations - Transfer Line 3,Mechanical,,SLAC,Labor
89843,1.03,1.03.04,1.03.04.06,1.03.04.06.20,1.03.04.06.20,Transfer Line 3 - Procurement & Fab,AS_CDS_TL_6020,"Prepare RFP (ASP, PRR, TPRR, etc.) - Transfer Line 3",35.0,8.0,8.0,8.0,06-22-22,08-10-22,AS_CDS_TL_6010: FS,AS_CDS_TL_6030: FS,SLAC,0%,52169.52169_METS Mechanical Engineer,52169_METS Mechanical Engineer,Labor,0.0d,35.0,35.0,At Completion Units,3/21/2022,5/6/2022,0,0,0,0,0,0,0,0,0,0,1.03_Accelerator Systems (AS),1.03.04_AS Cryogenic Distribution System (CDS),1.03.04.06_AS Cryogenic Distribution System Procurement and Fabrication,1.03.04.06.20_Transfer Line 3 - Procurement & Fab,"AS_CDS_TL_6020_Prepare RFP (ASP, PRR, TPRR, etc.) - Transfer Line 3",Mechanical,,SLAC,Labor
89844,1.03,1.03.04,1.03.04.06,1.03.04.06.20,1.03.04.06.20,Transfer Line 3 - Procurement & Fab,AS_CDS_TL_6000,Prepare Requisition (Specs/SOW/ETC) - Transfer Line 3,45.0,20.0,20.0,20.0,04-18-22,06-20-22,"AS_CDS_TL_5070: FS, AS_CDS_IB_6010: FS",AS_CDS_TL_6010: FS,SLAC,0%,52169.52169_METS Mechanical Engineer,52169_METS Mechanical Engineer,Labor,0.0d,45.0,45.0,At Completion Units,1/12/2022,3/17/2022,0,0,0,0,0,0,0,0,0,0,1.03_Accelerator Systems (AS),1.03.04_AS Cryogenic Distribution System (CDS),1.03.04.06_AS Cryogenic Distribution System Procurement and Fabrication,1.03.04.06.20_Transfer Line 3 - Procurement & Fab,AS_CDS_TL_6000_Prepare Requisition (Specs/SOW/ETC) - Transfer Line 3,Mechanical,,SLAC,Labor
89845,1.03,1.03.04,1.03.04.06,1.03.04.06.20,1.03.04.06.20,Transfer Line 3 - Procurement & Fab,AS_CDS_TL_6200,Factory Acceptance Test (FAT) - Transfer Line 3,2.0,8.0,8.0,8.0,08-30-24,09-03-24,"AS_CDS_TL_6190: FF, AS_CDS_TL_6180: FS",AS_CDS_TL_6210: FS,SLAC,0%,0140_E3.0140_Engineer-Electrical_E3,0140_Engineer-Electrical_E3,Labor,0.0d,2.0,2.0,At Completion Units,5/8/2024,5/9/2024,0,0,0,0,0,0,0,0,0,0,1.03_Accelerator Systems (AS),1.03.04_AS Cryogenic Distribution System (CDS),1.03.04.06_AS Cryogenic Distribution System Procurement and Fabrication,1.03.04.06.20_Transfer Line 3 - Procurement & Fab,AS_CDS_TL_6200_Factory Acceptance Test (FAT) - Transfer Line 3,Electrical,,SLAC,Labor
89846,1.03,1.03.04,1.03.04.06,1.03.04.06.20,1.03.04.06.20,Transfer Line 3 - Procurement & Fab,AS_CDS_TL_6190,SLAC Support for Contractor Fabrication - Transfer Line 3,222.0,8.0,8.0,8.0,09-12-23,08-09-24,AS_CDS_TL_6160: FS,"AS_CDS_TL_6200: FF, AS_CDS_TL_6230: FS",SLAC,0%,0140_E3.0140_Engineer-Electrical_E3,0140_Engineer-Electrical_E3,Labor,0.0d,222.0,222.0,At Completion Units,6/8/2023,5/7/2024,0,0,0,0,0,0,0,0,0,0,1.03_Accelerator Systems (AS),1.03.04_AS Cryogenic Distribution System (CDS),1.03.04.06_AS Cryogenic Distribution System Procurement and Fabrication,1.03.04.06.20_Transfer Line 3 - Procurement & Fab,AS_CDS_TL_6190_SLAC Support for Contractor Fabrication - Transfer Line 3,Electrical,,SLAC,Labor
89847,1.03,1.03.04,1.03.04.06,1.03.04.06.20,1.03.04.06.20,Transfer Line 3 - Procurement & Fab,AS_CDS_TL_6160,R_FDR: Final Design Review - Transfer Line 3,2.0,8.0,8.0,8.0,09-08-23,09-11-23,"AS_CDS_TL_6140: FS, AS_CDS_TL_6150: FS, AS_CDS_TL_6130: FF","AS_CDS_TL_6190: FS, AS_CDS_TL_6180: FS, AS_CDS_TL_6170: FS, AS_M4_3060: FS, AS_M4_3070: FS, AS_CDS_TL_6165: FS, AS_CDS_TL_6163: FS",SLAC,0%,0140_E3.0140_Engineer-Electrical_E3,0140_Engineer-Electrical_E3,Labor,0.0d,2.0,2.0,At Completion Units,6/6/2023,6/7/2023,DM-C12-20%,0,0,0,0,0,0,0,0,0,1.03_Accelerator Systems (AS),1.03.04_AS Cryogenic Distribution System (CDS),1.03.04.06_AS Cryogenic Distribution System Procurement and Fabrication,1.03.04.06.20_Transfer Line 3 - Procurement & Fab,AS_CDS_TL_6160_R_FDR: Final Design Review - Transfer Line 3,Electrical,,SLAC,Labor
89848,1.03,1.03.04,1.03.04.06,1.03.04.06.20,1.03.04.06.20,Transfer Line 3 - Procurement & Fab,AS_CDS_TL_6140,R_PDR: Prelim. Design Review - Transfer Line 3,2.0,8.0,8.0,8.0,05-26-23,05-30-23,AS_CDS_TL_6120: FS,"AS_CDS_TL_6160: FS, AS_CDS_TL_6150: FS",SLAC,0%,0140_E3.0140_Engineer-Electrical_E3,0140_Engineer-Electrical_E3,Labor,0.0d,2.0,2.0,At Completion Units,2/23/2023,2/24/2023,DM-C11-30%,0,0,0,0,0,0,0,0,0,1.03_Accelerator Systems (AS),1.03.04_AS Cryogenic Distribution System (CDS),1.03.04.06_AS Cryogenic Distribution System Procurement and Fabrication,1.03.04.06.20_Transfer Line 3 - Procurement & Fab,AS_CDS_TL_6140_R_PDR: Prelim. Design Review - Transfer Line 3,Electrical,,SLAC,Labor
89849,1.03,1.03.04,1.03.04.06,1.03.04.06.20,1.03.04.06.20,Transfer Line 3 - Procurement & Fab,AS_CDS_TL_6200,Factory Acceptance Test (FAT) - Transfer Line 3,2.0,40.0,40.0,40.0,08-30-24,09-03-24,"AS_CDS_TL_6190: FF, AS_CDS_TL_6180: FS",AS_CDS_TL_6210: FS,SLAC,0%,2003.2003_Research Technical Manager,2003_Research Technical Manager,Labor,0.0d,2.0,2.0,At Completion Units,5/8/2024,5/9/2024,0,0,0,0,0,0,0,0,0,0,1.03_Accelerator Systems (AS),1.03.04_AS Cryogenic Distribution System (CDS),1.03.04.06_AS Cryogenic Distribution System Procurement and Fabrication,1.03.04.06.20_Transfer Line 3 - Procurement & Fab,AS_CDS_TL_6200_Factory Acceptance Test (FAT) - Transfer Line 3,Technical Manager,Engineer,SLAC,Labor
89850,1.03,1.03.04,1.03.04.06,1.03.04.06.20,1.03.04.06.20,Transfer Line 3 - Procurement & Fab,AS_CDS_TL_6190,SLAC Support for Contractor Fabrication - Transfer Line 3,222.0,40.0,40.0,40.0,09-12-23,08-09-24,AS_CDS_TL_6160: FS,"AS_CDS_TL_6200: FF, AS_CDS_TL_6230: FS",SLAC,0%,2003.2003_Research Technical Manager,2003_Research Technical Manager,Labor,0.0d,222.0,222.0,At Completion Units,6/8/2023,5/7/2024,0,0,0,0,0,0,0,0,0,0,1.03_Accelerator Systems (AS),1.03.04_AS Cryogenic Distribution System (CDS),1.03.04.06_AS Cryogenic Distribution System Procurement and Fabrication,1.03.04.06.20_Transfer Line 3 - Procurement & Fab,AS_CDS_TL_6190_SLAC Support for Contractor Fabrication - Transfer Line 3,Technical Manager,Engineer,SLAC,Labor
89851,1.03,1.03.04,1.03.04.06,1.03.04.06.20,1.03.04.06.20,Transfer Line 3 - Procurement & Fab,AS_CDS_TL_6160,R_FDR: Final Design Review - Transfer Line 3,2.0,8.0,8.0,8.0,09-08-23,09-11-23,"AS_CDS_TL_6140: FS, AS_CDS_TL_6150: FS, AS_CDS_TL_6130: FF","AS_CDS_TL_6190: FS, AS_CDS_TL_6180: FS, AS_CDS_TL_6170: FS, AS_M4_3060: FS, AS_M4_3070: FS, AS_CDS_TL_6165: FS, AS_CDS_TL_6163: FS",SLAC,0%,2003.2003_Research Technical Manager,2003_Research Technical Manager,Labor,0.0d,2.0,2.0,At Completion Units,6/6/2023,6/7/2023,DM-C12-20%,0,0,0,0,0,0,0,0,0,1.03_Accelerator Systems (AS),1.03.04_AS Cryogenic Distribution System (CDS),1.03.04.06_AS Cryogenic Distribution System Procurement and Fabrication,1.03.04.06.20_Transfer Line 3 - Procurement & Fab,AS_CDS_TL_6160_R_FDR: Final Design Review - Transfer Line 3,Technical Manager,Engineer,SLAC,Labor
89852,1.03,1.03.04,1.03.04.06,1.03.04.06.20,1.03.04.06.20,Transfer Line 3 - Procurement & Fab,AS_CDS_TL_6140,R_PDR: Prelim. Design Review - Transfer Line 3,2.0,8.0,8.0,8.0,05-26-23,05-30-23,AS_CDS_TL_6120: FS,"AS_CDS_TL_6160: FS, AS_CDS_TL_6150: FS",SLAC,0%,2003.2003_Research Technical Manager,2003_Research Technical Manager,Labor,0.0d,2.0,2.0,At Completion Units,2/23/2023,2/24/2023,DM-C11-30%,0,0,0,0,0,0,0,0,0,1.03_Accelerator Systems (AS),1.03.04_AS Cryogenic Distribution System (CDS),1.03.04.06_AS Cryogenic Distribution System Procurement and Fabrication,1.03.04.06.20_Transfer Line 3 - Procurement & Fab,AS_CDS_TL_6140_R_PDR: Prelim. Design Review - Transfer Line 3,Technical Manager,Engineer,SLAC,Labor
89853,1.03,1.03.04,1.03.04.06,1.03.04.06.20,1.03.04.06.20,Transfer Line 3 - Procurement & Fab,AS_CDS_TL_6200,Factory Acceptance Test (FAT) - Transfer Line 3,2.0,4.0,4.0,4.0,08-30-24,09-03-24,"AS_CDS_TL_6190: FF, AS_CDS_TL_6180: FS",AS_CDS_TL_6210: FS,SLAC,0%,52168.52168_METS - Mechanical Design,52168_METS - Mechanical Design,Labor,0.0d,2.0,2.0,At Completion Units,5/8/2024,5/9/2024,0,0,0,0,0,0,0,0,0,0,1.03_Accelerator Systems (AS),1.03.04_AS Cryogenic Distribution System (CDS),1.03.04.06_AS Cryogenic Distribution System Procurement and Fabrication,1.03.04.06.20_Transfer Line 3 - Procurement & Fab,AS_CDS_TL_6200_Factory Acceptance Test (FAT) - Transfer Line 3,Mechanical,,SLAC,Labor
89854,1.03,1.03.04,1.03.04.06,1.03.04.06.20,1.03.04.06.20,Transfer Line 3 - Procurement & Fab,AS_CDS_TL_6190,SLAC Support for Contractor Fabrication - Transfer Line 3,222.0,100.0,100.0,100.0,09-12-23,08-09-24,AS_CDS_TL_6160: FS,"AS_CDS_TL_6200: FF, AS_CDS_TL_6230: FS",SLAC,0%,52168.52168_METS - Mechanical Design,52168_METS - Mechanical Design,Labor,0.0d,222.0,222.0,At Completion Units,6/8/2023,5/7/2024,0,0,0,0,0,0,0,0,0,0,1.03_Accelerator Systems (AS),1.03.04_AS Cryogenic Distribution System (CDS),1.03.04.06_AS Cryogenic Distribution System Procurement and Fabrication,1.03.04.06.20_Transfer Line 3 - Procurement & Fab,AS_CDS_TL_6190_SLAC Support for Contractor Fabrication - Transfer Line 3,Mechanical,,SLAC,Labor
89855,1.03,1.03.04,1.03.04.06,1.03.04.06.20,1.03.04.06.20,Transfer Line 3 - Procurement & Fab,AS_CDS_TL_6160,R_FDR: Final Design Review - Transfer Line 3,2.0,16.0,16.0,16.0,09-08-23,09-11-23,"AS_CDS_TL_6140: FS, AS_CDS_TL_6150: FS, AS_CDS_TL_6130: FF","AS_CDS_TL_6190: FS, AS_CDS_TL_6180: FS, AS_CDS_TL_6170: FS, AS_M4_3060: FS, AS_M4_3070: FS, AS_CDS_TL_6165: FS, AS_CDS_TL_6163: FS",SLAC,0%,52168.52168_METS - Mechanical Design,52168_METS - Mechanical Design,Labor,0.0d,2.0,2.0,At Completion Units,6/6/2023,6/7/2023,DM-C12-20%,0,0,0,0,0,0,0,0,0,1.03_Accelerator Systems (AS),1.03.04_AS Cryogenic Distribution System (CDS),1.03.04.06_AS Cryogenic Distribution System Procurement and Fabrication,1.03.04.06.20_Transfer Line 3 - Procurement & Fab,AS_CDS_TL_6160_R_FDR: Final Design Review - Transfer Line 3,Mechanical,,SLAC,Labor
89856,1.03,1.03.04,1.03.04.06,1.03.04.06.20,1.03.04.06.20,Transfer Line 3 - Procurement & Fab,AS_CDS_TL_6140,R_PDR: Prelim. Design Review - Transfer Line 3,2.0,16.0,16.0,16.0,05-26-23,05-30-23,AS_CDS_TL_6120: FS,"AS_CDS_TL_6160: FS, AS_CDS_TL_6150: FS",SLAC,0%,52168.52168_METS - Mechanical Design,52168_METS - Mechanical Design,Labor,0.0d,2.0,2.0,At Completion Units,2/23/2023,2/24/2023,DM-C11-30%,0,0,0,0,0,0,0,0,0,1.03_Accelerator Systems (AS),1.03.04_AS Cryogenic Distribution System (CDS),1.03.04.06_AS Cryogenic Distribution System Procurement and Fabrication,1.03.04.06.20_Transfer Line 3 - Procurement & Fab,AS_CDS_TL_6140_R_PDR: Prelim. Design Review - Transfer Line 3,Mechanical,,SLAC,Labor
89857,1.03,1.03.04,1.03.04.06,1.03.04.06.20,1.03.04.06.20,Transfer Line 3 - Procurement & Fab,AS_CDS_TL_6130,SLAC Support for Contractor Design - Transfer Line 3,140.0,70.0,70.0,70.0,02-16-23,09-05-23,AS_CDS_TL_6120: SS,AS_CDS_TL_6160: FF,SLAC,0%,52168.52168_METS - Mechanical Design,52168_METS - Mechanical Design,Labor,0.0d,140.0,140.0,At Completion Units,10/28/2022,6/1/2023,0,0,0,0,0,0,0,0,0,0,1.03_Accelerator Systems (AS),1.03.04_AS Cryogenic Distribution System (CDS),1.03.04.06_AS Cryogenic Distribution System Procurement and Fabrication,1.03.04.06.20_Transfer Line 3 - Procurement & Fab,AS_CDS_TL_6130_SLAC Support for Contractor Design - Transfer Line 3,Mechanical,,SLAC,Labor
89858,1.03,1.03.04,1.03.04.06,1.03.04.06.20,1.03.04.06.20,Transfer Line 3 - Procurement & Fab,AS_CDS_TL_6210,Shipping & Delivery - Transfer Line 3,60.0,8.0,8.0,8.0,09-04-24,11-26-24,AS_CDS_TL_6200: FS,AS_CDS_TL_6220: FS,SLAC,0%,52169.52169_METS Mechanical Engineer,52169_METS Mechanical Engineer,Labor,0.0d,60.0,60.0,At Completion Units,5/10/2024,8/5/2024,0,0,0,0,0,0,0,0,0,0,1.03_Accelerator Systems (AS),1.03.04_AS Cryogenic Distribution System (CDS),1.03.04.06_AS Cryogenic Distribution System Procurement and Fabrication,1.03.04.06.20_Transfer Line 3 - Procurement & Fab,AS_CDS_TL_6210_Shipping & Delivery - Transfer Line 3,Mechanical,,SLAC,Labor
89859,1.03,1.03.04,1.03.04.06,1.03.04.06.20,1.03.04.06.20,Transfer Line 3 - Procurement & Fab,AS_CDS_TL_6200,Factory Acceptance Test (FAT) - Transfer Line 3,2.0,32.0,32.0,32.0,08-30-24,09-03-24,"AS_CDS_TL_6190: FF, AS_CDS_TL_6180: FS",AS_CDS_TL_6210: FS,SLAC,0%,52169.52169_METS Mechanical Engineer,52169_METS Mechanical Engineer,Labor,0.0d,2.0,2.0,At Completion Units,5/8/2024,5/9/2024,0,0,0,0,0,0,0,0,0,0,1.03_Accelerator Systems (AS),1.03.04_AS Cryogenic Distribution System (CDS),1.03.04.06_AS Cryogenic Distribution System Procurement and Fabrication,1.03.04.06.20_Transfer Line 3 - Procurement & Fab,AS_CDS_TL_6200_Factory Acceptance Test (FAT) - Transfer Line 3,Mechanical,,SLAC,Labor
89860,1.03,1.03.04,1.03.04.06,1.03.04.06.20,1.03.04.06.20,Transfer Line 3 - Procurement & Fab,AS_CDS_TL_6190,SLAC Support for Contractor Fabrication - Transfer Line 3,222.0,200.0,200.0,200.0,09-12-23,08-09-24,AS_CDS_TL_6160: FS,"AS_CDS_TL_6200: FF, AS_CDS_TL_6230: FS",SLAC,0%,52169.52169_METS Mechanical Engineer,52169_METS Mechanical Engineer,Labor,0.0d,222.0,222.0,At Completion Units,6/8/2023,5/7/2024,0,0,0,0,0,0,0,0,0,0,1.03_Accelerator Systems (AS),1.03.04_AS Cryogenic Distribution System (CDS),1.03.04.06_AS Cryogenic Distribution System Procurement and Fabrication,1.03.04.06.20_Transfer Line 3 - Procurement & Fab,AS_CDS_TL_6190_SLAC Support for Contractor Fabrication - Transfer Line 3,Mechanical,,SLAC,Labor
89861,1.03,1.03.04,1.03.04.06,1.03.04.06.20,1.03.04.06.20,Transfer Line 3 - Procurement & Fab,AS_CDS_TL_6160,R_FDR: Final Design Review - Transfer Line 3,2.0,16.0,16.0,16.0,09-08-23,09-11-23,"AS_CDS_TL_6140: FS, AS_CDS_TL_6150: FS, AS_CDS_TL_6130: FF","AS_CDS_TL_6190: FS, AS_CDS_TL_6180: FS, AS_CDS_TL_6170: FS, AS_M4_3060: FS, AS_M4_3070: FS, AS_CDS_TL_6165: FS, AS_CDS_TL_6163: FS",SLAC,0%,52169.52169_METS Mechanical Engineer,52169_METS Mechanical Engineer,Labor,0.0d,2.0,2.0,At Completion Units,6/6/2023,6/7/2023,DM-C12-20%,0,0,0,0,0,0,0,0,0,1.03_Accelerator Systems (AS),1.03.04_AS Cryogenic Distribution System (CDS),1.03.04.06_AS Cryogenic Distribution System Procurement and Fabrication,1.03.04.06.20_Transfer Line 3 - Procurement & Fab,AS_CDS_TL_6160_R_FDR: Final Design Review - Transfer Line 3,Mechanical,,SLAC,Labor
89862,1.03,1.03.04,1.03.04.06,1.03.04.06.20,1.03.04.06.20,Transfer Line 3 - Procurement & Fab,AS_CDS_TL_6140,R_PDR: Prelim. Design Review - Transfer Line 3,2.0,16.0,16.0,16.0,05-26-23,05-30-23,AS_CDS_TL_6120: FS,"AS_CDS_TL_6160: FS, AS_CDS_TL_6150: FS",SLAC,0%,52169.52169_METS Mechanical Engineer,52169_METS Mechanical Engineer,Labor,0.0d,2.0,2.0,At Completion Units,2/23/2023,2/24/2023,DM-C11-30%,0,0,0,0,0,0,0,0,0,1.03_Accelerator Systems (AS),1.03.04_AS Cryogenic Distribution System (CDS),1.03.04.06_AS Cryogenic Distribution System Procurement and Fabrication,1.03.04.06.20_Transfer Line 3 - Procurement & Fab,AS_CDS_TL_6140_R_PDR: Prelim. Design Review - Transfer Line 3,Mechanical,,SLAC,Labor
89863,1.03,1.03.04,1.03.04.06,1.03.04.06.20,1.03.04.06.20,Transfer Line 3 - Procurement & Fab,AS_CDS_TL_6130,SLAC Support for Contractor Design - Transfer Line 3,140.0,200.0,200.0,200.0,02-16-23,09-05-23,AS_CDS_TL_6120: SS,AS_CDS_TL_6160: FF,SLAC,0%,52169.52169_METS Mechanical Engineer,52169_METS Mechanical Engineer,Labor,0.0d,140.0,140.0,At Completion Units,10/28/2022,6/1/2023,0,0,0,0,0,0,0,0,0,0,1.03_Accelerator Systems (AS),1.03.04_AS Cryogenic Distribution System (CDS),1.03.04.06_AS Cryogenic Distribution System Procurement and Fabrication,1.03.04.06.20_Transfer Line 3 - Procurement & Fab,AS_CDS_TL_6130_SLAC Support for Contractor Design - Transfer Line 3,Mechanical,,SLAC,Labor
89864,1.03,1.03.04,1.03.04.06,1.03.04.06.20,1.03.04.06.20,Transfer Line 3 - Procurement & Fab,AS_CDS_TL_6220,RCV: Transfer Line 3,1.0,1337226.0,1337226.0,1337226.0,11-27-24,11-27-24,AS_CDS_TL_6210: FS,AS_CDS_TL_6230: FS,SLAC,0%,SL_MSSY.SLAC M&S (>$500K) (NO G&A) (gets ESC),SLAC M&S (>$500K) (NO G&A) (gets ESC),Nonlabor,0.0d,1.0,1.0,At Completion Units,8/6/2024,8/6/2024,0,0,0,0,0,0,0,0,0,0,1.03_Accelerator Systems (AS),1.03.04_AS Cryogenic Distribution System (CDS),1.03.04.06_AS Cryogenic Distribution System Procurement and Fabrication,1.03.04.06.20_Transfer Line 3 - Procurement & Fab,AS_CDS_TL_6220_RCV: Transfer Line 3,Material,,SLAC,M&S
89865,1.03,1.03.04,1.03.04.06,1.03.04.06.20,1.03.04.06.20,Transfer Line 3 - Procurement & Fab,AS_CDS_TL_6110,AWARD: Design - Transfer Line 3,1.0,891483.0,891483.0,891483.0,02-15-23,02-15-23,AS_CDS_TL_6100: FS,AS_CDS_TL_6120: FS,SLAC,0%,AWARD_USE.AWARD - Use this AWARD,AWARD - Use this AWARD,Nonlabor,0.0d,1.0,1.0,At Completion Units,10/27/2022,10/27/2022,AWARD > $500K,0,0,0,0,0,0,0,0,0,1.03_Accelerator Systems (AS),1.03.04_AS Cryogenic Distribution System (CDS),1.03.04.06_AS Cryogenic Distribution System Procurement and Fabrication,1.03.04.06.20_Transfer Line 3 - Procurement & Fab,AS_CDS_TL_6110_AWARD: Design - Transfer Line 3,Material,,SLAC,M&S
89866,1.03,1.03.04,1.03.04.06,1.03.04.06.20,1.03.04.06.20,Transfer Line 3 - Procurement & Fab,AS_CDS_TL_6010,RQN: Approval of Requisition - Transfer Line 3,1.0,2228709.0,2228709.0,2228709.0,06-21-22,06-21-22,AS_CDS_TL_6000: FS,AS_CDS_TL_6020: FS,SLAC,0%,REQ.Requisition,Requisition,Nonlabor,0.0d,1.0,1.0,At Completion Units,3/18/2022,3/18/2022,RQN,0,0,0,0,0,0,0,0,0,1.03_Accelerator Systems (AS),1.03.04_AS Cryogenic Distribution System (CDS),1.03.04.06_AS Cryogenic Distribution System Procurement and Fabrication,1.03.04.06.20_Transfer Line 3 - Procurement & Fab,AS_CDS_TL_6010_RQN: Approval of Requisition - Transfer Line 3,Material,,SLAC,M&S
89867,1.03,1.03.04,1.03.04.06,1.03.04.06.20,1.03.04.06.20,Transfer Line 3 - Procurement & Fab,AS_CDS_TL_6220,RCV: Transfer Line 3,1.0,0.0,0.0,0.0,11-27-24,11-27-24,AS_CDS_TL_6210: FS,AS_CDS_TL_6230: FS,SLAC,0%,SL_MSSC.SLAC M&S (<$500K) (gets G&A) (gets ESC),SLAC M&S (<$500K) (gets G&A) (gets ESC),Nonlabor,0.0d,1.0,1.0,At Completion Units,8/6/2024,8/6/2024,0,0,0,0,0,0,0,0,0,0,1.03_Accelerator Systems (AS),1.03.04_AS Cryogenic Distribution System (CDS),1.03.04.06_AS Cryogenic Distribution System Procurement and Fabrication,1.03.04.06.20_Transfer Line 3 - Procurement & Fab,AS_CDS_TL_6220_RCV: Transfer Line 3,Material,,SLAC,M&S
90187,1.03,1.03.04,1.03.04.06,1.03.04.06.30,1.03.04.06.30,Distribution Box 3 - Procurement & Fab,AS_CDS_DB_6010,Prepare Requisition (Specs/SOW/ETC) - Distribution Box 3,32.0,20.0,0.0,20.0,06-30-2021,09-01-2021,AS_CDS_DB_5070: FS,AS_CDS_DB_6020: SS,SLAC,100%,52169.52169_METS Mechanical Engineer,52169_METS Mechanical Engineer,Labor,44.0d,0.0,44.0,At Completion Units,6/23/2021,8/25/2021,0,0,0,0,0,0,0,0,0,0,1.03_Accelerator Systems (AS),1.03.04_AS Cryogenic Distribution System (CDS),1.03.04.06_AS Cryogenic Distribution System Procurement and Fabrication,1.03.04.06.30_Distribution Box 3 - Procurement & Fab,AS_CDS_DB_6010_Prepare Requisition (Specs/SOW/ETC) - Distribution Box 3,Mechanical,,SLAC,Labor
90188,1.03,1.03.04,1.03.04.06,1.03.04.06.30,1.03.04.06.30,Distribution Box 3 - Procurement & Fab,AS_CDS_DB_6030,"Prepare RFP (ASP, PRR, TPRR, etc.) - Distribution Box 3",4.0,8.0,0.0,5.5,09-01-2021,09-07-2021,AS_CDS_DB_6020: FS,AS_CDS_DB_6040: FS,SLAC,100%,52168.52168_METS - Mechanical Design,52168_METS - Mechanical Design,Labor,3.0d,0.0,3.0,At Completion Units,8/27/2021,8/27/2021,0,0,0,0,0,0,0,0,0,0,1.03_Accelerator Systems (AS),1.03.04_AS Cryogenic Distribution System (CDS),1.03.04.06_AS Cryogenic Distribution System Procurement and Fabrication,1.03.04.06.30_Distribution Box 3 - Procurement & Fab,"AS_CDS_DB_6030_Prepare RFP (ASP, PRR, TPRR, etc.) - Distribution Box 3",Mechanical,,SLAC,Labor
90189,1.03,1.03.04,1.03.04.06,1.03.04.06.30,1.03.04.06.30,Distribution Box 3 - Procurement & Fab,AS_CDS_DB_6030,"Prepare RFP (ASP, PRR, TPRR, etc.) - Distribution Box 3",4.0,4.0,0.0,5.5,09-01-2021,09-07-2021,AS_CDS_DB_6020: FS,AS_CDS_DB_6040: FS,SLAC,100%,2003.2003_Research Technical Manager,2003_Research Technical Manager,Labor,3.0d,0.0,3.0,At Completion Units,8/27/2021,8/27/2021,0,0,0,0,0,0,0,0,0,0,1.03_Accelerator Systems (AS),1.03.04_AS Cryogenic Distribution System (CDS),1.03.04.06_AS Cryogenic Distribution System Procurement and Fabrication,1.03.04.06.30_Distribution Box 3 - Procurement & Fab,"AS_CDS_DB_6030_Prepare RFP (ASP, PRR, TPRR, etc.) - Distribution Box 3",Technical Manager,Engineer,SLAC,Labor
90190,1.03,1.03.04,1.03.04.06,1.03.04.06.30,1.03.04.06.30,Distribution Box 3 - Procurement & Fab,AS_CDS_DB_6030,"Prepare RFP (ASP, PRR, TPRR, etc.) - Distribution Box 3",4.0,2.0,0.0,5.5,09-01-2021,09-07-2021,AS_CDS_DB_6020: FS,AS_CDS_DB_6040: FS,SLAC,100%,0140_E3.0140_Engineer-Electrical_E3,0140_Engineer-Electrical_E3,Labor,3.0d,0.0,3.0,At Completion Units,8/27/2021,8/27/2021,0,0,0,0,0,0,0,0,0,0,1.03_Accelerator Systems (AS),1.03.04_AS Cryogenic Distribution System (CDS),1.03.04.06_AS Cryogenic Distribution System Procurement and Fabrication,1.03.04.06.30_Distribution Box 3 - Procurement & Fab,"AS_CDS_DB_6030_Prepare RFP (ASP, PRR, TPRR, etc.) - Distribution Box 3",Electrical,,SLAC,Labor
90191,1.03,1.03.04,1.03.04.06,1.03.04.06.30,1.03.04.06.30,Distribution Box 3 - Procurement & Fab,AS_CDS_DB_6030,"Prepare RFP (ASP, PRR, TPRR, etc.) - Distribution Box 3",4.0,8.0,0.0,5.5,09-01-2021,09-07-2021,AS_CDS_DB_6020: FS,AS_CDS_DB_6040: FS,SLAC,100%,52169.52169_METS Mechanical Engineer,52169_METS Mechanical Engineer,Labor,3.0d,0.0,3.0,At Completion Units,8/27/2021,8/27/2021,0,0,0,0,0,0,0,0,0,0,1.03_Accelerator Systems (AS),1.03.04_AS Cryogenic Distribution System (CDS),1.03.04.06_AS Cryogenic Distribution System Procurement and Fabrication,1.03.04.06.30_Distribution Box 3 - Procurement & Fab,"AS_CDS_DB_6030_Prepare RFP (ASP, PRR, TPRR, etc.) - Distribution Box 3",Mechanical,,SLAC,Labor
90192,1.03,1.03.04,1.03.04.06,1.03.04.06.30,1.03.04.06.30,Distribution Box 3 - Procurement & Fab,AS_CDS_DB_6020,RQN: Approval of Requisition - Distribution Box 3,2.0,2000000.0,0.0,0.0,08-25-2021,08-26-2021,AS_CDS_DB_6010: SS,AS_CDS_DB_6030: FS,SLAC,0%,REQ.Requisition,Requisition,Nonlabor,1.0d,0.0,1.0,At Completion Units,8/26/2021,8/26/2021,RQN,0,0,0,0,0,0,0,0,0,1.03_Accelerator Systems (AS),1.03.04_AS Cryogenic Distribution System (CDS),1.03.04.06_AS Cryogenic Distribution System Procurement and Fabrication,1.03.04.06.30_Distribution Box 3 - Procurement & Fab,AS_CDS_DB_6020_RQN: Approval of Requisition - Distribution Box 3,Material,,SLAC,M&S
90193,1.03,1.03.04,1.03.04.06,1.03.04.06.30,1.03.04.06.30,Distribution Box 3 - Procurement & Fab,AS_CDS_DB_6175,RCV: Design Distribution Box 3,1.0,500000.0,500000.0,500000.0,07-05-22,07-05-22,"AS_CDS_DB_6170: FS, AS_CDS_DB_6173: FS",AS_CDS_DB_6180: FS,SLAC,0%,SL_MSSC.SLAC M&S (<$500K) (gets G&A) (gets ESC),SLAC M&S (<$500K) (gets G&A) (gets ESC),Nonlabor,0.0d,1.0,1.0,At Completion Units,nn,,0,0,0,0,0,0,0,0,0,0,1.03_Accelerator Systems (AS),1.03.04_AS Cryogenic Distribution System (CDS),1.03.04.06_AS Cryogenic Distribution System Procurement and Fabrication,1.03.04.06.30_Distribution Box 3 - Procurement & Fab,AS_CDS_DB_6175_RCV: Design Distribution Box 3,Material,,SLAC,M&S
90194,1.03,1.03.04,1.03.04.06,1.03.04.06.30,1.03.04.06.30,Distribution Box 3 - Procurement & Fab,AS_CDS_DB_6180,AWARD: Fabrication - Distribution Box 3,1.0,1500000.0,1500000.0,1500000.0,10-02-23,10-02-23,"AS_CDS_DB_6170: FS, AS_M4_3010: FS, AS_CDS_DB_6175: FS",AS_CDS_DB_6190: FS,SLAC,0%,AWARD_USE.AWARD - Use this AWARD,AWARD - Use this AWARD,Nonlabor,0.0d,1.0,1.0,At Completion Units,9/1/2022,9/1/2022,AWARD > $500K,0,0,0,0,0,0,0,0,0,1.03_Accelerator Systems (AS),1.03.04_AS Cryogenic Distribution System (CDS),1.03.04.06_AS Cryogenic Distribution System Procurement and Fabrication,1.03.04.06.30_Distribution Box 3 - Procurement & Fab,AS_CDS_DB_6180_AWARD: Fabrication - Distribution Box 3,Material,,SLAC,M&S
90195,1.03,1.03.04,1.03.04.06,1.03.04.06.30,1.03.04.06.30,Distribution Box 3 - Procurement & Fab,AS_CDS_DB_6080,Evaluations/Negotiations - Distribution Box 3,10.0,4.0,4.0,4.0,10-15-21,10-28-21,AS_CDS_DB_6070: FS,AS_CDS_DB_6090: FS,SLAC,0%,0140_E3.0140_Engineer-Electrical_E3,0140_Engineer-Electrical_E3,Labor,0.0d,10.0,10.0,At Completion Units,9/28/2021,10/11/2021,0,0,0,0,0,0,0,0,0,0,1.03_Accelerator Systems (AS),1.03.04_AS Cryogenic Distribution System (CDS),1.03.04.06_AS Cryogenic Distribution System Procurement and Fabrication,1.03.04.06.30_Distribution Box 3 - Procurement & Fab,AS_CDS_DB_6080_Evaluations/Negotiations - Distribution Box 3,Electrical,,SLAC,Labor
90196,1.03,1.03.04,1.03.04.06,1.03.04.06.30,1.03.04.06.30,Distribution Box 3 - Procurement & Fab,AS_CDS_DB_6080,Evaluations/Negotiations - Distribution Box 3,10.0,4.0,4.0,4.0,10-15-21,10-28-21,AS_CDS_DB_6070: FS,AS_CDS_DB_6090: FS,SLAC,0%,2003.2003_Research Technical Manager,2003_Research Technical Manager,Labor,0.0d,10.0,10.0,At Completion Units,9/28/2021,10/11/2021,0,0,0,0,0,0,0,0,0,0,1.03_Accelerator Systems (AS),1.03.04_AS Cryogenic Distribution System (CDS),1.03.04.06_AS Cryogenic Distribution System Procurement and Fabrication,1.03.04.06.30_Distribution Box 3 - Procurement & Fab,AS_CDS_DB_6080_Evaluations/Negotiations - Distribution Box 3,Technical Manager,Engineer,SLAC,Labor
90197,1.03,1.03.04,1.03.04.06,1.03.04.06.30,1.03.04.06.30,Distribution Box 3 - Procurement & Fab,AS_CDS_DB_6080,Evaluations/Negotiations - Distribution Box 3,10.0,32.0,32.0,32.0,10-15-21,10-28-21,AS_CDS_DB_6070: FS,AS_CDS_DB_6090: FS,SLAC,0%,52169.52169_METS Mechanical Engineer,52169_METS Mechanical Engineer,Labor,0.0d,10.0,10.0,At Completion Units,9/28/2021,10/11/2021,0,0,0,0,0,0,0,0,0,0,1.03_Accelerator Systems (AS),1.03.04_AS Cryogenic Distribution System (CDS),1.03.04.06_AS Cryogenic Distribution System Procurement and Fabrication,1.03.04.06.30_Distribution Box 3 - Procurement & Fab,AS_CDS_DB_6080_Evaluations/Negotiations - Distribution Box 3,Mechanical,,SLAC,Labor
90198,1.03,1.03.04,1.03.04.06,1.03.04.06.30,1.03.04.06.30,Distribution Box 3 - Procurement & Fab,AS_CDS_DB_6210,Factory Acceptance Test (FAT) - Distribution Box 3,2.0,8.0,8.0,8.0,01-22-25,01-23-25,"AS_CDS_DB_6200: FF, AS_CDS_DB_6190: FS","AS_CDS_DB_6220: FS, AS_CDS_DB_6215: FS",SLAC,0%,0140_E3.0140_Engineer-Electrical_E3,0140_Engineer-Electrical_E3,Labor,0.0d,2.0,2.0,At Completion Units,12/8/2023,12/11/2023,0,0,0,0,0,0,0,0,0,0,1.03_Accelerator Systems (AS),1.03.04_AS Cryogenic Distribution System (CDS),1.03.04.06_AS Cryogenic Distribution System Procurement and Fabrication,1.03.04.06.30_Distribution Box 3 - Procurement & Fab,AS_CDS_DB_6210_Factory Acceptance Test (FAT) - Distribution Box 3,Electrical,,SLAC,Labor
90199,1.03,1.03.04,1.03.04.06,1.03.04.06.30,1.03.04.06.30,Distribution Box 3 - Procurement & Fab,AS_CDS_DB_6200,SLAC Support for Contractor Fabrication - Distribution Box 3,312.0,8.0,8.0,8.0,06-20-22,09-25-23,AS_CDS_DB_6170: FS,"AS_CDS_DB_6210: FF, AS_CDS_DB_6240: FS",SLAC,0%,0140_E3.0140_Engineer-Electrical_E3,0140_Engineer-Electrical_E3,Labor,0.0d,312.0,312.0,At Completion Units,6/1/2022,9/6/2023,0,0,0,0,0,0,0,0,0,0,1.03_Accelerator Systems (AS),1.03.04_AS Cryogenic Distribution System (CDS),1.03.04.06_AS Cryogenic Distribution System Procurement and Fabrication,1.03.04.06.30_Distribution Box 3 - Procurement & Fab,AS_CDS_DB_6200_SLAC Support for Contractor Fabrication - Distribution Box 3,Electrical,,SLAC,Labor
90200,1.03,1.03.04,1.03.04.06,1.03.04.06.30,1.03.04.06.30,Distribution Box 3 - Procurement & Fab,AS_CDS_DB_6170,R_FDR: Final Design Review - Distribution Box 3,2.0,8.0,8.0,8.0,06-16-22,06-17-22,"AS_CDS_DB_6150: FS, AS_CDS_DB_6140: FF, AS_CDS_DB_6160: FS","AS_CDS_DB_6200: FS, AS_CDS_DB_6190: FS, AS_CDS_DB_6180: FS, AS_M4_3060: FS, AS_M4_3070: FS, AS_CDS_DB_6175: FS, AS_CDS_DB_6173: FS",SLAC,0%,0140_E3.0140_Engineer-Electrical_E3,0140_Engineer-Electrical_E3,Labor,0.0d,2.0,2.0,At Completion Units,5/27/2022,5/31/2022,DM-C12-20%,0,0,0,0,0,0,0,0,0,1.03_Accelerator Systems (AS),1.03.04_AS Cryogenic Distribution System (CDS),1.03.04.06_AS Cryogenic Distribution System Procurement and Fabrication,1.03.04.06.30_Distribution Box 3 - Procurement & Fab,AS_CDS_DB_6170_R_FDR: Final Design Review - Distribution Box 3,Electrical,,SLAC,Labor
90201,1.03,1.03.04,1.03.04.06,1.03.04.06.30,1.03.04.06.30,Distribution Box 3 - Procurement & Fab,AS_CDS_DB_6150,R_PDR: Prelim. Design Review - Distribution Box 3,2.0,8.0,8.0,8.0,03-07-22,03-08-22,AS_CDS_DB_6130: FS,"AS_CDS_DB_6170: FS, AS_CDS_DB_6160: FS",SLAC,0%,0140_E3.0140_Engineer-Electrical_E3,0140_Engineer-Electrical_E3,Labor,0.0d,2.0,2.0,At Completion Units,2/15/2022,2/16/2022,DM-C11-30%,0,0,0,0,0,0,0,0,0,1.03_Accelerator Systems (AS),1.03.04_AS Cryogenic Distribution System (CDS),1.03.04.06_AS Cryogenic Distribution System Procurement and Fabrication,1.03.04.06.30_Distribution Box 3 - Procurement & Fab,AS_CDS_DB_6150_R_PDR: Prelim. Design Review - Distribution Box 3,Electrical,,SLAC,Labor
90202,1.03,1.03.04,1.03.04.06,1.03.04.06.30,1.03.04.06.30,Distribution Box 3 - Procurement & Fab,AS_CDS_DB_6210,Factory Acceptance Test (FAT) - Distribution Box 3,2.0,40.0,40.0,40.0,01-22-25,01-23-25,"AS_CDS_DB_6200: FF, AS_CDS_DB_6190: FS","AS_CDS_DB_6220: FS, AS_CDS_DB_6215: FS",SLAC,0%,2003.2003_Research Technical Manager,2003_Research Technical Manager,Labor,0.0d,2.0,2.0,At Completion Units,12/8/2023,12/11/2023,0,0,0,0,0,0,0,0,0,0,1.03_Accelerator Systems (AS),1.03.04_AS Cryogenic Distribution System (CDS),1.03.04.06_AS Cryogenic Distribution System Procurement and Fabrication,1.03.04.06.30_Distribution Box 3 - Procurement & Fab,AS_CDS_DB_6210_Factory Acceptance Test (FAT) - Distribution Box 3,Technical Manager,Engineer,SLAC,Labor
90203,1.03,1.03.04,1.03.04.06,1.03.04.06.30,1.03.04.06.30,Distribution Box 3 - Procurement & Fab,AS_CDS_DB_6200,SLAC Support for Contractor Fabrication - Distribution Box 3,312.0,40.0,40.0,40.0,06-20-22,09-25-23,AS_CDS_DB_6170: FS,"AS_CDS_DB_6210: FF, AS_CDS_DB_6240: FS",SLAC,0%,2003.2003_Research Technical Manager,2003_Research Technical Manager,Labor,0.0d,312.0,312.0,At Completion Units,6/1/2022,9/6/2023,0,0,0,0,0,0,0,0,0,0,1.03_Accelerator Systems (AS),1.03.04_AS Cryogenic Distribution System (CDS),1.03.04.06_AS Cryogenic Distribution System Procurement and Fabrication,1.03.04.06.30_Distribution Box 3 - Procurement & Fab,AS_CDS_DB_6200_SLAC Support for Contractor Fabrication - Distribution Box 3,Technical Manager,Engineer,SLAC,Labor
90204,1.03,1.03.04,1.03.04.06,1.03.04.06.30,1.03.04.06.30,Distribution Box 3 - Procurement & Fab,AS_CDS_DB_6170,R_FDR: Final Design Review - Distribution Box 3,2.0,8.0,8.0,8.0,06-16-22,06-17-22,"AS_CDS_DB_6150: FS, AS_CDS_DB_6140: FF, AS_CDS_DB_6160: FS","AS_CDS_DB_6200: FS, AS_CDS_DB_6190: FS, AS_CDS_DB_6180: FS, AS_M4_3060: FS, AS_M4_3070: FS, AS_CDS_DB_6175: FS, AS_CDS_DB_6173: FS",SLAC,0%,2003.2003_Research Technical Manager,2003_Research Technical Manager,Labor,0.0d,2.0,2.0,At Completion Units,5/27/2022,5/31/2022,DM-C12-20%,0,0,0,0,0,0,0,0,0,1.03_Accelerator Systems (AS),1.03.04_AS Cryogenic Distribution System (CDS),1.03.04.06_AS Cryogenic Distribution System Procurement and Fabrication,1.03.04.06.30_Distribution Box 3 - Procurement & Fab,AS_CDS_DB_6170_R_FDR: Final Design Review - Distribution Box 3,Technical Manager,Engineer,SLAC,Labor
90205,1.03,1.03.04,1.03.04.06,1.03.04.06.30,1.03.04.06.30,Distribution Box 3 - Procurement & Fab,AS_CDS_DB_6150,R_PDR: Prelim. Design Review - Distribution Box 3,2.0,8.0,8.0,8.0,03-07-22,03-08-22,AS_CDS_DB_6130: FS,"AS_CDS_DB_6170: FS, AS_CDS_DB_6160: FS",SLAC,0%,2003.2003_Research Technical Manager,2003_Research Technical Manager,Labor,0.0d,2.0,2.0,At Completion Units,2/15/2022,2/16/2022,DM-C11-30%,0,0,0,0,0,0,0,0,0,1.03_Accelerator Systems (AS),1.03.04_AS Cryogenic Distribution System (CDS),1.03.04.06_AS Cryogenic Distribution System Procurement and Fabrication,1.03.04.06.30_Distribution Box 3 - Procurement & Fab,AS_CDS_DB_6150_R_PDR: Prelim. Design Review - Distribution Box 3,Technical Manager,Engineer,SLAC,Labor
90206,1.03,1.03.04,1.03.04.06,1.03.04.06.30,1.03.04.06.30,Distribution Box 3 - Procurement & Fab,AS_CDS_DB_6210,Factory Acceptance Test (FAT) - Distribution Box 3,2.0,4.0,4.0,4.0,01-22-25,01-23-25,"AS_CDS_DB_6200: FF, AS_CDS_DB_6190: FS","AS_CDS_DB_6220: FS, AS_CDS_DB_6215: FS",SLAC,0%,52168.52168_METS - Mechanical Design,52168_METS - Mechanical Design,Labor,0.0d,2.0,2.0,At Completion Units,12/8/2023,12/11/2023,0,0,0,0,0,0,0,0,0,0,1.03_Accelerator Systems (AS),1.03.04_AS Cryogenic Distribution System (CDS),1.03.04.06_AS Cryogenic Distribution System Procurement and Fabrication,1.03.04.06.30_Distribution Box 3 - Procurement & Fab,AS_CDS_DB_6210_Factory Acceptance Test (FAT) - Distribution Box 3,Mechanical,,SLAC,Labor
90207,1.03,1.03.04,1.03.04.06,1.03.04.06.30,1.03.04.06.30,Distribution Box 3 - Procurement & Fab,AS_CDS_DB_6200,SLAC Support for Contractor Fabrication - Distribution Box 3,312.0,100.0,100.0,100.0,06-20-22,09-25-23,AS_CDS_DB_6170: FS,"AS_CDS_DB_6210: FF, AS_CDS_DB_6240: FS",SLAC,0%,52168.52168_METS - Mechanical Design,52168_METS - Mechanical Design,Labor,0.0d,312.0,312.0,At Completion Units,6/1/2022,9/6/2023,0,0,0,0,0,0,0,0,0,0,1.03_Accelerator Systems (AS),1.03.04_AS Cryogenic Distribution System (CDS),1.03.04.06_AS Cryogenic Distribution System Procurement and Fabrication,1.03.04.06.30_Distribution Box 3 - Procurement & Fab,AS_CDS_DB_6200_SLAC Support for Contractor Fabrication - Distribution Box 3,Mechanical,,SLAC,Labor
90208,1.03,1.03.04,1.03.04.06,1.03.04.06.30,1.03.04.06.30,Distribution Box 3 - Procurement & Fab,AS_CDS_DB_6170,R_FDR: Final Design Review - Distribution Box 3,2.0,16.0,16.0,16.0,06-16-22,06-17-22,"AS_CDS_DB_6150: FS, AS_CDS_DB_6140: FF, AS_CDS_DB_6160: FS","AS_CDS_DB_6200: FS, AS_CDS_DB_6190: FS, AS_CDS_DB_6180: FS, AS_M4_3060: FS, AS_M4_3070: FS, AS_CDS_DB_6175: FS, AS_CDS_DB_6173: FS",SLAC,0%,52168.52168_METS - Mechanical Design,52168_METS - Mechanical Design,Labor,0.0d,2.0,2.0,At Completion Units,5/27/2022,5/31/2022,DM-C12-20%,0,0,0,0,0,0,0,0,0,1.03_Accelerator Systems (AS),1.03.04_AS Cryogenic Distribution System (CDS),1.03.04.06_AS Cryogenic Distribution System Procurement and Fabrication,1.03.04.06.30_Distribution Box 3 - Procurement & Fab,AS_CDS_DB_6170_R_FDR: Final Design Review - Distribution Box 3,Mechanical,,SLAC,Labor
90209,1.03,1.03.04,1.03.04.06,1.03.04.06.30,1.03.04.06.30,Distribution Box 3 - Procurement & Fab,AS_CDS_DB_6150,R_PDR: Prelim. Design Review - Distribution Box 3,2.0,16.0,16.0,16.0,03-07-22,03-08-22,AS_CDS_DB_6130: FS,"AS_CDS_DB_6170: FS, AS_CDS_DB_6160: FS",SLAC,0%,52168.52168_METS - Mechanical Design,52168_METS - Mechanical Design,Labor,0.0d,2.0,2.0,At Completion Units,2/15/2022,2/16/2022,DM-C11-30%,0,0,0,0,0,0,0,0,0,1.03_Accelerator Systems (AS),1.03.04_AS Cryogenic Distribution System (CDS),1.03.04.06_AS Cryogenic Distribution System Procurement and Fabrication,1.03.04.06.30_Distribution Box 3 - Procurement & Fab,AS_CDS_DB_6150_R_PDR: Prelim. Design Review - Distribution Box 3,Mechanical,,SLAC,Labor
90210,1.03,1.03.04,1.03.04.06,1.03.04.06.30,1.03.04.06.30,Distribution Box 3 - Procurement & Fab,AS_CDS_DB_6140,SLAC Support for Contractor Design - Distribution Box 3,140.0,70.0,70.0,70.0,11-09-21,06-13-22,AS_CDS_DB_6130: SS,AS_CDS_DB_6170: FF,SLAC,0%,52168.52168_METS - Mechanical Design,52168_METS - Mechanical Design,Labor,0.0d,140.0,140.0,At Completion Units,10/21/2021,5/24/2022,0,0,0,0,0,0,0,0,0,0,1.03_Accelerator Systems (AS),1.03.04_AS Cryogenic Distribution System (CDS),1.03.04.06_AS Cryogenic Distribution System Procurement and Fabrication,1.03.04.06.30_Distribution Box 3 - Procurement & Fab,AS_CDS_DB_6140_SLAC Support for Contractor Design - Distribution Box 3,Mechanical,,SLAC,Labor
90211,1.03,1.03.04,1.03.04.06,1.03.04.06.30,1.03.04.06.30,Distribution Box 3 - Procurement & Fab,AS_CDS_DB_6220,Shipping & Delivery - Distribution Box 3,10.0,8.0,8.0,8.0,01-24-25,02-06-25,"AS_CDS_DB_6210: FS, AS_CDS_DB_6215: FS",AS_CDS_DB_6230: FS,SLAC,0%,52169.52169_METS Mechanical Engineer,52169_METS Mechanical Engineer,Labor,0.0d,10.0,10.0,At Completion Units,12/12/2023,1/9/2024,0,0,0,0,0,0,0,0,0,0,1.03_Accelerator Systems (AS),1.03.04_AS Cryogenic Distribution System (CDS),1.03.04.06_AS Cryogenic Distribution System Procurement and Fabrication,1.03.04.06.30_Distribution Box 3 - Procurement & Fab,AS_CDS_DB_6220_Shipping & Delivery - Distribution Box 3,Mechanical,,SLAC,Labor
90212,1.03,1.03.04,1.03.04.06,1.03.04.06.30,1.03.04.06.30,Distribution Box 3 - Procurement & Fab,AS_CDS_DB_6210,Factory Acceptance Test (FAT) - Distribution Box 3,2.0,32.0,32.0,32.0,01-22-25,01-23-25,"AS_CDS_DB_6200: FF, AS_CDS_DB_6190: FS","AS_CDS_DB_6220: FS, AS_CDS_DB_6215: FS",SLAC,0%,52169.52169_METS Mechanical Engineer,52169_METS Mechanical Engineer,Labor,0.0d,2.0,2.0,At Completion Units,12/8/2023,12/11/2023,0,0,0,0,0,0,0,0,0,0,1.03_Accelerator Systems (AS),1.03.04_AS Cryogenic Distribution System (CDS),1.03.04.06_AS Cryogenic Distribution System Procurement and Fabrication,1.03.04.06.30_Distribution Box 3 - Procurement & Fab,AS_CDS_DB_6210_Factory Acceptance Test (FAT) - Distribution Box 3,Mechanical,,SLAC,Labor
90213,1.03,1.03.04,1.03.04.06,1.03.04.06.30,1.03.04.06.30,Distribution Box 3 - Procurement & Fab,AS_CDS_DB_6200,SLAC Support for Contractor Fabrication - Distribution Box 3,312.0,200.0,200.0,200.0,06-20-22,09-25-23,AS_CDS_DB_6170: FS,"AS_CDS_DB_6210: FF, AS_CDS_DB_6240: FS",SLAC,0%,52169.52169_METS Mechanical Engineer,52169_METS Mechanical Engineer,Labor,0.0d,312.0,312.0,At Completion Units,6/1/2022,9/6/2023,0,0,0,0,0,0,0,0,0,0,1.03_Accelerator Systems (AS),1.03.04_AS Cryogenic Distribution System (CDS),1.03.04.06_AS Cryogenic Distribution System Procurement and Fabrication,1.03.04.06.30_Distribution Box 3 - Procurement & Fab,AS_CDS_DB_6200_SLAC Support for Contractor Fabrication - Distribution Box 3,Mechanical,,SLAC,Labor
90214,1.03,1.03.04,1.03.04.06,1.03.04.06.30,1.03.04.06.30,Distribution Box 3 - Procurement & Fab,AS_CDS_DB_6170,R_FDR: Final Design Review - Distribution Box 3,2.0,16.0,16.0,16.0,06-16-22,06-17-22,"AS_CDS_DB_6150: FS, AS_CDS_DB_6140: FF, AS_CDS_DB_6160: FS","AS_CDS_DB_6200: FS, AS_CDS_DB_6190: FS, AS_CDS_DB_6180: FS, AS_M4_3060: FS, AS_M4_3070: FS, AS_CDS_DB_6175: FS, AS_CDS_DB_6173: FS",SLAC,0%,52169.52169_METS Mechanical Engineer,52169_METS Mechanical Engineer,Labor,0.0d,2.0,2.0,At Completion Units,5/27/2022,5/31/2022,DM-C12-20%,0,0,0,0,0,0,0,0,0,1.03_Accelerator Systems (AS),1.03.04_AS Cryogenic Distribution System (CDS),1.03.04.06_AS Cryogenic Distribution System Procurement and Fabrication,1.03.04.06.30_Distribution Box 3 - Procurement & Fab,AS_CDS_DB_6170_R_FDR: Final Design Review - Distribution Box 3,Mechanical,,SLAC,Labor
90215,1.03,1.03.04,1.03.04.06,1.03.04.06.30,1.03.04.06.30,Distribution Box 3 - Procurement & Fab,AS_CDS_DB_6150,R_PDR: Prelim. Design Review - Distribution Box 3,2.0,16.0,16.0,16.0,03-07-22,03-08-22,AS_CDS_DB_6130: FS,"AS_CDS_DB_6170: FS, AS_CDS_DB_6160: FS",SLAC,0%,52169.52169_METS Mechanical Engineer,52169_METS Mechanical Engineer,Labor,0.0d,2.0,2.0,At Completion Units,2/15/2022,2/16/2022,DM-C11-30%,0,0,0,0,0,0,0,0,0,1.03_Accelerator Systems (AS),1.03.04_AS Cryogenic Distribution System (CDS),1.03.04.06_AS Cryogenic Distribution System Procurement and Fabrication,1.03.04.06.30_Distribution Box 3 - Procurement & Fab,AS_CDS_DB_6150_R_PDR: Prelim. Design Review - Distribution Box 3,Mechanical,,SLAC,Labor
90216,1.03,1.03.04,1.03.04.06,1.03.04.06.30,1.03.04.06.30,Distribution Box 3 - Procurement & Fab,AS_CDS_DB_6140,SLAC Support for Contractor Design - Distribution Box 3,140.0,200.0,200.0,200.0,11-09-21,06-13-22,AS_CDS_DB_6130: SS,AS_CDS_DB_6170: FF,SLAC,0%,52169.52169_METS Mechanical Engineer,52169_METS Mechanical Engineer,Labor,0.0d,140.0,140.0,At Completion Units,10/21/2021,5/24/2022,0,0,0,0,0,0,0,0,0,0,1.03_Accelerator Systems (AS),1.03.04_AS Cryogenic Distribution System (CDS),1.03.04.06_AS Cryogenic Distribution System Procurement and Fabrication,1.03.04.06.30_Distribution Box 3 - Procurement & Fab,AS_CDS_DB_6140_SLAC Support for Contractor Design - Distribution Box 3,Mechanical,,SLAC,Labor
90217,1.03,1.03.04,1.03.04.06,1.03.04.06.30,1.03.04.06.30,Distribution Box 3 - Procurement & Fab,AS_CDS_DB_6230,RCV: Distribution Box 3,1.0,1500000.0,1500000.0,1500000.0,02-07-25,02-07-25,AS_CDS_DB_6220: FS,AS_CDS_DB_6240: FS,SLAC,0%,SL_MSSY.SLAC M&S (>$500K) (NO G&A) (gets ESC),SLAC M&S (>$500K) (NO G&A) (gets ESC),Nonlabor,0.0d,1.0,1.0,At Completion Units,1/10/2024,1/10/2024,0,0,0,0,0,0,0,0,0,0,1.03_Accelerator Systems (AS),1.03.04_AS Cryogenic Distribution System (CDS),1.03.04.06_AS Cryogenic Distribution System Procurement and Fabrication,1.03.04.06.30_Distribution Box 3 - Procurement & Fab,AS_CDS_DB_6230_RCV: Distribution Box 3,Material,,SLAC,M&S
90218,1.03,1.03.04,1.03.04.06,1.03.04.06.30,1.03.04.06.30,Distribution Box 3 - Procurement & Fab,AS_CDS_DB_6230,RCV: Distribution Box 3,1.0,0.0,0.0,0.0,02-07-25,02-07-25,AS_CDS_DB_6220: FS,AS_CDS_DB_6240: FS,SLAC,0%,SL_MSSC.SLAC M&S (<$500K) (gets G&A) (gets ESC),SLAC M&S (<$500K) (gets G&A) (gets ESC),Nonlabor,0.0d,1.0,1.0,At Completion Units,1/10/2024,1/10/2024,0,0,0,0,0,0,0,0,0,0,1.03_Accelerator Systems (AS),1.03.04_AS Cryogenic Distribution System (CDS),1.03.04.06_AS Cryogenic Distribution System Procurement and Fabrication,1.03.04.06.30_Distribution Box 3 - Procurement & Fab,AS_CDS_DB_6230_RCV: Distribution Box 3,Material,,SLAC,M&S
90219,1.03,1.03.04,1.03.04.06,1.03.04.06.30,1.03.04.06.30,Distribution Box 3 - Procurement & Fab,AS_CDS_DB_6120,AWARD: Design - Distribution Box 3,1.0,500000.0,500000.0,500000.0,11-08-21,11-08-21,AS_CDS_DB_6110: FS,AS_CDS_DB_6130: FS,SLAC,0%,AWARD_USE.AWARD - Use this AWARD,AWARD - Use this AWARD,Nonlabor,0.0d,1.0,1.0,At Completion Units,10/20/2021,10/20/2021,AWARD > $500K,0,0,0,0,0,0,0,0,0,1.03_Accelerator Systems (AS),1.03.04_AS Cryogenic Distribution System (CDS),1.03.04.06_AS Cryogenic Distribution System Procurement and Fabrication,1.03.04.06.30_Distribution Box 3 - Procurement & Fab,AS_CDS_DB_6120_AWARD: Design - Distribution Box 3,Material,,SLAC,M&S
90539,1.03,1.03.04,1.03.04.06,1.03.04.06.40,1.03.04.06.40,Vertical Line 3 and Tee - Procurement & Fab,AS_CDS_VL_6180,AWARD: Fabrication - Vertical Line 3 and Tee,2.0,619839.0,619839.0,619839.0,10-02-23,10-03-23,"AS_CDS_VL_6170: FS, AS_M4_3010: FS, AS_CDS_VL_6175: FS",AS_CDS_VL_6190: FS,SLAC,0%,AWARD_USE.AWARD - Use this AWARD,AWARD - Use this AWARD,Nonlabor,0.0d,2.0,2.0,At Completion Units,6/23/2023,6/26/2023,AWARD > $500K,0,0,0,0,0,0,0,0,0,1.03_Accelerator Systems (AS),1.03.04_AS Cryogenic Distribution System (CDS),1.03.04.06_AS Cryogenic Distribution System Procurement and Fabrication,1.03.04.06.40_Vertical Line 3 and Tee - Procurement & Fab,AS_CDS_VL_6180_AWARD: Fabrication - Vertical Line 3 and Tee,Material,,SLAC,M&S
90540,1.03,1.03.04,1.03.04.06,1.03.04.06.40,1.03.04.06.40,Vertical Line 3 and Tee - Procurement & Fab,AS_CDS_VL_6175,RCV: Design - Vertical Line 3 and Tee,1.0,0.0,0.0,0.0,09-12-23,09-12-23,"AS_CDS_VL_6170: FS, AS_CDS_VL_6173: FS",AS_CDS_VL_6180: FS,SLAC,0%,SL_MSSY.SLAC M&S (>$500K) (NO G&A) (gets ESC),SLAC M&S (>$500K) (NO G&A) (gets ESC),Nonlabor,0.0d,1.0,1.0,At Completion Units,nn,,0,0,0,0,0,0,0,0,0,0,1.03_Accelerator Systems (AS),1.03.04_AS Cryogenic Distribution System (CDS),1.03.04.06_AS Cryogenic Distribution System Procurement and Fabrication,1.03.04.06.40_Vertical Line 3 and Tee - Procurement & Fab,AS_CDS_VL_6175_RCV: Design - Vertical Line 3 and Tee,Material,,SLAC,M&S
90541,1.03,1.03.04,1.03.04.06,1.03.04.06.40,1.03.04.06.40,Vertical Line 3 and Tee - Procurement & Fab,AS_CDS_VL_6175,RCV: Design - Vertical Line 3 and Tee,1.0,206613.0,206613.0,206613.0,09-12-23,09-12-23,"AS_CDS_VL_6170: FS, AS_CDS_VL_6173: FS",AS_CDS_VL_6180: FS,SLAC,0%,SL_MSSC.SLAC M&S (<$500K) (gets G&A) (gets ESC),SLAC M&S (<$500K) (gets G&A) (gets ESC),Nonlabor,0.0d,1.0,1.0,At Completion Units,nn,,0,0,0,0,0,0,0,0,0,0,1.03_Accelerator Systems (AS),1.03.04_AS Cryogenic Distribution System (CDS),1.03.04.06_AS Cryogenic Distribution System Procurement and Fabrication,1.03.04.06.40_Vertical Line 3 and Tee - Procurement & Fab,AS_CDS_VL_6175_RCV: Design - Vertical Line 3 and Tee,Material,,SLAC,M&S
90542,1.03,1.03.04,1.03.04.06,1.03.04.06.40,1.03.04.06.40,Vertical Line 3 and Tee - Procurement & Fab,AS_CDS_VL_6030,"Prepare RFP (ASP, PRR, TPRR, etc.) - Vertical Line 3 and Tee",35.0,16.0,16.0,16.0,06-02-22,07-21-22,AS_CDS_VL_6020: FS,AS_CDS_VL_6040: FS,SLAC,0%,52168.52168_METS - Mechanical Design,52168_METS - Mechanical Design,Labor,0.0d,35.0,35.0,At Completion Units,3/30/2022,5/17/2022,0,0,0,0,0,0,0,0,0,0,1.03_Accelerator Systems (AS),1.03.04_AS Cryogenic Distribution System (CDS),1.03.04.06_AS Cryogenic Distribution System Procurement and Fabrication,1.03.04.06.40_Vertical Line 3 and Tee - Procurement & Fab,"AS_CDS_VL_6030_Prepare RFP (ASP, PRR, TPRR, etc.) - Vertical Line 3 and Tee",Mechanical,,SLAC,Labor
90543,1.03,1.03.04,1.03.04.06,1.03.04.06.40,1.03.04.06.40,Vertical Line 3 and Tee - Procurement & Fab,AS_CDS_VL_6030,"Prepare RFP (ASP, PRR, TPRR, etc.) - Vertical Line 3 and Tee",35.0,8.0,8.0,8.0,06-02-22,07-21-22,AS_CDS_VL_6020: FS,AS_CDS_VL_6040: FS,SLAC,0%,2003.2003_Research Technical Manager,2003_Research Technical Manager,Labor,0.0d,35.0,35.0,At Completion Units,3/30/2022,5/17/2022,0,0,0,0,0,0,0,0,0,0,1.03_Accelerator Systems (AS),1.03.04_AS Cryogenic Distribution System (CDS),1.03.04.06_AS Cryogenic Distribution System Procurement and Fabrication,1.03.04.06.40_Vertical Line 3 and Tee - Procurement & Fab,"AS_CDS_VL_6030_Prepare RFP (ASP, PRR, TPRR, etc.) - Vertical Line 3 and Tee",Technical Manager,Engineer,SLAC,Labor
90544,1.03,1.03.04,1.03.04.06,1.03.04.06.40,1.03.04.06.40,Vertical Line 3 and Tee - Procurement & Fab,AS_CDS_VL_6030,"Prepare RFP (ASP, PRR, TPRR, etc.) - Vertical Line 3 and Tee",35.0,4.0,4.0,4.0,06-02-22,07-21-22,AS_CDS_VL_6020: FS,AS_CDS_VL_6040: FS,SLAC,0%,0140_E3.0140_Engineer-Electrical_E3,0140_Engineer-Electrical_E3,Labor,0.0d,35.0,35.0,At Completion Units,3/30/2022,5/17/2022,0,0,0,0,0,0,0,0,0,0,1.03_Accelerator Systems (AS),1.03.04_AS Cryogenic Distribution System (CDS),1.03.04.06_AS Cryogenic Distribution System Procurement and Fabrication,1.03.04.06.40_Vertical Line 3 and Tee - Procurement & Fab,"AS_CDS_VL_6030_Prepare RFP (ASP, PRR, TPRR, etc.) - Vertical Line 3 and Tee",Electrical,,SLAC,Labor
90545,1.03,1.03.04,1.03.04.06,1.03.04.06.40,1.03.04.06.40,Vertical Line 3 and Tee - Procurement & Fab,AS_CDS_VL_6080,Evaluations/Negotiations - Vertical Line 3 and Tee,55.0,8.0,8.0,8.0,09-26-22,12-13-22,AS_CDS_VL_6070: FS,AS_CDS_VL_6090: FS,SLAC,0%,0140_E3.0140_Engineer-Electrical_E3,0140_Engineer-Electrical_E3,Labor,0.0d,55.0,55.0,At Completion Units,7/22/2022,10/7/2022,0,0,0,0,0,0,0,0,0,0,1.03_Accelerator Systems (AS),1.03.04_AS Cryogenic Distribution System (CDS),1.03.04.06_AS Cryogenic Distribution System Procurement and Fabrication,1.03.04.06.40_Vertical Line 3 and Tee - Procurement & Fab,AS_CDS_VL_6080_Evaluations/Negotiations - Vertical Line 3 and Tee,Electrical,,SLAC,Labor
90546,1.03,1.03.04,1.03.04.06,1.03.04.06.40,1.03.04.06.40,Vertical Line 3 and Tee - Procurement & Fab,AS_CDS_VL_6080,Evaluations/Negotiations - Vertical Line 3 and Tee,55.0,8.0,8.0,8.0,09-26-22,12-13-22,AS_CDS_VL_6070: FS,AS_CDS_VL_6090: FS,SLAC,0%,2003.2003_Research Technical Manager,2003_Research Technical Manager,Labor,0.0d,55.0,55.0,At Completion Units,7/22/2022,10/7/2022,0,0,0,0,0,0,0,0,0,0,1.03_Accelerator Systems (AS),1.03.04_AS Cryogenic Distribution System (CDS),1.03.04.06_AS Cryogenic Distribution System Procurement and Fabrication,1.03.04.06.40_Vertical Line 3 and Tee - Procurement & Fab,AS_CDS_VL_6080_Evaluations/Negotiations - Vertical Line 3 and Tee,Technical Manager,Engineer,SLAC,Labor
90547,1.03,1.03.04,1.03.04.06,1.03.04.06.40,1.03.04.06.40,Vertical Line 3 and Tee - Procurement & Fab,AS_CDS_VL_6080,Evaluations/Negotiations - Vertical Line 3 and Tee,55.0,80.0,80.0,80.0,09-26-22,12-13-22,AS_CDS_VL_6070: FS,AS_CDS_VL_6090: FS,SLAC,0%,52169.52169_METS Mechanical Engineer,52169_METS Mechanical Engineer,Labor,0.0d,55.0,55.0,At Completion Units,7/22/2022,10/7/2022,0,0,0,0,0,0,0,0,0,0,1.03_Accelerator Systems (AS),1.03.04_AS Cryogenic Distribution System (CDS),1.03.04.06_AS Cryogenic Distribution System Procurement and Fabrication,1.03.04.06.40_Vertical Line 3 and Tee - Procurement & Fab,AS_CDS_VL_6080_Evaluations/Negotiations - Vertical Line 3 and Tee,Mechanical,,SLAC,Labor
90548,1.03,1.03.04,1.03.04.06,1.03.04.06.40,1.03.04.06.40,Vertical Line 3 and Tee - Procurement & Fab,AS_CDS_VL_6030,"Prepare RFP (ASP, PRR, TPRR, etc.) - Vertical Line 3 and Tee",35.0,16.0,16.0,16.0,06-02-22,07-21-22,AS_CDS_VL_6020: FS,AS_CDS_VL_6040: FS,SLAC,0%,52169.52169_METS Mechanical Engineer,52169_METS Mechanical Engineer,Labor,0.0d,35.0,35.0,At Completion Units,3/30/2022,5/17/2022,0,0,0,0,0,0,0,0,0,0,1.03_Accelerator Systems (AS),1.03.04_AS Cryogenic Distribution System (CDS),1.03.04.06_AS Cryogenic Distribution System Procurement and Fabrication,1.03.04.06.40_Vertical Line 3 and Tee - Procurement & Fab,"AS_CDS_VL_6030_Prepare RFP (ASP, PRR, TPRR, etc.) - Vertical Line 3 and Tee",Mechanical,,SLAC,Labor
90549,1.03,1.03.04,1.03.04.06,1.03.04.06.40,1.03.04.06.40,Vertical Line 3 and Tee - Procurement & Fab,AS_CDS_VL_6010,Prepare Requisition (Specs/SOW/ETC) - Vertical Line 3 and Tee,45.0,40.0,40.0,40.0,03-29-22,05-31-22,"AS_CDS_VL_5060: FS, AS_CDS_VL_5070: FS",AS_CDS_VL_6020: FS,SLAC,0%,52169.52169_METS Mechanical Engineer,52169_METS Mechanical Engineer,Labor,0.0d,45.0,45.0,At Completion Units,1/24/2022,3/28/2022,0,0,0,0,0,0,0,0,0,0,1.03_Accelerator Systems (AS),1.03.04_AS Cryogenic Distribution System (CDS),1.03.04.06_AS Cryogenic Distribution System Procurement and Fabrication,1.03.04.06.40_Vertical Line 3 and Tee - Procurement & Fab,AS_CDS_VL_6010_Prepare Requisition (Specs/SOW/ETC) - Vertical Line 3 and Tee,Mechanical,,SLAC,Labor
90550,1.03,1.03.04,1.03.04.06,1.03.04.06.40,1.03.04.06.40,Vertical Line 3 and Tee - Procurement & Fab,AS_CDS_VL_6210,Factory Acceptance Test (FAT) - Vertical Line 3 and Tee,2.0,16.0,16.0,16.0,07-05-24,07-08-24,"AS_CDS_VL_6200: FF, AS_CDS_VL_6190: FS",AS_CDS_VL_6220: FS,SLAC,0%,0140_E3.0140_Engineer-Electrical_E3,0140_Engineer-Electrical_E3,Labor,0.0d,2.0,2.0,At Completion Units,3/28/2024,3/29/2024,0,0,0,0,0,0,0,0,0,0,1.03_Accelerator Systems (AS),1.03.04_AS Cryogenic Distribution System (CDS),1.03.04.06_AS Cryogenic Distribution System Procurement and Fabrication,1.03.04.06.40_Vertical Line 3 and Tee - Procurement & Fab,AS_CDS_VL_6210_Factory Acceptance Test (FAT) - Vertical Line 3 and Tee,Electrical,,SLAC,Labor
90551,1.03,1.03.04,1.03.04.06,1.03.04.06.40,1.03.04.06.40,Vertical Line 3 and Tee - Procurement & Fab,AS_CDS_VL_6200,SLAC Support for Contractor Fabrication - Vertical Line 3 and Tee,182.0,16.0,16.0,16.0,08-28-23,05-30-24,AS_CDS_VL_6170: FS,"AS_CDS_VL_6210: FF, AS_CDS_VL_6240: FS",SLAC,0%,0140_E3.0140_Engineer-Electrical_E3,0140_Engineer-Electrical_E3,Labor,0.0d,182.0,182.0,At Completion Units,6/23/2023,3/27/2024,0,0,0,0,0,0,0,0,0,0,1.03_Accelerator Systems (AS),1.03.04_AS Cryogenic Distribution System (CDS),1.03.04.06_AS Cryogenic Distribution System Procurement and Fabrication,1.03.04.06.40_Vertical Line 3 and Tee - Procurement & Fab,AS_CDS_VL_6200_SLAC Support for Contractor Fabrication - Vertical Line 3 and Tee,Electrical,,SLAC,Labor
90552,1.03,1.03.04,1.03.04.06,1.03.04.06.40,1.03.04.06.40,Vertical Line 3 and Tee - Procurement & Fab,AS_CDS_VL_6170,R_FDR: Final Design Review - Vertical Line 3 and Tee,2.0,16.0,16.0,16.0,08-24-23,08-25-23,"AS_CDS_VL_6150: FS, AS_CDS_VL_6160: FS, AS_CDS_VL_6140: FF","AS_CDS_VL_6200: FS, AS_CDS_VL_6190: FS, AS_CDS_VL_6180: FS, AS_CDS_TU_5010: FS, AS_CDS_SHLD_9000: FS, AS_M4_3060: FS, AS_M4_3070: FS, AS_CDS_VL_6175: FS, AS_CDS_VL_6173: FS",SLAC,0%,0140_E3.0140_Engineer-Electrical_E3,0140_Engineer-Electrical_E3,Labor,0.0d,2.0,2.0,At Completion Units,6/21/2023,6/22/2023,DM-C12-20%,0,0,0,0,0,0,0,0,0,1.03_Accelerator Systems (AS),1.03.04_AS Cryogenic Distribution System (CDS),1.03.04.06_AS Cryogenic Distribution System Procurement and Fabrication,1.03.04.06.40_Vertical Line 3 and Tee - Procurement & Fab,AS_CDS_VL_6170_R_FDR: Final Design Review - Vertical Line 3 and Tee,Electrical,,SLAC,Labor
90553,1.03,1.03.04,1.03.04.06,1.03.04.06.40,1.03.04.06.40,Vertical Line 3 and Tee - Procurement & Fab,AS_CDS_VL_6150,R_PDR: Prelim. Design Review - Vertical Line 3 and Tee,2.0,16.0,16.0,16.0,05-12-23,05-15-23,AS_CDS_VL_6130: FS,"AS_CDS_VL_6170: FS, AS_CDS_VL_6160: FS",SLAC,0%,0140_E3.0140_Engineer-Electrical_E3,0140_Engineer-Electrical_E3,Labor,0.0d,2.0,2.0,At Completion Units,3/10/2023,3/13/2023,DM-C11-30%,0,0,0,0,0,0,0,0,0,1.03_Accelerator Systems (AS),1.03.04_AS Cryogenic Distribution System (CDS),1.03.04.06_AS Cryogenic Distribution System Procurement and Fabrication,1.03.04.06.40_Vertical Line 3 and Tee - Procurement & Fab,AS_CDS_VL_6150_R_PDR: Prelim. Design Review - Vertical Line 3 and Tee,Electrical,,SLAC,Labor
90554,1.03,1.03.04,1.03.04.06,1.03.04.06.40,1.03.04.06.40,Vertical Line 3 and Tee - Procurement & Fab,AS_CDS_VL_6210,Factory Acceptance Test (FAT) - Vertical Line 3 and Tee,2.0,80.0,80.0,80.0,07-05-24,07-08-24,"AS_CDS_VL_6200: FF, AS_CDS_VL_6190: FS",AS_CDS_VL_6220: FS,SLAC,0%,2003.2003_Research Technical Manager,2003_Research Technical Manager,Labor,0.0d,2.0,2.0,At Completion Units,3/28/2024,3/29/2024,0,0,0,0,0,0,0,0,0,0,1.03_Accelerator Systems (AS),1.03.04_AS Cryogenic Distribution System (CDS),1.03.04.06_AS Cryogenic Distribution System Procurement and Fabrication,1.03.04.06.40_Vertical Line 3 and Tee - Procurement & Fab,AS_CDS_VL_6210_Factory Acceptance Test (FAT) - Vertical Line 3 and Tee,Technical Manager,Engineer,SLAC,Labor
90555,1.03,1.03.04,1.03.04.06,1.03.04.06.40,1.03.04.06.40,Vertical Line 3 and Tee - Procurement & Fab,AS_CDS_VL_6200,SLAC Support for Contractor Fabrication - Vertical Line 3 and Tee,182.0,80.0,80.0,80.0,08-28-23,05-30-24,AS_CDS_VL_6170: FS,"AS_CDS_VL_6210: FF, AS_CDS_VL_6240: FS",SLAC,0%,2003.2003_Research Technical Manager,2003_Research Technical Manager,Labor,0.0d,182.0,182.0,At Completion Units,6/23/2023,3/27/2024,0,0,0,0,0,0,0,0,0,0,1.03_Accelerator Systems (AS),1.03.04_AS Cryogenic Distribution System (CDS),1.03.04.06_AS Cryogenic Distribution System Procurement and Fabrication,1.03.04.06.40_Vertical Line 3 and Tee - Procurement & Fab,AS_CDS_VL_6200_SLAC Support for Contractor Fabrication - Vertical Line 3 and Tee,Technical Manager,Engineer,SLAC,Labor
90556,1.03,1.03.04,1.03.04.06,1.03.04.06.40,1.03.04.06.40,Vertical Line 3 and Tee - Procurement & Fab,AS_CDS_VL_6170,R_FDR: Final Design Review - Vertical Line 3 and Tee,2.0,16.0,16.0,16.0,08-24-23,08-25-23,"AS_CDS_VL_6150: FS, AS_CDS_VL_6160: FS, AS_CDS_VL_6140: FF","AS_CDS_VL_6200: FS, AS_CDS_VL_6190: FS, AS_CDS_VL_6180: FS, AS_CDS_TU_5010: FS, AS_CDS_SHLD_9000: FS, AS_M4_3060: FS, AS_M4_3070: FS, AS_CDS_VL_6175: FS, AS_CDS_VL_6173: FS",SLAC,0%,2003.2003_Research Technical Manager,2003_Research Technical Manager,Labor,0.0d,2.0,2.0,At Completion Units,6/21/2023,6/22/2023,DM-C12-20%,0,0,0,0,0,0,0,0,0,1.03_Accelerator Systems (AS),1.03.04_AS Cryogenic Distribution System (CDS),1.03.04.06_AS Cryogenic Distribution System Procurement and Fabrication,1.03.04.06.40_Vertical Line 3 and Tee - Procurement & Fab,AS_CDS_VL_6170_R_FDR: Final Design Review - Vertical Line 3 and Tee,Technical Manager,Engineer,SLAC,Labor
90557,1.03,1.03.04,1.03.04.06,1.03.04.06.40,1.03.04.06.40,Vertical Line 3 and Tee - Procurement & Fab,AS_CDS_VL_6150,R_PDR: Prelim. Design Review - Vertical Line 3 and Tee,2.0,16.0,16.0,16.0,05-12-23,05-15-23,AS_CDS_VL_6130: FS,"AS_CDS_VL_6170: FS, AS_CDS_VL_6160: FS",SLAC,0%,2003.2003_Research Technical Manager,2003_Research Technical Manager,Labor,0.0d,2.0,2.0,At Completion Units,3/10/2023,3/13/2023,DM-C11-30%,0,0,0,0,0,0,0,0,0,1.03_Accelerator Systems (AS),1.03.04_AS Cryogenic Distribution System (CDS),1.03.04.06_AS Cryogenic Distribution System Procurement and Fabrication,1.03.04.06.40_Vertical Line 3 and Tee - Procurement & Fab,AS_CDS_VL_6150_R_PDR: Prelim. Design Review - Vertical Line 3 and Tee,Technical Manager,Engineer,SLAC,Labor
90558,1.03,1.03.04,1.03.04.06,1.03.04.06.40,1.03.04.06.40,Vertical Line 3 and Tee - Procurement & Fab,AS_CDS_VL_6210,Factory Acceptance Test (FAT) - Vertical Line 3 and Tee,2.0,8.0,8.0,8.0,07-05-24,07-08-24,"AS_CDS_VL_6200: FF, AS_CDS_VL_6190: FS",AS_CDS_VL_6220: FS,SLAC,0%,52168.52168_METS - Mechanical Design,52168_METS - Mechanical Design,Labor,0.0d,2.0,2.0,At Completion Units,3/28/2024,3/29/2024,0,0,0,0,0,0,0,0,0,0,1.03_Accelerator Systems (AS),1.03.04_AS Cryogenic Distribution System (CDS),1.03.04.06_AS Cryogenic Distribution System Procurement and Fabrication,1.03.04.06.40_Vertical Line 3 and Tee - Procurement & Fab,AS_CDS_VL_6210_Factory Acceptance Test (FAT) - Vertical Line 3 and Tee,Mechanical,,SLAC,Labor
90559,1.03,1.03.04,1.03.04.06,1.03.04.06.40,1.03.04.06.40,Vertical Line 3 and Tee - Procurement & Fab,AS_CDS_VL_6200,SLAC Support for Contractor Fabrication - Vertical Line 3 and Tee,182.0,200.0,200.0,200.0,08-28-23,05-30-24,AS_CDS_VL_6170: FS,"AS_CDS_VL_6210: FF, AS_CDS_VL_6240: FS",SLAC,0%,52168.52168_METS - Mechanical Design,52168_METS - Mechanical Design,Labor,0.0d,182.0,182.0,At Completion Units,6/23/2023,3/27/2024,0,0,0,0,0,0,0,0,0,0,1.03_Accelerator Systems (AS),1.03.04_AS Cryogenic Distribution System (CDS),1.03.04.06_AS Cryogenic Distribution System Procurement and Fabrication,1.03.04.06.40_Vertical Line 3 and Tee - Procurement & Fab,AS_CDS_VL_6200_SLAC Support for Contractor Fabrication - Vertical Line 3 and Tee,Mechanical,,SLAC,Labor
90560,1.03,1.03.04,1.03.04.06,1.03.04.06.40,1.03.04.06.40,Vertical Line 3 and Tee - Procurement & Fab,AS_CDS_VL_6170,R_FDR: Final Design Review - Vertical Line 3 and Tee,2.0,32.0,32.0,32.0,08-24-23,08-25-23,"AS_CDS_VL_6150: FS, AS_CDS_VL_6160: FS, AS_CDS_VL_6140: FF","AS_CDS_VL_6200: FS, AS_CDS_VL_6190: FS, AS_CDS_VL_6180: FS, AS_CDS_TU_5010: FS, AS_CDS_SHLD_9000: FS, AS_M4_3060: FS, AS_M4_3070: FS, AS_CDS_VL_6175: FS, AS_CDS_VL_6173: FS",SLAC,0%,52168.52168_METS - Mechanical Design,52168_METS - Mechanical Design,Labor,0.0d,2.0,2.0,At Completion Units,6/21/2023,6/22/2023,DM-C12-20%,0,0,0,0,0,0,0,0,0,1.03_Accelerator Systems (AS),1.03.04_AS Cryogenic Distribution System (CDS),1.03.04.06_AS Cryogenic Distribution System Procurement and Fabrication,1.03.04.06.40_Vertical Line 3 and Tee - Procurement & Fab,AS_CDS_VL_6170_R_FDR: Final Design Review - Vertical Line 3 and Tee,Mechanical,,SLAC,Labor
90561,1.03,1.03.04,1.03.04.06,1.03.04.06.40,1.03.04.06.40,Vertical Line 3 and Tee - Procurement & Fab,AS_CDS_VL_6150,R_PDR: Prelim. Design Review - Vertical Line 3 and Tee,2.0,32.0,32.0,32.0,05-12-23,05-15-23,AS_CDS_VL_6130: FS,"AS_CDS_VL_6170: FS, AS_CDS_VL_6160: FS",SLAC,0%,52168.52168_METS - Mechanical Design,52168_METS - Mechanical Design,Labor,0.0d,2.0,2.0,At Completion Units,3/10/2023,3/13/2023,DM-C11-30%,0,0,0,0,0,0,0,0,0,1.03_Accelerator Systems (AS),1.03.04_AS Cryogenic Distribution System (CDS),1.03.04.06_AS Cryogenic Distribution System Procurement and Fabrication,1.03.04.06.40_Vertical Line 3 and Tee - Procurement & Fab,AS_CDS_VL_6150_R_PDR: Prelim. Design Review - Vertical Line 3 and Tee,Mechanical,,SLAC,Labor
90562,1.03,1.03.04,1.03.04.06,1.03.04.06.40,1.03.04.06.40,Vertical Line 3 and Tee - Procurement & Fab,AS_CDS_VL_6140,SLAC Support for Contractor Design - Vertical Line 3 and Tee,140.0,140.0,140.0,140.0,02-02-23,08-21-23,AS_CDS_VL_6130: SS,AS_CDS_VL_6170: FF,SLAC,0%,52168.52168_METS - Mechanical Design,52168_METS - Mechanical Design,Labor,0.0d,140.0,140.0,At Completion Units,11/14/2022,6/16/2023,0,0,0,0,0,0,0,0,0,0,1.03_Accelerator Systems (AS),1.03.04_AS Cryogenic Distribution System (CDS),1.03.04.06_AS Cryogenic Distribution System Procurement and Fabrication,1.03.04.06.40_Vertical Line 3 and Tee - Procurement & Fab,AS_CDS_VL_6140_SLAC Support for Contractor Design - Vertical Line 3 and Tee,Mechanical,,SLAC,Labor
90563,1.03,1.03.04,1.03.04.06,1.03.04.06.40,1.03.04.06.40,Vertical Line 3 and Tee - Procurement & Fab,AS_CDS_VL_6220,Shipping & Delivery - Vertical Line 3 and Tee,60.0,16.0,16.0,16.0,07-09-24,10-01-24,AS_CDS_VL_6210: FS,AS_CDS_VL_6230: FS,SLAC,0%,52169.52169_METS Mechanical Engineer,52169_METS Mechanical Engineer,Labor,0.0d,60.0,60.0,At Completion Units,4/1/2024,6/24/2024,0,0,0,0,0,0,0,0,0,0,1.03_Accelerator Systems (AS),1.03.04_AS Cryogenic Distribution System (CDS),1.03.04.06_AS Cryogenic Distribution System Procurement and Fabrication,1.03.04.06.40_Vertical Line 3 and Tee - Procurement & Fab,AS_CDS_VL_6220_Shipping & Delivery - Vertical Line 3 and Tee,Mechanical,,SLAC,Labor
90564,1.03,1.03.04,1.03.04.06,1.03.04.06.40,1.03.04.06.40,Vertical Line 3 and Tee - Procurement & Fab,AS_CDS_VL_6210,Factory Acceptance Test (FAT) - Vertical Line 3 and Tee,2.0,64.0,64.0,64.0,07-05-24,07-08-24,"AS_CDS_VL_6200: FF, AS_CDS_VL_6190: FS",AS_CDS_VL_6220: FS,SLAC,0%,52169.52169_METS Mechanical Engineer,52169_METS Mechanical Engineer,Labor,0.0d,2.0,2.0,At Completion Units,3/28/2024,3/29/2024,0,0,0,0,0,0,0,0,0,0,1.03_Accelerator Systems (AS),1.03.04_AS Cryogenic Distribution System (CDS),1.03.04.06_AS Cryogenic Distribution System Procurement and Fabrication,1.03.04.06.40_Vertical Line 3 and Tee - Procurement & Fab,AS_CDS_VL_6210_Factory Acceptance Test (FAT) - Vertical Line 3 and Tee,Mechanical,,SLAC,Labor
90565,1.03,1.03.04,1.03.04.06,1.03.04.06.40,1.03.04.06.40,Vertical Line 3 and Tee - Procurement & Fab,AS_CDS_VL_6200,SLAC Support for Contractor Fabrication - Vertical Line 3 and Tee,182.0,600.0,600.0,600.0,08-28-23,05-30-24,AS_CDS_VL_6170: FS,"AS_CDS_VL_6210: FF, AS_CDS_VL_6240: FS",SLAC,0%,52169.52169_METS Mechanical Engineer,52169_METS Mechanical Engineer,Labor,0.0d,182.0,182.0,At Completion Units,6/23/2023,3/27/2024,0,0,0,0,0,0,0,0,0,0,1.03_Accelerator Systems (AS),1.03.04_AS Cryogenic Distribution System (CDS),1.03.04.06_AS Cryogenic Distribution System Procurement and Fabrication,1.03.04.06.40_Vertical Line 3 and Tee - Procurement & Fab,AS_CDS_VL_6200_SLAC Support for Contractor Fabrication - Vertical Line 3 and Tee,Mechanical,,SLAC,Labor
90566,1.03,1.03.04,1.03.04.06,1.03.04.06.40,1.03.04.06.40,Vertical Line 3 and Tee - Procurement & Fab,AS_CDS_VL_6170,R_FDR: Final Design Review - Vertical Line 3 and Tee,2.0,32.0,32.0,32.0,08-24-23,08-25-23,"AS_CDS_VL_6150: FS, AS_CDS_VL_6160: FS, AS_CDS_VL_6140: FF","AS_CDS_VL_6200: FS, AS_CDS_VL_6190: FS, AS_CDS_VL_6180: FS, AS_CDS_TU_5010: FS, AS_CDS_SHLD_9000: FS, AS_M4_3060: FS, AS_M4_3070: FS, AS_CDS_VL_6175: FS, AS_CDS_VL_6173: FS",SLAC,0%,52169.52169_METS Mechanical Engineer,52169_METS Mechanical Engineer,Labor,0.0d,2.0,2.0,At Completion Units,6/21/2023,6/22/2023,DM-C12-20%,0,0,0,0,0,0,0,0,0,1.03_Accelerator Systems (AS),1.03.04_AS Cryogenic Distribution System (CDS),1.03.04.06_AS Cryogenic Distribution System Procurement and Fabrication,1.03.04.06.40_Vertical Line 3 and Tee - Procurement & Fab,AS_CDS_VL_6170_R_FDR: Final Design Review - Vertical Line 3 and Tee,Mechanical,,SLAC,Labor
90567,1.03,1.03.04,1.03.04.06,1.03.04.06.40,1.03.04.06.40,Vertical Line 3 and Tee - Procurement & Fab,AS_CDS_VL_6150,R_PDR: Prelim. Design Review - Vertical Line 3 and Tee,2.0,32.0,32.0,32.0,05-12-23,05-15-23,AS_CDS_VL_6130: FS,"AS_CDS_VL_6170: FS, AS_CDS_VL_6160: FS",SLAC,0%,52169.52169_METS Mechanical Engineer,52169_METS Mechanical Engineer,Labor,0.0d,2.0,2.0,At Completion Units,3/10/2023,3/13/2023,DM-C11-30%,0,0,0,0,0,0,0,0,0,1.03_Accelerator Systems (AS),1.03.04_AS Cryogenic Distribution System (CDS),1.03.04.06_AS Cryogenic Distribution System Procurement and Fabrication,1.03.04.06.40_Vertical Line 3 and Tee - Procurement & Fab,AS_CDS_VL_6150_R_PDR: Prelim. Design Review - Vertical Line 3 and Tee,Mechanical,,SLAC,Labor
90568,1.03,1.03.04,1.03.04.06,1.03.04.06.40,1.03.04.06.40,Vertical Line 3 and Tee - Procurement & Fab,AS_CDS_VL_6140,SLAC Support for Contractor Design - Vertical Line 3 and Tee,140.0,400.0,400.0,400.0,02-02-23,08-21-23,AS_CDS_VL_6130: SS,AS_CDS_VL_6170: FF,SLAC,0%,52169.52169_METS Mechanical Engineer,52169_METS Mechanical Engineer,Labor,0.0d,140.0,140.0,At Completion Units,11/14/2022,6/16/2023,0,0,0,0,0,0,0,0,0,0,1.03_Accelerator Systems (AS),1.03.04_AS Cryogenic Distribution System (CDS),1.03.04.06_AS Cryogenic Distribution System Procurement and Fabrication,1.03.04.06.40_Vertical Line 3 and Tee - Procurement & Fab,AS_CDS_VL_6140_SLAC Support for Contractor Design - Vertical Line 3 and Tee,Mechanical,,SLAC,Labor
90569,1.03,1.03.04,1.03.04.06,1.03.04.06.40,1.03.04.06.40,Vertical Line 3 and Tee - Procurement & Fab,AS_CDS_VL_6230,RCV: Vertical Line 3 and Tee,1.0,326452.0,326452.0,326452.0,10-02-24,10-02-24,AS_CDS_VL_6220: FS,AS_CDS_VL_6240: FS,SLAC,0%,SL_MSSY.SLAC M&S (>$500K) (NO G&A) (gets ESC),SLAC M&S (>$500K) (NO G&A) (gets ESC),Nonlabor,0.0d,1.0,1.0,At Completion Units,6/25/2024,6/25/2024,0,0,0,0,0,0,0,0,0,0,1.03_Accelerator Systems (AS),1.03.04_AS Cryogenic Distribution System (CDS),1.03.04.06_AS Cryogenic Distribution System Procurement and Fabrication,1.03.04.06.40_Vertical Line 3 and Tee - Procurement & Fab,AS_CDS_VL_6230_RCV: Vertical Line 3 and Tee,Material,,SLAC,M&S
90570,1.03,1.03.04,1.03.04.06,1.03.04.06.40,1.03.04.06.40,Vertical Line 3 and Tee - Procurement & Fab,AS_CDS_VL_6230,RCV: Vertical Line 3 and Tee,1.0,293387.0,293387.0,293387.0,10-02-24,10-02-24,AS_CDS_VL_6220: FS,AS_CDS_VL_6240: FS,SLAC,0%,SL_MSSC.SLAC M&S (<$500K) (gets G&A) (gets ESC),SLAC M&S (<$500K) (gets G&A) (gets ESC),Nonlabor,0.0d,1.0,1.0,At Completion Units,6/25/2024,6/25/2024,0,0,0,0,0,0,0,0,0,0,1.03_Accelerator Systems (AS),1.03.04_AS Cryogenic Distribution System (CDS),1.03.04.06_AS Cryogenic Distribution System Procurement and Fabrication,1.03.04.06.40_Vertical Line 3 and Tee - Procurement & Fab,AS_CDS_VL_6230_RCV: Vertical Line 3 and Tee,Material,,SLAC,M&S
90571,1.03,1.03.04,1.03.04.06,1.03.04.06.40,1.03.04.06.40,Vertical Line 3 and Tee - Procurement & Fab,AS_CDS_VL_6120,AWARD: Design - Vertical Line 3 and Tee,5.0,206613.0,206613.0,206613.0,01-26-23,02-01-23,AS_CDS_VL_6110: FS,AS_CDS_VL_6130: FS,SLAC,0%,AWARD_USE.AWARD - Use this AWARD,AWARD - Use this AWARD,Nonlabor,0.0d,5.0,5.0,At Completion Units,11/7/2022,11/11/2022,AWARD > $500K,0,0,0,0,0,0,0,0,0,1.03_Accelerator Systems (AS),1.03.04_AS Cryogenic Distribution System (CDS),1.03.04.06_AS Cryogenic Distribution System Procurement and Fabrication,1.03.04.06.40_Vertical Line 3 and Tee - Procurement & Fab,AS_CDS_VL_6120_AWARD: Design - Vertical Line 3 and Tee,Material,,SLAC,M&S
90572,1.03,1.03.04,1.03.04.06,1.03.04.06.40,1.03.04.06.40,Vertical Line 3 and Tee - Procurement & Fab,AS_CDS_VL_6020,RQN: Approval of Requisition - Vertical Line 3 and Tee,1.0,826452.0,826452.0,826452.0,06-01-22,06-01-22,AS_CDS_VL_6010: FS,AS_CDS_VL_6030: FS,SLAC,0%,REQ.Requisition,Requisition,Nonlabor,0.0d,1.0,1.0,At Completion Units,3/29/2022,3/29/2022,RQN,0,0,0,0,0,0,0,0,0,1.03_Accelerator Systems (AS),1.03.04_AS Cryogenic Distribution System (CDS),1.03.04.06_AS Cryogenic Distribution System Procurement and Fabrication,1.03.04.06.40_Vertical Line 3 and Tee - Procurement & Fab,AS_CDS_VL_6020_RQN: Approval of Requisition - Vertical Line 3 and Tee,Material,,SLAC,M&S
90892,1.03,1.03.04,1.03.04.06,1.03.04.06.50,1.03.04.06.50,Vacuum Box 2 - Procurement & Fab,AS_CDS_VB_6150,AWARD: Fabrication - Vacuum Box 2,2.0,234113.0,234113.0,234113.0,10-02-23,10-03-23,"AS_CDS_VB_6140: FS, AS_M4_3010: FS, AS_CDS_VB_6145: FS",AS_CDS_VB_6160: FS,SLAC,0%,AWARD_USE.AWARD - Use this AWARD,AWARD - Use this AWARD,Nonlabor,0.0d,2.0,2.0,At Completion Units,1/11/2023,1/12/2023,AWARD > $500K,0,0,0,0,0,0,0,0,0,1.03_Accelerator Systems (AS),1.03.04_AS Cryogenic Distribution System (CDS),1.03.04.06_AS Cryogenic Distribution System Procurement and Fabrication,1.03.04.06.50_Vacuum Box 2 - Procurement & Fab,AS_CDS_VB_6150_AWARD: Fabrication - Vacuum Box 2,Material,,SLAC,M&S
90893,1.03,1.03.04,1.03.04.06,1.03.04.06.50,1.03.04.06.50,Vacuum Box 2 - Procurement & Fab,AS_CDS_VB_6145,RCV: Design - Vacuum Box 2,1.0,78037.0,78037.0,78037.0,04-28-23,04-28-23,"AS_CDS_VB_6140: FS, AS_CDS_VB_6143: FS",AS_CDS_VB_6150: FS,SLAC,0%,SL_MSSC.SLAC M&S (<$500K) (gets G&A) (gets ESC),SLAC M&S (<$500K) (gets G&A) (gets ESC),Nonlabor,0.0d,1.0,1.0,At Completion Units,nn,,0,0,0,0,0,0,0,0,0,0,1.03_Accelerator Systems (AS),1.03.04_AS Cryogenic Distribution System (CDS),1.03.04.06_AS Cryogenic Distribution System Procurement and Fabrication,1.03.04.06.50_Vacuum Box 2 - Procurement & Fab,AS_CDS_VB_6145_RCV: Design - Vacuum Box 2,Material,,SLAC,M&S
90894,1.03,1.03.04,1.03.04.06,1.03.04.06.50,1.03.04.06.50,Vacuum Box 2 - Procurement & Fab,AS_CDS_VB_6070,Evaluations/Negotiations - Vacuum Box 2,35.0,4.0,4.0,4.0,07-08-22,08-25-22,AS_CDS_VB_6060: FS,AS_CDS_VB_6080: FS,SLAC,0%,2003.2003_Research Technical Manager,2003_Research Technical Manager,Labor,0.0d,35.0,35.0,At Completion Units,4/6/2022,5/24/2022,0,0,0,0,0,0,0,0,0,0,1.03_Accelerator Systems (AS),1.03.04_AS Cryogenic Distribution System (CDS),1.03.04.06_AS Cryogenic Distribution System Procurement and Fabrication,1.03.04.06.50_Vacuum Box 2 - Procurement & Fab,AS_CDS_VB_6070_Evaluations/Negotiations - Vacuum Box 2,Technical Manager,Engineer,SLAC,Labor
90895,1.03,1.03.04,1.03.04.06,1.03.04.06.50,1.03.04.06.50,Vacuum Box 2 - Procurement & Fab,AS_CDS_VB_6070,Evaluations/Negotiations - Vacuum Box 2,35.0,4.0,4.0,4.0,07-08-22,08-25-22,AS_CDS_VB_6060: FS,AS_CDS_VB_6080: FS,SLAC,0%,0140_E3.0140_Engineer-Electrical_E3,0140_Engineer-Electrical_E3,Labor,0.0d,35.0,35.0,At Completion Units,4/6/2022,5/24/2022,0,0,0,0,0,0,0,0,0,0,1.03_Accelerator Systems (AS),1.03.04_AS Cryogenic Distribution System (CDS),1.03.04.06_AS Cryogenic Distribution System Procurement and Fabrication,1.03.04.06.50_Vacuum Box 2 - Procurement & Fab,AS_CDS_VB_6070_Evaluations/Negotiations - Vacuum Box 2,Electrical,,SLAC,Labor
90896,1.03,1.03.04,1.03.04.06,1.03.04.06.50,1.03.04.06.50,Vacuum Box 2 - Procurement & Fab,AS_CDS_VB_6030,Prepare RFP - Vacuum Box 2,15.0,2.0,2.0,2.0,05-18-22,06-08-22,AS_CDS_VB_6020: FS,AS_CDS_VB_6040: FS,SLAC,0%,0140_E3.0140_Engineer-Electrical_E3,0140_Engineer-Electrical_E3,Labor,0.0d,15.0,15.0,At Completion Units,2/15/2022,3/8/2022,0,0,0,0,0,0,0,0,0,0,1.03_Accelerator Systems (AS),1.03.04_AS Cryogenic Distribution System (CDS),1.03.04.06_AS Cryogenic Distribution System Procurement and Fabrication,1.03.04.06.50_Vacuum Box 2 - Procurement & Fab,AS_CDS_VB_6030_Prepare RFP - Vacuum Box 2,Electrical,,SLAC,Labor
90897,1.03,1.03.04,1.03.04.06,1.03.04.06.50,1.03.04.06.50,Vacuum Box 2 - Procurement & Fab,AS_CDS_VB_6030,Prepare RFP - Vacuum Box 2,15.0,4.0,4.0,4.0,05-18-22,06-08-22,AS_CDS_VB_6020: FS,AS_CDS_VB_6040: FS,SLAC,0%,2003.2003_Research Technical Manager,2003_Research Technical Manager,Labor,0.0d,15.0,15.0,At Completion Units,2/15/2022,3/8/2022,0,0,0,0,0,0,0,0,0,0,1.03_Accelerator Systems (AS),1.03.04_AS Cryogenic Distribution System (CDS),1.03.04.06_AS Cryogenic Distribution System Procurement and Fabrication,1.03.04.06.50_Vacuum Box 2 - Procurement & Fab,AS_CDS_VB_6030_Prepare RFP - Vacuum Box 2,Technical Manager,Engineer,SLAC,Labor
90898,1.03,1.03.04,1.03.04.06,1.03.04.06.50,1.03.04.06.50,Vacuum Box 2 - Procurement & Fab,AS_CDS_VB_6030,Prepare RFP - Vacuum Box 2,15.0,8.0,8.0,8.0,05-18-22,06-08-22,AS_CDS_VB_6020: FS,AS_CDS_VB_6040: FS,SLAC,0%,52168.52168_METS - Mechanical Design,52168_METS - Mechanical Design,Labor,0.0d,15.0,15.0,At Completion Units,2/15/2022,3/8/2022,0,0,0,0,0,0,0,0,0,0,1.03_Accelerator Systems (AS),1.03.04_AS Cryogenic Distribution System (CDS),1.03.04.06_AS Cryogenic Distribution System Procurement and Fabrication,1.03.04.06.50_Vacuum Box 2 - Procurement & Fab,AS_CDS_VB_6030_Prepare RFP - Vacuum Box 2,Mechanical,,SLAC,Labor
90899,1.03,1.03.04,1.03.04.06,1.03.04.06.50,1.03.04.06.50,Vacuum Box 2 - Procurement & Fab,AS_CDS_VB_6070,Evaluations/Negotiations - Vacuum Box 2,35.0,32.0,32.0,32.0,07-08-22,08-25-22,AS_CDS_VB_6060: FS,AS_CDS_VB_6080: FS,SLAC,0%,52169.52169_METS Mechanical Engineer,52169_METS Mechanical Engineer,Labor,0.0d,35.0,35.0,At Completion Units,4/6/2022,5/24/2022,0,0,0,0,0,0,0,0,0,0,1.03_Accelerator Systems (AS),1.03.04_AS Cryogenic Distribution System (CDS),1.03.04.06_AS Cryogenic Distribution System Procurement and Fabrication,1.03.04.06.50_Vacuum Box 2 - Procurement & Fab,AS_CDS_VB_6070_Evaluations/Negotiations - Vacuum Box 2,Mechanical,,SLAC,Labor
90900,1.03,1.03.04,1.03.04.06,1.03.04.06.50,1.03.04.06.50,Vacuum Box 2 - Procurement & Fab,AS_CDS_VB_6030,Prepare RFP - Vacuum Box 2,15.0,8.0,8.0,8.0,05-18-22,06-08-22,AS_CDS_VB_6020: FS,AS_CDS_VB_6040: FS,SLAC,0%,52169.52169_METS Mechanical Engineer,52169_METS Mechanical Engineer,Labor,0.0d,15.0,15.0,At Completion Units,2/15/2022,3/8/2022,0,0,0,0,0,0,0,0,0,0,1.03_Accelerator Systems (AS),1.03.04_AS Cryogenic Distribution System (CDS),1.03.04.06_AS Cryogenic Distribution System Procurement and Fabrication,1.03.04.06.50_Vacuum Box 2 - Procurement & Fab,AS_CDS_VB_6030_Prepare RFP - Vacuum Box 2,Mechanical,,SLAC,Labor
90901,1.03,1.03.04,1.03.04.06,1.03.04.06.50,1.03.04.06.50,Vacuum Box 2 - Procurement & Fab,AS_CDS_VB_6010,Prepare Requisition (Specs/SOW/ETC) - Vacuum Box 2,25.0,20.0,20.0,20.0,04-12-22,05-16-22,AS_CDS_VB_5070: FS,AS_CDS_VB_6020: FS,SLAC,0%,52169.52169_METS Mechanical Engineer,52169_METS Mechanical Engineer,Labor,0.0d,25.0,25.0,At Completion Units,1/7/2022,2/11/2022,0,0,0,0,0,0,0,0,0,0,1.03_Accelerator Systems (AS),1.03.04_AS Cryogenic Distribution System (CDS),1.03.04.06_AS Cryogenic Distribution System Procurement and Fabrication,1.03.04.06.50_Vacuum Box 2 - Procurement & Fab,AS_CDS_VB_6010_Prepare Requisition (Specs/SOW/ETC) - Vacuum Box 2,Mechanical,,SLAC,Labor
90902,1.03,1.03.04,1.03.04.06,1.03.04.06.50,1.03.04.06.50,Vacuum Box 2 - Procurement & Fab,AS_CDS_VB_6180,Factory Acceptance Test (FAT) - Vacuum Box 2,2.0,8.0,8.0,8.0,08-09-24,08-12-24,"AS_CDS_VB_6170: FF, AS_CDS_VB_6160: FS",AS_CDS_VB_6190: FS,SLAC,0%,0140_E3.0140_Engineer-Electrical_E3,0140_Engineer-Electrical_E3,Labor,0.0d,2.0,2.0,At Completion Units,11/3/2023,11/6/2023,0,0,0,0,0,0,0,0,0,0,1.03_Accelerator Systems (AS),1.03.04_AS Cryogenic Distribution System (CDS),1.03.04.06_AS Cryogenic Distribution System Procurement and Fabrication,1.03.04.06.50_Vacuum Box 2 - Procurement & Fab,AS_CDS_VB_6180_Factory Acceptance Test (FAT) - Vacuum Box 2,Electrical,,SLAC,Labor
90903,1.03,1.03.04,1.03.04.06,1.03.04.06.50,1.03.04.06.50,Vacuum Box 2 - Procurement & Fab,AS_CDS_VB_6170,SLAC Support for Contractor Fabrication - Vacuum Box 2,207.0,8.0,8.0,8.0,04-14-23,02-22-24,AS_CDS_VB_6140: FS,"AS_CDS_VB_6180: FF, AS_CDS_VB_6210: FS",SLAC,0%,0140_E3.0140_Engineer-Electrical_E3,0140_Engineer-Electrical_E3,Labor,0.0d,207.0,207.0,At Completion Units,1/11/2023,11/2/2023,0,0,0,0,0,0,0,0,0,0,1.03_Accelerator Systems (AS),1.03.04_AS Cryogenic Distribution System (CDS),1.03.04.06_AS Cryogenic Distribution System Procurement and Fabrication,1.03.04.06.50_Vacuum Box 2 - Procurement & Fab,AS_CDS_VB_6170_SLAC Support for Contractor Fabrication - Vacuum Box 2,Electrical,,SLAC,Labor
90904,1.03,1.03.04,1.03.04.06,1.03.04.06.50,1.03.04.06.50,Vacuum Box 2 - Procurement & Fab,AS_CDS_VB_6140,R_FDR: Final Design Review - Vacuum Box 2,2.0,8.0,8.0,8.0,04-12-23,04-13-23,"AS_CDS_VB_6120: FS, AS_CDS_VB_6130: FS, AS_CDS_VB_6110: FF","AS_CDS_VB_6170: FS, AS_CDS_VB_6160: FS, AS_CDS_VB_6150: FS, AS_M4_3060: FS, AS_M4_3070: FS, AS_CDS_VB_6145: FS, AS_CDS_VB_6143: FS",SLAC,0%,0140_E3.0140_Engineer-Electrical_E3,0140_Engineer-Electrical_E3,Labor,0.0d,2.0,2.0,At Completion Units,1/9/2023,1/10/2023,DM-C12-20%,0,0,0,0,0,0,0,0,0,1.03_Accelerator Systems (AS),1.03.04_AS Cryogenic Distribution System (CDS),1.03.04.06_AS Cryogenic Distribution System Procurement and Fabrication,1.03.04.06.50_Vacuum Box 2 - Procurement & Fab,AS_CDS_VB_6140_R_FDR: Final Design Review - Vacuum Box 2,Electrical,,SLAC,Labor
90905,1.03,1.03.04,1.03.04.06,1.03.04.06.50,1.03.04.06.50,Vacuum Box 2 - Procurement & Fab,AS_CDS_VB_6120,R_PDR: Prelim. Design Review - Vacuum Box 2,2.0,8.0,8.0,8.0,12-15-22,12-16-22,AS_CDS_VB_6100: FS,"AS_CDS_VB_6140: FS, AS_CDS_VB_6130: FS",SLAC,0%,0140_E3.0140_Engineer-Electrical_E3,0140_Engineer-Electrical_E3,Labor,0.0d,2.0,2.0,At Completion Units,9/13/2022,9/14/2022,DM-C11-30%,0,0,0,0,0,0,0,0,0,1.03_Accelerator Systems (AS),1.03.04_AS Cryogenic Distribution System (CDS),1.03.04.06_AS Cryogenic Distribution System Procurement and Fabrication,1.03.04.06.50_Vacuum Box 2 - Procurement & Fab,AS_CDS_VB_6120_R_PDR: Prelim. Design Review - Vacuum Box 2,Electrical,,SLAC,Labor
90906,1.03,1.03.04,1.03.04.06,1.03.04.06.50,1.03.04.06.50,Vacuum Box 2 - Procurement & Fab,AS_CDS_VB_6180,Factory Acceptance Test (FAT) - Vacuum Box 2,2.0,40.0,40.0,40.0,08-09-24,08-12-24,"AS_CDS_VB_6170: FF, AS_CDS_VB_6160: FS",AS_CDS_VB_6190: FS,SLAC,0%,2003.2003_Research Technical Manager,2003_Research Technical Manager,Labor,0.0d,2.0,2.0,At Completion Units,11/3/2023,11/6/2023,0,0,0,0,0,0,0,0,0,0,1.03_Accelerator Systems (AS),1.03.04_AS Cryogenic Distribution System (CDS),1.03.04.06_AS Cryogenic Distribution System Procurement and Fabrication,1.03.04.06.50_Vacuum Box 2 - Procurement & Fab,AS_CDS_VB_6180_Factory Acceptance Test (FAT) - Vacuum Box 2,Technical Manager,Engineer,SLAC,Labor
90907,1.03,1.03.04,1.03.04.06,1.03.04.06.50,1.03.04.06.50,Vacuum Box 2 - Procurement & Fab,AS_CDS_VB_6170,SLAC Support for Contractor Fabrication - Vacuum Box 2,207.0,40.0,40.0,40.0,04-14-23,02-22-24,AS_CDS_VB_6140: FS,"AS_CDS_VB_6180: FF, AS_CDS_VB_6210: FS",SLAC,0%,2003.2003_Research Technical Manager,2003_Research Technical Manager,Labor,0.0d,207.0,207.0,At Completion Units,1/11/2023,11/2/2023,0,0,0,0,0,0,0,0,0,0,1.03_Accelerator Systems (AS),1.03.04_AS Cryogenic Distribution System (CDS),1.03.04.06_AS Cryogenic Distribution System Procurement and Fabrication,1.03.04.06.50_Vacuum Box 2 - Procurement & Fab,AS_CDS_VB_6170_SLAC Support for Contractor Fabrication - Vacuum Box 2,Technical Manager,Engineer,SLAC,Labor
90908,1.03,1.03.04,1.03.04.06,1.03.04.06.50,1.03.04.06.50,Vacuum Box 2 - Procurement & Fab,AS_CDS_VB_6140,R_FDR: Final Design Review - Vacuum Box 2,2.0,8.0,8.0,8.0,04-12-23,04-13-23,"AS_CDS_VB_6120: FS, AS_CDS_VB_6130: FS, AS_CDS_VB_6110: FF","AS_CDS_VB_6170: FS, AS_CDS_VB_6160: FS, AS_CDS_VB_6150: FS, AS_M4_3060: FS, AS_M4_3070: FS, AS_CDS_VB_6145: FS, AS_CDS_VB_6143: FS",SLAC,0%,2003.2003_Research Technical Manager,2003_Research Technical Manager,Labor,0.0d,2.0,2.0,At Completion Units,1/9/2023,1/10/2023,DM-C12-20%,0,0,0,0,0,0,0,0,0,1.03_Accelerator Systems (AS),1.03.04_AS Cryogenic Distribution System (CDS),1.03.04.06_AS Cryogenic Distribution System Procurement and Fabrication,1.03.04.06.50_Vacuum Box 2 - Procurement & Fab,AS_CDS_VB_6140_R_FDR: Final Design Review - Vacuum Box 2,Technical Manager,Engineer,SLAC,Labor
90909,1.03,1.03.04,1.03.04.06,1.03.04.06.50,1.03.04.06.50,Vacuum Box 2 - Procurement & Fab,AS_CDS_VB_6120,R_PDR: Prelim. Design Review - Vacuum Box 2,2.0,8.0,8.0,8.0,12-15-22,12-16-22,AS_CDS_VB_6100: FS,"AS_CDS_VB_6140: FS, AS_CDS_VB_6130: FS",SLAC,0%,2003.2003_Research Technical Manager,2003_Research Technical Manager,Labor,0.0d,2.0,2.0,At Completion Units,9/13/2022,9/14/2022,DM-C11-30%,0,0,0,0,0,0,0,0,0,1.03_Accelerator Systems (AS),1.03.04_AS Cryogenic Distribution System (CDS),1.03.04.06_AS Cryogenic Distribution System Procurement and Fabrication,1.03.04.06.50_Vacuum Box 2 - Procurement & Fab,AS_CDS_VB_6120_R_PDR: Prelim. Design Review - Vacuum Box 2,Technical Manager,Engineer,SLAC,Labor
90910,1.03,1.03.04,1.03.04.06,1.03.04.06.50,1.03.04.06.50,Vacuum Box 2 - Procurement & Fab,AS_CDS_VB_6180,Factory Acceptance Test (FAT) - Vacuum Box 2,2.0,4.0,4.0,4.0,08-09-24,08-12-24,"AS_CDS_VB_6170: FF, AS_CDS_VB_6160: FS",AS_CDS_VB_6190: FS,SLAC,0%,52168.52168_METS - Mechanical Design,52168_METS - Mechanical Design,Labor,0.0d,2.0,2.0,At Completion Units,11/3/2023,11/6/2023,0,0,0,0,0,0,0,0,0,0,1.03_Accelerator Systems (AS),1.03.04_AS Cryogenic Distribution System (CDS),1.03.04.06_AS Cryogenic Distribution System Procurement and Fabrication,1.03.04.06.50_Vacuum Box 2 - Procurement & Fab,AS_CDS_VB_6180_Factory Acceptance Test (FAT) - Vacuum Box 2,Mechanical,,SLAC,Labor
90911,1.03,1.03.04,1.03.04.06,1.03.04.06.50,1.03.04.06.50,Vacuum Box 2 - Procurement & Fab,AS_CDS_VB_6170,SLAC Support for Contractor Fabrication - Vacuum Box 2,207.0,100.0,100.0,100.0,04-14-23,02-22-24,AS_CDS_VB_6140: FS,"AS_CDS_VB_6180: FF, AS_CDS_VB_6210: FS",SLAC,0%,52168.52168_METS - Mechanical Design,52168_METS - Mechanical Design,Labor,0.0d,207.0,207.0,At Completion Units,1/11/2023,11/2/2023,0,0,0,0,0,0,0,0,0,0,1.03_Accelerator Systems (AS),1.03.04_AS Cryogenic Distribution System (CDS),1.03.04.06_AS Cryogenic Distribution System Procurement and Fabrication,1.03.04.06.50_Vacuum Box 2 - Procurement & Fab,AS_CDS_VB_6170_SLAC Support for Contractor Fabrication - Vacuum Box 2,Mechanical,,SLAC,Labor
90912,1.03,1.03.04,1.03.04.06,1.03.04.06.50,1.03.04.06.50,Vacuum Box 2 - Procurement & Fab,AS_CDS_VB_6140,R_FDR: Final Design Review - Vacuum Box 2,2.0,16.0,16.0,16.0,04-12-23,04-13-23,"AS_CDS_VB_6120: FS, AS_CDS_VB_6130: FS, AS_CDS_VB_6110: FF","AS_CDS_VB_6170: FS, AS_CDS_VB_6160: FS, AS_CDS_VB_6150: FS, AS_M4_3060: FS, AS_M4_3070: FS, AS_CDS_VB_6145: FS, AS_CDS_VB_6143: FS",SLAC,0%,52168.52168_METS - Mechanical Design,52168_METS - Mechanical Design,Labor,0.0d,2.0,2.0,At Completion Units,1/9/2023,1/10/2023,DM-C12-20%,0,0,0,0,0,0,0,0,0,1.03_Accelerator Systems (AS),1.03.04_AS Cryogenic Distribution System (CDS),1.03.04.06_AS Cryogenic Distribution System Procurement and Fabrication,1.03.04.06.50_Vacuum Box 2 - Procurement & Fab,AS_CDS_VB_6140_R_FDR: Final Design Review - Vacuum Box 2,Mechanical,,SLAC,Labor
90913,1.03,1.03.04,1.03.04.06,1.03.04.06.50,1.03.04.06.50,Vacuum Box 2 - Procurement & Fab,AS_CDS_VB_6120,R_PDR: Prelim. Design Review - Vacuum Box 2,2.0,16.0,16.0,16.0,12-15-22,12-16-22,AS_CDS_VB_6100: FS,"AS_CDS_VB_6140: FS, AS_CDS_VB_6130: FS",SLAC,0%,52168.52168_METS - Mechanical Design,52168_METS - Mechanical Design,Labor,0.0d,2.0,2.0,At Completion Units,9/13/2022,9/14/2022,DM-C11-30%,0,0,0,0,0,0,0,0,0,1.03_Accelerator Systems (AS),1.03.04_AS Cryogenic Distribution System (CDS),1.03.04.06_AS Cryogenic Distribution System Procurement and Fabrication,1.03.04.06.50_Vacuum Box 2 - Procurement & Fab,AS_CDS_VB_6120_R_PDR: Prelim. Design Review - Vacuum Box 2,Mechanical,,SLAC,Labor
90914,1.03,1.03.04,1.03.04.06,1.03.04.06.50,1.03.04.06.50,Vacuum Box 2 - Procurement & Fab,AS_CDS_VB_6110,SLAC Support for Contractor Design - Vacuum Box 2,140.0,70.0,70.0,70.0,09-06-22,04-07-23,AS_CDS_VB_6100: SS,AS_CDS_VB_6140: FF,SLAC,0%,52168.52168_METS - Mechanical Design,52168_METS - Mechanical Design,Labor,0.0d,140.0,140.0,At Completion Units,6/3/2022,1/4/2023,0,0,0,0,0,0,0,0,0,0,1.03_Accelerator Systems (AS),1.03.04_AS Cryogenic Distribution System (CDS),1.03.04.06_AS Cryogenic Distribution System Procurement and Fabrication,1.03.04.06.50_Vacuum Box 2 - Procurement & Fab,AS_CDS_VB_6110_SLAC Support for Contractor Design - Vacuum Box 2,Mechanical,,SLAC,Labor
90915,1.03,1.03.04,1.03.04.06,1.03.04.06.50,1.03.04.06.50,Vacuum Box 2 - Procurement & Fab,AS_CDS_VB_6190,Shipping & Delivery - Vacuum Box 2,60.0,8.0,8.0,8.0,08-13-24,11-05-24,AS_CDS_VB_6180: FS,AS_CDS_VB_6200: FS,SLAC,0%,52169.52169_METS Mechanical Engineer,52169_METS Mechanical Engineer,Labor,0.0d,60.0,60.0,At Completion Units,11/7/2023,2/16/2024,0,0,0,0,0,0,0,0,0,0,1.03_Accelerator Systems (AS),1.03.04_AS Cryogenic Distribution System (CDS),1.03.04.06_AS Cryogenic Distribution System Procurement and Fabrication,1.03.04.06.50_Vacuum Box 2 - Procurement & Fab,AS_CDS_VB_6190_Shipping & Delivery - Vacuum Box 2,Mechanical,,SLAC,Labor
90916,1.03,1.03.04,1.03.04.06,1.03.04.06.50,1.03.04.06.50,Vacuum Box 2 - Procurement & Fab,AS_CDS_VB_6180,Factory Acceptance Test (FAT) - Vacuum Box 2,2.0,32.0,32.0,32.0,08-09-24,08-12-24,"AS_CDS_VB_6170: FF, AS_CDS_VB_6160: FS",AS_CDS_VB_6190: FS,SLAC,0%,52169.52169_METS Mechanical Engineer,52169_METS Mechanical Engineer,Labor,0.0d,2.0,2.0,At Completion Units,11/3/2023,11/6/2023,0,0,0,0,0,0,0,0,0,0,1.03_Accelerator Systems (AS),1.03.04_AS Cryogenic Distribution System (CDS),1.03.04.06_AS Cryogenic Distribution System Procurement and Fabrication,1.03.04.06.50_Vacuum Box 2 - Procurement & Fab,AS_CDS_VB_6180_Factory Acceptance Test (FAT) - Vacuum Box 2,Mechanical,,SLAC,Labor
90917,1.03,1.03.04,1.03.04.06,1.03.04.06.50,1.03.04.06.50,Vacuum Box 2 - Procurement & Fab,AS_CDS_VB_6170,SLAC Support for Contractor Fabrication - Vacuum Box 2,207.0,200.0,200.0,200.0,04-14-23,02-22-24,AS_CDS_VB_6140: FS,"AS_CDS_VB_6180: FF, AS_CDS_VB_6210: FS",SLAC,0%,52169.52169_METS Mechanical Engineer,52169_METS Mechanical Engineer,Labor,0.0d,207.0,207.0,At Completion Units,1/11/2023,11/2/2023,0,0,0,0,0,0,0,0,0,0,1.03_Accelerator Systems (AS),1.03.04_AS Cryogenic Distribution System (CDS),1.03.04.06_AS Cryogenic Distribution System Procurement and Fabrication,1.03.04.06.50_Vacuum Box 2 - Procurement & Fab,AS_CDS_VB_6170_SLAC Support for Contractor Fabrication - Vacuum Box 2,Mechanical,,SLAC,Labor
90918,1.03,1.03.04,1.03.04.06,1.03.04.06.50,1.03.04.06.50,Vacuum Box 2 - Procurement & Fab,AS_CDS_VB_6140,R_FDR: Final Design Review - Vacuum Box 2,2.0,16.0,16.0,16.0,04-12-23,04-13-23,"AS_CDS_VB_6120: FS, AS_CDS_VB_6130: FS, AS_CDS_VB_6110: FF","AS_CDS_VB_6170: FS, AS_CDS_VB_6160: FS, AS_CDS_VB_6150: FS, AS_M4_3060: FS, AS_M4_3070: FS, AS_CDS_VB_6145: FS, AS_CDS_VB_6143: FS",SLAC,0%,52169.52169_METS Mechanical Engineer,52169_METS Mechanical Engineer,Labor,0.0d,2.0,2.0,At Completion Units,1/9/2023,1/10/2023,DM-C12-20%,0,0,0,0,0,0,0,0,0,1.03_Accelerator Systems (AS),1.03.04_AS Cryogenic Distribution System (CDS),1.03.04.06_AS Cryogenic Distribution System Procurement and Fabrication,1.03.04.06.50_Vacuum Box 2 - Procurement & Fab,AS_CDS_VB_6140_R_FDR: Final Design Review - Vacuum Box 2,Mechanical,,SLAC,Labor
90919,1.03,1.03.04,1.03.04.06,1.03.04.06.50,1.03.04.06.50,Vacuum Box 2 - Procurement & Fab,AS_CDS_VB_6120,R_PDR: Prelim. Design Review - Vacuum Box 2,2.0,16.0,16.0,16.0,12-15-22,12-16-22,AS_CDS_VB_6100: FS,"AS_CDS_VB_6140: FS, AS_CDS_VB_6130: FS",SLAC,0%,52169.52169_METS Mechanical Engineer,52169_METS Mechanical Engineer,Labor,0.0d,2.0,2.0,At Completion Units,9/13/2022,9/14/2022,DM-C11-30%,0,0,0,0,0,0,0,0,0,1.03_Accelerator Systems (AS),1.03.04_AS Cryogenic Distribution System (CDS),1.03.04.06_AS Cryogenic Distribution System Procurement and Fabrication,1.03.04.06.50_Vacuum Box 2 - Procurement & Fab,AS_CDS_VB_6120_R_PDR: Prelim. Design Review - Vacuum Box 2,Mechanical,,SLAC,Labor
90920,1.03,1.03.04,1.03.04.06,1.03.04.06.50,1.03.04.06.50,Vacuum Box 2 - Procurement & Fab,AS_CDS_VB_6110,SLAC Support for Contractor Design - Vacuum Box 2,140.0,200.0,200.0,200.0,09-06-22,04-07-23,AS_CDS_VB_6100: SS,AS_CDS_VB_6140: FF,SLAC,0%,52169.52169_METS Mechanical Engineer,52169_METS Mechanical Engineer,Labor,0.0d,140.0,140.0,At Completion Units,6/3/2022,1/4/2023,0,0,0,0,0,0,0,0,0,0,1.03_Accelerator Systems (AS),1.03.04_AS Cryogenic Distribution System (CDS),1.03.04.06_AS Cryogenic Distribution System Procurement and Fabrication,1.03.04.06.50_Vacuum Box 2 - Procurement & Fab,AS_CDS_VB_6110_SLAC Support for Contractor Design - Vacuum Box 2,Mechanical,,SLAC,Labor
90921,1.03,1.03.04,1.03.04.06,1.03.04.06.50,1.03.04.06.50,Vacuum Box 2 - Procurement & Fab,AS_CDS_VB_6200,RCV: Vacuum Box 2,1.0,234113.0,234113.0,234113.0,11-06-24,11-06-24,AS_CDS_VB_6190: FS,AS_CDS_VB_6210: FS,SLAC,0%,SL_MSSC.SLAC M&S (<$500K) (gets G&A) (gets ESC),SLAC M&S (<$500K) (gets G&A) (gets ESC),Nonlabor,0.0d,1.0,1.0,At Completion Units,2/20/2024,2/20/2024,0,0,0,0,0,0,0,0,0,0,1.03_Accelerator Systems (AS),1.03.04_AS Cryogenic Distribution System (CDS),1.03.04.06_AS Cryogenic Distribution System Procurement and Fabrication,1.03.04.06.50_Vacuum Box 2 - Procurement & Fab,AS_CDS_VB_6200_RCV: Vacuum Box 2,Material,,SLAC,M&S
90922,1.03,1.03.04,1.03.04.06,1.03.04.06.50,1.03.04.06.50,Vacuum Box 2 - Procurement & Fab,AS_CDS_VB_6090,AWARD: Design - Vacuum Box 2,1.0,78037.0,78037.0,78037.0,09-02-22,09-02-22,AS_CDS_VB_6080: FS,AS_CDS_VB_6100: FS,SLAC,0%,AWARD_USE.AWARD - Use this AWARD,AWARD - Use this AWARD,Nonlabor,0.0d,1.0,1.0,At Completion Units,6/2/2022,6/2/2022,AWARD < $500K,0,0,0,0,0,0,0,0,0,1.03_Accelerator Systems (AS),1.03.04_AS Cryogenic Distribution System (CDS),1.03.04.06_AS Cryogenic Distribution System Procurement and Fabrication,1.03.04.06.50_Vacuum Box 2 - Procurement & Fab,AS_CDS_VB_6090_AWARD: Design - Vacuum Box 2,Material,,SLAC,M&S
90923,1.03,1.03.04,1.03.04.06,1.03.04.06.50,1.03.04.06.50,Vacuum Box 2 - Procurement & Fab,AS_CDS_VB_6020,RQN: Approval of Requisition - Vacuum Box 2,1.0,312150.0,312150.0,312150.0,05-17-22,05-17-22,AS_CDS_VB_6010: FS,AS_CDS_VB_6030: FS,SLAC,0%,REQ.Requisition,Requisition,Nonlabor,0.0d,1.0,1.0,At Completion Units,2/14/2022,2/14/2022,RQN,0,0,0,0,0,0,0,0,0,1.03_Accelerator Systems (AS),1.03.04_AS Cryogenic Distribution System (CDS),1.03.04.06_AS Cryogenic Distribution System Procurement and Fabrication,1.03.04.06.50_Vacuum Box 2 - Procurement & Fab,AS_CDS_VB_6020_RQN: Approval of Requisition - Vacuum Box 2,Material,,SLAC,M&S
91243,1.03,1.03.04,1.03.04.06,1.03.04.06.60,1.03.04.06.60,End Caps (includes EC3 & Downstream One) - Procurement & Fab,AS_CDS_EC_6150,AWARD: Fabrication - End Caps,2.0,613653.0,613653.0,613653.0,10-02-23,10-03-23,"AS_CDS_EC_6140: FS, AS_M4_3010: FS, AS_CDS_EC_6145: FS",AS_CDS_EC_6160: FS,SLAC,0%,AWARD_USE.AWARD - Use this AWARD,AWARD - Use this AWARD,Nonlabor,0.0d,2.0,2.0,At Completion Units,6/16/2023,6/19/2023,AWARD > $500K,0,0,0,0,0,0,0,0,0,1.03_Accelerator Systems (AS),1.03.04_AS Cryogenic Distribution System (CDS),1.03.04.06_AS Cryogenic Distribution System Procurement and Fabrication,1.03.04.06.60_End Caps (includes EC3 & Downstream One) - Procurement & Fab,AS_CDS_EC_6150_AWARD: Fabrication - End Caps,Material,,SLAC,M&S
91244,1.03,1.03.04,1.03.04.06,1.03.04.06.60,1.03.04.06.60,End Caps (includes EC3 & Downstream One) - Procurement & Fab,AS_CDS_EC_6145,RCV: Design - End Caps,1.0,0.0,0.0,0.0,07-10-23,07-10-23,"AS_CDS_EC_6140: FS, AS_CDS_EC_6143: FS",AS_CDS_EC_6150: FS,SLAC,0%,SL_MSSY.SLAC M&S (>$500K) (NO G&A) (gets ESC),SLAC M&S (>$500K) (NO G&A) (gets ESC),Nonlabor,0.0d,1.0,1.0,At Completion Units,nn,,0,0,0,0,0,0,0,0,0,0,1.03_Accelerator Systems (AS),1.03.04_AS Cryogenic Distribution System (CDS),1.03.04.06_AS Cryogenic Distribution System Procurement and Fabrication,1.03.04.06.60_End Caps (includes EC3 & Downstream One) - Procurement & Fab,AS_CDS_EC_6145_RCV: Design - End Caps,Material,,SLAC,M&S
91245,1.03,1.03.04,1.03.04.06,1.03.04.06.60,1.03.04.06.60,End Caps (includes EC3 & Downstream One) - Procurement & Fab,AS_CDS_EC_6145,RCV: Design - End Caps,1.0,153413.0,153413.0,153413.0,07-10-23,07-10-23,"AS_CDS_EC_6140: FS, AS_CDS_EC_6143: FS",AS_CDS_EC_6150: FS,SLAC,0%,SL_MSSC.SLAC M&S (<$500K) (gets G&A) (gets ESC),SLAC M&S (<$500K) (gets G&A) (gets ESC),Nonlabor,0.0d,1.0,1.0,At Completion Units,nn,,0,0,0,0,0,0,0,0,0,0,1.03_Accelerator Systems (AS),1.03.04_AS Cryogenic Distribution System (CDS),1.03.04.06_AS Cryogenic Distribution System Procurement and Fabrication,1.03.04.06.60_End Caps (includes EC3 & Downstream One) - Procurement & Fab,AS_CDS_EC_6145_RCV: Design - End Caps,Material,,SLAC,M&S
91246,1.03,1.03.04,1.03.04.06,1.03.04.06.60,1.03.04.06.60,End Caps (includes EC3 & Downstream One) - Procurement & Fab,AS_CDS_EC_6030,Prepare RFP - End Caps,35.0,8.0,8.0,8.0,04-19-22,06-07-22,AS_CDS_EC_6020: FS,AS_CDS_EC_6040: FS,SLAC,0%,52168.52168_METS - Mechanical Design,52168_METS - Mechanical Design,Labor,0.0d,35.0,35.0,At Completion Units,4/12/2022,5/31/2022,0,0,0,0,0,0,0,0,0,0,1.03_Accelerator Systems (AS),1.03.04_AS Cryogenic Distribution System (CDS),1.03.04.06_AS Cryogenic Distribution System Procurement and Fabrication,1.03.04.06.60_End Caps (includes EC3 & Downstream One) - Procurement & Fab,AS_CDS_EC_6030_Prepare RFP - End Caps,Mechanical,,SLAC,Labor
91247,1.03,1.03.04,1.03.04.06,1.03.04.06.60,1.03.04.06.60,End Caps (includes EC3 & Downstream One) - Procurement & Fab,AS_CDS_EC_6070,Evaluations/Negotiations - End Caps,55.0,4.0,4.0,4.0,08-18-22,11-03-22,AS_CDS_EC_6060: FS,AS_CDS_EC_6080: FS,SLAC,0%,0140_E3.0140_Engineer-Electrical_E3,0140_Engineer-Electrical_E3,Labor,0.0d,55.0,55.0,At Completion Units,8/11/2022,10/27/2022,0,0,0,0,0,0,0,0,0,0,1.03_Accelerator Systems (AS),1.03.04_AS Cryogenic Distribution System (CDS),1.03.04.06_AS Cryogenic Distribution System Procurement and Fabrication,1.03.04.06.60_End Caps (includes EC3 & Downstream One) - Procurement & Fab,AS_CDS_EC_6070_Evaluations/Negotiations - End Caps,Electrical,,SLAC,Labor
91248,1.03,1.03.04,1.03.04.06,1.03.04.06.60,1.03.04.06.60,End Caps (includes EC3 & Downstream One) - Procurement & Fab,AS_CDS_EC_6030,Prepare RFP - End Caps,35.0,2.0,2.0,2.0,04-19-22,06-07-22,AS_CDS_EC_6020: FS,AS_CDS_EC_6040: FS,SLAC,0%,0140_E3.0140_Engineer-Electrical_E3,0140_Engineer-Electrical_E3,Labor,0.0d,35.0,35.0,At Completion Units,4/12/2022,5/31/2022,0,0,0,0,0,0,0,0,0,0,1.03_Accelerator Systems (AS),1.03.04_AS Cryogenic Distribution System (CDS),1.03.04.06_AS Cryogenic Distribution System Procurement and Fabrication,1.03.04.06.60_End Caps (includes EC3 & Downstream One) - Procurement & Fab,AS_CDS_EC_6030_Prepare RFP - End Caps,Electrical,,SLAC,Labor
91249,1.03,1.03.04,1.03.04.06,1.03.04.06.60,1.03.04.06.60,End Caps (includes EC3 & Downstream One) - Procurement & Fab,AS_CDS_EC_6030,Prepare RFP - End Caps,35.0,4.0,4.0,4.0,04-19-22,06-07-22,AS_CDS_EC_6020: FS,AS_CDS_EC_6040: FS,SLAC,0%,2003.2003_Research Technical Manager,2003_Research Technical Manager,Labor,0.0d,35.0,35.0,At Completion Units,4/12/2022,5/31/2022,0,0,0,0,0,0,0,0,0,0,1.03_Accelerator Systems (AS),1.03.04_AS Cryogenic Distribution System (CDS),1.03.04.06_AS Cryogenic Distribution System Procurement and Fabrication,1.03.04.06.60_End Caps (includes EC3 & Downstream One) - Procurement & Fab,AS_CDS_EC_6030_Prepare RFP - End Caps,Technical Manager,Engineer,SLAC,Labor
91250,1.03,1.03.04,1.03.04.06,1.03.04.06.60,1.03.04.06.60,End Caps (includes EC3 & Downstream One) - Procurement & Fab,AS_CDS_EC_6070,Evaluations/Negotiations - End Caps,55.0,4.0,4.0,4.0,08-18-22,11-03-22,AS_CDS_EC_6060: FS,AS_CDS_EC_6080: FS,SLAC,0%,2003.2003_Research Technical Manager,2003_Research Technical Manager,Labor,0.0d,55.0,55.0,At Completion Units,8/11/2022,10/27/2022,0,0,0,0,0,0,0,0,0,0,1.03_Accelerator Systems (AS),1.03.04_AS Cryogenic Distribution System (CDS),1.03.04.06_AS Cryogenic Distribution System Procurement and Fabrication,1.03.04.06.60_End Caps (includes EC3 & Downstream One) - Procurement & Fab,AS_CDS_EC_6070_Evaluations/Negotiations - End Caps,Technical Manager,Engineer,SLAC,Labor
91251,1.03,1.03.04,1.03.04.06,1.03.04.06.60,1.03.04.06.60,End Caps (includes EC3 & Downstream One) - Procurement & Fab,AS_CDS_EC_6070,Evaluations/Negotiations - End Caps,55.0,32.0,32.0,32.0,08-18-22,11-03-22,AS_CDS_EC_6060: FS,AS_CDS_EC_6080: FS,SLAC,0%,52169.52169_METS Mechanical Engineer,52169_METS Mechanical Engineer,Labor,0.0d,55.0,55.0,At Completion Units,8/11/2022,10/27/2022,0,0,0,0,0,0,0,0,0,0,1.03_Accelerator Systems (AS),1.03.04_AS Cryogenic Distribution System (CDS),1.03.04.06_AS Cryogenic Distribution System Procurement and Fabrication,1.03.04.06.60_End Caps (includes EC3 & Downstream One) - Procurement & Fab,AS_CDS_EC_6070_Evaluations/Negotiations - End Caps,Mechanical,,SLAC,Labor
91252,1.03,1.03.04,1.03.04.06,1.03.04.06.60,1.03.04.06.60,End Caps (includes EC3 & Downstream One) - Procurement & Fab,AS_CDS_EC_6030,Prepare RFP - End Caps,35.0,8.0,8.0,8.0,04-19-22,06-07-22,AS_CDS_EC_6020: FS,AS_CDS_EC_6040: FS,SLAC,0%,52169.52169_METS Mechanical Engineer,52169_METS Mechanical Engineer,Labor,0.0d,35.0,35.0,At Completion Units,4/12/2022,5/31/2022,0,0,0,0,0,0,0,0,0,0,1.03_Accelerator Systems (AS),1.03.04_AS Cryogenic Distribution System (CDS),1.03.04.06_AS Cryogenic Distribution System Procurement and Fabrication,1.03.04.06.60_End Caps (includes EC3 & Downstream One) - Procurement & Fab,AS_CDS_EC_6030_Prepare RFP - End Caps,Mechanical,,SLAC,Labor
91253,1.03,1.03.04,1.03.04.06,1.03.04.06.60,1.03.04.06.60,End Caps (includes EC3 & Downstream One) - Procurement & Fab,AS_CDS_EC_6010,Prepare Requisition (Specs/SOW/ETC) - End Caps,45.0,20.0,20.0,20.0,02-11-22,04-15-22,AS_CDS_EC_5070: FS,AS_CDS_EC_6020: FS,SLAC,0%,52169.52169_METS Mechanical Engineer,52169_METS Mechanical Engineer,Labor,0.0d,45.0,45.0,At Completion Units,2/4/2022,4/8/2022,0,0,0,0,0,0,0,0,0,0,1.03_Accelerator Systems (AS),1.03.04_AS Cryogenic Distribution System (CDS),1.03.04.06_AS Cryogenic Distribution System Procurement and Fabrication,1.03.04.06.60_End Caps (includes EC3 & Downstream One) - Procurement & Fab,AS_CDS_EC_6010_Prepare Requisition (Specs/SOW/ETC) - End Caps,Mechanical,,SLAC,Labor
91254,1.03,1.03.04,1.03.04.06,1.03.04.06.60,1.03.04.06.60,End Caps (includes EC3 & Downstream One) - Procurement & Fab,AS_CDS_EC_6180,Factory Acceptance Test (FAT) - End Caps,2.0,8.0,8.0,8.0,07-05-24,07-08-24,"AS_CDS_EC_6170: FF, AS_CDS_EC_6160: FS",AS_CDS_EC_6190: FS,SLAC,0%,0140_E3.0140_Engineer-Electrical_E3,0140_Engineer-Electrical_E3,Labor,0.0d,2.0,2.0,At Completion Units,3/21/2024,3/22/2024,0,0,0,0,0,0,0,0,0,0,1.03_Accelerator Systems (AS),1.03.04_AS Cryogenic Distribution System (CDS),1.03.04.06_AS Cryogenic Distribution System Procurement and Fabrication,1.03.04.06.60_End Caps (includes EC3 & Downstream One) - Procurement & Fab,AS_CDS_EC_6180_Factory Acceptance Test (FAT) - End Caps,Electrical,,SLAC,Labor
91255,1.03,1.03.04,1.03.04.06,1.03.04.06.60,1.03.04.06.60,End Caps (includes EC3 & Downstream One) - Procurement & Fab,AS_CDS_EC_6170,SLAC Support for Contractor Fabrication - End Caps,182.0,8.0,8.0,8.0,06-23-23,03-27-24,AS_CDS_EC_6140: FS,"AS_CDS_EC_6180: FF, AS_CDS_EC_6210: FS",SLAC,0%,0140_E3.0140_Engineer-Electrical_E3,0140_Engineer-Electrical_E3,Labor,0.0d,182.0,182.0,At Completion Units,6/16/2023,3/20/2024,0,0,0,0,0,0,0,0,0,0,1.03_Accelerator Systems (AS),1.03.04_AS Cryogenic Distribution System (CDS),1.03.04.06_AS Cryogenic Distribution System Procurement and Fabrication,1.03.04.06.60_End Caps (includes EC3 & Downstream One) - Procurement & Fab,AS_CDS_EC_6170_SLAC Support for Contractor Fabrication - End Caps,Electrical,,SLAC,Labor
91256,1.03,1.03.04,1.03.04.06,1.03.04.06.60,1.03.04.06.60,End Caps (includes EC3 & Downstream One) - Procurement & Fab,AS_CDS_EC_6140,R_FDR: Final Design Review - End Caps,2.0,8.0,8.0,8.0,06-21-23,06-22-23,"AS_CDS_EC_6120: FS, AS_CDS_EC_6110: FF, AS_CDS_EC_6130: FS","AS_CDS_EC_6170: FS, AS_CDS_EC_6150: FS, AS_M4_3060: FS, AS_M4_3070: FS, AS_CDS_EC_6145: FS, AS_CDS_EC_6143: FS",SLAC,0%,0140_E3.0140_Engineer-Electrical_E3,0140_Engineer-Electrical_E3,Labor,0.0d,2.0,2.0,At Completion Units,6/14/2023,6/15/2023,DM-C12-20%,0,0,0,0,0,0,0,0,0,1.03_Accelerator Systems (AS),1.03.04_AS Cryogenic Distribution System (CDS),1.03.04.06_AS Cryogenic Distribution System Procurement and Fabrication,1.03.04.06.60_End Caps (includes EC3 & Downstream One) - Procurement & Fab,AS_CDS_EC_6140_R_FDR: Final Design Review - End Caps,Electrical,,SLAC,Labor
91257,1.03,1.03.04,1.03.04.06,1.03.04.06.60,1.03.04.06.60,End Caps (includes EC3 & Downstream One) - Procurement & Fab,AS_CDS_EC_6120,R_PDR: Prelim. Design Review - End Caps,2.0,8.0,8.0,8.0,03-10-23,03-13-23,AS_CDS_EC_6100: FS,"AS_CDS_EC_6140: FS, AS_CDS_EC_6130: FS",SLAC,0%,0140_E3.0140_Engineer-Electrical_E3,0140_Engineer-Electrical_E3,Labor,0.0d,2.0,2.0,At Completion Units,3/3/2023,3/6/2023,DM-C11-30%,0,0,0,0,0,0,0,0,0,1.03_Accelerator Systems (AS),1.03.04_AS Cryogenic Distribution System (CDS),1.03.04.06_AS Cryogenic Distribution System Procurement and Fabrication,1.03.04.06.60_End Caps (includes EC3 & Downstream One) - Procurement & Fab,AS_CDS_EC_6120_R_PDR: Prelim. Design Review - End Caps,Electrical,,SLAC,Labor
91258,1.03,1.03.04,1.03.04.06,1.03.04.06.60,1.03.04.06.60,End Caps (includes EC3 & Downstream One) - Procurement & Fab,AS_CDS_EC_6180,Factory Acceptance Test (FAT) - End Caps,2.0,40.0,40.0,40.0,07-05-24,07-08-24,"AS_CDS_EC_6170: FF, AS_CDS_EC_6160: FS",AS_CDS_EC_6190: FS,SLAC,0%,2003.2003_Research Technical Manager,2003_Research Technical Manager,Labor,0.0d,2.0,2.0,At Completion Units,3/21/2024,3/22/2024,0,0,0,0,0,0,0,0,0,0,1.03_Accelerator Systems (AS),1.03.04_AS Cryogenic Distribution System (CDS),1.03.04.06_AS Cryogenic Distribution System Procurement and Fabrication,1.03.04.06.60_End Caps (includes EC3 & Downstream One) - Procurement & Fab,AS_CDS_EC_6180_Factory Acceptance Test (FAT) - End Caps,Technical Manager,Engineer,SLAC,Labor
91259,1.03,1.03.04,1.03.04.06,1.03.04.06.60,1.03.04.06.60,End Caps (includes EC3 & Downstream One) - Procurement & Fab,AS_CDS_EC_6170,SLAC Support for Contractor Fabrication - End Caps,182.0,40.0,40.0,40.0,06-23-23,03-27-24,AS_CDS_EC_6140: FS,"AS_CDS_EC_6180: FF, AS_CDS_EC_6210: FS",SLAC,0%,2003.2003_Research Technical Manager,2003_Research Technical Manager,Labor,0.0d,182.0,182.0,At Completion Units,6/16/2023,3/20/2024,0,0,0,0,0,0,0,0,0,0,1.03_Accelerator Systems (AS),1.03.04_AS Cryogenic Distribution System (CDS),1.03.04.06_AS Cryogenic Distribution System Procurement and Fabrication,1.03.04.06.60_End Caps (includes EC3 & Downstream One) - Procurement & Fab,AS_CDS_EC_6170_SLAC Support for Contractor Fabrication - End Caps,Technical Manager,Engineer,SLAC,Labor
91260,1.03,1.03.04,1.03.04.06,1.03.04.06.60,1.03.04.06.60,End Caps (includes EC3 & Downstream One) - Procurement & Fab,AS_CDS_EC_6140,R_FDR: Final Design Review - End Caps,2.0,8.0,8.0,8.0,06-21-23,06-22-23,"AS_CDS_EC_6120: FS, AS_CDS_EC_6110: FF, AS_CDS_EC_6130: FS","AS_CDS_EC_6170: FS, AS_CDS_EC_6150: FS, AS_M4_3060: FS, AS_M4_3070: FS, AS_CDS_EC_6145: FS, AS_CDS_EC_6143: FS",SLAC,0%,2003.2003_Research Technical Manager,2003_Research Technical Manager,Labor,0.0d,2.0,2.0,At Completion Units,6/14/2023,6/15/2023,DM-C12-20%,0,0,0,0,0,0,0,0,0,1.03_Accelerator Systems (AS),1.03.04_AS Cryogenic Distribution System (CDS),1.03.04.06_AS Cryogenic Distribution System Procurement and Fabrication,1.03.04.06.60_End Caps (includes EC3 & Downstream One) - Procurement & Fab,AS_CDS_EC_6140_R_FDR: Final Design Review - End Caps,Technical Manager,Engineer,SLAC,Labor
91261,1.03,1.03.04,1.03.04.06,1.03.04.06.60,1.03.04.06.60,End Caps (includes EC3 & Downstream One) - Procurement & Fab,AS_CDS_EC_6120,R_PDR: Prelim. Design Review - End Caps,2.0,8.0,8.0,8.0,03-10-23,03-13-23,AS_CDS_EC_6100: FS,"AS_CDS_EC_6140: FS, AS_CDS_EC_6130: FS",SLAC,0%,2003.2003_Research Technical Manager,2003_Research Technical Manager,Labor,0.0d,2.0,2.0,At Completion Units,3/3/2023,3/6/2023,DM-C11-30%,0,0,0,0,0,0,0,0,0,1.03_Accelerator Systems (AS),1.03.04_AS Cryogenic Distribution System (CDS),1.03.04.06_AS Cryogenic Distribution System Procurement and Fabrication,1.03.04.06.60_End Caps (includes EC3 & Downstream One) - Procurement & Fab,AS_CDS_EC_6120_R_PDR: Prelim. Design Review - End Caps,Technical Manager,Engineer,SLAC,Labor
91262,1.03,1.03.04,1.03.04.06,1.03.04.06.60,1.03.04.06.60,End Caps (includes EC3 & Downstream One) - Procurement & Fab,AS_CDS_EC_6180,Factory Acceptance Test (FAT) - End Caps,2.0,4.0,4.0,4.0,07-05-24,07-08-24,"AS_CDS_EC_6170: FF, AS_CDS_EC_6160: FS",AS_CDS_EC_6190: FS,SLAC,0%,52168.52168_METS - Mechanical Design,52168_METS - Mechanical Design,Labor,0.0d,2.0,2.0,At Completion Units,3/21/2024,3/22/2024,0,0,0,0,0,0,0,0,0,0,1.03_Accelerator Systems (AS),1.03.04_AS Cryogenic Distribution System (CDS),1.03.04.06_AS Cryogenic Distribution System Procurement and Fabrication,1.03.04.06.60_End Caps (includes EC3 & Downstream One) - Procurement & Fab,AS_CDS_EC_6180_Factory Acceptance Test (FAT) - End Caps,Mechanical,,SLAC,Labor
91263,1.03,1.03.04,1.03.04.06,1.03.04.06.60,1.03.04.06.60,End Caps (includes EC3 & Downstream One) - Procurement & Fab,AS_CDS_EC_6170,SLAC Support for Contractor Fabrication - End Caps,182.0,100.0,100.0,100.0,06-23-23,03-27-24,AS_CDS_EC_6140: FS,"AS_CDS_EC_6180: FF, AS_CDS_EC_6210: FS",SLAC,0%,52168.52168_METS - Mechanical Design,52168_METS - Mechanical Design,Labor,0.0d,182.0,182.0,At Completion Units,6/16/2023,3/20/2024,0,0,0,0,0,0,0,0,0,0,1.03_Accelerator Systems (AS),1.03.04_AS Cryogenic Distribution System (CDS),1.03.04.06_AS Cryogenic Distribution System Procurement and Fabrication,1.03.04.06.60_End Caps (includes EC3 & Downstream One) - Procurement & Fab,AS_CDS_EC_6170_SLAC Support for Contractor Fabrication - End Caps,Mechanical,,SLAC,Labor
91264,1.03,1.03.04,1.03.04.06,1.03.04.06.60,1.03.04.06.60,End Caps (includes EC3 & Downstream One) - Procurement & Fab,AS_CDS_EC_6140,R_FDR: Final Design Review - End Caps,2.0,16.0,16.0,16.0,06-21-23,06-22-23,"AS_CDS_EC_6120: FS, AS_CDS_EC_6110: FF, AS_CDS_EC_6130: FS","AS_CDS_EC_6170: FS, AS_CDS_EC_6150: FS, AS_M4_3060: FS, AS_M4_3070: FS, AS_CDS_EC_6145: FS, AS_CDS_EC_6143: FS",SLAC,0%,52168.52168_METS - Mechanical Design,52168_METS - Mechanical Design,Labor,0.0d,2.0,2.0,At Completion Units,6/14/2023,6/15/2023,DM-C12-20%,0,0,0,0,0,0,0,0,0,1.03_Accelerator Systems (AS),1.03.04_AS Cryogenic Distribution System (CDS),1.03.04.06_AS Cryogenic Distribution System Procurement and Fabrication,1.03.04.06.60_End Caps (includes EC3 & Downstream One) - Procurement & Fab,AS_CDS_EC_6140_R_FDR: Final Design Review - End Caps,Mechanical,,SLAC,Labor
91265,1.03,1.03.04,1.03.04.06,1.03.04.06.60,1.03.04.06.60,End Caps (includes EC3 & Downstream One) - Procurement & Fab,AS_CDS_EC_6120,R_PDR: Prelim. Design Review - End Caps,2.0,16.0,16.0,16.0,03-10-23,03-13-23,AS_CDS_EC_6100: FS,"AS_CDS_EC_6140: FS, AS_CDS_EC_6130: FS",SLAC,0%,52168.52168_METS - Mechanical Design,52168_METS - Mechanical Design,Labor,0.0d,2.0,2.0,At Completion Units,3/3/2023,3/6/2023,DM-C11-30%,0,0,0,0,0,0,0,0,0,1.03_Accelerator Systems (AS),1.03.04_AS Cryogenic Distribution System (CDS),1.03.04.06_AS Cryogenic Distribution System Procurement and Fabrication,1.03.04.06.60_End Caps (includes EC3 & Downstream One) - Procurement & Fab,AS_CDS_EC_6120_R_PDR: Prelim. Design Review - End Caps,Mechanical,,SLAC,Labor
91266,1.03,1.03.04,1.03.04.06,1.03.04.06.60,1.03.04.06.60,End Caps (includes EC3 & Downstream One) - Procurement & Fab,AS_CDS_EC_6110,SLAC Support for Contractor Design - End Caps,140.0,70.0,70.0,70.0,11-14-22,06-16-23,AS_CDS_EC_6100: SS,AS_CDS_EC_6140: FF,SLAC,0%,52168.52168_METS - Mechanical Design,52168_METS - Mechanical Design,Labor,0.0d,140.0,140.0,At Completion Units,11/7/2022,6/9/2023,0,0,0,0,0,0,0,0,0,0,1.03_Accelerator Systems (AS),1.03.04_AS Cryogenic Distribution System (CDS),1.03.04.06_AS Cryogenic Distribution System Procurement and Fabrication,1.03.04.06.60_End Caps (includes EC3 & Downstream One) - Procurement & Fab,AS_CDS_EC_6110_SLAC Support for Contractor Design - End Caps,Mechanical,,SLAC,Labor
91267,1.03,1.03.04,1.03.04.06,1.03.04.06.60,1.03.04.06.60,End Caps (includes EC3 & Downstream One) - Procurement & Fab,AS_CDS_EC_6190,Shipping & Delivery - End Caps,60.0,8.0,8.0,8.0,07-09-24,10-01-24,AS_CDS_EC_6180: FS,AS_CDS_EC_6200: FS,SLAC,0%,52169.52169_METS Mechanical Engineer,52169_METS Mechanical Engineer,Labor,0.0d,60.0,60.0,At Completion Units,3/25/2024,6/17/2024,0,0,0,0,0,0,0,0,0,0,1.03_Accelerator Systems (AS),1.03.04_AS Cryogenic Distribution System (CDS),1.03.04.06_AS Cryogenic Distribution System Procurement and Fabrication,1.03.04.06.60_End Caps (includes EC3 & Downstream One) - Procurement & Fab,AS_CDS_EC_6190_Shipping & Delivery - End Caps,Mechanical,,SLAC,Labor
91268,1.03,1.03.04,1.03.04.06,1.03.04.06.60,1.03.04.06.60,End Caps (includes EC3 & Downstream One) - Procurement & Fab,AS_CDS_EC_6180,Factory Acceptance Test (FAT) - End Caps,2.0,32.0,32.0,32.0,07-05-24,07-08-24,"AS_CDS_EC_6170: FF, AS_CDS_EC_6160: FS",AS_CDS_EC_6190: FS,SLAC,0%,52169.52169_METS Mechanical Engineer,52169_METS Mechanical Engineer,Labor,0.0d,2.0,2.0,At Completion Units,3/21/2024,3/22/2024,0,0,0,0,0,0,0,0,0,0,1.03_Accelerator Systems (AS),1.03.04_AS Cryogenic Distribution System (CDS),1.03.04.06_AS Cryogenic Distribution System Procurement and Fabrication,1.03.04.06.60_End Caps (includes EC3 & Downstream One) - Procurement & Fab,AS_CDS_EC_6180_Factory Acceptance Test (FAT) - End Caps,Mechanical,,SLAC,Labor
91269,1.03,1.03.04,1.03.04.06,1.03.04.06.60,1.03.04.06.60,End Caps (includes EC3 & Downstream One) - Procurement & Fab,AS_CDS_EC_6170,SLAC Support for Contractor Fabrication - End Caps,182.0,200.0,200.0,200.0,06-23-23,03-27-24,AS_CDS_EC_6140: FS,"AS_CDS_EC_6180: FF, AS_CDS_EC_6210: FS",SLAC,0%,52169.52169_METS Mechanical Engineer,52169_METS Mechanical Engineer,Labor,0.0d,182.0,182.0,At Completion Units,6/16/2023,3/20/2024,0,0,0,0,0,0,0,0,0,0,1.03_Accelerator Systems (AS),1.03.04_AS Cryogenic Distribution System (CDS),1.03.04.06_AS Cryogenic Distribution System Procurement and Fabrication,1.03.04.06.60_End Caps (includes EC3 & Downstream One) - Procurement & Fab,AS_CDS_EC_6170_SLAC Support for Contractor Fabrication - End Caps,Mechanical,,SLAC,Labor
91270,1.03,1.03.04,1.03.04.06,1.03.04.06.60,1.03.04.06.60,End Caps (includes EC3 & Downstream One) - Procurement & Fab,AS_CDS_EC_6140,R_FDR: Final Design Review - End Caps,2.0,16.0,16.0,16.0,06-21-23,06-22-23,"AS_CDS_EC_6120: FS, AS_CDS_EC_6110: FF, AS_CDS_EC_6130: FS","AS_CDS_EC_6170: FS, AS_CDS_EC_6150: FS, AS_M4_3060: FS, AS_M4_3070: FS, AS_CDS_EC_6145: FS, AS_CDS_EC_6143: FS",SLAC,0%,52169.52169_METS Mechanical Engineer,52169_METS Mechanical Engineer,Labor,0.0d,2.0,2.0,At Completion Units,6/14/2023,6/15/2023,DM-C12-20%,0,0,0,0,0,0,0,0,0,1.03_Accelerator Systems (AS),1.03.04_AS Cryogenic Distribution System (CDS),1.03.04.06_AS Cryogenic Distribution System Procurement and Fabrication,1.03.04.06.60_End Caps (includes EC3 & Downstream One) - Procurement & Fab,AS_CDS_EC_6140_R_FDR: Final Design Review - End Caps,Mechanical,,SLAC,Labor
91271,1.03,1.03.04,1.03.04.06,1.03.04.06.60,1.03.04.06.60,End Caps (includes EC3 & Downstream One) - Procurement & Fab,AS_CDS_EC_6120,R_PDR: Prelim. Design Review - End Caps,2.0,16.0,16.0,16.0,03-10-23,03-13-23,AS_CDS_EC_6100: FS,"AS_CDS_EC_6140: FS, AS_CDS_EC_6130: FS",SLAC,0%,52169.52169_METS Mechanical Engineer,52169_METS Mechanical Engineer,Labor,0.0d,2.0,2.0,At Completion Units,3/3/2023,3/6/2023,DM-C11-30%,0,0,0,0,0,0,0,0,0,1.03_Accelerator Systems (AS),1.03.04_AS Cryogenic Distribution System (CDS),1.03.04.06_AS Cryogenic Distribution System Procurement and Fabrication,1.03.04.06.60_End Caps (includes EC3 & Downstream One) - Procurement & Fab,AS_CDS_EC_6120_R_PDR: Prelim. Design Review - End Caps,Mechanical,,SLAC,Labor
91272,1.03,1.03.04,1.03.04.06,1.03.04.06.60,1.03.04.06.60,End Caps (includes EC3 & Downstream One) - Procurement & Fab,AS_CDS_EC_6110,SLAC Support for Contractor Design - End Caps,140.0,200.0,200.0,200.0,11-14-22,06-16-23,AS_CDS_EC_6100: SS,AS_CDS_EC_6140: FF,SLAC,0%,52169.52169_METS Mechanical Engineer,52169_METS Mechanical Engineer,Labor,0.0d,140.0,140.0,At Completion Units,11/7/2022,6/9/2023,0,0,0,0,0,0,0,0,0,0,1.03_Accelerator Systems (AS),1.03.04_AS Cryogenic Distribution System (CDS),1.03.04.06_AS Cryogenic Distribution System Procurement and Fabrication,1.03.04.06.60_End Caps (includes EC3 & Downstream One) - Procurement & Fab,AS_CDS_EC_6110_SLAC Support for Contractor Design - End Caps,Mechanical,,SLAC,Labor
91273,1.03,1.03.04,1.03.04.06,1.03.04.06.60,1.03.04.06.60,End Caps (includes EC3 & Downstream One) - Procurement & Fab,AS_CDS_EC_6200,RCV: End Caps,1.0,267066.0,267066.0,267066.0,10-02-24,10-02-24,AS_CDS_EC_6190: FS,AS_CDS_EC_6210: FS,SLAC,0%,SL_MSSY.SLAC M&S (>$500K) (NO G&A) (gets ESC),SLAC M&S (>$500K) (NO G&A) (gets ESC),Nonlabor,0.0d,1.0,1.0,At Completion Units,6/18/2024,6/18/2024,0,0,0,0,0,0,0,0,0,0,1.03_Accelerator Systems (AS),1.03.04_AS Cryogenic Distribution System (CDS),1.03.04.06_AS Cryogenic Distribution System Procurement and Fabrication,1.03.04.06.60_End Caps (includes EC3 & Downstream One) - Procurement & Fab,AS_CDS_EC_6200_RCV: End Caps,Material,,SLAC,M&S
91274,1.03,1.03.04,1.03.04.06,1.03.04.06.60,1.03.04.06.60,End Caps (includes EC3 & Downstream One) - Procurement & Fab,AS_CDS_EC_6200,RCV: End Caps,1.0,346587.0,346587.0,346587.0,10-02-24,10-02-24,AS_CDS_EC_6190: FS,AS_CDS_EC_6210: FS,SLAC,0%,SL_MSSC.SLAC M&S (<$500K) (gets G&A) (gets ESC),SLAC M&S (<$500K) (gets G&A) (gets ESC),Nonlabor,0.0d,1.0,1.0,At Completion Units,6/18/2024,6/18/2024,0,0,0,0,0,0,0,0,0,0,1.03_Accelerator Systems (AS),1.03.04_AS Cryogenic Distribution System (CDS),1.03.04.06_AS Cryogenic Distribution System Procurement and Fabrication,1.03.04.06.60_End Caps (includes EC3 & Downstream One) - Procurement & Fab,AS_CDS_EC_6200_RCV: End Caps,Material,,SLAC,M&S
91275,1.03,1.03.04,1.03.04.06,1.03.04.06.60,1.03.04.06.60,End Caps (includes EC3 & Downstream One) - Procurement & Fab,AS_CDS_EC_6090,AWARD: Design - End Caps,1.0,153413.0,153413.0,153413.0,11-11-22,11-11-22,AS_CDS_EC_6080: FS,AS_CDS_EC_6100: FS,SLAC,0%,AWARD_USE.AWARD - Use this AWARD,AWARD - Use this AWARD,Nonlabor,0.0d,1.0,1.0,At Completion Units,11/4/2022,11/4/2022,AWARD > $500K,0,0,0,0,0,0,0,0,0,1.03_Accelerator Systems (AS),1.03.04_AS Cryogenic Distribution System (CDS),1.03.04.06_AS Cryogenic Distribution System Procurement and Fabrication,1.03.04.06.60_End Caps (includes EC3 & Downstream One) - Procurement & Fab,AS_CDS_EC_6090_AWARD: Design - End Caps,Material,,SLAC,M&S
91276,1.03,1.03.04,1.03.04.06,1.03.04.06.60,1.03.04.06.60,End Caps (includes EC3 & Downstream One) - Procurement & Fab,AS_CDS_EC_6020,RQN: Approval of Requisition - End Caps,1.0,767066.0,767066.0,767066.0,04-18-22,04-18-22,AS_CDS_EC_6010: FS,AS_CDS_EC_6030: FS,SLAC,0%,REQ.Requisition,Requisition,Nonlabor,0.0d,1.0,1.0,At Completion Units,4/11/2022,4/11/2022,RQN,0,0,0,0,0,0,0,0,0,1.03_Accelerator Systems (AS),1.03.04_AS Cryogenic Distribution System (CDS),1.03.04.06_AS Cryogenic Distribution System Procurement and Fabrication,1.03.04.06.60_End Caps (includes EC3 & Downstream One) - Procurement & Fab,AS_CDS_EC_6020_RQN: Approval of Requisition - End Caps,Material,,SLAC,M&S
91596,1.03,1.03.04,1.03.04.06,1.03.04.06.71,1.03.04.06.71,Beam Tubes (ECs/Tee/VB) - Procurement & Fab,AS_CDS_BT_6030,Prepare RFP - Beam Tubes (ECs/Tee/VB),15.0,8.0,8.0,8.0,08-19-22,09-09-22,AS_CDS_BT_6020: FS,AS_CDS_BT_6040: FS,SLAC,0%,52168.52168_METS - Mechanical Design,52168_METS - Mechanical Design,Labor,0.0d,15.0,15.0,At Completion Units,6/16/2022,7/7/2022,0,0,0,0,0,0,0,0,0,0,1.03_Accelerator Systems (AS),1.03.04_AS Cryogenic Distribution System (CDS),1.03.04.06_AS Cryogenic Distribution System Procurement and Fabrication,1.03.04.06.71_Beam Tubes (ECs/Tee/VB) - Procurement & Fab,AS_CDS_BT_6030_Prepare RFP - Beam Tubes (ECs/Tee/VB),Mechanical,,SLAC,Labor
91597,1.03,1.03.04,1.03.04.06,1.03.04.06.71,1.03.04.06.71,Beam Tubes (ECs/Tee/VB) - Procurement & Fab,AS_CDS_BT_6070,Evaluations/Negotiations - Beam Tubes (ECs/Tee/VB),35.0,4.0,4.0,4.0,10-10-22,11-29-22,AS_CDS_BT_6060: FS,AS_CDS_BT_6080: FS,SLAC,0%,0140_E3.0140_Engineer-Electrical_E3,0140_Engineer-Electrical_E3,Labor,0.0d,35.0,35.0,At Completion Units,8/5/2022,9/23/2022,0,0,0,0,0,0,0,0,0,0,1.03_Accelerator Systems (AS),1.03.04_AS Cryogenic Distribution System (CDS),1.03.04.06_AS Cryogenic Distribution System Procurement and Fabrication,1.03.04.06.71_Beam Tubes (ECs/Tee/VB) - Procurement & Fab,AS_CDS_BT_6070_Evaluations/Negotiations - Beam Tubes (ECs/Tee/VB),Electrical,,SLAC,Labor
91598,1.03,1.03.04,1.03.04.06,1.03.04.06.71,1.03.04.06.71,Beam Tubes (ECs/Tee/VB) - Procurement & Fab,AS_CDS_BT_6030,Prepare RFP - Beam Tubes (ECs/Tee/VB),15.0,2.0,2.0,2.0,08-19-22,09-09-22,AS_CDS_BT_6020: FS,AS_CDS_BT_6040: FS,SLAC,0%,0140_E3.0140_Engineer-Electrical_E3,0140_Engineer-Electrical_E3,Labor,0.0d,15.0,15.0,At Completion Units,6/16/2022,7/7/2022,0,0,0,0,0,0,0,0,0,0,1.03_Accelerator Systems (AS),1.03.04_AS Cryogenic Distribution System (CDS),1.03.04.06_AS Cryogenic Distribution System Procurement and Fabrication,1.03.04.06.71_Beam Tubes (ECs/Tee/VB) - Procurement & Fab,AS_CDS_BT_6030_Prepare RFP - Beam Tubes (ECs/Tee/VB),Electrical,,SLAC,Labor
91599,1.03,1.03.04,1.03.04.06,1.03.04.06.71,1.03.04.06.71,Beam Tubes (ECs/Tee/VB) - Procurement & Fab,AS_CDS_BT_6030,Prepare RFP - Beam Tubes (ECs/Tee/VB),15.0,4.0,4.0,4.0,08-19-22,09-09-22,AS_CDS_BT_6020: FS,AS_CDS_BT_6040: FS,SLAC,0%,2003.2003_Research Technical Manager,2003_Research Technical Manager,Labor,0.0d,15.0,15.0,At Completion Units,6/16/2022,7/7/2022,0,0,0,0,0,0,0,0,0,0,1.03_Accelerator Systems (AS),1.03.04_AS Cryogenic Distribution System (CDS),1.03.04.06_AS Cryogenic Distribution System Procurement and Fabrication,1.03.04.06.71_Beam Tubes (ECs/Tee/VB) - Procurement & Fab,AS_CDS_BT_6030_Prepare RFP - Beam Tubes (ECs/Tee/VB),Technical Manager,Engineer,SLAC,Labor
91600,1.03,1.03.04,1.03.04.06,1.03.04.06.71,1.03.04.06.71,Beam Tubes (ECs/Tee/VB) - Procurement & Fab,AS_CDS_BT_6070,Evaluations/Negotiations - Beam Tubes (ECs/Tee/VB),35.0,4.0,4.0,4.0,10-10-22,11-29-22,AS_CDS_BT_6060: FS,AS_CDS_BT_6080: FS,SLAC,0%,2003.2003_Research Technical Manager,2003_Research Technical Manager,Labor,0.0d,35.0,35.0,At Completion Units,8/5/2022,9/23/2022,0,0,0,0,0,0,0,0,0,0,1.03_Accelerator Systems (AS),1.03.04_AS Cryogenic Distribution System (CDS),1.03.04.06_AS Cryogenic Distribution System Procurement and Fabrication,1.03.04.06.71_Beam Tubes (ECs/Tee/VB) - Procurement & Fab,AS_CDS_BT_6070_Evaluations/Negotiations - Beam Tubes (ECs/Tee/VB),Technical Manager,Engineer,SLAC,Labor
91601,1.03,1.03.04,1.03.04.06,1.03.04.06.71,1.03.04.06.71,Beam Tubes (ECs/Tee/VB) - Procurement & Fab,AS_CDS_BT_6070,Evaluations/Negotiations - Beam Tubes (ECs/Tee/VB),35.0,32.0,32.0,32.0,10-10-22,11-29-22,AS_CDS_BT_6060: FS,AS_CDS_BT_6080: FS,SLAC,0%,52169.52169_METS Mechanical Engineer,52169_METS Mechanical Engineer,Labor,0.0d,35.0,35.0,At Completion Units,8/5/2022,9/23/2022,0,0,0,0,0,0,0,0,0,0,1.03_Accelerator Systems (AS),1.03.04_AS Cryogenic Distribution System (CDS),1.03.04.06_AS Cryogenic Distribution System Procurement and Fabrication,1.03.04.06.71_Beam Tubes (ECs/Tee/VB) - Procurement & Fab,AS_CDS_BT_6070_Evaluations/Negotiations - Beam Tubes (ECs/Tee/VB),Mechanical,,SLAC,Labor
91602,1.03,1.03.04,1.03.04.06,1.03.04.06.71,1.03.04.06.71,Beam Tubes (ECs/Tee/VB) - Procurement & Fab,AS_CDS_BT_6030,Prepare RFP - Beam Tubes (ECs/Tee/VB),15.0,8.0,8.0,8.0,08-19-22,09-09-22,AS_CDS_BT_6020: FS,AS_CDS_BT_6040: FS,SLAC,0%,52169.52169_METS Mechanical Engineer,52169_METS Mechanical Engineer,Labor,0.0d,15.0,15.0,At Completion Units,6/16/2022,7/7/2022,0,0,0,0,0,0,0,0,0,0,1.03_Accelerator Systems (AS),1.03.04_AS Cryogenic Distribution System (CDS),1.03.04.06_AS Cryogenic Distribution System Procurement and Fabrication,1.03.04.06.71_Beam Tubes (ECs/Tee/VB) - Procurement & Fab,AS_CDS_BT_6030_Prepare RFP - Beam Tubes (ECs/Tee/VB),Mechanical,,SLAC,Labor
91603,1.03,1.03.04,1.03.04.06,1.03.04.06.71,1.03.04.06.71,Beam Tubes (ECs/Tee/VB) - Procurement & Fab,AS_CDS_BT_6010,Prepare Requisition (Specs/SOW/ETC) - Beam Tubes (ECs/Tee/VB),25.0,20.0,20.0,20.0,07-14-22,08-17-22,AS_CDS_BT_5070: FS,AS_CDS_BT_6020: FS,SLAC,0%,52169.52169_METS Mechanical Engineer,52169_METS Mechanical Engineer,Labor,0.0d,25.0,25.0,At Completion Units,5/10/2022,6/14/2022,0,0,0,0,0,0,0,0,0,0,1.03_Accelerator Systems (AS),1.03.04_AS Cryogenic Distribution System (CDS),1.03.04.06_AS Cryogenic Distribution System Procurement and Fabrication,1.03.04.06.71_Beam Tubes (ECs/Tee/VB) - Procurement & Fab,AS_CDS_BT_6010_Prepare Requisition (Specs/SOW/ETC) - Beam Tubes (ECs/Tee/VB),Mechanical,,SLAC,Labor
91604,1.03,1.03.04,1.03.04.06,1.03.04.06.71,1.03.04.06.71,Beam Tubes (ECs/Tee/VB) - Procurement & Fab,AS_CDS_BT_6180,Factory Acceptance Test (FAT) - Beam Tubes (ECs/Tee/VB),2.0,8.0,8.0,8.0,04-19-24,04-22-24,"AS_CDS_BT_6170: FF, AS_CDS_BT_6160: FS",AS_CDS_BT_6190: FS,SLAC,0%,0140_E3.0140_Engineer-Electrical_E3,0140_Engineer-Electrical_E3,Labor,0.0d,2.0,2.0,At Completion Units,2/15/2024,2/16/2024,0,0,0,0,0,0,0,0,0,0,1.03_Accelerator Systems (AS),1.03.04_AS Cryogenic Distribution System (CDS),1.03.04.06_AS Cryogenic Distribution System Procurement and Fabrication,1.03.04.06.71_Beam Tubes (ECs/Tee/VB) - Procurement & Fab,AS_CDS_BT_6180_Factory Acceptance Test (FAT) - Beam Tubes (ECs/Tee/VB),Electrical,,SLAC,Labor
91605,1.03,1.03.04,1.03.04.06,1.03.04.06.71,1.03.04.06.71,Beam Tubes (ECs/Tee/VB) - Procurement & Fab,AS_CDS_BT_6170,SLAC Support for Contractor Fabrication - Beam Tubes (ECs/Tee/VB),182.0,8.0,8.0,8.0,07-18-23,04-18-24,AS_CDS_BT_6140: FS,"AS_CDS_BT_6180: FF, AS_CDS_BT_6210: FS",SLAC,0%,0140_E3.0140_Engineer-Electrical_E3,0140_Engineer-Electrical_E3,Labor,0.0d,182.0,182.0,At Completion Units,5/12/2023,2/14/2024,0,0,0,0,0,0,0,0,0,0,1.03_Accelerator Systems (AS),1.03.04_AS Cryogenic Distribution System (CDS),1.03.04.06_AS Cryogenic Distribution System Procurement and Fabrication,1.03.04.06.71_Beam Tubes (ECs/Tee/VB) - Procurement & Fab,AS_CDS_BT_6170_SLAC Support for Contractor Fabrication - Beam Tubes (ECs/Tee/VB),Electrical,,SLAC,Labor
91606,1.03,1.03.04,1.03.04.06,1.03.04.06.71,1.03.04.06.71,Beam Tubes (ECs/Tee/VB) - Procurement & Fab,AS_CDS_BT_6140,R_FDR: Final Design Review - Beam Tubes (ECs/Tee/VB),2.0,8.0,8.0,8.0,07-14-23,07-17-23,"AS_CDS_BT_6120: FS, AS_CDS_BT_6110: FF, AS_CDS_BT_6130: FS","AS_CDS_BT_6170: FS, AS_CDS_BT_6160: FS, AS_CDS_BT_6150: FS, AS_M4_3060: FS, AS_M4_3070: FS",SLAC,0%,0140_E3.0140_Engineer-Electrical_E3,0140_Engineer-Electrical_E3,Labor,0.0d,2.0,2.0,At Completion Units,5/10/2023,5/11/2023,DM-C12-20%,0,0,0,0,0,0,0,0,0,1.03_Accelerator Systems (AS),1.03.04_AS Cryogenic Distribution System (CDS),1.03.04.06_AS Cryogenic Distribution System Procurement and Fabrication,1.03.04.06.71_Beam Tubes (ECs/Tee/VB) - Procurement & Fab,AS_CDS_BT_6140_R_FDR: Final Design Review - Beam Tubes (ECs/Tee/VB),Electrical,,SLAC,Labor
91607,1.03,1.03.04,1.03.04.06,1.03.04.06.71,1.03.04.06.71,Beam Tubes (ECs/Tee/VB) - Procurement & Fab,AS_CDS_BT_6120,R_PDR: Prelim. Design Review -  Beam Tubes (ECs/Tee/VB),2.0,8.0,8.0,8.0,04-03-23,04-04-23,AS_CDS_BT_6100: FS,"AS_CDS_BT_6140: FS, AS_CDS_BT_6130: FS",SLAC,0%,0140_E3.0140_Engineer-Electrical_E3,0140_Engineer-Electrical_E3,Labor,0.0d,2.0,2.0,At Completion Units,1/27/2023,1/30/2023,DM-C11-30%,0,0,0,0,0,0,0,0,0,1.03_Accelerator Systems (AS),1.03.04_AS Cryogenic Distribution System (CDS),1.03.04.06_AS Cryogenic Distribution System Procurement and Fabrication,1.03.04.06.71_Beam Tubes (ECs/Tee/VB) - Procurement & Fab,AS_CDS_BT_6120_R_PDR: Prelim. Design Review -  Beam Tubes (ECs/Tee/VB),Electrical,,SLAC,Labor
91608,1.03,1.03.04,1.03.04.06,1.03.04.06.71,1.03.04.06.71,Beam Tubes (ECs/Tee/VB) - Procurement & Fab,AS_CDS_BT_6180,Factory Acceptance Test (FAT) - Beam Tubes (ECs/Tee/VB),2.0,40.0,40.0,40.0,04-19-24,04-22-24,"AS_CDS_BT_6170: FF, AS_CDS_BT_6160: FS",AS_CDS_BT_6190: FS,SLAC,0%,2003.2003_Research Technical Manager,2003_Research Technical Manager,Labor,0.0d,2.0,2.0,At Completion Units,2/15/2024,2/16/2024,0,0,0,0,0,0,0,0,0,0,1.03_Accelerator Systems (AS),1.03.04_AS Cryogenic Distribution System (CDS),1.03.04.06_AS Cryogenic Distribution System Procurement and Fabrication,1.03.04.06.71_Beam Tubes (ECs/Tee/VB) - Procurement & Fab,AS_CDS_BT_6180_Factory Acceptance Test (FAT) - Beam Tubes (ECs/Tee/VB),Technical Manager,Engineer,SLAC,Labor
91609,1.03,1.03.04,1.03.04.06,1.03.04.06.71,1.03.04.06.71,Beam Tubes (ECs/Tee/VB) - Procurement & Fab,AS_CDS_BT_6170,SLAC Support for Contractor Fabrication - Beam Tubes (ECs/Tee/VB),182.0,40.0,40.0,40.0,07-18-23,04-18-24,AS_CDS_BT_6140: FS,"AS_CDS_BT_6180: FF, AS_CDS_BT_6210: FS",SLAC,0%,2003.2003_Research Technical Manager,2003_Research Technical Manager,Labor,0.0d,182.0,182.0,At Completion Units,5/12/2023,2/14/2024,0,0,0,0,0,0,0,0,0,0,1.03_Accelerator Systems (AS),1.03.04_AS Cryogenic Distribution System (CDS),1.03.04.06_AS Cryogenic Distribution System Procurement and Fabrication,1.03.04.06.71_Beam Tubes (ECs/Tee/VB) - Procurement & Fab,AS_CDS_BT_6170_SLAC Support for Contractor Fabrication - Beam Tubes (ECs/Tee/VB),Technical Manager,Engineer,SLAC,Labor
91610,1.03,1.03.04,1.03.04.06,1.03.04.06.71,1.03.04.06.71,Beam Tubes (ECs/Tee/VB) - Procurement & Fab,AS_CDS_BT_6140,R_FDR: Final Design Review - Beam Tubes (ECs/Tee/VB),2.0,8.0,8.0,8.0,07-14-23,07-17-23,"AS_CDS_BT_6120: FS, AS_CDS_BT_6110: FF, AS_CDS_BT_6130: FS","AS_CDS_BT_6170: FS, AS_CDS_BT_6160: FS, AS_CDS_BT_6150: FS, AS_M4_3060: FS, AS_M4_3070: FS",SLAC,0%,2003.2003_Research Technical Manager,2003_Research Technical Manager,Labor,0.0d,2.0,2.0,At Completion Units,5/10/2023,5/11/2023,DM-C12-20%,0,0,0,0,0,0,0,0,0,1.03_Accelerator Systems (AS),1.03.04_AS Cryogenic Distribution System (CDS),1.03.04.06_AS Cryogenic Distribution System Procurement and Fabrication,1.03.04.06.71_Beam Tubes (ECs/Tee/VB) - Procurement & Fab,AS_CDS_BT_6140_R_FDR: Final Design Review - Beam Tubes (ECs/Tee/VB),Technical Manager,Engineer,SLAC,Labor
91611,1.03,1.03.04,1.03.04.06,1.03.04.06.71,1.03.04.06.71,Beam Tubes (ECs/Tee/VB) - Procurement & Fab,AS_CDS_BT_6120,R_PDR: Prelim. Design Review -  Beam Tubes (ECs/Tee/VB),2.0,8.0,8.0,8.0,04-03-23,04-04-23,AS_CDS_BT_6100: FS,"AS_CDS_BT_6140: FS, AS_CDS_BT_6130: FS",SLAC,0%,2003.2003_Research Technical Manager,2003_Research Technical Manager,Labor,0.0d,2.0,2.0,At Completion Units,1/27/2023,1/30/2023,DM-C11-30%,0,0,0,0,0,0,0,0,0,1.03_Accelerator Systems (AS),1.03.04_AS Cryogenic Distribution System (CDS),1.03.04.06_AS Cryogenic Distribution System Procurement and Fabrication,1.03.04.06.71_Beam Tubes (ECs/Tee/VB) - Procurement & Fab,AS_CDS_BT_6120_R_PDR: Prelim. Design Review -  Beam Tubes (ECs/Tee/VB),Technical Manager,Engineer,SLAC,Labor
91612,1.03,1.03.04,1.03.04.06,1.03.04.06.71,1.03.04.06.71,Beam Tubes (ECs/Tee/VB) - Procurement & Fab,AS_CDS_BT_6180,Factory Acceptance Test (FAT) - Beam Tubes (ECs/Tee/VB),2.0,4.0,4.0,4.0,04-19-24,04-22-24,"AS_CDS_BT_6170: FF, AS_CDS_BT_6160: FS",AS_CDS_BT_6190: FS,SLAC,0%,52168.52168_METS - Mechanical Design,52168_METS - Mechanical Design,Labor,0.0d,2.0,2.0,At Completion Units,2/15/2024,2/16/2024,0,0,0,0,0,0,0,0,0,0,1.03_Accelerator Systems (AS),1.03.04_AS Cryogenic Distribution System (CDS),1.03.04.06_AS Cryogenic Distribution System Procurement and Fabrication,1.03.04.06.71_Beam Tubes (ECs/Tee/VB) - Procurement & Fab,AS_CDS_BT_6180_Factory Acceptance Test (FAT) - Beam Tubes (ECs/Tee/VB),Mechanical,,SLAC,Labor
91613,1.03,1.03.04,1.03.04.06,1.03.04.06.71,1.03.04.06.71,Beam Tubes (ECs/Tee/VB) - Procurement & Fab,AS_CDS_BT_6170,SLAC Support for Contractor Fabrication - Beam Tubes (ECs/Tee/VB),182.0,100.0,100.0,100.0,07-18-23,04-18-24,AS_CDS_BT_6140: FS,"AS_CDS_BT_6180: FF, AS_CDS_BT_6210: FS",SLAC,0%,52168.52168_METS - Mechanical Design,52168_METS - Mechanical Design,Labor,0.0d,182.0,182.0,At Completion Units,5/12/2023,2/14/2024,0,0,0,0,0,0,0,0,0,0,1.03_Accelerator Systems (AS),1.03.04_AS Cryogenic Distribution System (CDS),1.03.04.06_AS Cryogenic Distribution System Procurement and Fabrication,1.03.04.06.71_Beam Tubes (ECs/Tee/VB) - Procurement & Fab,AS_CDS_BT_6170_SLAC Support for Contractor Fabrication - Beam Tubes (ECs/Tee/VB),Mechanical,,SLAC,Labor
91614,1.03,1.03.04,1.03.04.06,1.03.04.06.71,1.03.04.06.71,Beam Tubes (ECs/Tee/VB) - Procurement & Fab,AS_CDS_BT_6140,R_FDR: Final Design Review - Beam Tubes (ECs/Tee/VB),2.0,16.0,16.0,16.0,07-14-23,07-17-23,"AS_CDS_BT_6120: FS, AS_CDS_BT_6110: FF, AS_CDS_BT_6130: FS","AS_CDS_BT_6170: FS, AS_CDS_BT_6160: FS, AS_CDS_BT_6150: FS, AS_M4_3060: FS, AS_M4_3070: FS",SLAC,0%,52168.52168_METS - Mechanical Design,52168_METS - Mechanical Design,Labor,0.0d,2.0,2.0,At Completion Units,5/10/2023,5/11/2023,DM-C12-20%,0,0,0,0,0,0,0,0,0,1.03_Accelerator Systems (AS),1.03.04_AS Cryogenic Distribution System (CDS),1.03.04.06_AS Cryogenic Distribution System Procurement and Fabrication,1.03.04.06.71_Beam Tubes (ECs/Tee/VB) - Procurement & Fab,AS_CDS_BT_6140_R_FDR: Final Design Review - Beam Tubes (ECs/Tee/VB),Mechanical,,SLAC,Labor
91615,1.03,1.03.04,1.03.04.06,1.03.04.06.71,1.03.04.06.71,Beam Tubes (ECs/Tee/VB) - Procurement & Fab,AS_CDS_BT_6120,R_PDR: Prelim. Design Review -  Beam Tubes (ECs/Tee/VB),2.0,16.0,16.0,16.0,04-03-23,04-04-23,AS_CDS_BT_6100: FS,"AS_CDS_BT_6140: FS, AS_CDS_BT_6130: FS",SLAC,0%,52168.52168_METS - Mechanical Design,52168_METS - Mechanical Design,Labor,0.0d,2.0,2.0,At Completion Units,1/27/2023,1/30/2023,DM-C11-30%,0,0,0,0,0,0,0,0,0,1.03_Accelerator Systems (AS),1.03.04_AS Cryogenic Distribution System (CDS),1.03.04.06_AS Cryogenic Distribution System Procurement and Fabrication,1.03.04.06.71_Beam Tubes (ECs/Tee/VB) - Procurement & Fab,AS_CDS_BT_6120_R_PDR: Prelim. Design Review -  Beam Tubes (ECs/Tee/VB),Mechanical,,SLAC,Labor
91616,1.03,1.03.04,1.03.04.06,1.03.04.06.71,1.03.04.06.71,Beam Tubes (ECs/Tee/VB) - Procurement & Fab,AS_CDS_BT_6110,SLAC Support for Contractor Design -  Beam Tubes (ECs/Tee/VB),140.0,70.0,70.0,70.0,12-08-22,07-11-23,AS_CDS_BT_6100: SS,AS_CDS_BT_6140: FF,SLAC,0%,52168.52168_METS - Mechanical Design,52168_METS - Mechanical Design,Labor,0.0d,140.0,140.0,At Completion Units,10/4/2022,5/5/2023,0,0,0,0,0,0,0,0,0,0,1.03_Accelerator Systems (AS),1.03.04_AS Cryogenic Distribution System (CDS),1.03.04.06_AS Cryogenic Distribution System Procurement and Fabrication,1.03.04.06.71_Beam Tubes (ECs/Tee/VB) - Procurement & Fab,AS_CDS_BT_6110_SLAC Support for Contractor Design -  Beam Tubes (ECs/Tee/VB),Mechanical,,SLAC,Labor
91617,1.03,1.03.04,1.03.04.06,1.03.04.06.71,1.03.04.06.71,Beam Tubes (ECs/Tee/VB) - Procurement & Fab,AS_CDS_BT_6190,Shipping & Delivery - Beam Tubes (ECs/Tee/VB),10.0,8.0,8.0,8.0,04-23-24,05-06-24,AS_CDS_BT_6180: FS,AS_CDS_BT_6200: FS,SLAC,0%,52169.52169_METS Mechanical Engineer,52169_METS Mechanical Engineer,Labor,0.0d,10.0,10.0,At Completion Units,2/20/2024,3/4/2024,0,0,0,0,0,0,0,0,0,0,1.03_Accelerator Systems (AS),1.03.04_AS Cryogenic Distribution System (CDS),1.03.04.06_AS Cryogenic Distribution System Procurement and Fabrication,1.03.04.06.71_Beam Tubes (ECs/Tee/VB) - Procurement & Fab,AS_CDS_BT_6190_Shipping & Delivery - Beam Tubes (ECs/Tee/VB),Mechanical,,SLAC,Labor
91618,1.03,1.03.04,1.03.04.06,1.03.04.06.71,1.03.04.06.71,Beam Tubes (ECs/Tee/VB) - Procurement & Fab,AS_CDS_BT_6180,Factory Acceptance Test (FAT) - Beam Tubes (ECs/Tee/VB),2.0,32.0,32.0,32.0,04-19-24,04-22-24,"AS_CDS_BT_6170: FF, AS_CDS_BT_6160: FS",AS_CDS_BT_6190: FS,SLAC,0%,52169.52169_METS Mechanical Engineer,52169_METS Mechanical Engineer,Labor,0.0d,2.0,2.0,At Completion Units,2/15/2024,2/16/2024,0,0,0,0,0,0,0,0,0,0,1.03_Accelerator Systems (AS),1.03.04_AS Cryogenic Distribution System (CDS),1.03.04.06_AS Cryogenic Distribution System Procurement and Fabrication,1.03.04.06.71_Beam Tubes (ECs/Tee/VB) - Procurement & Fab,AS_CDS_BT_6180_Factory Acceptance Test (FAT) - Beam Tubes (ECs/Tee/VB),Mechanical,,SLAC,Labor
91619,1.03,1.03.04,1.03.04.06,1.03.04.06.71,1.03.04.06.71,Beam Tubes (ECs/Tee/VB) - Procurement & Fab,AS_CDS_BT_6170,SLAC Support for Contractor Fabrication - Beam Tubes (ECs/Tee/VB),182.0,200.0,200.0,200.0,07-18-23,04-18-24,AS_CDS_BT_6140: FS,"AS_CDS_BT_6180: FF, AS_CDS_BT_6210: FS",SLAC,0%,52169.52169_METS Mechanical Engineer,52169_METS Mechanical Engineer,Labor,0.0d,182.0,182.0,At Completion Units,5/12/2023,2/14/2024,0,0,0,0,0,0,0,0,0,0,1.03_Accelerator Systems (AS),1.03.04_AS Cryogenic Distribution System (CDS),1.03.04.06_AS Cryogenic Distribution System Procurement and Fabrication,1.03.04.06.71_Beam Tubes (ECs/Tee/VB) - Procurement & Fab,AS_CDS_BT_6170_SLAC Support for Contractor Fabrication - Beam Tubes (ECs/Tee/VB),Mechanical,,SLAC,Labor
91620,1.03,1.03.04,1.03.04.06,1.03.04.06.71,1.03.04.06.71,Beam Tubes (ECs/Tee/VB) - Procurement & Fab,AS_CDS_BT_6140,R_FDR: Final Design Review - Beam Tubes (ECs/Tee/VB),2.0,16.0,16.0,16.0,07-14-23,07-17-23,"AS_CDS_BT_6120: FS, AS_CDS_BT_6110: FF, AS_CDS_BT_6130: FS","AS_CDS_BT_6170: FS, AS_CDS_BT_6160: FS, AS_CDS_BT_6150: FS, AS_M4_3060: FS, AS_M4_3070: FS",SLAC,0%,52169.52169_METS Mechanical Engineer,52169_METS Mechanical Engineer,Labor,0.0d,2.0,2.0,At Completion Units,5/10/2023,5/11/2023,DM-C12-20%,0,0,0,0,0,0,0,0,0,1.03_Accelerator Systems (AS),1.03.04_AS Cryogenic Distribution System (CDS),1.03.04.06_AS Cryogenic Distribution System Procurement and Fabrication,1.03.04.06.71_Beam Tubes (ECs/Tee/VB) - Procurement & Fab,AS_CDS_BT_6140_R_FDR: Final Design Review - Beam Tubes (ECs/Tee/VB),Mechanical,,SLAC,Labor
91621,1.03,1.03.04,1.03.04.06,1.03.04.06.71,1.03.04.06.71,Beam Tubes (ECs/Tee/VB) - Procurement & Fab,AS_CDS_BT_6120,R_PDR: Prelim. Design Review -  Beam Tubes (ECs/Tee/VB),2.0,16.0,16.0,16.0,04-03-23,04-04-23,AS_CDS_BT_6100: FS,"AS_CDS_BT_6140: FS, AS_CDS_BT_6130: FS",SLAC,0%,52169.52169_METS Mechanical Engineer,52169_METS Mechanical Engineer,Labor,0.0d,2.0,2.0,At Completion Units,1/27/2023,1/30/2023,DM-C11-30%,0,0,0,0,0,0,0,0,0,1.03_Accelerator Systems (AS),1.03.04_AS Cryogenic Distribution System (CDS),1.03.04.06_AS Cryogenic Distribution System Procurement and Fabrication,1.03.04.06.71_Beam Tubes (ECs/Tee/VB) - Procurement & Fab,AS_CDS_BT_6120_R_PDR: Prelim. Design Review -  Beam Tubes (ECs/Tee/VB),Mechanical,,SLAC,Labor
91622,1.03,1.03.04,1.03.04.06,1.03.04.06.71,1.03.04.06.71,Beam Tubes (ECs/Tee/VB) - Procurement & Fab,AS_CDS_BT_6110,SLAC Support for Contractor Design -  Beam Tubes (ECs/Tee/VB),140.0,200.0,200.0,200.0,12-08-22,07-11-23,AS_CDS_BT_6100: SS,AS_CDS_BT_6140: FF,SLAC,0%,52169.52169_METS Mechanical Engineer,52169_METS Mechanical Engineer,Labor,0.0d,140.0,140.0,At Completion Units,10/4/2022,5/5/2023,0,0,0,0,0,0,0,0,0,0,1.03_Accelerator Systems (AS),1.03.04_AS Cryogenic Distribution System (CDS),1.03.04.06_AS Cryogenic Distribution System Procurement and Fabrication,1.03.04.06.71_Beam Tubes (ECs/Tee/VB) - Procurement & Fab,AS_CDS_BT_6110_SLAC Support for Contractor Design -  Beam Tubes (ECs/Tee/VB),Mechanical,,SLAC,Labor
91623,1.03,1.03.04,1.03.04.06,1.03.04.06.71,1.03.04.06.71,Beam Tubes (ECs/Tee/VB) - Procurement & Fab,AS_CDS_BT_6200,RCV: Beam Tubes (ECs/Tee/VB),1.0,300000.0,300000.0,300000.0,05-07-24,05-07-24,AS_CDS_BT_6190: FS,AS_CDS_BT_6210: FS,SLAC,0%,SL_MSSC.SLAC M&S (<$500K) (gets G&A) (gets ESC),SLAC M&S (<$500K) (gets G&A) (gets ESC),Nonlabor,0.0d,1.0,1.0,At Completion Units,3/5/2024,3/5/2024,0,0,0,0,0,0,0,0,0,0,1.03_Accelerator Systems (AS),1.03.04_AS Cryogenic Distribution System (CDS),1.03.04.06_AS Cryogenic Distribution System Procurement and Fabrication,1.03.04.06.71_Beam Tubes (ECs/Tee/VB) - Procurement & Fab,AS_CDS_BT_6200_RCV: Beam Tubes (ECs/Tee/VB),Material,,SLAC,M&S
91624,1.03,1.03.04,1.03.04.06,1.03.04.06.71,1.03.04.06.71,Beam Tubes (ECs/Tee/VB) - Procurement & Fab,AS_CDS_BT_6090,AWARD: Procurement - Beam Tubes (ECs/Tee/VB),1.0,300000.0,300000.0,300000.0,12-07-22,12-07-22,AS_CDS_BT_6080: FS,AS_CDS_BT_6100: FS,SLAC,0%,AWARD_USE.AWARD - Use this AWARD,AWARD - Use this AWARD,Nonlabor,0.0d,1.0,1.0,At Completion Units,10/3/2022,10/3/2022,AWARD < $500K,0,0,0,0,0,0,0,0,0,1.03_Accelerator Systems (AS),1.03.04_AS Cryogenic Distribution System (CDS),1.03.04.06_AS Cryogenic Distribution System Procurement and Fabrication,1.03.04.06.71_Beam Tubes (ECs/Tee/VB) - Procurement & Fab,AS_CDS_BT_6090_AWARD: Procurement - Beam Tubes (ECs/Tee/VB),Material,,SLAC,M&S
91625,1.03,1.03.04,1.03.04.06,1.03.04.06.71,1.03.04.06.71,Beam Tubes (ECs/Tee/VB) - Procurement & Fab,AS_CDS_BT_6020,RQN: Approval of Requisition - Beam Tubes (ECs/Tee/VB),1.0,300000.0,300000.0,300000.0,08-18-22,08-18-22,AS_CDS_BT_6010: FS,AS_CDS_BT_6030: FS,SLAC,0%,REQ.Requisition,Requisition,Nonlabor,0.0d,1.0,1.0,At Completion Units,6/15/2022,6/15/2022,RQN,0,0,0,0,0,0,0,0,0,1.03_Accelerator Systems (AS),1.03.04_AS Cryogenic Distribution System (CDS),1.03.04.06_AS Cryogenic Distribution System Procurement and Fabrication,1.03.04.06.71_Beam Tubes (ECs/Tee/VB) - Procurement & Fab,AS_CDS_BT_6020_RQN: Approval of Requisition - Beam Tubes (ECs/Tee/VB),Material,,SLAC,M&S
91945,1.03,1.03.04,1.03.04.06,1.03.04.06.72,1.03.04.06.72,Beam Tubes Copper Plating and PF Cleaning - Procurement & Fab,AS_CDS_BC_6070,SLAC Support - BT Copper Plating and PF Cleaning,40.0,200.0,200.0,200.0,06-04-24,07-30-24,AS_CDS_BC_6060: FS,AS_CDS_BC_6080: FF,SLAC,0%,52169.52169_METS Mechanical Engineer,52169_METS Mechanical Engineer,Labor,0.0d,40.0,40.0,At Completion Units,4/1/2024,5/24/2024,0,0,0,0,0,0,0,0,0,0,1.03_Accelerator Systems (AS),1.03.04_AS Cryogenic Distribution System (CDS),1.03.04.06_AS Cryogenic Distribution System Procurement and Fabrication,1.03.04.06.72_Beam Tubes Copper Plating and PF Cleaning - Procurement & Fab,AS_CDS_BC_6070_SLAC Support - BT Copper Plating and PF Cleaning,Mechanical,,SLAC,Labor
91946,1.03,1.03.04,1.03.04.06,1.03.04.06.72,1.03.04.06.72,Beam Tubes Copper Plating and PF Cleaning - Procurement & Fab,AS_CDS_BC_6060,RCV: Goods/Services - BT Copper Plating and PF Cleaning,1.0,10000.0,10000.0,10000.0,06-03-24,06-03-24,AS_CDS_BC_6050: FS,AS_CDS_BC_6070: FS,SLAC,0%,SL_MSSC.SLAC M&S (<$500K) (gets G&A) (gets ESC),SLAC M&S (<$500K) (gets G&A) (gets ESC),Nonlabor,0.0d,1.0,1.0,At Completion Units,3/29/2024,3/29/2024,0,0,0,0,0,0,0,0,0,0,1.03_Accelerator Systems (AS),1.03.04_AS Cryogenic Distribution System (CDS),1.03.04.06_AS Cryogenic Distribution System Procurement and Fabrication,1.03.04.06.72_Beam Tubes Copper Plating and PF Cleaning - Procurement & Fab,AS_CDS_BC_6060_RCV: Goods/Services - BT Copper Plating and PF Cleaning,Material,,SLAC,M&S
91947,1.03,1.03.04,1.03.04.06,1.03.04.06.72,1.03.04.06.72,Beam Tubes Copper Plating and PF Cleaning - Procurement & Fab,AS_CDS_BC_6040,AWARD: Procurement - BT Copper Plating and PF Cleaning,1.0,10000.0,10000.0,10000.0,05-23-24,05-23-24,AS_CDS_BC_6030: FS,AS_CDS_BC_6050: FS,SLAC,0%,AWARD_USE.AWARD - Use this AWARD,AWARD - Use this AWARD,Nonlabor,0.0d,1.0,1.0,At Completion Units,3/21/2024,3/21/2024,AWARD < $500K,0,0,0,0,0,0,0,0,0,1.03_Accelerator Systems (AS),1.03.04_AS Cryogenic Distribution System (CDS),1.03.04.06_AS Cryogenic Distribution System Procurement and Fabrication,1.03.04.06.72_Beam Tubes Copper Plating and PF Cleaning - Procurement & Fab,AS_CDS_BC_6040_AWARD: Procurement - BT Copper Plating and PF Cleaning,Material,,SLAC,M&S
91948,1.03,1.03.04,1.03.04.06,1.03.04.06.72,1.03.04.06.72,Beam Tubes Copper Plating and PF Cleaning - Procurement & Fab,AS_CDS_BC_6020,RQN: Approval of Requisition - BT Copper Plating and PF Cleaning,1.0,10000.0,10000.0,10000.0,05-15-24,05-15-24,AS_CDS_BC_6010: FS,AS_CDS_BC_6030: FS,SLAC,0%,REQ.Requisition,Requisition,Nonlabor,0.0d,1.0,1.0,At Completion Units,3/13/2024,3/13/2024,RQN,0,0,0,0,0,0,0,0,0,1.03_Accelerator Systems (AS),1.03.04_AS Cryogenic Distribution System (CDS),1.03.04.06_AS Cryogenic Distribution System Procurement and Fabrication,1.03.04.06.72_Beam Tubes Copper Plating and PF Cleaning - Procurement & Fab,AS_CDS_BC_6020_RQN: Approval of Requisition - BT Copper Plating and PF Cleaning,Material,,SLAC,M&S
92587,1.03,1.03.04,1.03.04.20,1.03.04.20.10,1.03.04.20.10,Interface Box 3 - Installation Support,AS_CDS_IB_9060,Verification and Test - Interface Box 3,10.0,96.0,96.0,96.0,07-24-25,08-06-25,AS_CDS_IB_9040: FS,AS_CDS_IB_9210: FS,SLAC,0%,0140_E3.0140_Engineer-Electrical_E3,0140_Engineer-Electrical_E3,Labor,0.0d,10.0,10.0,At Completion Units,7/24/2025,8/6/2025,0,0,0,0,0,0,0,0,0,0,1.03_Accelerator Systems (AS),1.03.04_AS Cryogenic Distribution System (CDS),1.03.04.20_AS Cryogenic Distribution System Installation,1.03.04.20.10_Interface Box 3 - Installation Support,AS_CDS_IB_9060_Verification and Test - Interface Box 3,Electrical,,SLAC,Labor
92588,1.03,1.03.04,1.03.04.20,1.03.04.20.10,1.03.04.20.10,Interface Box 3 - Installation Support,AS_CDS_IB_9180,AWARD: Procurement - Installation Support - Interface Box 3,5.0,594234.0,594234.0,594234.0,06-06-25,06-12-25,AS_CDS_IB_9170: FS,AS_CDS_IB_9190: FS,SLAC,0%,AWARD_USE.AWARD - Use this AWARD,AWARD - Use this AWARD,Nonlabor,0.0d,5.0,5.0,At Completion Units,3/13/2025,3/19/2025,AWARD > $500K,0,0,0,0,0,0,0,0,0,1.03_Accelerator Systems (AS),1.03.04_AS Cryogenic Distribution System (CDS),1.03.04.20_AS Cryogenic Distribution System Installation,1.03.04.20.10_Interface Box 3 - Installation Support,AS_CDS_IB_9180_AWARD: Procurement - Installation Support - Interface Box 3,Material,,SLAC,M&S
92589,1.03,1.03.04,1.03.04.20,1.03.04.20.10,1.03.04.20.10,Interface Box 3 - Installation Support,AS_CDS_IB_9200,RCV: Goods/Services/Final Report - Installation Support - Interface Box 3,1.0,94234.0,94234.0,94234.0,03-16-26,03-16-26,AS_CDS_IB_9190: FS,AS_CDS_IB_9210: FS,SLAC,0%,SL_MSSY.SLAC M&S (>$500K) (NO G&A) (gets ESC),SLAC M&S (>$500K) (NO G&A) (gets ESC),Nonlabor,0.0d,1.0,1.0,At Completion Units,12/4/2025,12/4/2025,0,0,0,0,0,0,0,0,0,0,1.03_Accelerator Systems (AS),1.03.04_AS Cryogenic Distribution System (CDS),1.03.04.20_AS Cryogenic Distribution System Installation,1.03.04.20.10_Interface Box 3 - Installation Support,AS_CDS_IB_9200_RCV: Goods/Services/Final Report - Installation Support - Interface Box 3,Material,,SLAC,M&S
92590,1.03,1.03.04,1.03.04.20,1.03.04.20.10,1.03.04.20.10,Interface Box 3 - Installation Support,AS_CDS_IB_9110,RQN: Approval of Requisition -Installation Support - Interface Box 3,1.0,594234.0,594234.0,594234.0,11-07-24,11-07-24,AS_CDS_IB_9100: FS,AS_CDS_IB_9120: FS,SLAC,0%,REQ.Requisition,Requisition,Nonlabor,0.0d,1.0,1.0,At Completion Units,8/14/2024,8/14/2024,RQN,0,0,0,0,0,0,0,0,0,1.03_Accelerator Systems (AS),1.03.04_AS Cryogenic Distribution System (CDS),1.03.04.20_AS Cryogenic Distribution System Installation,1.03.04.20.10_Interface Box 3 - Installation Support,AS_CDS_IB_9110_RQN: Approval of Requisition -Installation Support - Interface Box 3,Material,,SLAC,M&S
92591,1.03,1.03.04,1.03.04.20,1.03.04.20.10,1.03.04.20.10,Interface Box 3 - Installation Support,AS_CDS_IB_9200,RCV: Goods/Services/Final Report - Installation Support - Interface Box 3,1.0,500000.0,500000.0,500000.0,03-16-26,03-16-26,AS_CDS_IB_9190: FS,AS_CDS_IB_9210: FS,SLAC,0%,SL_MSSC.SLAC M&S (<$500K) (gets G&A) (gets ESC),SLAC M&S (<$500K) (gets G&A) (gets ESC),Nonlabor,0.0d,1.0,1.0,At Completion Units,12/4/2025,12/4/2025,0,0,0,0,0,0,0,0,0,0,1.03_Accelerator Systems (AS),1.03.04_AS Cryogenic Distribution System (CDS),1.03.04.20_AS Cryogenic Distribution System Installation,1.03.04.20.10_Interface Box 3 - Installation Support,AS_CDS_IB_9200_RCV: Goods/Services/Final Report - Installation Support - Interface Box 3,Material,,SLAC,M&S
92592,1.03,1.03.04,1.03.04.20,1.03.04.20.10,1.03.04.20.10,Interface Box 3 - Installation Support,AS_CDS_IB_9000,Transport Support - Interface Box 3,10.0,32.0,32.0,32.0,09-05-24,09-18-24,AS_CDS_IB_6230: FS,AS_CDS_IB_9010: FS,SLAC,0%,52152.52152_FAC Fleet,52152_FAC Fleet,Labor,0.0d,10.0,10.0,At Completion Units,6/11/2024,6/24/2024,0,0,0,0,0,0,0,0,0,0,1.03_Accelerator Systems (AS),1.03.04_AS Cryogenic Distribution System (CDS),1.03.04.20_AS Cryogenic Distribution System Installation,1.03.04.20.10_Interface Box 3 - Installation Support,AS_CDS_IB_9000_Transport Support - Interface Box 3,Support System,,SLAC,Labor
92593,1.03,1.03.04,1.03.04.20,1.03.04.20.10,1.03.04.20.10,Interface Box 3 - Installation Support,AS_CDS_IB_9000,Transport Support - Interface Box 3,10.0,32.0,32.0,32.0,09-05-24,09-18-24,AS_CDS_IB_6230: FS,AS_CDS_IB_9010: FS,SLAC,0%,0140_E3.0140_Engineer-Electrical_E3,0140_Engineer-Electrical_E3,Labor,0.0d,10.0,10.0,At Completion Units,6/11/2024,6/24/2024,0,0,0,0,0,0,0,0,0,0,1.03_Accelerator Systems (AS),1.03.04_AS Cryogenic Distribution System (CDS),1.03.04.20_AS Cryogenic Distribution System Installation,1.03.04.20.10_Interface Box 3 - Installation Support,AS_CDS_IB_9000_Transport Support - Interface Box 3,Electrical,,SLAC,Labor
92594,1.03,1.03.04,1.03.04.20,1.03.04.20.10,1.03.04.20.10,Interface Box 3 - Installation Support,AS_CDS_IB_9000,Transport Support - Interface Box 3,10.0,10.0,10.0,10.0,09-05-24,09-18-24,AS_CDS_IB_6230: FS,AS_CDS_IB_9010: FS,SLAC,0%,52169.52169_METS Mechanical Engineer,52169_METS Mechanical Engineer,Labor,0.0d,10.0,10.0,At Completion Units,6/11/2024,6/24/2024,0,0,0,0,0,0,0,0,0,0,1.03_Accelerator Systems (AS),1.03.04_AS Cryogenic Distribution System (CDS),1.03.04.20_AS Cryogenic Distribution System Installation,1.03.04.20.10_Interface Box 3 - Installation Support,AS_CDS_IB_9000_Transport Support - Interface Box 3,Mechanical,,SLAC,Labor
92595,1.03,1.03.04,1.03.04.20,1.03.04.20.10,1.03.04.20.10,Interface Box 3 - Installation Support,AS_CDS_IB_9000,Transport Support - Interface Box 3,10.0,16.0,16.0,16.0,09-05-24,09-18-24,AS_CDS_IB_6230: FS,AS_CDS_IB_9010: FS,SLAC,0%,52149.52149_Field Construction Manager (FCM),52149_Field Construction Manager (FCM),Labor,0.0d,10.0,10.0,At Completion Units,6/11/2024,6/24/2024,0,0,0,0,0,0,0,0,0,0,1.03_Accelerator Systems (AS),1.03.04_AS Cryogenic Distribution System (CDS),1.03.04.20_AS Cryogenic Distribution System Installation,1.03.04.20.10_Interface Box 3 - Installation Support,AS_CDS_IB_9000_Transport Support - Interface Box 3,FAC,Engineer,SLAC,Labor
92596,1.03,1.03.04,1.03.04.20,1.03.04.20.10,1.03.04.20.10,Interface Box 3 - Installation Support,AS_CDS_IB_9060,Verification and Test - Interface Box 3,10.0,48.0,48.0,48.0,07-24-25,08-06-25,AS_CDS_IB_9040: FS,AS_CDS_IB_9210: FS,SLAC,0%,52149.52149_Field Construction Manager (FCM),52149_Field Construction Manager (FCM),Labor,0.0d,10.0,10.0,At Completion Units,7/24/2025,8/6/2025,0,0,0,0,0,0,0,0,0,0,1.03_Accelerator Systems (AS),1.03.04_AS Cryogenic Distribution System (CDS),1.03.04.20_AS Cryogenic Distribution System Installation,1.03.04.20.10_Interface Box 3 - Installation Support,AS_CDS_IB_9060_Verification and Test - Interface Box 3,FAC,Engineer,SLAC,Labor
92597,1.03,1.03.04,1.03.04.20,1.03.04.20.10,1.03.04.20.10,Interface Box 3 - Installation Support,AS_CDS_IB_9040,Mechanical Installation - Interface Box 3,80.0,32.0,32.0,32.0,04-01-25,07-23-25,"AS_CDS_IB_9030: FS, AS_M4_1010: FS",AS_CDS_IB_9060: FS,SLAC,0%,52191.52191_METSMET Metrology,52191_METSMET Metrology,Labor,0.0d,80.0,80.0,At Completion Units,4/1/2025,7/23/2025,0,0,0,0,0,0,0,0,0,0,1.03_Accelerator Systems (AS),1.03.04_AS Cryogenic Distribution System (CDS),1.03.04.20_AS Cryogenic Distribution System Installation,1.03.04.20.10_Interface Box 3 - Installation Support,AS_CDS_IB_9040_Mechanical Installation - Interface Box 3,Metrology,,SLAC,Labor
92598,1.03,1.03.04,1.03.04.20,1.03.04.20.10,1.03.04.20.10,Interface Box 3 - Installation Support,AS_CDS_IB_9040,Mechanical Installation - Interface Box 3,80.0,128.0,128.0,128.0,04-01-25,07-23-25,"AS_CDS_IB_9030: FS, AS_M4_1010: FS",AS_CDS_IB_9060: FS,SLAC,0%,52149.52149_Field Construction Manager (FCM),52149_Field Construction Manager (FCM),Labor,0.0d,80.0,80.0,At Completion Units,4/1/2025,7/23/2025,0,0,0,0,0,0,0,0,0,0,1.03_Accelerator Systems (AS),1.03.04_AS Cryogenic Distribution System (CDS),1.03.04.20_AS Cryogenic Distribution System Installation,1.03.04.20.10_Interface Box 3 - Installation Support,AS_CDS_IB_9040_Mechanical Installation - Interface Box 3,FAC,Engineer,SLAC,Labor
92599,1.03,1.03.04,1.03.04.20,1.03.04.20.10,1.03.04.20.10,Interface Box 3 - Installation Support,AS_CDS_IB_9030,Setting - Interface Box 3,20.0,32.0,32.0,32.0,10-17-24,11-13-24,AS_CDS_IB_9020: FS,AS_CDS_IB_9040: FS,SLAC,0%,52149.52149_Field Construction Manager (FCM),52149_Field Construction Manager (FCM),Labor,0.0d,20.0,20.0,At Completion Units,7/24/2024,8/20/2024,0,0,0,0,0,0,0,0,0,0,1.03_Accelerator Systems (AS),1.03.04_AS Cryogenic Distribution System (CDS),1.03.04.20_AS Cryogenic Distribution System Installation,1.03.04.20.10_Interface Box 3 - Installation Support,AS_CDS_IB_9030_Setting - Interface Box 3,FAC,Engineer,SLAC,Labor
92600,1.03,1.03.04,1.03.04.20,1.03.04.20.10,1.03.04.20.10,Interface Box 3 - Installation Support,AS_CDS_IB_9020,Transport to Final Position - Interface Box 3,10.0,16.0,16.0,16.0,10-03-24,10-16-24,AS_CDS_IB_9010: FS,AS_CDS_IB_9030: FS,SLAC,0%,52149.52149_Field Construction Manager (FCM),52149_Field Construction Manager (FCM),Labor,0.0d,10.0,10.0,At Completion Units,7/10/2024,7/23/2024,0,0,0,0,0,0,0,0,0,0,1.03_Accelerator Systems (AS),1.03.04_AS Cryogenic Distribution System (CDS),1.03.04.20_AS Cryogenic Distribution System Installation,1.03.04.20.10_Interface Box 3 - Installation Support,AS_CDS_IB_9020_Transport to Final Position - Interface Box 3,FAC,Engineer,SLAC,Labor
92601,1.03,1.03.04,1.03.04.20,1.03.04.20.10,1.03.04.20.10,Interface Box 3 - Installation Support,AS_CDS_IB_9010,Site Acceptance Test Upon Receipt - Interface Box 3,10.0,32.0,32.0,32.0,09-19-24,10-02-24,AS_CDS_IB_9000: FS,AS_CDS_IB_9020: FS,SLAC,0%,52152.52152_FAC Fleet,52152_FAC Fleet,Labor,0.0d,10.0,10.0,At Completion Units,6/25/2024,7/9/2024,0,0,0,0,0,0,0,0,0,0,1.03_Accelerator Systems (AS),1.03.04_AS Cryogenic Distribution System (CDS),1.03.04.20_AS Cryogenic Distribution System Installation,1.03.04.20.10_Interface Box 3 - Installation Support,AS_CDS_IB_9010_Site Acceptance Test Upon Receipt - Interface Box 3,Support System,,SLAC,Labor
92602,1.03,1.03.04,1.03.04.20,1.03.04.20.10,1.03.04.20.10,Interface Box 3 - Installation Support,AS_CDS_IB_9010,Site Acceptance Test Upon Receipt - Interface Box 3,10.0,32.0,32.0,32.0,09-19-24,10-02-24,AS_CDS_IB_9000: FS,AS_CDS_IB_9020: FS,SLAC,0%,52191.52191_METSMET Metrology,52191_METSMET Metrology,Labor,0.0d,10.0,10.0,At Completion Units,6/25/2024,7/9/2024,0,0,0,0,0,0,0,0,0,0,1.03_Accelerator Systems (AS),1.03.04_AS Cryogenic Distribution System (CDS),1.03.04.20_AS Cryogenic Distribution System Installation,1.03.04.20.10_Interface Box 3 - Installation Support,AS_CDS_IB_9010_Site Acceptance Test Upon Receipt - Interface Box 3,Metrology,,SLAC,Labor
92603,1.03,1.03.04,1.03.04.20,1.03.04.20.10,1.03.04.20.10,Interface Box 3 - Installation Support,AS_CDS_IB_9060,Verification and Test - Interface Box 3,10.0,40.0,40.0,40.0,07-24-25,08-06-25,AS_CDS_IB_9040: FS,AS_CDS_IB_9210: FS,SLAC,0%,52198.52198_METSMANF (METSD Manufacturing),52198_METSMANF (METSD Manufacturing),Labor,0.0d,10.0,10.0,At Completion Units,7/24/2025,8/6/2025,0,0,0,0,0,0,0,0,0,0,1.03_Accelerator Systems (AS),1.03.04_AS Cryogenic Distribution System (CDS),1.03.04.20_AS Cryogenic Distribution System Installation,1.03.04.20.10_Interface Box 3 - Installation Support,AS_CDS_IB_9060_Verification and Test - Interface Box 3,Manufacturing,,SLAC,Labor
92604,1.03,1.03.04,1.03.04.20,1.03.04.20.10,1.03.04.20.10,Interface Box 3 - Installation Support,AS_CDS_IB_9060,Verification and Test - Interface Box 3,10.0,40.0,40.0,40.0,07-24-25,08-06-25,AS_CDS_IB_9040: FS,AS_CDS_IB_9210: FS,SLAC,0%,52169.52169_METS Mechanical Engineer,52169_METS Mechanical Engineer,Labor,0.0d,10.0,10.0,At Completion Units,7/24/2025,8/6/2025,0,0,0,0,0,0,0,0,0,0,1.03_Accelerator Systems (AS),1.03.04_AS Cryogenic Distribution System (CDS),1.03.04.20_AS Cryogenic Distribution System Installation,1.03.04.20.10_Interface Box 3 - Installation Support,AS_CDS_IB_9060_Verification and Test - Interface Box 3,Mechanical,,SLAC,Labor
92605,1.03,1.03.04,1.03.04.20,1.03.04.20.10,1.03.04.20.10,Interface Box 3 - Installation Support,AS_CDS_IB_9040,Mechanical Installation - Interface Box 3,80.0,320.0,320.0,320.0,04-01-25,07-23-25,"AS_CDS_IB_9030: FS, AS_M4_1010: FS",AS_CDS_IB_9060: FS,SLAC,0%,52198.52198_METSMANF (METSD Manufacturing),52198_METSMANF (METSD Manufacturing),Labor,0.0d,80.0,80.0,At Completion Units,4/1/2025,7/23/2025,0,0,0,0,0,0,0,0,0,0,1.03_Accelerator Systems (AS),1.03.04_AS Cryogenic Distribution System (CDS),1.03.04.20_AS Cryogenic Distribution System Installation,1.03.04.20.10_Interface Box 3 - Installation Support,AS_CDS_IB_9040_Mechanical Installation - Interface Box 3,Manufacturing,,SLAC,Labor
92606,1.03,1.03.04,1.03.04.20,1.03.04.20.10,1.03.04.20.10,Interface Box 3 - Installation Support,AS_CDS_IB_9040,Mechanical Installation - Interface Box 3,80.0,192.0,192.0,192.0,04-01-25,07-23-25,"AS_CDS_IB_9030: FS, AS_M4_1010: FS",AS_CDS_IB_9060: FS,SLAC,0%,52169.52169_METS Mechanical Engineer,52169_METS Mechanical Engineer,Labor,0.0d,80.0,80.0,At Completion Units,4/1/2025,7/23/2025,0,0,0,0,0,0,0,0,0,0,1.03_Accelerator Systems (AS),1.03.04_AS Cryogenic Distribution System (CDS),1.03.04.20_AS Cryogenic Distribution System Installation,1.03.04.20.10_Interface Box 3 - Installation Support,AS_CDS_IB_9040_Mechanical Installation - Interface Box 3,Mechanical,,SLAC,Labor
92607,1.03,1.03.04,1.03.04.20,1.03.04.20.10,1.03.04.20.10,Interface Box 3 - Installation Support,AS_CDS_IB_9030,Setting - Interface Box 3,20.0,80.0,80.0,80.0,10-17-24,11-13-24,AS_CDS_IB_9020: FS,AS_CDS_IB_9040: FS,SLAC,0%,52198.52198_METSMANF (METSD Manufacturing),52198_METSMANF (METSD Manufacturing),Labor,0.0d,20.0,20.0,At Completion Units,7/24/2024,8/20/2024,0,0,0,0,0,0,0,0,0,0,1.03_Accelerator Systems (AS),1.03.04_AS Cryogenic Distribution System (CDS),1.03.04.20_AS Cryogenic Distribution System Installation,1.03.04.20.10_Interface Box 3 - Installation Support,AS_CDS_IB_9030_Setting - Interface Box 3,Manufacturing,,SLAC,Labor
92608,1.03,1.03.04,1.03.04.20,1.03.04.20.10,1.03.04.20.10,Interface Box 3 - Installation Support,AS_CDS_IB_9030,Setting - Interface Box 3,20.0,80.0,80.0,80.0,10-17-24,11-13-24,AS_CDS_IB_9020: FS,AS_CDS_IB_9040: FS,SLAC,0%,52169.52169_METS Mechanical Engineer,52169_METS Mechanical Engineer,Labor,0.0d,20.0,20.0,At Completion Units,7/24/2024,8/20/2024,0,0,0,0,0,0,0,0,0,0,1.03_Accelerator Systems (AS),1.03.04_AS Cryogenic Distribution System (CDS),1.03.04.20_AS Cryogenic Distribution System Installation,1.03.04.20.10_Interface Box 3 - Installation Support,AS_CDS_IB_9030_Setting - Interface Box 3,Mechanical,,SLAC,Labor
92609,1.03,1.03.04,1.03.04.20,1.03.04.20.10,1.03.04.20.10,Interface Box 3 - Installation Support,AS_CDS_IB_9020,Transport to Final Position - Interface Box 3,10.0,40.0,40.0,40.0,10-03-24,10-16-24,AS_CDS_IB_9010: FS,AS_CDS_IB_9030: FS,SLAC,0%,52198.52198_METSMANF (METSD Manufacturing),52198_METSMANF (METSD Manufacturing),Labor,0.0d,10.0,10.0,At Completion Units,7/10/2024,7/23/2024,0,0,0,0,0,0,0,0,0,0,1.03_Accelerator Systems (AS),1.03.04_AS Cryogenic Distribution System (CDS),1.03.04.20_AS Cryogenic Distribution System Installation,1.03.04.20.10_Interface Box 3 - Installation Support,AS_CDS_IB_9020_Transport to Final Position - Interface Box 3,Manufacturing,,SLAC,Labor
92610,1.03,1.03.04,1.03.04.20,1.03.04.20.10,1.03.04.20.10,Interface Box 3 - Installation Support,AS_CDS_IB_9020,Transport to Final Position - Interface Box 3,10.0,40.0,40.0,40.0,10-03-24,10-16-24,AS_CDS_IB_9010: FS,AS_CDS_IB_9030: FS,SLAC,0%,52169.52169_METS Mechanical Engineer,52169_METS Mechanical Engineer,Labor,0.0d,10.0,10.0,At Completion Units,7/10/2024,7/23/2024,0,0,0,0,0,0,0,0,0,0,1.03_Accelerator Systems (AS),1.03.04_AS Cryogenic Distribution System (CDS),1.03.04.20_AS Cryogenic Distribution System Installation,1.03.04.20.10_Interface Box 3 - Installation Support,AS_CDS_IB_9020_Transport to Final Position - Interface Box 3,Mechanical,,SLAC,Labor
92611,1.03,1.03.04,1.03.04.20,1.03.04.20.10,1.03.04.20.10,Interface Box 3 - Installation Support,AS_CDS_IB_9010,Site Acceptance Test Upon Receipt - Interface Box 3,10.0,16.0,16.0,16.0,09-19-24,10-02-24,AS_CDS_IB_9000: FS,AS_CDS_IB_9020: FS,SLAC,0%,52149.52149_Field Construction Manager (FCM),52149_Field Construction Manager (FCM),Labor,0.0d,10.0,10.0,At Completion Units,6/25/2024,7/9/2024,0,0,0,0,0,0,0,0,0,0,1.03_Accelerator Systems (AS),1.03.04_AS Cryogenic Distribution System (CDS),1.03.04.20_AS Cryogenic Distribution System Installation,1.03.04.20.10_Interface Box 3 - Installation Support,AS_CDS_IB_9010_Site Acceptance Test Upon Receipt - Interface Box 3,FAC,Engineer,SLAC,Labor
92612,1.03,1.03.04,1.03.04.20,1.03.04.20.10,1.03.04.20.10,Interface Box 3 - Installation Support,AS_CDS_IB_9010,Site Acceptance Test Upon Receipt - Interface Box 3,10.0,80.0,80.0,80.0,09-19-24,10-02-24,AS_CDS_IB_9000: FS,AS_CDS_IB_9020: FS,SLAC,0%,0140_E3.0140_Engineer-Electrical_E3,0140_Engineer-Electrical_E3,Labor,0.0d,10.0,10.0,At Completion Units,6/25/2024,7/9/2024,0,0,0,0,0,0,0,0,0,0,1.03_Accelerator Systems (AS),1.03.04_AS Cryogenic Distribution System (CDS),1.03.04.20_AS Cryogenic Distribution System Installation,1.03.04.20.10_Interface Box 3 - Installation Support,AS_CDS_IB_9010_Site Acceptance Test Upon Receipt - Interface Box 3,Electrical,,SLAC,Labor
92613,1.03,1.03.04,1.03.04.20,1.03.04.20.10,1.03.04.20.10,Interface Box 3 - Installation Support,AS_CDS_IB_9010,Site Acceptance Test Upon Receipt - Interface Box 3,10.0,120.0,120.0,120.0,09-19-24,10-02-24,AS_CDS_IB_9000: FS,AS_CDS_IB_9020: FS,SLAC,0%,52198.52198_METSMANF (METSD Manufacturing),52198_METSMANF (METSD Manufacturing),Labor,0.0d,10.0,10.0,At Completion Units,6/25/2024,7/9/2024,0,0,0,0,0,0,0,0,0,0,1.03_Accelerator Systems (AS),1.03.04_AS Cryogenic Distribution System (CDS),1.03.04.20_AS Cryogenic Distribution System Installation,1.03.04.20.10_Interface Box 3 - Installation Support,AS_CDS_IB_9010_Site Acceptance Test Upon Receipt - Interface Box 3,Manufacturing,,SLAC,Labor
92614,1.03,1.03.04,1.03.04.20,1.03.04.20.10,1.03.04.20.10,Interface Box 3 - Installation Support,AS_CDS_IB_9010,Site Acceptance Test Upon Receipt - Interface Box 3,10.0,40.0,40.0,40.0,09-19-24,10-02-24,AS_CDS_IB_9000: FS,AS_CDS_IB_9020: FS,SLAC,0%,52169.52169_METS Mechanical Engineer,52169_METS Mechanical Engineer,Labor,0.0d,10.0,10.0,At Completion Units,6/25/2024,7/9/2024,0,0,0,0,0,0,0,0,0,0,1.03_Accelerator Systems (AS),1.03.04_AS Cryogenic Distribution System (CDS),1.03.04.20_AS Cryogenic Distribution System Installation,1.03.04.20.10_Interface Box 3 - Installation Support,AS_CDS_IB_9010_Site Acceptance Test Upon Receipt - Interface Box 3,Mechanical,,SLAC,Labor
92615,1.03,1.03.04,1.03.04.20,1.03.04.20.10,1.03.04.20.10,Interface Box 3 - Installation Support,AS_CDS_IB_9010,Site Acceptance Test Upon Receipt - Interface Box 3,10.0,8.0,8.0,8.0,09-19-24,10-02-24,AS_CDS_IB_9000: FS,AS_CDS_IB_9020: FS,SLAC,0%,52190.52190_METSTP Tech Planning - Reinstated FY16,52190_METSTP Tech Planning - Reinstated FY16,Labor,0.0d,10.0,10.0,At Completion Units,6/25/2024,7/9/2024,0,0,0,0,0,0,0,0,0,0,1.03_Accelerator Systems (AS),1.03.04_AS Cryogenic Distribution System (CDS),1.03.04.20_AS Cryogenic Distribution System Installation,1.03.04.20.10_Interface Box 3 - Installation Support,AS_CDS_IB_9010_Site Acceptance Test Upon Receipt - Interface Box 3,METSTPT Tech Planning,Tech,SLAC,Labor
92935,1.03,1.03.04,1.03.04.20,1.03.04.20.20,1.03.04.20.20,Transfer Line 3 - Installation Support,AS_CDS_TL_9220,RCV: Installation Support - Transfer Line 3,1.0,2346863.0,2346863.0,2346863.0,11-05-25,11-05-25,AS_CDS_TL_9210: FS,AS_CDS_TL_9230: FS,SLAC,0%,SL_MSSY.SLAC M&S (>$500K) (NO G&A) (gets ESC),SLAC M&S (>$500K) (NO G&A) (gets ESC),Nonlabor,0.0d,1.0,1.0,At Completion Units,11/5/2025,11/5/2025,0,0,0,0,0,0,0,0,0,0,1.03_Accelerator Systems (AS),1.03.04_AS Cryogenic Distribution System (CDS),1.03.04.20_AS Cryogenic Distribution System Installation,1.03.04.20.20_Transfer Line 3 - Installation Support,AS_CDS_TL_9220_RCV: Installation Support - Transfer Line 3,Material,,SLAC,M&S
92936,1.03,1.03.04,1.03.04.20,1.03.04.20.20,1.03.04.20.20,Transfer Line 3 - Installation Support,AS_CDS_TL_9200,AWARD: Procurement - Installation Support - Transfer Line 3,5.0,2846863.0,2846863.0,2846863.0,01-15-25,01-22-25,AS_CDS_TL_9190: FS,AS_CDS_TL_9210: FS,SLAC,0%,AWARD_USE.AWARD - Use this AWARD,AWARD - Use this AWARD,Nonlabor,0.0d,5.0,5.0,At Completion Units,1/15/2025,1/22/2025,AWARD > $500K,0,0,0,0,0,0,0,0,0,1.03_Accelerator Systems (AS),1.03.04_AS Cryogenic Distribution System (CDS),1.03.04.20_AS Cryogenic Distribution System Installation,1.03.04.20.20_Transfer Line 3 - Installation Support,AS_CDS_TL_9200_AWARD: Procurement - Installation Support - Transfer Line 3,Material,,SLAC,M&S
92937,1.03,1.03.04,1.03.04.20,1.03.04.20.20,1.03.04.20.20,Transfer Line 3 - Installation Support,AS_CDS_TL_9110,RQN: Approval of Requisition - Installation Support - Transfer Line 3,1.0,2846863.0,2846863.0,2846863.0,06-05-24,06-05-24,AS_CDS_TL_9100: FS,AS_CDS_TL_9120: FS,SLAC,0%,REQ.Requisition,Requisition,Nonlabor,0.0d,1.0,1.0,At Completion Units,6/5/2024,6/5/2024,RQN,0,0,0,0,0,0,0,0,0,1.03_Accelerator Systems (AS),1.03.04_AS Cryogenic Distribution System (CDS),1.03.04.20_AS Cryogenic Distribution System Installation,1.03.04.20.20_Transfer Line 3 - Installation Support,AS_CDS_TL_9110_RQN: Approval of Requisition - Installation Support - Transfer Line 3,Material,,SLAC,M&S
92938,1.03,1.03.04,1.03.04.20,1.03.04.20.20,1.03.04.20.20,Transfer Line 3 - Installation Support,AS_CDS_TL_9220,RCV: Installation Support - Transfer Line 3,1.0,500000.0,500000.0,500000.0,11-05-25,11-05-25,AS_CDS_TL_9210: FS,AS_CDS_TL_9230: FS,SLAC,0%,SL_MSSC.SLAC M&S (<$500K) (gets G&A) (gets ESC),SLAC M&S (<$500K) (gets G&A) (gets ESC),Nonlabor,0.0d,1.0,1.0,At Completion Units,11/5/2025,11/5/2025,0,0,0,0,0,0,0,0,0,0,1.03_Accelerator Systems (AS),1.03.04_AS Cryogenic Distribution System (CDS),1.03.04.20_AS Cryogenic Distribution System Installation,1.03.04.20.20_Transfer Line 3 - Installation Support,AS_CDS_TL_9220_RCV: Installation Support - Transfer Line 3,Material,,SLAC,M&S
92939,1.03,1.03.04,1.03.04.20,1.03.04.20.20,1.03.04.20.20,Transfer Line 3 - Installation Support,AS_CDS_TL_9020,Site Acceptance Test Upon Receipt - Transfer Line 3,10.0,16.0,16.0,16.0,12-16-24,01-10-25,AS_CDS_TL_9010: FS,AS_CDS_TL_9030: FS,SLAC,0%,52148.52148_FAC Engineering & Construction,52148_FAC Engineering & Construction,Labor,0.0d,10.0,10.0,At Completion Units,8/21/2024,9/4/2024,0,0,0,0,0,0,0,0,0,0,1.03_Accelerator Systems (AS),1.03.04_AS Cryogenic Distribution System (CDS),1.03.04.20_AS Cryogenic Distribution System Installation,1.03.04.20.20_Transfer Line 3 - Installation Support,AS_CDS_TL_9020_Site Acceptance Test Upon Receipt - Transfer Line 3,FAC,,SLAC,Labor
92940,1.03,1.03.04,1.03.04.20,1.03.04.20.20,1.03.04.20.20,Transfer Line 3 - Installation Support,AS_CDS_TL_9070,Verification and Test - Transfer Line 3,10.0,48.0,48.0,48.0,09-19-25,10-02-25,AS_CDS_TL_9050: FS,AS_CDS_TL_9230: FS,SLAC,0%,52149.52149_Field Construction Manager (FCM),52149_Field Construction Manager (FCM),Labor,0.0d,10.0,10.0,At Completion Units,9/19/2025,10/2/2025,0,0,0,0,0,0,0,0,0,0,1.03_Accelerator Systems (AS),1.03.04_AS Cryogenic Distribution System (CDS),1.03.04.20_AS Cryogenic Distribution System Installation,1.03.04.20.20_Transfer Line 3 - Installation Support,AS_CDS_TL_9070_Verification and Test - Transfer Line 3,FAC,Engineer,SLAC,Labor
92941,1.03,1.03.04,1.03.04.20,1.03.04.20.20,1.03.04.20.20,Transfer Line 3 - Installation Support,AS_CDS_TL_9050,Mechanical Installation - Transfer Line 3,120.0,288.0,288.0,288.0,04-01-25,09-18-25,"AS_CDS_TL_9040: FS, AS_M4_1010: FS",AS_CDS_TL_9070: FS,SLAC,0%,52149.52149_Field Construction Manager (FCM),52149_Field Construction Manager (FCM),Labor,0.0d,120.0,120.0,At Completion Units,4/1/2025,9/18/2025,0,0,0,0,0,0,0,0,0,0,1.03_Accelerator Systems (AS),1.03.04_AS Cryogenic Distribution System (CDS),1.03.04.20_AS Cryogenic Distribution System Installation,1.03.04.20.20_Transfer Line 3 - Installation Support,AS_CDS_TL_9050_Mechanical Installation - Transfer Line 3,FAC,Engineer,SLAC,Labor
92942,1.03,1.03.04,1.03.04.20,1.03.04.20.20,1.03.04.20.20,Transfer Line 3 - Installation Support,AS_CDS_TL_9040,Setting - Transfer Line 3,20.0,32.0,32.0,32.0,01-28-25,02-25-25,AS_CDS_TL_9030: FS,AS_CDS_TL_9050: FS,SLAC,0%,52149.52149_Field Construction Manager (FCM),52149_Field Construction Manager (FCM),Labor,0.0d,20.0,20.0,At Completion Units,9/19/2024,10/16/2024,0,0,0,0,0,0,0,0,0,0,1.03_Accelerator Systems (AS),1.03.04_AS Cryogenic Distribution System (CDS),1.03.04.20_AS Cryogenic Distribution System Installation,1.03.04.20.20_Transfer Line 3 - Installation Support,AS_CDS_TL_9040_Setting - Transfer Line 3,FAC,Engineer,SLAC,Labor
92943,1.03,1.03.04,1.03.04.20,1.03.04.20.20,1.03.04.20.20,Transfer Line 3 - Installation Support,AS_CDS_TL_9030,Transport to Final Position - Transfer Line 3,10.0,16.0,16.0,16.0,01-13-25,01-27-25,AS_CDS_TL_9020: FS,AS_CDS_TL_9040: FS,SLAC,0%,52149.52149_Field Construction Manager (FCM),52149_Field Construction Manager (FCM),Labor,0.0d,10.0,10.0,At Completion Units,9/5/2024,9/18/2024,0,0,0,0,0,0,0,0,0,0,1.03_Accelerator Systems (AS),1.03.04_AS Cryogenic Distribution System (CDS),1.03.04.20_AS Cryogenic Distribution System Installation,1.03.04.20.20_Transfer Line 3 - Installation Support,AS_CDS_TL_9030_Transport to Final Position - Transfer Line 3,FAC,Engineer,SLAC,Labor
92944,1.03,1.03.04,1.03.04.20,1.03.04.20.20,1.03.04.20.20,Transfer Line 3 - Installation Support,AS_CDS_TL_9020,Site Acceptance Test Upon Receipt - Transfer Line 3,10.0,32.0,32.0,32.0,12-16-24,01-10-25,AS_CDS_TL_9010: FS,AS_CDS_TL_9030: FS,SLAC,0%,52191.52191_METSMET Metrology,52191_METSMET Metrology,Labor,0.0d,10.0,10.0,At Completion Units,8/21/2024,9/4/2024,0,0,0,0,0,0,0,0,0,0,1.03_Accelerator Systems (AS),1.03.04_AS Cryogenic Distribution System (CDS),1.03.04.20_AS Cryogenic Distribution System Installation,1.03.04.20.20_Transfer Line 3 - Installation Support,AS_CDS_TL_9020_Site Acceptance Test Upon Receipt - Transfer Line 3,Metrology,,SLAC,Labor
92945,1.03,1.03.04,1.03.04.20,1.03.04.20.20,1.03.04.20.20,Transfer Line 3 - Installation Support,AS_CDS_TL_9020,Site Acceptance Test Upon Receipt - Transfer Line 3,10.0,8.0,8.0,8.0,12-16-24,01-10-25,AS_CDS_TL_9010: FS,AS_CDS_TL_9030: FS,SLAC,0%,52190.52190_METSTP Tech Planning - Reinstated FY16,52190_METSTP Tech Planning - Reinstated FY16,Labor,0.0d,10.0,10.0,At Completion Units,8/21/2024,9/4/2024,0,0,0,0,0,0,0,0,0,0,1.03_Accelerator Systems (AS),1.03.04_AS Cryogenic Distribution System (CDS),1.03.04.20_AS Cryogenic Distribution System Installation,1.03.04.20.20_Transfer Line 3 - Installation Support,AS_CDS_TL_9020_Site Acceptance Test Upon Receipt - Transfer Line 3,METSTPT Tech Planning,Tech,SLAC,Labor
92946,1.03,1.03.04,1.03.04.20,1.03.04.20.20,1.03.04.20.20,Transfer Line 3 - Installation Support,AS_CDS_TL_9020,Site Acceptance Test Upon Receipt - Transfer Line 3,10.0,16.0,16.0,16.0,12-16-24,01-10-25,AS_CDS_TL_9010: FS,AS_CDS_TL_9030: FS,SLAC,0%,52149.52149_Field Construction Manager (FCM),52149_Field Construction Manager (FCM),Labor,0.0d,10.0,10.0,At Completion Units,8/21/2024,9/4/2024,0,0,0,0,0,0,0,0,0,0,1.03_Accelerator Systems (AS),1.03.04_AS Cryogenic Distribution System (CDS),1.03.04.20_AS Cryogenic Distribution System Installation,1.03.04.20.20_Transfer Line 3 - Installation Support,AS_CDS_TL_9020_Site Acceptance Test Upon Receipt - Transfer Line 3,FAC,Engineer,SLAC,Labor
92947,1.03,1.03.04,1.03.04.20,1.03.04.20.20,1.03.04.20.20,Transfer Line 3 - Installation Support,AS_CDS_TL_9010,Transport Support - Transfer Line 3,10.0,32.0,32.0,32.0,12-02-24,12-13-24,AS_CDS_TL_6230: FS,AS_CDS_TL_9020: FS,SLAC,0%,52152.52152_FAC Fleet,52152_FAC Fleet,Labor,0.0d,10.0,10.0,At Completion Units,8/7/2024,8/20/2024,0,0,0,0,0,0,0,0,0,0,1.03_Accelerator Systems (AS),1.03.04_AS Cryogenic Distribution System (CDS),1.03.04.20_AS Cryogenic Distribution System Installation,1.03.04.20.20_Transfer Line 3 - Installation Support,AS_CDS_TL_9010_Transport Support - Transfer Line 3,Support System,,SLAC,Labor
92948,1.03,1.03.04,1.03.04.20,1.03.04.20.20,1.03.04.20.20,Transfer Line 3 - Installation Support,AS_CDS_TL_9010,Transport Support - Transfer Line 3,10.0,16.0,16.0,16.0,12-02-24,12-13-24,AS_CDS_TL_6230: FS,AS_CDS_TL_9020: FS,SLAC,0%,52149.52149_Field Construction Manager (FCM),52149_Field Construction Manager (FCM),Labor,0.0d,10.0,10.0,At Completion Units,8/7/2024,8/20/2024,0,0,0,0,0,0,0,0,0,0,1.03_Accelerator Systems (AS),1.03.04_AS Cryogenic Distribution System (CDS),1.03.04.20_AS Cryogenic Distribution System Installation,1.03.04.20.20_Transfer Line 3 - Installation Support,AS_CDS_TL_9010_Transport Support - Transfer Line 3,FAC,Engineer,SLAC,Labor
92949,1.03,1.03.04,1.03.04.20,1.03.04.20.20,1.03.04.20.20,Transfer Line 3 - Installation Support,AS_CDS_TL_9010,Transport Support - Transfer Line 3,10.0,32.0,32.0,32.0,12-02-24,12-13-24,AS_CDS_TL_6230: FS,AS_CDS_TL_9020: FS,SLAC,0%,0140_E3.0140_Engineer-Electrical_E3,0140_Engineer-Electrical_E3,Labor,0.0d,10.0,10.0,At Completion Units,8/7/2024,8/20/2024,0,0,0,0,0,0,0,0,0,0,1.03_Accelerator Systems (AS),1.03.04_AS Cryogenic Distribution System (CDS),1.03.04.20_AS Cryogenic Distribution System Installation,1.03.04.20.20_Transfer Line 3 - Installation Support,AS_CDS_TL_9010_Transport Support - Transfer Line 3,Electrical,,SLAC,Labor
92950,1.03,1.03.04,1.03.04.20,1.03.04.20.20,1.03.04.20.20,Transfer Line 3 - Installation Support,AS_CDS_TL_9010,Transport Support - Transfer Line 3,10.0,10.0,10.0,10.0,12-02-24,12-13-24,AS_CDS_TL_6230: FS,AS_CDS_TL_9020: FS,SLAC,0%,52169.52169_METS Mechanical Engineer,52169_METS Mechanical Engineer,Labor,0.0d,10.0,10.0,At Completion Units,8/7/2024,8/20/2024,0,0,0,0,0,0,0,0,0,0,1.03_Accelerator Systems (AS),1.03.04_AS Cryogenic Distribution System (CDS),1.03.04.20_AS Cryogenic Distribution System Installation,1.03.04.20.20_Transfer Line 3 - Installation Support,AS_CDS_TL_9010_Transport Support - Transfer Line 3,Mechanical,,SLAC,Labor
92951,1.03,1.03.04,1.03.04.20,1.03.04.20.20,1.03.04.20.20,Transfer Line 3 - Installation Support,AS_CDS_TL_9070,Verification and Test - Transfer Line 3,10.0,40.0,40.0,40.0,09-19-25,10-02-25,AS_CDS_TL_9050: FS,AS_CDS_TL_9230: FS,SLAC,0%,52198.52198_METSMANF (METSD Manufacturing),52198_METSMANF (METSD Manufacturing),Labor,0.0d,10.0,10.0,At Completion Units,9/19/2025,10/2/2025,0,0,0,0,0,0,0,0,0,0,1.03_Accelerator Systems (AS),1.03.04_AS Cryogenic Distribution System (CDS),1.03.04.20_AS Cryogenic Distribution System Installation,1.03.04.20.20_Transfer Line 3 - Installation Support,AS_CDS_TL_9070_Verification and Test - Transfer Line 3,Manufacturing,,SLAC,Labor
92952,1.03,1.03.04,1.03.04.20,1.03.04.20.20,1.03.04.20.20,Transfer Line 3 - Installation Support,AS_CDS_TL_9070,Verification and Test - Transfer Line 3,10.0,40.0,40.0,40.0,09-19-25,10-02-25,AS_CDS_TL_9050: FS,AS_CDS_TL_9230: FS,SLAC,0%,52169.52169_METS Mechanical Engineer,52169_METS Mechanical Engineer,Labor,0.0d,10.0,10.0,At Completion Units,9/19/2025,10/2/2025,0,0,0,0,0,0,0,0,0,0,1.03_Accelerator Systems (AS),1.03.04_AS Cryogenic Distribution System (CDS),1.03.04.20_AS Cryogenic Distribution System Installation,1.03.04.20.20_Transfer Line 3 - Installation Support,AS_CDS_TL_9070_Verification and Test - Transfer Line 3,Mechanical,,SLAC,Labor
92953,1.03,1.03.04,1.03.04.20,1.03.04.20.20,1.03.04.20.20,Transfer Line 3 - Installation Support,AS_CDS_TL_9050,Mechanical Installation - Transfer Line 3,120.0,480.0,480.0,480.0,04-01-25,09-18-25,"AS_CDS_TL_9040: FS, AS_M4_1010: FS",AS_CDS_TL_9070: FS,SLAC,0%,52198.52198_METSMANF (METSD Manufacturing),52198_METSMANF (METSD Manufacturing),Labor,0.0d,120.0,120.0,At Completion Units,4/1/2025,9/18/2025,0,0,0,0,0,0,0,0,0,0,1.03_Accelerator Systems (AS),1.03.04_AS Cryogenic Distribution System (CDS),1.03.04.20_AS Cryogenic Distribution System Installation,1.03.04.20.20_Transfer Line 3 - Installation Support,AS_CDS_TL_9050_Mechanical Installation - Transfer Line 3,Manufacturing,,SLAC,Labor
92954,1.03,1.03.04,1.03.04.20,1.03.04.20.20,1.03.04.20.20,Transfer Line 3 - Installation Support,AS_CDS_TL_9050,Mechanical Installation - Transfer Line 3,120.0,288.0,288.0,288.0,04-01-25,09-18-25,"AS_CDS_TL_9040: FS, AS_M4_1010: FS",AS_CDS_TL_9070: FS,SLAC,0%,52169.52169_METS Mechanical Engineer,52169_METS Mechanical Engineer,Labor,0.0d,120.0,120.0,At Completion Units,4/1/2025,9/18/2025,0,0,0,0,0,0,0,0,0,0,1.03_Accelerator Systems (AS),1.03.04_AS Cryogenic Distribution System (CDS),1.03.04.20_AS Cryogenic Distribution System Installation,1.03.04.20.20_Transfer Line 3 - Installation Support,AS_CDS_TL_9050_Mechanical Installation - Transfer Line 3,Mechanical,,SLAC,Labor
92955,1.03,1.03.04,1.03.04.20,1.03.04.20.20,1.03.04.20.20,Transfer Line 3 - Installation Support,AS_CDS_TL_9040,Setting - Transfer Line 3,20.0,80.0,80.0,80.0,01-28-25,02-25-25,AS_CDS_TL_9030: FS,AS_CDS_TL_9050: FS,SLAC,0%,52198.52198_METSMANF (METSD Manufacturing),52198_METSMANF (METSD Manufacturing),Labor,0.0d,20.0,20.0,At Completion Units,9/19/2024,10/16/2024,0,0,0,0,0,0,0,0,0,0,1.03_Accelerator Systems (AS),1.03.04_AS Cryogenic Distribution System (CDS),1.03.04.20_AS Cryogenic Distribution System Installation,1.03.04.20.20_Transfer Line 3 - Installation Support,AS_CDS_TL_9040_Setting - Transfer Line 3,Manufacturing,,SLAC,Labor
92956,1.03,1.03.04,1.03.04.20,1.03.04.20.20,1.03.04.20.20,Transfer Line 3 - Installation Support,AS_CDS_TL_9040,Setting - Transfer Line 3,20.0,80.0,80.0,80.0,01-28-25,02-25-25,AS_CDS_TL_9030: FS,AS_CDS_TL_9050: FS,SLAC,0%,52169.52169_METS Mechanical Engineer,52169_METS Mechanical Engineer,Labor,0.0d,20.0,20.0,At Completion Units,9/19/2024,10/16/2024,0,0,0,0,0,0,0,0,0,0,1.03_Accelerator Systems (AS),1.03.04_AS Cryogenic Distribution System (CDS),1.03.04.20_AS Cryogenic Distribution System Installation,1.03.04.20.20_Transfer Line 3 - Installation Support,AS_CDS_TL_9040_Setting - Transfer Line 3,Mechanical,,SLAC,Labor
92957,1.03,1.03.04,1.03.04.20,1.03.04.20.20,1.03.04.20.20,Transfer Line 3 - Installation Support,AS_CDS_TL_9030,Transport to Final Position - Transfer Line 3,10.0,40.0,40.0,40.0,01-13-25,01-27-25,AS_CDS_TL_9020: FS,AS_CDS_TL_9040: FS,SLAC,0%,52198.52198_METSMANF (METSD Manufacturing),52198_METSMANF (METSD Manufacturing),Labor,0.0d,10.0,10.0,At Completion Units,9/5/2024,9/18/2024,0,0,0,0,0,0,0,0,0,0,1.03_Accelerator Systems (AS),1.03.04_AS Cryogenic Distribution System (CDS),1.03.04.20_AS Cryogenic Distribution System Installation,1.03.04.20.20_Transfer Line 3 - Installation Support,AS_CDS_TL_9030_Transport to Final Position - Transfer Line 3,Manufacturing,,SLAC,Labor
92958,1.03,1.03.04,1.03.04.20,1.03.04.20.20,1.03.04.20.20,Transfer Line 3 - Installation Support,AS_CDS_TL_9030,Transport to Final Position - Transfer Line 3,10.0,16.0,16.0,16.0,01-13-25,01-27-25,AS_CDS_TL_9020: FS,AS_CDS_TL_9040: FS,SLAC,0%,52169.52169_METS Mechanical Engineer,52169_METS Mechanical Engineer,Labor,0.0d,10.0,10.0,At Completion Units,9/5/2024,9/18/2024,0,0,0,0,0,0,0,0,0,0,1.03_Accelerator Systems (AS),1.03.04_AS Cryogenic Distribution System (CDS),1.03.04.20_AS Cryogenic Distribution System Installation,1.03.04.20.20_Transfer Line 3 - Installation Support,AS_CDS_TL_9030_Transport to Final Position - Transfer Line 3,Mechanical,,SLAC,Labor
92959,1.03,1.03.04,1.03.04.20,1.03.04.20.20,1.03.04.20.20,Transfer Line 3 - Installation Support,AS_CDS_TL_9020,Site Acceptance Test Upon Receipt - Transfer Line 3,10.0,132.0,132.0,132.0,12-16-24,01-10-25,AS_CDS_TL_9010: FS,AS_CDS_TL_9030: FS,SLAC,0%,52198.52198_METSMANF (METSD Manufacturing),52198_METSMANF (METSD Manufacturing),Labor,0.0d,10.0,10.0,At Completion Units,8/21/2024,9/4/2024,0,0,0,0,0,0,0,0,0,0,1.03_Accelerator Systems (AS),1.03.04_AS Cryogenic Distribution System (CDS),1.03.04.20_AS Cryogenic Distribution System Installation,1.03.04.20.20_Transfer Line 3 - Installation Support,AS_CDS_TL_9020_Site Acceptance Test Upon Receipt - Transfer Line 3,Manufacturing,,SLAC,Labor
92960,1.03,1.03.04,1.03.04.20,1.03.04.20.20,1.03.04.20.20,Transfer Line 3 - Installation Support,AS_CDS_TL_9020,Site Acceptance Test Upon Receipt - Transfer Line 3,10.0,40.0,40.0,40.0,12-16-24,01-10-25,AS_CDS_TL_9010: FS,AS_CDS_TL_9030: FS,SLAC,0%,52169.52169_METS Mechanical Engineer,52169_METS Mechanical Engineer,Labor,0.0d,10.0,10.0,At Completion Units,8/21/2024,9/4/2024,0,0,0,0,0,0,0,0,0,0,1.03_Accelerator Systems (AS),1.03.04_AS Cryogenic Distribution System (CDS),1.03.04.20_AS Cryogenic Distribution System Installation,1.03.04.20.20_Transfer Line 3 - Installation Support,AS_CDS_TL_9020_Site Acceptance Test Upon Receipt - Transfer Line 3,Mechanical,,SLAC,Labor
93280,1.03,1.03.04,1.03.04.20,1.03.04.20.30,1.03.04.20.30,Distribution Box 3 - Installation Support,AS_CDS_DB_9070,Verification and Test - Distribution Box 3,10.0,48.0,48.0,48.0,06-18-25,07-01-25,AS_CDS_DB_9050: FS,AS_CDS_DB_9210: FS,SLAC,0%,0140_E3.0140_Engineer-Electrical_E3,0140_Engineer-Electrical_E3,Labor,0.0d,10.0,10.0,At Completion Units,10/25/2024,11/7/2024,0,0,0,0,0,0,0,0,0,0,1.03_Accelerator Systems (AS),1.03.04_AS Cryogenic Distribution System (CDS),1.03.04.20_AS Cryogenic Distribution System Installation,1.03.04.20.30_Distribution Box 3 - Installation Support,AS_CDS_DB_9070_Verification and Test - Distribution Box 3,Electrical,,SLAC,Labor
93281,1.03,1.03.04,1.03.04.20,1.03.04.20.30,1.03.04.20.30,Distribution Box 3 - Installation Support,AS_CDS_DB_9180,AWARD: Procurement - Installation Support - Distribution Box 3,1.0,225000.0,225000.0,225000.0,12-05-24,12-05-24,AS_CDS_DB_9170: FS,AS_CDS_DB_9190: FS,SLAC,0%,AWARD_USE.AWARD - Use this AWARD,AWARD - Use this AWARD,Nonlabor,0.0d,1.0,1.0,At Completion Units,7/1/2024,7/1/2024,AWARD < $500K,0,0,0,0,0,0,0,0,0,1.03_Accelerator Systems (AS),1.03.04_AS Cryogenic Distribution System (CDS),1.03.04.20_AS Cryogenic Distribution System Installation,1.03.04.20.30_Distribution Box 3 - Installation Support,AS_CDS_DB_9180_AWARD: Procurement - Installation Support - Distribution Box 3,Material,,SLAC,M&S
93282,1.03,1.03.04,1.03.04.20,1.03.04.20.30,1.03.04.20.30,Distribution Box 3 - Installation Support,AS_CDS_DB_9110,RQN: Approval of Requisition - Installation Support - Distribution Box 3,1.0,225000.0,225000.0,225000.0,09-26-24,09-26-24,AS_CDS_DB_9100: FS,AS_CDS_DB_9120: FS,SLAC,0%,REQ.Requisition,Requisition,Nonlabor,0.0d,1.0,1.0,At Completion Units,4/23/2024,4/23/2024,RQN,0,0,0,0,0,0,0,0,0,1.03_Accelerator Systems (AS),1.03.04_AS Cryogenic Distribution System (CDS),1.03.04.20_AS Cryogenic Distribution System Installation,1.03.04.20.30_Distribution Box 3 - Installation Support,AS_CDS_DB_9110_RQN: Approval of Requisition - Installation Support - Distribution Box 3,Material,,SLAC,M&S
93283,1.03,1.03.04,1.03.04.20,1.03.04.20.30,1.03.04.20.30,Distribution Box 3 - Installation Support,AS_CDS_DB_9200,RCV: Installation Support - Distribution Box 3,1.0,225000.0,225000.0,225000.0,12-02-25,12-02-25,AS_CDS_DB_9190: FS,AS_CDS_DB_9210: FS,SLAC,0%,SL_MSSC.SLAC M&S (<$500K) (gets G&A) (gets ESC),SLAC M&S (<$500K) (gets G&A) (gets ESC),Nonlabor,0.0d,1.0,1.0,At Completion Units,6/26/2025,6/26/2025,0,0,0,0,0,0,0,0,0,0,1.03_Accelerator Systems (AS),1.03.04_AS Cryogenic Distribution System (CDS),1.03.04.20_AS Cryogenic Distribution System Installation,1.03.04.20.30_Distribution Box 3 - Installation Support,AS_CDS_DB_9200_RCV: Installation Support - Distribution Box 3,Material,,SLAC,M&S
93284,1.03,1.03.04,1.03.04.20,1.03.04.20.30,1.03.04.20.30,Distribution Box 3 - Installation Support,AS_CDS_DB_9070,Verification and Test - Distribution Box 3,10.0,72.0,72.0,72.0,06-18-25,07-01-25,AS_CDS_DB_9050: FS,AS_CDS_DB_9210: FS,SLAC,0%,52149.52149_Field Construction Manager (FCM),52149_Field Construction Manager (FCM),Labor,0.0d,10.0,10.0,At Completion Units,10/25/2024,11/7/2024,0,0,0,0,0,0,0,0,0,0,1.03_Accelerator Systems (AS),1.03.04_AS Cryogenic Distribution System (CDS),1.03.04.20_AS Cryogenic Distribution System Installation,1.03.04.20.30_Distribution Box 3 - Installation Support,AS_CDS_DB_9070_Verification and Test - Distribution Box 3,FAC,Engineer,SLAC,Labor
93285,1.03,1.03.04,1.03.04.20,1.03.04.20.30,1.03.04.20.30,Distribution Box 3 - Installation Support,AS_CDS_DB_9050,Mechanical Installation - Distribution Box 3,40.0,96.0,96.0,96.0,04-22-25,06-17-25,AS_CDS_DB_9040: FS,AS_CDS_DB_9070: FS,SLAC,0%,52149.52149_Field Construction Manager (FCM),52149_Field Construction Manager (FCM),Labor,0.0d,40.0,40.0,At Completion Units,8/29/2024,10/24/2024,0,0,0,0,0,0,0,0,0,0,1.03_Accelerator Systems (AS),1.03.04_AS Cryogenic Distribution System (CDS),1.03.04.20_AS Cryogenic Distribution System Installation,1.03.04.20.30_Distribution Box 3 - Installation Support,AS_CDS_DB_9050_Mechanical Installation - Distribution Box 3,FAC,Engineer,SLAC,Labor
93286,1.03,1.03.04,1.03.04.20,1.03.04.20.30,1.03.04.20.30,Distribution Box 3 - Installation Support,AS_CDS_DB_9040,Set in Klystron Gallery - Distribution Box 3,20.0,48.0,48.0,48.0,03-25-25,04-21-25,"AS_CDS_DB_9030: FS, AS_M4_1030: FS","AS_CDS_DB_9050: FS, AS_CDS_VL_9040: FS",SLAC,0%,52149.52149_Field Construction Manager (FCM),52149_Field Construction Manager (FCM),Labor,0.0d,20.0,20.0,At Completion Units,8/1/2024,8/28/2024,0,0,0,0,0,0,0,0,0,0,1.03_Accelerator Systems (AS),1.03.04_AS Cryogenic Distribution System (CDS),1.03.04.20_AS Cryogenic Distribution System Installation,1.03.04.20.30_Distribution Box 3 - Installation Support,AS_CDS_DB_9040_Set in Klystron Gallery - Distribution Box 3,FAC,Engineer,SLAC,Labor
93287,1.03,1.03.04,1.03.04.20,1.03.04.20.30,1.03.04.20.30,Distribution Box 3 - Installation Support,AS_CDS_DB_9030,Transport to Final Position - Distribution Box 3,10.0,24.0,24.0,24.0,03-11-25,03-24-25,AS_CDS_DB_9020: FS,AS_CDS_DB_9040: FS,SLAC,0%,52149.52149_Field Construction Manager (FCM),52149_Field Construction Manager (FCM),Labor,0.0d,10.0,10.0,At Completion Units,2/9/2024,2/23/2024,0,0,0,0,0,0,0,0,0,0,1.03_Accelerator Systems (AS),1.03.04_AS Cryogenic Distribution System (CDS),1.03.04.20_AS Cryogenic Distribution System Installation,1.03.04.20.30_Distribution Box 3 - Installation Support,AS_CDS_DB_9030_Transport to Final Position - Distribution Box 3,FAC,Engineer,SLAC,Labor
93288,1.03,1.03.04,1.03.04.20,1.03.04.20.30,1.03.04.20.30,Distribution Box 3 - Installation Support,AS_CDS_DB_9030,Transport to Final Position - Distribution Box 3,10.0,32.0,32.0,32.0,03-11-25,03-24-25,AS_CDS_DB_9020: FS,AS_CDS_DB_9040: FS,SLAC,0%,52152.52152_FAC Fleet,52152_FAC Fleet,Labor,0.0d,10.0,10.0,At Completion Units,2/9/2024,2/23/2024,0,0,0,0,0,0,0,0,0,0,1.03_Accelerator Systems (AS),1.03.04_AS Cryogenic Distribution System (CDS),1.03.04.20_AS Cryogenic Distribution System Installation,1.03.04.20.30_Distribution Box 3 - Installation Support,AS_CDS_DB_9030_Transport to Final Position - Distribution Box 3,Support System,,SLAC,Labor
93289,1.03,1.03.04,1.03.04.20,1.03.04.20.30,1.03.04.20.30,Distribution Box 3 - Installation Support,AS_CDS_DB_9020,Site Acceptance Test Upon Receipt - Distribution Box 3,10.0,16.0,16.0,16.0,02-25-25,03-10-25,AS_CDS_DB_9010: FS,AS_CDS_DB_9030: FS,SLAC,0%,52191.52191_METSMET Metrology,52191_METSMET Metrology,Labor,0.0d,10.0,10.0,At Completion Units,1/26/2024,2/8/2024,0,0,0,0,0,0,0,0,0,0,1.03_Accelerator Systems (AS),1.03.04_AS Cryogenic Distribution System (CDS),1.03.04.20_AS Cryogenic Distribution System Installation,1.03.04.20.30_Distribution Box 3 - Installation Support,AS_CDS_DB_9020_Site Acceptance Test Upon Receipt - Distribution Box 3,Metrology,,SLAC,Labor
93290,1.03,1.03.04,1.03.04.20,1.03.04.20.30,1.03.04.20.30,Distribution Box 3 - Installation Support,AS_CDS_DB_9020,Site Acceptance Test Upon Receipt - Distribution Box 3,10.0,8.0,8.0,8.0,02-25-25,03-10-25,AS_CDS_DB_9010: FS,AS_CDS_DB_9030: FS,SLAC,0%,52190.52190_METSTP Tech Planning - Reinstated FY16,52190_METSTP Tech Planning - Reinstated FY16,Labor,0.0d,10.0,10.0,At Completion Units,1/26/2024,2/8/2024,0,0,0,0,0,0,0,0,0,0,1.03_Accelerator Systems (AS),1.03.04_AS Cryogenic Distribution System (CDS),1.03.04.20_AS Cryogenic Distribution System Installation,1.03.04.20.30_Distribution Box 3 - Installation Support,AS_CDS_DB_9020_Site Acceptance Test Upon Receipt - Distribution Box 3,METSTPT Tech Planning,Tech,SLAC,Labor
93291,1.03,1.03.04,1.03.04.20,1.03.04.20.30,1.03.04.20.30,Distribution Box 3 - Installation Support,AS_CDS_DB_9020,Site Acceptance Test Upon Receipt - Distribution Box 3,10.0,24.0,24.0,24.0,02-25-25,03-10-25,AS_CDS_DB_9010: FS,AS_CDS_DB_9030: FS,SLAC,0%,52149.52149_Field Construction Manager (FCM),52149_Field Construction Manager (FCM),Labor,0.0d,10.0,10.0,At Completion Units,1/26/2024,2/8/2024,0,0,0,0,0,0,0,0,0,0,1.03_Accelerator Systems (AS),1.03.04_AS Cryogenic Distribution System (CDS),1.03.04.20_AS Cryogenic Distribution System Installation,1.03.04.20.30_Distribution Box 3 - Installation Support,AS_CDS_DB_9020_Site Acceptance Test Upon Receipt - Distribution Box 3,FAC,Engineer,SLAC,Labor
93292,1.03,1.03.04,1.03.04.20,1.03.04.20.30,1.03.04.20.30,Distribution Box 3 - Installation Support,AS_CDS_DB_9010,Transport Support - Distribution Box 3,10.0,24.0,24.0,24.0,02-10-25,02-24-25,AS_CDS_DB_6240: FS,AS_CDS_DB_9020: FS,SLAC,0%,52149.52149_Field Construction Manager (FCM),52149_Field Construction Manager (FCM),Labor,0.0d,10.0,10.0,At Completion Units,1/11/2024,1/25/2024,0,0,0,0,0,0,0,0,0,0,1.03_Accelerator Systems (AS),1.03.04_AS Cryogenic Distribution System (CDS),1.03.04.20_AS Cryogenic Distribution System Installation,1.03.04.20.30_Distribution Box 3 - Installation Support,AS_CDS_DB_9010_Transport Support - Distribution Box 3,FAC,Engineer,SLAC,Labor
93293,1.03,1.03.04,1.03.04.20,1.03.04.20.30,1.03.04.20.30,Distribution Box 3 - Installation Support,AS_CDS_DB_9010,Transport Support - Distribution Box 3,10.0,32.0,32.0,32.0,02-10-25,02-24-25,AS_CDS_DB_6240: FS,AS_CDS_DB_9020: FS,SLAC,0%,0140_E3.0140_Engineer-Electrical_E3,0140_Engineer-Electrical_E3,Labor,0.0d,10.0,10.0,At Completion Units,1/11/2024,1/25/2024,0,0,0,0,0,0,0,0,0,0,1.03_Accelerator Systems (AS),1.03.04_AS Cryogenic Distribution System (CDS),1.03.04.20_AS Cryogenic Distribution System Installation,1.03.04.20.30_Distribution Box 3 - Installation Support,AS_CDS_DB_9010_Transport Support - Distribution Box 3,Electrical,,SLAC,Labor
93294,1.03,1.03.04,1.03.04.20,1.03.04.20.30,1.03.04.20.30,Distribution Box 3 - Installation Support,AS_CDS_DB_9010,Transport Support - Distribution Box 3,10.0,10.0,10.0,10.0,02-10-25,02-24-25,AS_CDS_DB_6240: FS,AS_CDS_DB_9020: FS,SLAC,0%,52169.52169_METS Mechanical Engineer,52169_METS Mechanical Engineer,Labor,0.0d,10.0,10.0,At Completion Units,1/11/2024,1/25/2024,0,0,0,0,0,0,0,0,0,0,1.03_Accelerator Systems (AS),1.03.04_AS Cryogenic Distribution System (CDS),1.03.04.20_AS Cryogenic Distribution System Installation,1.03.04.20.30_Distribution Box 3 - Installation Support,AS_CDS_DB_9010_Transport Support - Distribution Box 3,Mechanical,,SLAC,Labor
93295,1.03,1.03.04,1.03.04.20,1.03.04.20.30,1.03.04.20.30,Distribution Box 3 - Installation Support,AS_CDS_DB_9070,Verification and Test - Distribution Box 3,10.0,40.0,40.0,40.0,06-18-25,07-01-25,AS_CDS_DB_9050: FS,AS_CDS_DB_9210: FS,SLAC,0%,52198.52198_METSMANF (METSD Manufacturing),52198_METSMANF (METSD Manufacturing),Labor,0.0d,10.0,10.0,At Completion Units,10/25/2024,11/7/2024,0,0,0,0,0,0,0,0,0,0,1.03_Accelerator Systems (AS),1.03.04_AS Cryogenic Distribution System (CDS),1.03.04.20_AS Cryogenic Distribution System Installation,1.03.04.20.30_Distribution Box 3 - Installation Support,AS_CDS_DB_9070_Verification and Test - Distribution Box 3,Manufacturing,,SLAC,Labor
93296,1.03,1.03.04,1.03.04.20,1.03.04.20.30,1.03.04.20.30,Distribution Box 3 - Installation Support,AS_CDS_DB_9070,Verification and Test - Distribution Box 3,10.0,40.0,40.0,40.0,06-18-25,07-01-25,AS_CDS_DB_9050: FS,AS_CDS_DB_9210: FS,SLAC,0%,52169.52169_METS Mechanical Engineer,52169_METS Mechanical Engineer,Labor,0.0d,10.0,10.0,At Completion Units,10/25/2024,11/7/2024,0,0,0,0,0,0,0,0,0,0,1.03_Accelerator Systems (AS),1.03.04_AS Cryogenic Distribution System (CDS),1.03.04.20_AS Cryogenic Distribution System Installation,1.03.04.20.30_Distribution Box 3 - Installation Support,AS_CDS_DB_9070_Verification and Test - Distribution Box 3,Mechanical,,SLAC,Labor
93297,1.03,1.03.04,1.03.04.20,1.03.04.20.30,1.03.04.20.30,Distribution Box 3 - Installation Support,AS_CDS_DB_9050,Mechanical Installation - Distribution Box 3,40.0,160.0,160.0,160.0,04-22-25,06-17-25,AS_CDS_DB_9040: FS,AS_CDS_DB_9070: FS,SLAC,0%,52198.52198_METSMANF (METSD Manufacturing),52198_METSMANF (METSD Manufacturing),Labor,0.0d,40.0,40.0,At Completion Units,8/29/2024,10/24/2024,0,0,0,0,0,0,0,0,0,0,1.03_Accelerator Systems (AS),1.03.04_AS Cryogenic Distribution System (CDS),1.03.04.20_AS Cryogenic Distribution System Installation,1.03.04.20.30_Distribution Box 3 - Installation Support,AS_CDS_DB_9050_Mechanical Installation - Distribution Box 3,Manufacturing,,SLAC,Labor
93298,1.03,1.03.04,1.03.04.20,1.03.04.20.30,1.03.04.20.30,Distribution Box 3 - Installation Support,AS_CDS_DB_9040,Set in Klystron Gallery - Distribution Box 3,20.0,80.0,80.0,80.0,03-25-25,04-21-25,"AS_CDS_DB_9030: FS, AS_M4_1030: FS","AS_CDS_DB_9050: FS, AS_CDS_VL_9040: FS",SLAC,0%,52198.52198_METSMANF (METSD Manufacturing),52198_METSMANF (METSD Manufacturing),Labor,0.0d,20.0,20.0,At Completion Units,8/1/2024,8/28/2024,0,0,0,0,0,0,0,0,0,0,1.03_Accelerator Systems (AS),1.03.04_AS Cryogenic Distribution System (CDS),1.03.04.20_AS Cryogenic Distribution System Installation,1.03.04.20.30_Distribution Box 3 - Installation Support,AS_CDS_DB_9040_Set in Klystron Gallery - Distribution Box 3,Manufacturing,,SLAC,Labor
93299,1.03,1.03.04,1.03.04.20,1.03.04.20.30,1.03.04.20.30,Distribution Box 3 - Installation Support,AS_CDS_DB_9040,Set in Klystron Gallery - Distribution Box 3,20.0,80.0,80.0,80.0,03-25-25,04-21-25,"AS_CDS_DB_9030: FS, AS_M4_1030: FS","AS_CDS_DB_9050: FS, AS_CDS_VL_9040: FS",SLAC,0%,52169.52169_METS Mechanical Engineer,52169_METS Mechanical Engineer,Labor,0.0d,20.0,20.0,At Completion Units,8/1/2024,8/28/2024,0,0,0,0,0,0,0,0,0,0,1.03_Accelerator Systems (AS),1.03.04_AS Cryogenic Distribution System (CDS),1.03.04.20_AS Cryogenic Distribution System Installation,1.03.04.20.30_Distribution Box 3 - Installation Support,AS_CDS_DB_9040_Set in Klystron Gallery - Distribution Box 3,Mechanical,,SLAC,Labor
93300,1.03,1.03.04,1.03.04.20,1.03.04.20.30,1.03.04.20.30,Distribution Box 3 - Installation Support,AS_CDS_DB_9030,Transport to Final Position - Distribution Box 3,10.0,40.0,40.0,40.0,03-11-25,03-24-25,AS_CDS_DB_9020: FS,AS_CDS_DB_9040: FS,SLAC,0%,52198.52198_METSMANF (METSD Manufacturing),52198_METSMANF (METSD Manufacturing),Labor,0.0d,10.0,10.0,At Completion Units,2/9/2024,2/23/2024,0,0,0,0,0,0,0,0,0,0,1.03_Accelerator Systems (AS),1.03.04_AS Cryogenic Distribution System (CDS),1.03.04.20_AS Cryogenic Distribution System Installation,1.03.04.20.30_Distribution Box 3 - Installation Support,AS_CDS_DB_9030_Transport to Final Position - Distribution Box 3,Manufacturing,,SLAC,Labor
93301,1.03,1.03.04,1.03.04.20,1.03.04.20.30,1.03.04.20.30,Distribution Box 3 - Installation Support,AS_CDS_DB_9030,Transport to Final Position - Distribution Box 3,10.0,16.0,16.0,16.0,03-11-25,03-24-25,AS_CDS_DB_9020: FS,AS_CDS_DB_9040: FS,SLAC,0%,52169.52169_METS Mechanical Engineer,52169_METS Mechanical Engineer,Labor,0.0d,10.0,10.0,At Completion Units,2/9/2024,2/23/2024,0,0,0,0,0,0,0,0,0,0,1.03_Accelerator Systems (AS),1.03.04_AS Cryogenic Distribution System (CDS),1.03.04.20_AS Cryogenic Distribution System Installation,1.03.04.20.30_Distribution Box 3 - Installation Support,AS_CDS_DB_9030_Transport to Final Position - Distribution Box 3,Mechanical,,SLAC,Labor
93302,1.03,1.03.04,1.03.04.20,1.03.04.20.30,1.03.04.20.30,Distribution Box 3 - Installation Support,AS_CDS_DB_9020,Site Acceptance Test Upon Receipt - Distribution Box 3,10.0,40.0,40.0,40.0,02-25-25,03-10-25,AS_CDS_DB_9010: FS,AS_CDS_DB_9030: FS,SLAC,0%,0140_E3.0140_Engineer-Electrical_E3,0140_Engineer-Electrical_E3,Labor,0.0d,10.0,10.0,At Completion Units,1/26/2024,2/8/2024,0,0,0,0,0,0,0,0,0,0,1.03_Accelerator Systems (AS),1.03.04_AS Cryogenic Distribution System (CDS),1.03.04.20_AS Cryogenic Distribution System Installation,1.03.04.20.30_Distribution Box 3 - Installation Support,AS_CDS_DB_9020_Site Acceptance Test Upon Receipt - Distribution Box 3,Electrical,,SLAC,Labor
93303,1.03,1.03.04,1.03.04.20,1.03.04.20.30,1.03.04.20.30,Distribution Box 3 - Installation Support,AS_CDS_DB_9020,Site Acceptance Test Upon Receipt - Distribution Box 3,10.0,120.0,120.0,120.0,02-25-25,03-10-25,AS_CDS_DB_9010: FS,AS_CDS_DB_9030: FS,SLAC,0%,52198.52198_METSMANF (METSD Manufacturing),52198_METSMANF (METSD Manufacturing),Labor,0.0d,10.0,10.0,At Completion Units,1/26/2024,2/8/2024,0,0,0,0,0,0,0,0,0,0,1.03_Accelerator Systems (AS),1.03.04_AS Cryogenic Distribution System (CDS),1.03.04.20_AS Cryogenic Distribution System Installation,1.03.04.20.30_Distribution Box 3 - Installation Support,AS_CDS_DB_9020_Site Acceptance Test Upon Receipt - Distribution Box 3,Manufacturing,,SLAC,Labor
93304,1.03,1.03.04,1.03.04.20,1.03.04.20.30,1.03.04.20.30,Distribution Box 3 - Installation Support,AS_CDS_DB_9020,Site Acceptance Test Upon Receipt - Distribution Box 3,10.0,40.0,40.0,40.0,02-25-25,03-10-25,AS_CDS_DB_9010: FS,AS_CDS_DB_9030: FS,SLAC,0%,52169.52169_METS Mechanical Engineer,52169_METS Mechanical Engineer,Labor,0.0d,10.0,10.0,At Completion Units,1/26/2024,2/8/2024,0,0,0,0,0,0,0,0,0,0,1.03_Accelerator Systems (AS),1.03.04_AS Cryogenic Distribution System (CDS),1.03.04.20_AS Cryogenic Distribution System Installation,1.03.04.20.30_Distribution Box 3 - Installation Support,AS_CDS_DB_9020_Site Acceptance Test Upon Receipt - Distribution Box 3,Mechanical,,SLAC,Labor
93624,1.03,1.03.04,1.03.04.20,1.03.04.20.40,1.03.04.20.40,Vertical Line 3 - Installation Support,AS_CDS_VL_9180,AWARD: Procurement - Installation Support - Vertical Line 3,1.0,225000.0,225000.0,225000.0,01-16-25,01-16-25,AS_CDS_VL_9170: FS,AS_CDS_VL_9190: FS,SLAC,0%,AWARD_USE.AWARD - Use this AWARD,AWARD - Use this AWARD,Nonlabor,0.0d,1.0,1.0,At Completion Units,9/25/2024,9/25/2024,AWARD < $500K,0,0,0,0,0,0,0,0,0,1.03_Accelerator Systems (AS),1.03.04_AS Cryogenic Distribution System (CDS),1.03.04.20_AS Cryogenic Distribution System Installation,1.03.04.20.40_Vertical Line 3 - Installation Support,AS_CDS_VL_9180_AWARD: Procurement - Installation Support - Vertical Line 3,Material,,SLAC,M&S
93625,1.03,1.03.04,1.03.04.20,1.03.04.20.40,1.03.04.20.40,Vertical Line 3 - Installation Support,AS_CDS_VL_9110,RQN: Approval of Requisition - Installation Support - Vertical Line 3,1.0,225000.0,225000.0,225000.0,10-24-24,10-24-24,AS_CDS_VL_9100: FS,AS_CDS_VL_9120: FS,SLAC,0%,REQ.Requisition,Requisition,Nonlabor,0.0d,1.0,1.0,At Completion Units,7/18/2024,7/18/2024,RQN,0,0,0,0,0,0,0,0,0,1.03_Accelerator Systems (AS),1.03.04_AS Cryogenic Distribution System (CDS),1.03.04.20_AS Cryogenic Distribution System Installation,1.03.04.20.40_Vertical Line 3 - Installation Support,AS_CDS_VL_9110_RQN: Approval of Requisition - Installation Support - Vertical Line 3,Material,,SLAC,M&S
93626,1.03,1.03.04,1.03.04.20,1.03.04.20.40,1.03.04.20.40,Vertical Line 3 - Installation Support,AS_CDS_VL_9200,RCV: Installation Support - Vertical Line 3,1.0,225000.0,225000.0,225000.0,04-15-25,04-15-25,AS_CDS_VL_9190: FS,AS_CDS_VL_9210: FS,SLAC,0%,SL_MSSC.SLAC M&S (<$500K) (gets G&A) (gets ESC),SLAC M&S (<$500K) (gets G&A) (gets ESC),Nonlabor,0.0d,1.0,1.0,At Completion Units,1/6/2025,1/6/2025,0,0,0,0,0,0,0,0,0,0,1.03_Accelerator Systems (AS),1.03.04_AS Cryogenic Distribution System (CDS),1.03.04.20_AS Cryogenic Distribution System Installation,1.03.04.20.40_Vertical Line 3 - Installation Support,AS_CDS_VL_9200_RCV: Installation Support - Vertical Line 3,Material,,SLAC,M&S
93627,1.03,1.03.04,1.03.04.20,1.03.04.20.40,1.03.04.20.40,Vertical Line 3 - Installation Support,AS_CDS_VL_9070,Verification and Test - Vertical Line 3,10.0,36.0,36.0,36.0,07-21-26,08-03-26,AS_CDS_VL_9050: FS,AS_CDS_VL_9210: FS,SLAC,0%,52149.52149_Field Construction Manager (FCM),52149_Field Construction Manager (FCM),Labor,0.0d,10.0,10.0,At Completion Units,1/13/2026,1/27/2026,0,0,0,0,0,0,0,0,0,0,1.03_Accelerator Systems (AS),1.03.04_AS Cryogenic Distribution System (CDS),1.03.04.20_AS Cryogenic Distribution System Installation,1.03.04.20.40_Vertical Line 3 - Installation Support,AS_CDS_VL_9070_Verification and Test - Vertical Line 3,FAC,Engineer,SLAC,Labor
93628,1.03,1.03.04,1.03.04.20,1.03.04.20.40,1.03.04.20.40,Vertical Line 3 - Installation Support,AS_CDS_VL_9050,Mechanical Installation - Vertical Line 3,80.0,96.0,96.0,96.0,03-27-26,07-20-26,"AS_CDS_VL_9040: FS, AS_CDS_SHLD_9110: FS",AS_CDS_VL_9070: FS,SLAC,0%,52149.52149_Field Construction Manager (FCM),52149_Field Construction Manager (FCM),Labor,0.0d,80.0,80.0,At Completion Units,9/5/2025,1/12/2026,0,0,0,0,0,0,0,0,0,0,1.03_Accelerator Systems (AS),1.03.04_AS Cryogenic Distribution System (CDS),1.03.04.20_AS Cryogenic Distribution System Installation,1.03.04.20.40_Vertical Line 3 - Installation Support,AS_CDS_VL_9050_Mechanical Installation - Vertical Line 3,FAC,Engineer,SLAC,Labor
93629,1.03,1.03.04,1.03.04.20,1.03.04.20.40,1.03.04.20.40,Vertical Line 3 - Installation Support,AS_CDS_VL_9040,Setting - Vertical Line 3,20.0,24.0,24.0,24.0,02-27-26,03-26-26,"AS_CDS_VL_9030: FS, AS_CDS_DB_9040: FS, AS_CDS_TE_9040: FS",AS_CDS_VL_9050: FS,SLAC,0%,52149.52149_Field Construction Manager (FCM),52149_Field Construction Manager (FCM),Labor,0.0d,20.0,20.0,At Completion Units,8/7/2025,9/4/2025,0,0,0,0,0,0,0,0,0,0,1.03_Accelerator Systems (AS),1.03.04_AS Cryogenic Distribution System (CDS),1.03.04.20_AS Cryogenic Distribution System Installation,1.03.04.20.40_Vertical Line 3 - Installation Support,AS_CDS_VL_9040_Setting - Vertical Line 3,FAC,Engineer,SLAC,Labor
93630,1.03,1.03.04,1.03.04.20,1.03.04.20.40,1.03.04.20.40,Vertical Line 3 - Installation Support,AS_CDS_VL_9030,Transport to Final Position - Vertical Line 3,10.0,12.0,12.0,12.0,10-31-24,11-13-24,AS_CDS_VL_9020: FS,AS_CDS_VL_9040: FS,SLAC,0%,52149.52149_Field Construction Manager (FCM),52149_Field Construction Manager (FCM),Labor,0.0d,10.0,10.0,At Completion Units,7/25/2024,8/7/2024,0,0,0,0,0,0,0,0,0,0,1.03_Accelerator Systems (AS),1.03.04_AS Cryogenic Distribution System (CDS),1.03.04.20_AS Cryogenic Distribution System Installation,1.03.04.20.40_Vertical Line 3 - Installation Support,AS_CDS_VL_9030_Transport to Final Position - Vertical Line 3,FAC,Engineer,SLAC,Labor
93631,1.03,1.03.04,1.03.04.20,1.03.04.20.40,1.03.04.20.40,Vertical Line 3 - Installation Support,AS_CDS_VL_9020,Site Acceptance Test Upon Receipt - Vertical Line 3,10.0,32.0,32.0,32.0,10-17-24,10-30-24,AS_CDS_VL_9010: FS,AS_CDS_VL_9030: FS,SLAC,0%,52191.52191_METSMET Metrology,52191_METSMET Metrology,Labor,0.0d,10.0,10.0,At Completion Units,7/11/2024,7/24/2024,0,0,0,0,0,0,0,0,0,0,1.03_Accelerator Systems (AS),1.03.04_AS Cryogenic Distribution System (CDS),1.03.04.20_AS Cryogenic Distribution System Installation,1.03.04.20.40_Vertical Line 3 - Installation Support,AS_CDS_VL_9020_Site Acceptance Test Upon Receipt - Vertical Line 3,Metrology,,SLAC,Labor
93632,1.03,1.03.04,1.03.04.20,1.03.04.20.40,1.03.04.20.40,Vertical Line 3 - Installation Support,AS_CDS_VL_9020,Site Acceptance Test Upon Receipt - Vertical Line 3,10.0,8.0,8.0,8.0,10-17-24,10-30-24,AS_CDS_VL_9010: FS,AS_CDS_VL_9030: FS,SLAC,0%,52190.52190_METSTP Tech Planning - Reinstated FY16,52190_METSTP Tech Planning - Reinstated FY16,Labor,0.0d,10.0,10.0,At Completion Units,7/11/2024,7/24/2024,0,0,0,0,0,0,0,0,0,0,1.03_Accelerator Systems (AS),1.03.04_AS Cryogenic Distribution System (CDS),1.03.04.20_AS Cryogenic Distribution System Installation,1.03.04.20.40_Vertical Line 3 - Installation Support,AS_CDS_VL_9020_Site Acceptance Test Upon Receipt - Vertical Line 3,METSTPT Tech Planning,Tech,SLAC,Labor
93633,1.03,1.03.04,1.03.04.20,1.03.04.20.40,1.03.04.20.40,Vertical Line 3 - Installation Support,AS_CDS_VL_9020,Site Acceptance Test Upon Receipt - Vertical Line 3,10.0,64.0,64.0,64.0,10-17-24,10-30-24,AS_CDS_VL_9010: FS,AS_CDS_VL_9030: FS,SLAC,0%,52152.52152_FAC Fleet,52152_FAC Fleet,Labor,0.0d,10.0,10.0,At Completion Units,7/11/2024,7/24/2024,0,0,0,0,0,0,0,0,0,0,1.03_Accelerator Systems (AS),1.03.04_AS Cryogenic Distribution System (CDS),1.03.04.20_AS Cryogenic Distribution System Installation,1.03.04.20.40_Vertical Line 3 - Installation Support,AS_CDS_VL_9020_Site Acceptance Test Upon Receipt - Vertical Line 3,Support System,,SLAC,Labor
93634,1.03,1.03.04,1.03.04.20,1.03.04.20.40,1.03.04.20.40,Vertical Line 3 - Installation Support,AS_CDS_VL_9020,Site Acceptance Test Upon Receipt - Vertical Line 3,10.0,16.0,16.0,16.0,10-17-24,10-30-24,AS_CDS_VL_9010: FS,AS_CDS_VL_9030: FS,SLAC,0%,52148.52148_FAC Engineering & Construction,52148_FAC Engineering & Construction,Labor,0.0d,10.0,10.0,At Completion Units,7/11/2024,7/24/2024,0,0,0,0,0,0,0,0,0,0,1.03_Accelerator Systems (AS),1.03.04_AS Cryogenic Distribution System (CDS),1.03.04.20_AS Cryogenic Distribution System Installation,1.03.04.20.40_Vertical Line 3 - Installation Support,AS_CDS_VL_9020_Site Acceptance Test Upon Receipt - Vertical Line 3,FAC,,SLAC,Labor
93635,1.03,1.03.04,1.03.04.20,1.03.04.20.40,1.03.04.20.40,Vertical Line 3 - Installation Support,AS_CDS_VL_9020,Site Acceptance Test Upon Receipt - Vertical Line 3,10.0,12.0,12.0,12.0,10-17-24,10-30-24,AS_CDS_VL_9010: FS,AS_CDS_VL_9030: FS,SLAC,0%,52149.52149_Field Construction Manager (FCM),52149_Field Construction Manager (FCM),Labor,0.0d,10.0,10.0,At Completion Units,7/11/2024,7/24/2024,0,0,0,0,0,0,0,0,0,0,1.03_Accelerator Systems (AS),1.03.04_AS Cryogenic Distribution System (CDS),1.03.04.20_AS Cryogenic Distribution System Installation,1.03.04.20.40_Vertical Line 3 - Installation Support,AS_CDS_VL_9020_Site Acceptance Test Upon Receipt - Vertical Line 3,FAC,Engineer,SLAC,Labor
93636,1.03,1.03.04,1.03.04.20,1.03.04.20.40,1.03.04.20.40,Vertical Line 3 - Installation Support,AS_CDS_VL_9010,Transport Support - Vertical Line 3,10.0,12.0,12.0,12.0,10-03-24,10-16-24,AS_CDS_VL_6240: FS,AS_CDS_VL_9020: FS,SLAC,0%,52149.52149_Field Construction Manager (FCM),52149_Field Construction Manager (FCM),Labor,0.0d,10.0,10.0,At Completion Units,6/26/2024,7/10/2024,0,0,0,0,0,0,0,0,0,0,1.03_Accelerator Systems (AS),1.03.04_AS Cryogenic Distribution System (CDS),1.03.04.20_AS Cryogenic Distribution System Installation,1.03.04.20.40_Vertical Line 3 - Installation Support,AS_CDS_VL_9010_Transport Support - Vertical Line 3,FAC,Engineer,SLAC,Labor
93637,1.03,1.03.04,1.03.04.20,1.03.04.20.40,1.03.04.20.40,Vertical Line 3 - Installation Support,AS_CDS_VL_9010,Transport Support - Vertical Line 3,10.0,32.0,32.0,32.0,10-03-24,10-16-24,AS_CDS_VL_6240: FS,AS_CDS_VL_9020: FS,SLAC,0%,0140_E3.0140_Engineer-Electrical_E3,0140_Engineer-Electrical_E3,Labor,0.0d,10.0,10.0,At Completion Units,6/26/2024,7/10/2024,0,0,0,0,0,0,0,0,0,0,1.03_Accelerator Systems (AS),1.03.04_AS Cryogenic Distribution System (CDS),1.03.04.20_AS Cryogenic Distribution System Installation,1.03.04.20.40_Vertical Line 3 - Installation Support,AS_CDS_VL_9010_Transport Support - Vertical Line 3,Electrical,,SLAC,Labor
93638,1.03,1.03.04,1.03.04.20,1.03.04.20.40,1.03.04.20.40,Vertical Line 3 - Installation Support,AS_CDS_VL_9010,Transport Support - Vertical Line 3,10.0,10.0,10.0,10.0,10-03-24,10-16-24,AS_CDS_VL_6240: FS,AS_CDS_VL_9020: FS,SLAC,0%,52169.52169_METS Mechanical Engineer,52169_METS Mechanical Engineer,Labor,0.0d,10.0,10.0,At Completion Units,6/26/2024,7/10/2024,0,0,0,0,0,0,0,0,0,0,1.03_Accelerator Systems (AS),1.03.04_AS Cryogenic Distribution System (CDS),1.03.04.20_AS Cryogenic Distribution System Installation,1.03.04.20.40_Vertical Line 3 - Installation Support,AS_CDS_VL_9010_Transport Support - Vertical Line 3,Mechanical,,SLAC,Labor
93639,1.03,1.03.04,1.03.04.20,1.03.04.20.40,1.03.04.20.40,Vertical Line 3 - Installation Support,AS_CDS_VL_9070,Verification and Test - Vertical Line 3,10.0,40.0,40.0,40.0,07-21-26,08-03-26,AS_CDS_VL_9050: FS,AS_CDS_VL_9210: FS,SLAC,0%,52198.52198_METSMANF (METSD Manufacturing),52198_METSMANF (METSD Manufacturing),Labor,0.0d,10.0,10.0,At Completion Units,1/13/2026,1/27/2026,0,0,0,0,0,0,0,0,0,0,1.03_Accelerator Systems (AS),1.03.04_AS Cryogenic Distribution System (CDS),1.03.04.20_AS Cryogenic Distribution System Installation,1.03.04.20.40_Vertical Line 3 - Installation Support,AS_CDS_VL_9070_Verification and Test - Vertical Line 3,Manufacturing,,SLAC,Labor
93640,1.03,1.03.04,1.03.04.20,1.03.04.20.40,1.03.04.20.40,Vertical Line 3 - Installation Support,AS_CDS_VL_9070,Verification and Test - Vertical Line 3,10.0,40.0,40.0,40.0,07-21-26,08-03-26,AS_CDS_VL_9050: FS,AS_CDS_VL_9210: FS,SLAC,0%,52169.52169_METS Mechanical Engineer,52169_METS Mechanical Engineer,Labor,0.0d,10.0,10.0,At Completion Units,1/13/2026,1/27/2026,0,0,0,0,0,0,0,0,0,0,1.03_Accelerator Systems (AS),1.03.04_AS Cryogenic Distribution System (CDS),1.03.04.20_AS Cryogenic Distribution System Installation,1.03.04.20.40_Vertical Line 3 - Installation Support,AS_CDS_VL_9070_Verification and Test - Vertical Line 3,Mechanical,,SLAC,Labor
93641,1.03,1.03.04,1.03.04.20,1.03.04.20.40,1.03.04.20.40,Vertical Line 3 - Installation Support,AS_CDS_VL_9050,Mechanical Installation - Vertical Line 3,80.0,160.0,160.0,160.0,03-27-26,07-20-26,"AS_CDS_VL_9040: FS, AS_CDS_SHLD_9110: FS",AS_CDS_VL_9070: FS,SLAC,0%,52198.52198_METSMANF (METSD Manufacturing),52198_METSMANF (METSD Manufacturing),Labor,0.0d,80.0,80.0,At Completion Units,9/5/2025,1/12/2026,0,0,0,0,0,0,0,0,0,0,1.03_Accelerator Systems (AS),1.03.04_AS Cryogenic Distribution System (CDS),1.03.04.20_AS Cryogenic Distribution System Installation,1.03.04.20.40_Vertical Line 3 - Installation Support,AS_CDS_VL_9050_Mechanical Installation - Vertical Line 3,Manufacturing,,SLAC,Labor
93642,1.03,1.03.04,1.03.04.20,1.03.04.20.40,1.03.04.20.40,Vertical Line 3 - Installation Support,AS_CDS_VL_9040,Setting - Vertical Line 3,20.0,80.0,80.0,80.0,02-27-26,03-26-26,"AS_CDS_VL_9030: FS, AS_CDS_DB_9040: FS, AS_CDS_TE_9040: FS",AS_CDS_VL_9050: FS,SLAC,0%,52198.52198_METSMANF (METSD Manufacturing),52198_METSMANF (METSD Manufacturing),Labor,0.0d,20.0,20.0,At Completion Units,8/7/2025,9/4/2025,0,0,0,0,0,0,0,0,0,0,1.03_Accelerator Systems (AS),1.03.04_AS Cryogenic Distribution System (CDS),1.03.04.20_AS Cryogenic Distribution System Installation,1.03.04.20.40_Vertical Line 3 - Installation Support,AS_CDS_VL_9040_Setting - Vertical Line 3,Manufacturing,,SLAC,Labor
93643,1.03,1.03.04,1.03.04.20,1.03.04.20.40,1.03.04.20.40,Vertical Line 3 - Installation Support,AS_CDS_VL_9040,Setting - Vertical Line 3,20.0,80.0,80.0,80.0,02-27-26,03-26-26,"AS_CDS_VL_9030: FS, AS_CDS_DB_9040: FS, AS_CDS_TE_9040: FS",AS_CDS_VL_9050: FS,SLAC,0%,52169.52169_METS Mechanical Engineer,52169_METS Mechanical Engineer,Labor,0.0d,20.0,20.0,At Completion Units,8/7/2025,9/4/2025,0,0,0,0,0,0,0,0,0,0,1.03_Accelerator Systems (AS),1.03.04_AS Cryogenic Distribution System (CDS),1.03.04.20_AS Cryogenic Distribution System Installation,1.03.04.20.40_Vertical Line 3 - Installation Support,AS_CDS_VL_9040_Setting - Vertical Line 3,Mechanical,,SLAC,Labor
93644,1.03,1.03.04,1.03.04.20,1.03.04.20.40,1.03.04.20.40,Vertical Line 3 - Installation Support,AS_CDS_VL_9030,Transport to Final Position - Vertical Line 3,10.0,40.0,40.0,40.0,10-31-24,11-13-24,AS_CDS_VL_9020: FS,AS_CDS_VL_9040: FS,SLAC,0%,52198.52198_METSMANF (METSD Manufacturing),52198_METSMANF (METSD Manufacturing),Labor,0.0d,10.0,10.0,At Completion Units,7/25/2024,8/7/2024,0,0,0,0,0,0,0,0,0,0,1.03_Accelerator Systems (AS),1.03.04_AS Cryogenic Distribution System (CDS),1.03.04.20_AS Cryogenic Distribution System Installation,1.03.04.20.40_Vertical Line 3 - Installation Support,AS_CDS_VL_9030_Transport to Final Position - Vertical Line 3,Manufacturing,,SLAC,Labor
93645,1.03,1.03.04,1.03.04.20,1.03.04.20.40,1.03.04.20.40,Vertical Line 3 - Installation Support,AS_CDS_VL_9030,Transport to Final Position - Vertical Line 3,10.0,16.0,16.0,16.0,10-31-24,11-13-24,AS_CDS_VL_9020: FS,AS_CDS_VL_9040: FS,SLAC,0%,52169.52169_METS Mechanical Engineer,52169_METS Mechanical Engineer,Labor,0.0d,10.0,10.0,At Completion Units,7/25/2024,8/7/2024,0,0,0,0,0,0,0,0,0,0,1.03_Accelerator Systems (AS),1.03.04_AS Cryogenic Distribution System (CDS),1.03.04.20_AS Cryogenic Distribution System Installation,1.03.04.20.40_Vertical Line 3 - Installation Support,AS_CDS_VL_9030_Transport to Final Position - Vertical Line 3,Mechanical,,SLAC,Labor
93646,1.03,1.03.04,1.03.04.20,1.03.04.20.40,1.03.04.20.40,Vertical Line 3 - Installation Support,AS_CDS_VL_9020,Site Acceptance Test Upon Receipt - Vertical Line 3,10.0,48.0,48.0,48.0,10-17-24,10-30-24,AS_CDS_VL_9010: FS,AS_CDS_VL_9030: FS,SLAC,0%,52198.52198_METSMANF (METSD Manufacturing),52198_METSMANF (METSD Manufacturing),Labor,0.0d,10.0,10.0,At Completion Units,7/11/2024,7/24/2024,0,0,0,0,0,0,0,0,0,0,1.03_Accelerator Systems (AS),1.03.04_AS Cryogenic Distribution System (CDS),1.03.04.20_AS Cryogenic Distribution System Installation,1.03.04.20.40_Vertical Line 3 - Installation Support,AS_CDS_VL_9020_Site Acceptance Test Upon Receipt - Vertical Line 3,Manufacturing,,SLAC,Labor
93647,1.03,1.03.04,1.03.04.20,1.03.04.20.40,1.03.04.20.40,Vertical Line 3 - Installation Support,AS_CDS_VL_9020,Site Acceptance Test Upon Receipt - Vertical Line 3,10.0,40.0,40.0,40.0,10-17-24,10-30-24,AS_CDS_VL_9010: FS,AS_CDS_VL_9030: FS,SLAC,0%,52169.52169_METS Mechanical Engineer,52169_METS Mechanical Engineer,Labor,0.0d,10.0,10.0,At Completion Units,7/11/2024,7/24/2024,0,0,0,0,0,0,0,0,0,0,1.03_Accelerator Systems (AS),1.03.04_AS Cryogenic Distribution System (CDS),1.03.04.20_AS Cryogenic Distribution System Installation,1.03.04.20.40_Vertical Line 3 - Installation Support,AS_CDS_VL_9020_Site Acceptance Test Upon Receipt - Vertical Line 3,Mechanical,,SLAC,Labor
93967,1.03,1.03.04,1.03.04.20,1.03.04.20.41,1.03.04.20.41,Vertical Transfer Line Radiation Shielding Block,AS_CDS_SHLD_9100,RCV:  VTL Shielding Block Procure and Install,1.0,147750.0,147750.0,147750.0,03-11-24,03-11-24,AS_CDS_SHLD_9090: FS,AS_CDS_SHLD_9110: FS,SLAC,0%,SL_MSSC.SLAC M&S (<$500K) (gets G&A) (gets ESC),SLAC M&S (<$500K) (gets G&A) (gets ESC),Nonlabor,0.0d,1.0,1.0,At Completion Units,1/4/2024,1/4/2024,0,0,0,0,0,0,0,0,0,0,1.03_Accelerator Systems (AS),1.03.04_AS Cryogenic Distribution System (CDS),1.03.04.20_AS Cryogenic Distribution System Installation,1.03.04.20.41_Vertical Transfer Line Radiation Shielding Block,AS_CDS_SHLD_9100_RCV:  VTL Shielding Block Procure and Install,Material,,SLAC,M&S
93968,1.03,1.03.04,1.03.04.20,1.03.04.20.41,1.03.04.20.41,Vertical Transfer Line Radiation Shielding Block,AS_CDS_SHLD_9110,Installation Support - VTL Shielding Block,40.0,9.0,9.0,9.0,08-01-24,09-26-24,"AS_CDS_SHLD_9100: FS, AS_M4_1030: FS","AS_CDS_SHLD_9120: FS, AS_CDS_VL_9050: FS",SLAC,0%,52190.52190_METSTP Tech Planning - Reinstated FY16,52190_METSTP Tech Planning - Reinstated FY16,Labor,0.0d,40.0,40.0,At Completion Units,8/1/2024,9/26/2024,0,0,0,0,0,0,0,0,0,0,1.03_Accelerator Systems (AS),1.03.04_AS Cryogenic Distribution System (CDS),1.03.04.20_AS Cryogenic Distribution System Installation,1.03.04.20.41_Vertical Transfer Line Radiation Shielding Block,AS_CDS_SHLD_9110_Installation Support - VTL Shielding Block,METSTPT Tech Planning,Tech,SLAC,Labor
93969,1.03,1.03.04,1.03.04.20,1.03.04.20.41,1.03.04.20.41,Vertical Transfer Line Radiation Shielding Block,AS_CDS_SHLD_9110,Installation Support - VTL Shielding Block,40.0,72.0,72.0,72.0,08-01-24,09-26-24,"AS_CDS_SHLD_9100: FS, AS_M4_1030: FS","AS_CDS_SHLD_9120: FS, AS_CDS_VL_9050: FS",SLAC,0%,52136.52136_Carpentery,52136_Carpentery,Labor,0.0d,40.0,40.0,At Completion Units,8/1/2024,9/26/2024,0,0,0,0,0,0,0,0,0,0,1.03_Accelerator Systems (AS),1.03.04_AS Cryogenic Distribution System (CDS),1.03.04.20_AS Cryogenic Distribution System Installation,1.03.04.20.41_Vertical Transfer Line Radiation Shielding Block,AS_CDS_SHLD_9110_Installation Support - VTL Shielding Block,Support System,,SLAC,Labor
93970,1.03,1.03.04,1.03.04.20,1.03.04.20.41,1.03.04.20.41,Vertical Transfer Line Radiation Shielding Block,AS_CDS_SHLD_9110,Installation Support - VTL Shielding Block,40.0,98.0,98.0,98.0,08-01-24,09-26-24,"AS_CDS_SHLD_9100: FS, AS_M4_1030: FS","AS_CDS_SHLD_9120: FS, AS_CDS_VL_9050: FS",SLAC,0%,52149.52149_Field Construction Manager (FCM),52149_Field Construction Manager (FCM),Labor,0.0d,40.0,40.0,At Completion Units,8/1/2024,9/26/2024,0,0,0,0,0,0,0,0,0,0,1.03_Accelerator Systems (AS),1.03.04_AS Cryogenic Distribution System (CDS),1.03.04.20_AS Cryogenic Distribution System Installation,1.03.04.20.41_Vertical Transfer Line Radiation Shielding Block,AS_CDS_SHLD_9110_Installation Support - VTL Shielding Block,FAC,Engineer,SLAC,Labor
93971,1.03,1.03.04,1.03.04.20,1.03.04.20.41,1.03.04.20.41,Vertical Transfer Line Radiation Shielding Block,AS_CDS_SHLD_9110,Installation Support - VTL Shielding Block,40.0,72.0,72.0,72.0,08-01-24,09-26-24,"AS_CDS_SHLD_9100: FS, AS_M4_1030: FS","AS_CDS_SHLD_9120: FS, AS_CDS_VL_9050: FS",SLAC,0%,52191.52191_METSMET Metrology,52191_METSMET Metrology,Labor,0.0d,40.0,40.0,At Completion Units,8/1/2024,9/26/2024,0,0,0,0,0,0,0,0,0,0,1.03_Accelerator Systems (AS),1.03.04_AS Cryogenic Distribution System (CDS),1.03.04.20_AS Cryogenic Distribution System Installation,1.03.04.20.41_Vertical Transfer Line Radiation Shielding Block,AS_CDS_SHLD_9110_Installation Support - VTL Shielding Block,Metrology,,SLAC,Labor
93972,1.03,1.03.04,1.03.04.20,1.03.04.20.41,1.03.04.20.41,Vertical Transfer Line Radiation Shielding Block,AS_CDS_SHLD_9110,Installation Support - VTL Shielding Block,40.0,599.0,599.0,599.0,08-01-24,09-26-24,"AS_CDS_SHLD_9100: FS, AS_M4_1030: FS","AS_CDS_SHLD_9120: FS, AS_CDS_VL_9050: FS",SLAC,0%,52156.52156_PROJMGR,52156_PROJMGR,Labor,0.0d,40.0,40.0,At Completion Units,8/1/2024,9/26/2024,0,0,0,0,0,0,0,0,0,0,1.03_Accelerator Systems (AS),1.03.04_AS Cryogenic Distribution System (CDS),1.03.04.20_AS Cryogenic Distribution System Installation,1.03.04.20.41_Vertical Transfer Line Radiation Shielding Block,AS_CDS_SHLD_9110_Installation Support - VTL Shielding Block,Management,,SLAC,Labor
93973,1.03,1.03.04,1.03.04.20,1.03.04.20.41,1.03.04.20.41,Vertical Transfer Line Radiation Shielding Block,AS_CDS_SHLD_9110,Installation Support - VTL Shielding Block,40.0,410.0,410.0,410.0,08-01-24,09-26-24,"AS_CDS_SHLD_9100: FS, AS_M4_1030: FS","AS_CDS_SHLD_9120: FS, AS_CDS_VL_9050: FS",SLAC,0%,52198.52198_METSMANF (METSD Manufacturing),52198_METSMANF (METSD Manufacturing),Labor,0.0d,40.0,40.0,At Completion Units,8/1/2024,9/26/2024,0,0,0,0,0,0,0,0,0,0,1.03_Accelerator Systems (AS),1.03.04_AS Cryogenic Distribution System (CDS),1.03.04.20_AS Cryogenic Distribution System Installation,1.03.04.20.41_Vertical Transfer Line Radiation Shielding Block,AS_CDS_SHLD_9110_Installation Support - VTL Shielding Block,Manufacturing,,SLAC,Labor
93974,1.03,1.03.04,1.03.04.20,1.03.04.20.41,1.03.04.20.41,Vertical Transfer Line Radiation Shielding Block,AS_CDS_SHLD_9080,AWARD: Procurement - VTL Shielding Block Procure and Install,1.0,147750.0,147750.0,147750.0,11-28-23,11-28-23,AS_CDS_SHLD_9070: FS,AS_CDS_SHLD_9090: FS,SLAC,0%,AWARD_USE.AWARD - Use this AWARD,AWARD - Use this AWARD,Nonlabor,0.0d,1.0,1.0,At Completion Units,9/22/2023,9/22/2023,AWARD < $500K,0,0,0,0,0,0,0,0,0,1.03_Accelerator Systems (AS),1.03.04_AS Cryogenic Distribution System (CDS),1.03.04.20_AS Cryogenic Distribution System Installation,1.03.04.20.41_Vertical Transfer Line Radiation Shielding Block,AS_CDS_SHLD_9080_AWARD: Procurement - VTL Shielding Block Procure and Install,Material,,SLAC,M&S
93975,1.03,1.03.04,1.03.04.20,1.03.04.20.41,1.03.04.20.41,Vertical Transfer Line Radiation Shielding Block,AS_CDS_SHLD_9010,RQN: Approval of Requisition - VTL Shielding Block Procure and Install,1.0,147750.0,147750.0,147750.0,09-19-23,09-19-23,AS_CDS_SHLD_9000: FS,AS_CDS_SHLD_9020: FS,SLAC,0%,REQ.Requisition,Requisition,Nonlabor,0.0d,1.0,1.0,At Completion Units,7/17/2023,7/17/2023,RQN,0,0,0,0,0,0,0,0,0,1.03_Accelerator Systems (AS),1.03.04_AS Cryogenic Distribution System (CDS),1.03.04.20_AS Cryogenic Distribution System Installation,1.03.04.20.41_Vertical Transfer Line Radiation Shielding Block,AS_CDS_SHLD_9010_RQN: Approval of Requisition - VTL Shielding Block Procure and Install,Material,,SLAC,M&S
94295,1.03,1.03.04,1.03.04.20,1.03.04.20.42,1.03.04.20.42,Tee - Installation Support,AS_CDS_TE_9070,Verification and Test - Tee Installation,10.0,80.0,80.0,80.0,04-24-26,05-07-26,AS_CDS_TE_9050: FS,AS_CDS_TE_9210: FS,SLAC,0%,0140_E3.0140_Engineer-Electrical_E3,0140_Engineer-Electrical_E3,Labor,0.0d,10.0,10.0,At Completion Units,10/3/2025,10/16/2025,0,0,0,0,0,0,0,0,0,0,1.03_Accelerator Systems (AS),1.03.04_AS Cryogenic Distribution System (CDS),1.03.04.20_AS Cryogenic Distribution System Installation,1.03.04.20.42_Tee - Installation Support,AS_CDS_TE_9070_Verification and Test - Tee Installation,Electrical,,SLAC,Labor
94296,1.03,1.03.04,1.03.04.20,1.03.04.20.42,1.03.04.20.42,Tee - Installation Support,AS_CDS_TE_9180,AWARD: Procurement - Installation Support - Tee,1.0,150000.0,150000.0,150000.0,01-16-25,01-16-25,AS_CDS_TE_9170: FS,AS_CDS_TE_9190: FS,SLAC,0%,AWARD_USE.AWARD - Use this AWARD,AWARD - Use this AWARD,Nonlabor,0.0d,1.0,1.0,At Completion Units,9/25/2024,9/25/2024,AWARD < $500K,0,0,0,0,0,0,0,0,0,1.03_Accelerator Systems (AS),1.03.04_AS Cryogenic Distribution System (CDS),1.03.04.20_AS Cryogenic Distribution System Installation,1.03.04.20.42_Tee - Installation Support,AS_CDS_TE_9180_AWARD: Procurement - Installation Support - Tee,Material,,SLAC,M&S
94297,1.03,1.03.04,1.03.04.20,1.03.04.20.42,1.03.04.20.42,Tee - Installation Support,AS_CDS_TE_9110,RQN: Approval of Requisition - Installation Support - Tee,1.0,150000.0,150000.0,150000.0,10-24-24,10-24-24,AS_CDS_TE_9100: FS,AS_CDS_TE_9120: FS,SLAC,0%,REQ.Requisition,Requisition,Nonlabor,0.0d,1.0,1.0,At Completion Units,7/18/2024,7/18/2024,RQN,0,0,0,0,0,0,0,0,0,1.03_Accelerator Systems (AS),1.03.04_AS Cryogenic Distribution System (CDS),1.03.04.20_AS Cryogenic Distribution System Installation,1.03.04.20.42_Tee - Installation Support,AS_CDS_TE_9110_RQN: Approval of Requisition - Installation Support - Tee,Material,,SLAC,M&S
94298,1.03,1.03.04,1.03.04.20,1.03.04.20.42,1.03.04.20.42,Tee - Installation Support,AS_CDS_TE_9200,RCV: Installation Support - Tee,1.0,150000.0,150000.0,150000.0,08-04-26,08-04-26,AS_CDS_TE_9190: FS,AS_CDS_TE_9210: FS,SLAC,0%,SL_MSSC.SLAC M&S (<$500K) (gets G&A) (gets ESC),SLAC M&S (<$500K) (gets G&A) (gets ESC),Nonlabor,0.0d,1.0,1.0,At Completion Units,1/28/2026,1/28/2026,0,0,0,0,0,0,0,0,0,0,1.03_Accelerator Systems (AS),1.03.04_AS Cryogenic Distribution System (CDS),1.03.04.20_AS Cryogenic Distribution System Installation,1.03.04.20.42_Tee - Installation Support,AS_CDS_TE_9200_RCV: Installation Support - Tee,Material,,SLAC,M&S
94299,1.03,1.03.04,1.03.04.20,1.03.04.20.42,1.03.04.20.42,Tee - Installation Support,AS_CDS_TE_9020,Site Acceptance Test Upon Receipt - Tee Installation,20.0,16.0,16.0,16.0,10-17-24,11-13-24,AS_CDS_TE_9010: FS,AS_CDS_TE_9030: FS,SLAC,0%,0140_E3.0140_Engineer-Electrical_E3,0140_Engineer-Electrical_E3,Labor,0.0d,20.0,20.0,At Completion Units,7/11/2024,8/7/2024,0,0,0,0,0,0,0,0,0,0,1.03_Accelerator Systems (AS),1.03.04_AS Cryogenic Distribution System (CDS),1.03.04.20_AS Cryogenic Distribution System Installation,1.03.04.20.42_Tee - Installation Support,AS_CDS_TE_9020_Site Acceptance Test Upon Receipt - Tee Installation,Electrical,,SLAC,Labor
94300,1.03,1.03.04,1.03.04.20,1.03.04.20.42,1.03.04.20.42,Tee - Installation Support,AS_CDS_TE_9070,Verification and Test - Tee Installation,10.0,36.0,36.0,36.0,04-24-26,05-07-26,AS_CDS_TE_9050: FS,AS_CDS_TE_9210: FS,SLAC,0%,52149.52149_Field Construction Manager (FCM),52149_Field Construction Manager (FCM),Labor,0.0d,10.0,10.0,At Completion Units,10/3/2025,10/16/2025,0,0,0,0,0,0,0,0,0,0,1.03_Accelerator Systems (AS),1.03.04_AS Cryogenic Distribution System (CDS),1.03.04.20_AS Cryogenic Distribution System Installation,1.03.04.20.42_Tee - Installation Support,AS_CDS_TE_9070_Verification and Test - Tee Installation,FAC,Engineer,SLAC,Labor
94301,1.03,1.03.04,1.03.04.20,1.03.04.20.42,1.03.04.20.42,Tee - Installation Support,AS_CDS_TE_9050,Mechanical Installation - Tee Installation,40.0,48.0,48.0,48.0,02-27-26,04-23-26,AS_CDS_TE_9040: FS,AS_CDS_TE_9070: FS,SLAC,0%,52149.52149_Field Construction Manager (FCM),52149_Field Construction Manager (FCM),Labor,0.0d,40.0,40.0,At Completion Units,8/7/2025,10/2/2025,0,0,0,0,0,0,0,0,0,0,1.03_Accelerator Systems (AS),1.03.04_AS Cryogenic Distribution System (CDS),1.03.04.20_AS Cryogenic Distribution System Installation,1.03.04.20.42_Tee - Installation Support,AS_CDS_TE_9050_Mechanical Installation - Tee Installation,FAC,Engineer,SLAC,Labor
94302,1.03,1.03.04,1.03.04.20,1.03.04.20.42,1.03.04.20.42,Tee - Installation Support,AS_CDS_TE_9040,Setting - Tee Installation,10.0,24.0,24.0,24.0,02-12-26,02-26-26,"AS_CDS_TE_9030: FS, AS_ScL_CM37_9010: FS","AS_CDS_TE_9050: FS, AS_ScL_CM38_9010: FS, AS_CDS_VL_9040: FS",SLAC,0%,52149.52149_Field Construction Manager (FCM),52149_Field Construction Manager (FCM),Labor,0.0d,10.0,10.0,At Completion Units,7/24/2025,8/6/2025,0,0,0,0,0,0,0,0,0,0,1.03_Accelerator Systems (AS),1.03.04_AS Cryogenic Distribution System (CDS),1.03.04.20_AS Cryogenic Distribution System Installation,1.03.04.20.42_Tee - Installation Support,AS_CDS_TE_9040_Setting - Tee Installation,FAC,Engineer,SLAC,Labor
94303,1.03,1.03.04,1.03.04.20,1.03.04.20.42,1.03.04.20.42,Tee - Installation Support,AS_CDS_TE_9030,Transport to Final Position - Tee Installation,5.0,24.0,24.0,24.0,11-14-24,11-20-24,AS_CDS_TE_9020: FS,AS_CDS_TE_9040: FS,SLAC,0%,52149.52149_Field Construction Manager (FCM),52149_Field Construction Manager (FCM),Labor,0.0d,5.0,5.0,At Completion Units,8/8/2024,8/14/2024,0,0,0,0,0,0,0,0,0,0,1.03_Accelerator Systems (AS),1.03.04_AS Cryogenic Distribution System (CDS),1.03.04.20_AS Cryogenic Distribution System Installation,1.03.04.20.42_Tee - Installation Support,AS_CDS_TE_9030_Transport to Final Position - Tee Installation,FAC,Engineer,SLAC,Labor
94304,1.03,1.03.04,1.03.04.20,1.03.04.20.42,1.03.04.20.42,Tee - Installation Support,AS_CDS_TE_9020,Site Acceptance Test Upon Receipt - Tee Installation,20.0,32.0,32.0,32.0,10-17-24,11-13-24,AS_CDS_TE_9010: FS,AS_CDS_TE_9030: FS,SLAC,0%,52191.52191_METSMET Metrology,52191_METSMET Metrology,Labor,0.0d,20.0,20.0,At Completion Units,7/11/2024,8/7/2024,0,0,0,0,0,0,0,0,0,0,1.03_Accelerator Systems (AS),1.03.04_AS Cryogenic Distribution System (CDS),1.03.04.20_AS Cryogenic Distribution System Installation,1.03.04.20.42_Tee - Installation Support,AS_CDS_TE_9020_Site Acceptance Test Upon Receipt - Tee Installation,Metrology,,SLAC,Labor
94305,1.03,1.03.04,1.03.04.20,1.03.04.20.42,1.03.04.20.42,Tee - Installation Support,AS_CDS_TE_9020,Site Acceptance Test Upon Receipt - Tee Installation,20.0,8.0,8.0,8.0,10-17-24,11-13-24,AS_CDS_TE_9010: FS,AS_CDS_TE_9030: FS,SLAC,0%,52190.52190_METSTP Tech Planning - Reinstated FY16,52190_METSTP Tech Planning - Reinstated FY16,Labor,0.0d,20.0,20.0,At Completion Units,7/11/2024,8/7/2024,0,0,0,0,0,0,0,0,0,0,1.03_Accelerator Systems (AS),1.03.04_AS Cryogenic Distribution System (CDS),1.03.04.20_AS Cryogenic Distribution System Installation,1.03.04.20.42_Tee - Installation Support,AS_CDS_TE_9020_Site Acceptance Test Upon Receipt - Tee Installation,METSTPT Tech Planning,Tech,SLAC,Labor
94306,1.03,1.03.04,1.03.04.20,1.03.04.20.42,1.03.04.20.42,Tee - Installation Support,AS_CDS_TE_9020,Site Acceptance Test Upon Receipt - Tee Installation,20.0,64.0,64.0,64.0,10-17-24,11-13-24,AS_CDS_TE_9010: FS,AS_CDS_TE_9030: FS,SLAC,0%,52152.52152_FAC Fleet,52152_FAC Fleet,Labor,0.0d,20.0,20.0,At Completion Units,7/11/2024,8/7/2024,0,0,0,0,0,0,0,0,0,0,1.03_Accelerator Systems (AS),1.03.04_AS Cryogenic Distribution System (CDS),1.03.04.20_AS Cryogenic Distribution System Installation,1.03.04.20.42_Tee - Installation Support,AS_CDS_TE_9020_Site Acceptance Test Upon Receipt - Tee Installation,Support System,,SLAC,Labor
94307,1.03,1.03.04,1.03.04.20,1.03.04.20.42,1.03.04.20.42,Tee - Installation Support,AS_CDS_TE_9020,Site Acceptance Test Upon Receipt - Tee Installation,20.0,16.0,16.0,16.0,10-17-24,11-13-24,AS_CDS_TE_9010: FS,AS_CDS_TE_9030: FS,SLAC,0%,52148.52148_FAC Engineering & Construction,52148_FAC Engineering & Construction,Labor,0.0d,20.0,20.0,At Completion Units,7/11/2024,8/7/2024,0,0,0,0,0,0,0,0,0,0,1.03_Accelerator Systems (AS),1.03.04_AS Cryogenic Distribution System (CDS),1.03.04.20_AS Cryogenic Distribution System Installation,1.03.04.20.42_Tee - Installation Support,AS_CDS_TE_9020_Site Acceptance Test Upon Receipt - Tee Installation,FAC,,SLAC,Labor
94308,1.03,1.03.04,1.03.04.20,1.03.04.20.42,1.03.04.20.42,Tee - Installation Support,AS_CDS_TE_9020,Site Acceptance Test Upon Receipt - Tee Installation,20.0,24.0,24.0,24.0,10-17-24,11-13-24,AS_CDS_TE_9010: FS,AS_CDS_TE_9030: FS,SLAC,0%,52149.52149_Field Construction Manager (FCM),52149_Field Construction Manager (FCM),Labor,0.0d,20.0,20.0,At Completion Units,7/11/2024,8/7/2024,0,0,0,0,0,0,0,0,0,0,1.03_Accelerator Systems (AS),1.03.04_AS Cryogenic Distribution System (CDS),1.03.04.20_AS Cryogenic Distribution System Installation,1.03.04.20.42_Tee - Installation Support,AS_CDS_TE_9020_Site Acceptance Test Upon Receipt - Tee Installation,FAC,Engineer,SLAC,Labor
94309,1.03,1.03.04,1.03.04.20,1.03.04.20.42,1.03.04.20.42,Tee - Installation Support,AS_CDS_TE_9010,Transport Support - Tee Installation,10.0,12.0,12.0,12.0,10-03-24,10-16-24,AS_CDS_VL_6240: FS,AS_CDS_TE_9020: FS,SLAC,0%,52149.52149_Field Construction Manager (FCM),52149_Field Construction Manager (FCM),Labor,0.0d,10.0,10.0,At Completion Units,6/26/2024,7/10/2024,0,0,0,0,0,0,0,0,0,0,1.03_Accelerator Systems (AS),1.03.04_AS Cryogenic Distribution System (CDS),1.03.04.20_AS Cryogenic Distribution System Installation,1.03.04.20.42_Tee - Installation Support,AS_CDS_TE_9010_Transport Support - Tee Installation,FAC,Engineer,SLAC,Labor
94310,1.03,1.03.04,1.03.04.20,1.03.04.20.42,1.03.04.20.42,Tee - Installation Support,AS_CDS_TE_9010,Transport Support - Tee Installation,10.0,32.0,32.0,32.0,10-03-24,10-16-24,AS_CDS_VL_6240: FS,AS_CDS_TE_9020: FS,SLAC,0%,0140_E3.0140_Engineer-Electrical_E3,0140_Engineer-Electrical_E3,Labor,0.0d,10.0,10.0,At Completion Units,6/26/2024,7/10/2024,0,0,0,0,0,0,0,0,0,0,1.03_Accelerator Systems (AS),1.03.04_AS Cryogenic Distribution System (CDS),1.03.04.20_AS Cryogenic Distribution System Installation,1.03.04.20.42_Tee - Installation Support,AS_CDS_TE_9010_Transport Support - Tee Installation,Electrical,,SLAC,Labor
94311,1.03,1.03.04,1.03.04.20,1.03.04.20.42,1.03.04.20.42,Tee - Installation Support,AS_CDS_TE_9010,Transport Support - Tee Installation,10.0,10.0,10.0,10.0,10-03-24,10-16-24,AS_CDS_VL_6240: FS,AS_CDS_TE_9020: FS,SLAC,0%,52169.52169_METS Mechanical Engineer,52169_METS Mechanical Engineer,Labor,0.0d,10.0,10.0,At Completion Units,6/26/2024,7/10/2024,0,0,0,0,0,0,0,0,0,0,1.03_Accelerator Systems (AS),1.03.04_AS Cryogenic Distribution System (CDS),1.03.04.20_AS Cryogenic Distribution System Installation,1.03.04.20.42_Tee - Installation Support,AS_CDS_TE_9010_Transport Support - Tee Installation,Mechanical,,SLAC,Labor
94312,1.03,1.03.04,1.03.04.20,1.03.04.20.42,1.03.04.20.42,Tee - Installation Support,AS_CDS_TE_9070,Verification and Test - Tee Installation,10.0,40.0,40.0,40.0,04-24-26,05-07-26,AS_CDS_TE_9050: FS,AS_CDS_TE_9210: FS,SLAC,0%,52198.52198_METSMANF (METSD Manufacturing),52198_METSMANF (METSD Manufacturing),Labor,0.0d,10.0,10.0,At Completion Units,10/3/2025,10/16/2025,0,0,0,0,0,0,0,0,0,0,1.03_Accelerator Systems (AS),1.03.04_AS Cryogenic Distribution System (CDS),1.03.04.20_AS Cryogenic Distribution System Installation,1.03.04.20.42_Tee - Installation Support,AS_CDS_TE_9070_Verification and Test - Tee Installation,Manufacturing,,SLAC,Labor
94313,1.03,1.03.04,1.03.04.20,1.03.04.20.42,1.03.04.20.42,Tee - Installation Support,AS_CDS_TE_9070,Verification and Test - Tee Installation,10.0,40.0,40.0,40.0,04-24-26,05-07-26,AS_CDS_TE_9050: FS,AS_CDS_TE_9210: FS,SLAC,0%,52169.52169_METS Mechanical Engineer,52169_METS Mechanical Engineer,Labor,0.0d,10.0,10.0,At Completion Units,10/3/2025,10/16/2025,0,0,0,0,0,0,0,0,0,0,1.03_Accelerator Systems (AS),1.03.04_AS Cryogenic Distribution System (CDS),1.03.04.20_AS Cryogenic Distribution System Installation,1.03.04.20.42_Tee - Installation Support,AS_CDS_TE_9070_Verification and Test - Tee Installation,Mechanical,,SLAC,Labor
94314,1.03,1.03.04,1.03.04.20,1.03.04.20.42,1.03.04.20.42,Tee - Installation Support,AS_CDS_TE_9050,Mechanical Installation - Tee Installation,40.0,80.0,80.0,80.0,02-27-26,04-23-26,AS_CDS_TE_9040: FS,AS_CDS_TE_9070: FS,SLAC,0%,52198.52198_METSMANF (METSD Manufacturing),52198_METSMANF (METSD Manufacturing),Labor,0.0d,40.0,40.0,At Completion Units,8/7/2025,10/2/2025,0,0,0,0,0,0,0,0,0,0,1.03_Accelerator Systems (AS),1.03.04_AS Cryogenic Distribution System (CDS),1.03.04.20_AS Cryogenic Distribution System Installation,1.03.04.20.42_Tee - Installation Support,AS_CDS_TE_9050_Mechanical Installation - Tee Installation,Manufacturing,,SLAC,Labor
94315,1.03,1.03.04,1.03.04.20,1.03.04.20.42,1.03.04.20.42,Tee - Installation Support,AS_CDS_TE_9040,Setting - Tee Installation,10.0,40.0,40.0,40.0,02-12-26,02-26-26,"AS_CDS_TE_9030: FS, AS_ScL_CM37_9010: FS","AS_CDS_TE_9050: FS, AS_ScL_CM38_9010: FS, AS_CDS_VL_9040: FS",SLAC,0%,52198.52198_METSMANF (METSD Manufacturing),52198_METSMANF (METSD Manufacturing),Labor,0.0d,10.0,10.0,At Completion Units,7/24/2025,8/6/2025,0,0,0,0,0,0,0,0,0,0,1.03_Accelerator Systems (AS),1.03.04_AS Cryogenic Distribution System (CDS),1.03.04.20_AS Cryogenic Distribution System Installation,1.03.04.20.42_Tee - Installation Support,AS_CDS_TE_9040_Setting - Tee Installation,Manufacturing,,SLAC,Labor
94316,1.03,1.03.04,1.03.04.20,1.03.04.20.42,1.03.04.20.42,Tee - Installation Support,AS_CDS_TE_9040,Setting - Tee Installation,10.0,80.0,80.0,80.0,02-12-26,02-26-26,"AS_CDS_TE_9030: FS, AS_ScL_CM37_9010: FS","AS_CDS_TE_9050: FS, AS_ScL_CM38_9010: FS, AS_CDS_VL_9040: FS",SLAC,0%,52169.52169_METS Mechanical Engineer,52169_METS Mechanical Engineer,Labor,0.0d,10.0,10.0,At Completion Units,7/24/2025,8/6/2025,0,0,0,0,0,0,0,0,0,0,1.03_Accelerator Systems (AS),1.03.04_AS Cryogenic Distribution System (CDS),1.03.04.20_AS Cryogenic Distribution System Installation,1.03.04.20.42_Tee - Installation Support,AS_CDS_TE_9040_Setting - Tee Installation,Mechanical,,SLAC,Labor
94317,1.03,1.03.04,1.03.04.20,1.03.04.20.42,1.03.04.20.42,Tee - Installation Support,AS_CDS_TE_9030,Transport to Final Position - Tee Installation,5.0,24.0,24.0,24.0,11-14-24,11-20-24,AS_CDS_TE_9020: FS,AS_CDS_TE_9040: FS,SLAC,0%,52198.52198_METSMANF (METSD Manufacturing),52198_METSMANF (METSD Manufacturing),Labor,0.0d,5.0,5.0,At Completion Units,8/8/2024,8/14/2024,0,0,0,0,0,0,0,0,0,0,1.03_Accelerator Systems (AS),1.03.04_AS Cryogenic Distribution System (CDS),1.03.04.20_AS Cryogenic Distribution System Installation,1.03.04.20.42_Tee - Installation Support,AS_CDS_TE_9030_Transport to Final Position - Tee Installation,Manufacturing,,SLAC,Labor
94318,1.03,1.03.04,1.03.04.20,1.03.04.20.42,1.03.04.20.42,Tee - Installation Support,AS_CDS_TE_9030,Transport to Final Position - Tee Installation,5.0,32.0,32.0,32.0,11-14-24,11-20-24,AS_CDS_TE_9020: FS,AS_CDS_TE_9040: FS,SLAC,0%,52169.52169_METS Mechanical Engineer,52169_METS Mechanical Engineer,Labor,0.0d,5.0,5.0,At Completion Units,8/8/2024,8/14/2024,0,0,0,0,0,0,0,0,0,0,1.03_Accelerator Systems (AS),1.03.04_AS Cryogenic Distribution System (CDS),1.03.04.20_AS Cryogenic Distribution System Installation,1.03.04.20.42_Tee - Installation Support,AS_CDS_TE_9030_Transport to Final Position - Tee Installation,Mechanical,,SLAC,Labor
94319,1.03,1.03.04,1.03.04.20,1.03.04.20.42,1.03.04.20.42,Tee - Installation Support,AS_CDS_TE_9020,Site Acceptance Test Upon Receipt - Tee Installation,20.0,48.0,48.0,48.0,10-17-24,11-13-24,AS_CDS_TE_9010: FS,AS_CDS_TE_9030: FS,SLAC,0%,52198.52198_METSMANF (METSD Manufacturing),52198_METSMANF (METSD Manufacturing),Labor,0.0d,20.0,20.0,At Completion Units,7/11/2024,8/7/2024,0,0,0,0,0,0,0,0,0,0,1.03_Accelerator Systems (AS),1.03.04_AS Cryogenic Distribution System (CDS),1.03.04.20_AS Cryogenic Distribution System Installation,1.03.04.20.42_Tee - Installation Support,AS_CDS_TE_9020_Site Acceptance Test Upon Receipt - Tee Installation,Manufacturing,,SLAC,Labor
94320,1.03,1.03.04,1.03.04.20,1.03.04.20.42,1.03.04.20.42,Tee - Installation Support,AS_CDS_TE_9020,Site Acceptance Test Upon Receipt - Tee Installation,20.0,44.0,44.0,44.0,10-17-24,11-13-24,AS_CDS_TE_9010: FS,AS_CDS_TE_9030: FS,SLAC,0%,52169.52169_METS Mechanical Engineer,52169_METS Mechanical Engineer,Labor,0.0d,20.0,20.0,At Completion Units,7/11/2024,8/7/2024,0,0,0,0,0,0,0,0,0,0,1.03_Accelerator Systems (AS),1.03.04_AS Cryogenic Distribution System (CDS),1.03.04.20_AS Cryogenic Distribution System Installation,1.03.04.20.42_Tee - Installation Support,AS_CDS_TE_9020_Site Acceptance Test Upon Receipt - Tee Installation,Mechanical,,SLAC,Labor
94640,1.03,1.03.04,1.03.04.20,1.03.04.20.50,1.03.04.20.50,Vacuum Box 2 - Installation Support,AS_CDS_VB_9070,Verification and Test - Vacuum Box 2,10.0,80.0,80.0,80.0,08-20-26,09-02-26,AS_CDS_VB_9050: FS,AS_CDS_VB_9210: FS,SLAC,0%,0140_E3.0140_Engineer-Electrical_E3,0140_Engineer-Electrical_E3,Labor,0.0d,10.0,10.0,At Completion Units,2/13/2026,2/27/2026,0,0,0,0,0,0,0,0,0,0,1.03_Accelerator Systems (AS),1.03.04_AS Cryogenic Distribution System (CDS),1.03.04.20_AS Cryogenic Distribution System Installation,1.03.04.20.50_Vacuum Box 2 - Installation Support,AS_CDS_VB_9070_Verification and Test - Vacuum Box 2,Electrical,,SLAC,Labor
94641,1.03,1.03.04,1.03.04.20,1.03.04.20.50,1.03.04.20.50,Vacuum Box 2 - Installation Support,AS_CDS_VB_9180,AWARD: Procurement - Installation Support - Vacuum Box 2,1.0,90000.0,90000.0,90000.0,02-24-25,02-24-25,AS_CDS_VB_9170: FS,AS_CDS_VB_9190: FS,SLAC,0%,AWARD_USE.AWARD - Use this AWARD,AWARD - Use this AWARD,Nonlabor,0.0d,1.0,1.0,At Completion Units,5/20/2024,5/20/2024,AWARD < $500K,0,0,0,0,0,0,0,0,0,1.03_Accelerator Systems (AS),1.03.04_AS Cryogenic Distribution System (CDS),1.03.04.20_AS Cryogenic Distribution System Installation,1.03.04.20.50_Vacuum Box 2 - Installation Support,AS_CDS_VB_9180_AWARD: Procurement - Installation Support - Vacuum Box 2,Material,,SLAC,M&S
94642,1.03,1.03.04,1.03.04.20,1.03.04.20.50,1.03.04.20.50,Vacuum Box 2 - Installation Support,AS_CDS_VB_9110,RQN: Approval of Requisition - Installation Support - Vacuum Box 2,1.0,90000.0,90000.0,90000.0,12-02-24,12-02-24,AS_CDS_VB_9100: FS,AS_CDS_VB_9120: FS,SLAC,0%,REQ.Requisition,Requisition,Nonlabor,0.0d,1.0,1.0,At Completion Units,3/13/2024,3/13/2024,RQN,0,0,0,0,0,0,0,0,0,1.03_Accelerator Systems (AS),1.03.04_AS Cryogenic Distribution System (CDS),1.03.04.20_AS Cryogenic Distribution System Installation,1.03.04.20.50_Vacuum Box 2 - Installation Support,AS_CDS_VB_9110_RQN: Approval of Requisition - Installation Support - Vacuum Box 2,Material,,SLAC,M&S
94643,1.03,1.03.04,1.03.04.20,1.03.04.20.50,1.03.04.20.50,Vacuum Box 2 - Installation Support,AS_CDS_VB_9200,RCV: Installation Support - Vacuum Box 2,1.0,90000.0,90000.0,90000.0,08-06-26,08-06-26,AS_CDS_VB_9190: FS,AS_CDS_VB_9210: FS,SLAC,0%,SL_MSSC.SLAC M&S (<$500K) (gets G&A) (gets ESC),SLAC M&S (<$500K) (gets G&A) (gets ESC),Nonlabor,0.0d,1.0,1.0,At Completion Units,1/30/2026,1/30/2026,0,0,0,0,0,0,0,0,0,0,1.03_Accelerator Systems (AS),1.03.04_AS Cryogenic Distribution System (CDS),1.03.04.20_AS Cryogenic Distribution System Installation,1.03.04.20.50_Vacuum Box 2 - Installation Support,AS_CDS_VB_9200_RCV: Installation Support - Vacuum Box 2,Material,,SLAC,M&S
94644,1.03,1.03.04,1.03.04.20,1.03.04.20.50,1.03.04.20.50,Vacuum Box 2 - Installation Support,AS_CDS_VB_9020,Site Acceptance Test Upon Receipt - Vacuum Box 2,20.0,8.0,8.0,8.0,11-21-24,12-20-24,AS_CDS_VB_9010: FS,AS_CDS_VB_9030: FS,SLAC,0%,52190.52190_METSTP Tech Planning - Reinstated FY16,52190_METSTP Tech Planning - Reinstated FY16,Labor,0.0d,20.0,20.0,At Completion Units,3/6/2024,4/2/2024,0,0,0,0,0,0,0,0,0,0,1.03_Accelerator Systems (AS),1.03.04_AS Cryogenic Distribution System (CDS),1.03.04.20_AS Cryogenic Distribution System Installation,1.03.04.20.50_Vacuum Box 2 - Installation Support,AS_CDS_VB_9020_Site Acceptance Test Upon Receipt - Vacuum Box 2,METSTPT Tech Planning,Tech,SLAC,Labor
94645,1.03,1.03.04,1.03.04.20,1.03.04.20.50,1.03.04.20.50,Vacuum Box 2 - Installation Support,AS_CDS_VB_9020,Site Acceptance Test Upon Receipt - Vacuum Box 2,20.0,64.0,64.0,64.0,11-21-24,12-20-24,AS_CDS_VB_9010: FS,AS_CDS_VB_9030: FS,SLAC,0%,52191.52191_METSMET Metrology,52191_METSMET Metrology,Labor,0.0d,20.0,20.0,At Completion Units,3/6/2024,4/2/2024,0,0,0,0,0,0,0,0,0,0,1.03_Accelerator Systems (AS),1.03.04_AS Cryogenic Distribution System (CDS),1.03.04.20_AS Cryogenic Distribution System Installation,1.03.04.20.50_Vacuum Box 2 - Installation Support,AS_CDS_VB_9020_Site Acceptance Test Upon Receipt - Vacuum Box 2,Metrology,,SLAC,Labor
94646,1.03,1.03.04,1.03.04.20,1.03.04.20.50,1.03.04.20.50,Vacuum Box 2 - Installation Support,AS_CDS_VB_9020,Site Acceptance Test Upon Receipt - Vacuum Box 2,20.0,64.0,64.0,64.0,11-21-24,12-20-24,AS_CDS_VB_9010: FS,AS_CDS_VB_9030: FS,SLAC,0%,52152.52152_FAC Fleet,52152_FAC Fleet,Labor,0.0d,20.0,20.0,At Completion Units,3/6/2024,4/2/2024,0,0,0,0,0,0,0,0,0,0,1.03_Accelerator Systems (AS),1.03.04_AS Cryogenic Distribution System (CDS),1.03.04.20_AS Cryogenic Distribution System Installation,1.03.04.20.50_Vacuum Box 2 - Installation Support,AS_CDS_VB_9020_Site Acceptance Test Upon Receipt - Vacuum Box 2,Support System,,SLAC,Labor
94647,1.03,1.03.04,1.03.04.20,1.03.04.20.50,1.03.04.20.50,Vacuum Box 2 - Installation Support,AS_CDS_VB_9020,Site Acceptance Test Upon Receipt - Vacuum Box 2,20.0,16.0,16.0,16.0,11-21-24,12-20-24,AS_CDS_VB_9010: FS,AS_CDS_VB_9030: FS,SLAC,0%,52148.52148_FAC Engineering & Construction,52148_FAC Engineering & Construction,Labor,0.0d,20.0,20.0,At Completion Units,3/6/2024,4/2/2024,0,0,0,0,0,0,0,0,0,0,1.03_Accelerator Systems (AS),1.03.04_AS Cryogenic Distribution System (CDS),1.03.04.20_AS Cryogenic Distribution System Installation,1.03.04.20.50_Vacuum Box 2 - Installation Support,AS_CDS_VB_9020_Site Acceptance Test Upon Receipt - Vacuum Box 2,FAC,,SLAC,Labor
94648,1.03,1.03.04,1.03.04.20,1.03.04.20.50,1.03.04.20.50,Vacuum Box 2 - Installation Support,AS_CDS_VB_9070,Verification and Test - Vacuum Box 2,10.0,36.0,36.0,36.0,08-20-26,09-02-26,AS_CDS_VB_9050: FS,AS_CDS_VB_9210: FS,SLAC,0%,52149.52149_Field Construction Manager (FCM),52149_Field Construction Manager (FCM),Labor,0.0d,10.0,10.0,At Completion Units,2/13/2026,2/27/2026,0,0,0,0,0,0,0,0,0,0,1.03_Accelerator Systems (AS),1.03.04_AS Cryogenic Distribution System (CDS),1.03.04.20_AS Cryogenic Distribution System Installation,1.03.04.20.50_Vacuum Box 2 - Installation Support,AS_CDS_VB_9070_Verification and Test - Vacuum Box 2,FAC,Engineer,SLAC,Labor
94649,1.03,1.03.04,1.03.04.20,1.03.04.20.50,1.03.04.20.50,Vacuum Box 2 - Installation Support,AS_CDS_VB_9050,Mechanical Installation - Vacuum Box 2,40.0,48.0,48.0,48.0,06-24-26,08-19-26,AS_CDS_VB_9040: FS,AS_CDS_VB_9070: FS,SLAC,0%,52149.52149_Field Construction Manager (FCM),52149_Field Construction Manager (FCM),Labor,0.0d,40.0,40.0,At Completion Units,12/4/2025,2/12/2026,0,0,0,0,0,0,0,0,0,0,1.03_Accelerator Systems (AS),1.03.04_AS Cryogenic Distribution System (CDS),1.03.04.20_AS Cryogenic Distribution System Installation,1.03.04.20.50_Vacuum Box 2 - Installation Support,AS_CDS_VB_9050_Mechanical Installation - Vacuum Box 2,FAC,Engineer,SLAC,Labor
94650,1.03,1.03.04,1.03.04.20,1.03.04.20.50,1.03.04.20.50,Vacuum Box 2 - Installation Support,AS_CDS_VB_9040,Setting - Vacuum Box 2,10.0,24.0,24.0,24.0,06-10-26,06-23-26,"AS_CDS_VB_9030: FS, AS_ScL_CM48_9010: FS","AS_CDS_VB_9050: FS, AS_ScL_CM49_9010: FS",SLAC,0%,52149.52149_Field Construction Manager (FCM),52149_Field Construction Manager (FCM),Labor,0.0d,10.0,10.0,At Completion Units,11/18/2025,12/3/2025,0,0,0,0,0,0,0,0,0,0,1.03_Accelerator Systems (AS),1.03.04_AS Cryogenic Distribution System (CDS),1.03.04.20_AS Cryogenic Distribution System Installation,1.03.04.20.50_Vacuum Box 2 - Installation Support,AS_CDS_VB_9040_Setting - Vacuum Box 2,FAC,Engineer,SLAC,Labor
94651,1.03,1.03.04,1.03.04.20,1.03.04.20.50,1.03.04.20.50,Vacuum Box 2 - Installation Support,AS_CDS_VB_9030,Transport to Final Position - Vacuum Box 2,5.0,24.0,24.0,24.0,01-06-25,01-10-25,AS_CDS_VB_9020: FS,AS_CDS_VB_9040: FS,SLAC,0%,52149.52149_Field Construction Manager (FCM),52149_Field Construction Manager (FCM),Labor,0.0d,5.0,5.0,At Completion Units,4/3/2024,4/9/2024,0,0,0,0,0,0,0,0,0,0,1.03_Accelerator Systems (AS),1.03.04_AS Cryogenic Distribution System (CDS),1.03.04.20_AS Cryogenic Distribution System Installation,1.03.04.20.50_Vacuum Box 2 - Installation Support,AS_CDS_VB_9030_Transport to Final Position - Vacuum Box 2,FAC,Engineer,SLAC,Labor
94652,1.03,1.03.04,1.03.04.20,1.03.04.20.50,1.03.04.20.50,Vacuum Box 2 - Installation Support,AS_CDS_VB_9020,Site Acceptance Test Upon Receipt - Vacuum Box 2,20.0,24.0,24.0,24.0,11-21-24,12-20-24,AS_CDS_VB_9010: FS,AS_CDS_VB_9030: FS,SLAC,0%,52149.52149_Field Construction Manager (FCM),52149_Field Construction Manager (FCM),Labor,0.0d,20.0,20.0,At Completion Units,3/6/2024,4/2/2024,0,0,0,0,0,0,0,0,0,0,1.03_Accelerator Systems (AS),1.03.04_AS Cryogenic Distribution System (CDS),1.03.04.20_AS Cryogenic Distribution System Installation,1.03.04.20.50_Vacuum Box 2 - Installation Support,AS_CDS_VB_9020_Site Acceptance Test Upon Receipt - Vacuum Box 2,FAC,Engineer,SLAC,Labor
94653,1.03,1.03.04,1.03.04.20,1.03.04.20.50,1.03.04.20.50,Vacuum Box 2 - Installation Support,AS_CDS_VB_9010,Transport Support - Vacuum Box 2,10.0,12.0,12.0,12.0,11-07-24,11-20-24,AS_CDS_VB_6210: FS,AS_CDS_VB_9020: FS,SLAC,0%,52149.52149_Field Construction Manager (FCM),52149_Field Construction Manager (FCM),Labor,0.0d,10.0,10.0,At Completion Units,2/21/2024,3/5/2024,0,0,0,0,0,0,0,0,0,0,1.03_Accelerator Systems (AS),1.03.04_AS Cryogenic Distribution System (CDS),1.03.04.20_AS Cryogenic Distribution System Installation,1.03.04.20.50_Vacuum Box 2 - Installation Support,AS_CDS_VB_9010_Transport Support - Vacuum Box 2,FAC,Engineer,SLAC,Labor
94654,1.03,1.03.04,1.03.04.20,1.03.04.20.50,1.03.04.20.50,Vacuum Box 2 - Installation Support,AS_CDS_VB_9010,Transport Support - Vacuum Box 2,10.0,32.0,32.0,32.0,11-07-24,11-20-24,AS_CDS_VB_6210: FS,AS_CDS_VB_9020: FS,SLAC,0%,0140_E3.0140_Engineer-Electrical_E3,0140_Engineer-Electrical_E3,Labor,0.0d,10.0,10.0,At Completion Units,2/21/2024,3/5/2024,0,0,0,0,0,0,0,0,0,0,1.03_Accelerator Systems (AS),1.03.04_AS Cryogenic Distribution System (CDS),1.03.04.20_AS Cryogenic Distribution System Installation,1.03.04.20.50_Vacuum Box 2 - Installation Support,AS_CDS_VB_9010_Transport Support - Vacuum Box 2,Electrical,,SLAC,Labor
94655,1.03,1.03.04,1.03.04.20,1.03.04.20.50,1.03.04.20.50,Vacuum Box 2 - Installation Support,AS_CDS_VB_9010,Transport Support - Vacuum Box 2,10.0,10.0,10.0,10.0,11-07-24,11-20-24,AS_CDS_VB_6210: FS,AS_CDS_VB_9020: FS,SLAC,0%,52169.52169_METS Mechanical Engineer,52169_METS Mechanical Engineer,Labor,0.0d,10.0,10.0,At Completion Units,2/21/2024,3/5/2024,0,0,0,0,0,0,0,0,0,0,1.03_Accelerator Systems (AS),1.03.04_AS Cryogenic Distribution System (CDS),1.03.04.20_AS Cryogenic Distribution System Installation,1.03.04.20.50_Vacuum Box 2 - Installation Support,AS_CDS_VB_9010_Transport Support - Vacuum Box 2,Mechanical,,SLAC,Labor
94656,1.03,1.03.04,1.03.04.20,1.03.04.20.50,1.03.04.20.50,Vacuum Box 2 - Installation Support,AS_CDS_VB_9070,Verification and Test - Vacuum Box 2,10.0,40.0,40.0,40.0,08-20-26,09-02-26,AS_CDS_VB_9050: FS,AS_CDS_VB_9210: FS,SLAC,0%,52198.52198_METSMANF (METSD Manufacturing),52198_METSMANF (METSD Manufacturing),Labor,0.0d,10.0,10.0,At Completion Units,2/13/2026,2/27/2026,0,0,0,0,0,0,0,0,0,0,1.03_Accelerator Systems (AS),1.03.04_AS Cryogenic Distribution System (CDS),1.03.04.20_AS Cryogenic Distribution System Installation,1.03.04.20.50_Vacuum Box 2 - Installation Support,AS_CDS_VB_9070_Verification and Test - Vacuum Box 2,Manufacturing,,SLAC,Labor
94657,1.03,1.03.04,1.03.04.20,1.03.04.20.50,1.03.04.20.50,Vacuum Box 2 - Installation Support,AS_CDS_VB_9070,Verification and Test - Vacuum Box 2,10.0,40.0,40.0,40.0,08-20-26,09-02-26,AS_CDS_VB_9050: FS,AS_CDS_VB_9210: FS,SLAC,0%,52169.52169_METS Mechanical Engineer,52169_METS Mechanical Engineer,Labor,0.0d,10.0,10.0,At Completion Units,2/13/2026,2/27/2026,0,0,0,0,0,0,0,0,0,0,1.03_Accelerator Systems (AS),1.03.04_AS Cryogenic Distribution System (CDS),1.03.04.20_AS Cryogenic Distribution System Installation,1.03.04.20.50_Vacuum Box 2 - Installation Support,AS_CDS_VB_9070_Verification and Test - Vacuum Box 2,Mechanical,,SLAC,Labor
94658,1.03,1.03.04,1.03.04.20,1.03.04.20.50,1.03.04.20.50,Vacuum Box 2 - Installation Support,AS_CDS_VB_9050,Mechanical Installation - Vacuum Box 2,40.0,160.0,160.0,160.0,06-24-26,08-19-26,AS_CDS_VB_9040: FS,AS_CDS_VB_9070: FS,SLAC,0%,52198.52198_METSMANF (METSD Manufacturing),52198_METSMANF (METSD Manufacturing),Labor,0.0d,40.0,40.0,At Completion Units,12/4/2025,2/12/2026,0,0,0,0,0,0,0,0,0,0,1.03_Accelerator Systems (AS),1.03.04_AS Cryogenic Distribution System (CDS),1.03.04.20_AS Cryogenic Distribution System Installation,1.03.04.20.50_Vacuum Box 2 - Installation Support,AS_CDS_VB_9050_Mechanical Installation - Vacuum Box 2,Manufacturing,,SLAC,Labor
94659,1.03,1.03.04,1.03.04.20,1.03.04.20.50,1.03.04.20.50,Vacuum Box 2 - Installation Support,AS_CDS_VB_9040,Setting - Vacuum Box 2,10.0,80.0,80.0,80.0,06-10-26,06-23-26,"AS_CDS_VB_9030: FS, AS_ScL_CM48_9010: FS","AS_CDS_VB_9050: FS, AS_ScL_CM49_9010: FS",SLAC,0%,52198.52198_METSMANF (METSD Manufacturing),52198_METSMANF (METSD Manufacturing),Labor,0.0d,10.0,10.0,At Completion Units,11/18/2025,12/3/2025,0,0,0,0,0,0,0,0,0,0,1.03_Accelerator Systems (AS),1.03.04_AS Cryogenic Distribution System (CDS),1.03.04.20_AS Cryogenic Distribution System Installation,1.03.04.20.50_Vacuum Box 2 - Installation Support,AS_CDS_VB_9040_Setting - Vacuum Box 2,Manufacturing,,SLAC,Labor
94660,1.03,1.03.04,1.03.04.20,1.03.04.20.50,1.03.04.20.50,Vacuum Box 2 - Installation Support,AS_CDS_VB_9040,Setting - Vacuum Box 2,10.0,80.0,80.0,80.0,06-10-26,06-23-26,"AS_CDS_VB_9030: FS, AS_ScL_CM48_9010: FS","AS_CDS_VB_9050: FS, AS_ScL_CM49_9010: FS",SLAC,0%,52169.52169_METS Mechanical Engineer,52169_METS Mechanical Engineer,Labor,0.0d,10.0,10.0,At Completion Units,11/18/2025,12/3/2025,0,0,0,0,0,0,0,0,0,0,1.03_Accelerator Systems (AS),1.03.04_AS Cryogenic Distribution System (CDS),1.03.04.20_AS Cryogenic Distribution System Installation,1.03.04.20.50_Vacuum Box 2 - Installation Support,AS_CDS_VB_9040_Setting - Vacuum Box 2,Mechanical,,SLAC,Labor
94661,1.03,1.03.04,1.03.04.20,1.03.04.20.50,1.03.04.20.50,Vacuum Box 2 - Installation Support,AS_CDS_VB_9030,Transport to Final Position - Vacuum Box 2,5.0,40.0,40.0,40.0,01-06-25,01-10-25,AS_CDS_VB_9020: FS,AS_CDS_VB_9040: FS,SLAC,0%,52198.52198_METSMANF (METSD Manufacturing),52198_METSMANF (METSD Manufacturing),Labor,0.0d,5.0,5.0,At Completion Units,4/3/2024,4/9/2024,0,0,0,0,0,0,0,0,0,0,1.03_Accelerator Systems (AS),1.03.04_AS Cryogenic Distribution System (CDS),1.03.04.20_AS Cryogenic Distribution System Installation,1.03.04.20.50_Vacuum Box 2 - Installation Support,AS_CDS_VB_9030_Transport to Final Position - Vacuum Box 2,Manufacturing,,SLAC,Labor
94662,1.03,1.03.04,1.03.04.20,1.03.04.20.50,1.03.04.20.50,Vacuum Box 2 - Installation Support,AS_CDS_VB_9030,Transport to Final Position - Vacuum Box 2,5.0,32.0,32.0,32.0,01-06-25,01-10-25,AS_CDS_VB_9020: FS,AS_CDS_VB_9040: FS,SLAC,0%,52169.52169_METS Mechanical Engineer,52169_METS Mechanical Engineer,Labor,0.0d,5.0,5.0,At Completion Units,4/3/2024,4/9/2024,0,0,0,0,0,0,0,0,0,0,1.03_Accelerator Systems (AS),1.03.04_AS Cryogenic Distribution System (CDS),1.03.04.20_AS Cryogenic Distribution System Installation,1.03.04.20.50_Vacuum Box 2 - Installation Support,AS_CDS_VB_9030_Transport to Final Position - Vacuum Box 2,Mechanical,,SLAC,Labor
94663,1.03,1.03.04,1.03.04.20,1.03.04.20.50,1.03.04.20.50,Vacuum Box 2 - Installation Support,AS_CDS_VB_9020,Site Acceptance Test Upon Receipt - Vacuum Box 2,20.0,40.0,40.0,40.0,11-21-24,12-20-24,AS_CDS_VB_9010: FS,AS_CDS_VB_9030: FS,SLAC,0%,0140_E3.0140_Engineer-Electrical_E3,0140_Engineer-Electrical_E3,Labor,0.0d,20.0,20.0,At Completion Units,3/6/2024,4/2/2024,0,0,0,0,0,0,0,0,0,0,1.03_Accelerator Systems (AS),1.03.04_AS Cryogenic Distribution System (CDS),1.03.04.20_AS Cryogenic Distribution System Installation,1.03.04.20.50_Vacuum Box 2 - Installation Support,AS_CDS_VB_9020_Site Acceptance Test Upon Receipt - Vacuum Box 2,Electrical,,SLAC,Labor
94664,1.03,1.03.04,1.03.04.20,1.03.04.20.50,1.03.04.20.50,Vacuum Box 2 - Installation Support,AS_CDS_VB_9020,Site Acceptance Test Upon Receipt - Vacuum Box 2,20.0,400.0,400.0,400.0,11-21-24,12-20-24,AS_CDS_VB_9010: FS,AS_CDS_VB_9030: FS,SLAC,0%,52198.52198_METSMANF (METSD Manufacturing),52198_METSMANF (METSD Manufacturing),Labor,0.0d,20.0,20.0,At Completion Units,3/6/2024,4/2/2024,0,0,0,0,0,0,0,0,0,0,1.03_Accelerator Systems (AS),1.03.04_AS Cryogenic Distribution System (CDS),1.03.04.20_AS Cryogenic Distribution System Installation,1.03.04.20.50_Vacuum Box 2 - Installation Support,AS_CDS_VB_9020_Site Acceptance Test Upon Receipt - Vacuum Box 2,Manufacturing,,SLAC,Labor
94665,1.03,1.03.04,1.03.04.20,1.03.04.20.50,1.03.04.20.50,Vacuum Box 2 - Installation Support,AS_CDS_VB_9020,Site Acceptance Test Upon Receipt - Vacuum Box 2,20.0,80.0,80.0,80.0,11-21-24,12-20-24,AS_CDS_VB_9010: FS,AS_CDS_VB_9030: FS,SLAC,0%,52169.52169_METS Mechanical Engineer,52169_METS Mechanical Engineer,Labor,0.0d,20.0,20.0,At Completion Units,3/6/2024,4/2/2024,0,0,0,0,0,0,0,0,0,0,1.03_Accelerator Systems (AS),1.03.04_AS Cryogenic Distribution System (CDS),1.03.04.20_AS Cryogenic Distribution System Installation,1.03.04.20.50_Vacuum Box 2 - Installation Support,AS_CDS_VB_9020_Site Acceptance Test Upon Receipt - Vacuum Box 2,Mechanical,,SLAC,Labor
94985,1.03,1.03.04,1.03.04.20,1.03.04.20.60,1.03.04.20.60,End Cap 3 Upstream - Installation Support,AS_CDS_EC3_9070,Verification and Test - End Cap 3 Upstream,10.0,64.0,64.0,64.0,07-24-25,08-06-25,AS_CDS_EC3_9050: FS,AS_CDS_EC3_9210: FS,SLAC,0%,0140_E3.0140_Engineer-Electrical_E3,0140_Engineer-Electrical_E3,Labor,0.0d,10.0,10.0,At Completion Units,7/24/2025,8/6/2025,0,0,0,0,0,0,0,0,0,0,1.03_Accelerator Systems (AS),1.03.04_AS Cryogenic Distribution System (CDS),1.03.04.20_AS Cryogenic Distribution System Installation,1.03.04.20.60_End Cap 3 Upstream - Installation Support,AS_CDS_EC3_9070_Verification and Test - End Cap 3 Upstream,Electrical,,SLAC,Labor
94986,1.03,1.03.04,1.03.04.20,1.03.04.20.60,1.03.04.20.60,End Cap 3 Upstream - Installation Support,AS_CDS_EC3_9180,AWARD: Procurement - Installation Support - End Cap 3 Upstream,1.0,90000.0,90000.0,90000.0,01-22-25,01-22-25,AS_CDS_EC3_9170: FS,AS_CDS_EC3_9190: FS,SLAC,0%,AWARD_USE.AWARD - Use this AWARD,AWARD - Use this AWARD,Nonlabor,0.0d,1.0,1.0,At Completion Units,9/23/2024,9/23/2024,AWARD < $500K,0,0,0,0,0,0,0,0,0,1.03_Accelerator Systems (AS),1.03.04_AS Cryogenic Distribution System (CDS),1.03.04.20_AS Cryogenic Distribution System Installation,1.03.04.20.60_End Cap 3 Upstream - Installation Support,AS_CDS_EC3_9180_AWARD: Procurement - Installation Support - End Cap 3 Upstream,Material,,SLAC,M&S
94987,1.03,1.03.04,1.03.04.20,1.03.04.20.60,1.03.04.20.60,End Cap 3 Upstream - Installation Support,AS_CDS_EC3_9110,RQN: Approval of Requisition - Installation Support - End Cap 3 Upstream,1.0,90000.0,90000.0,90000.0,10-24-24,10-24-24,AS_CDS_EC3_9100: FS,AS_CDS_EC3_9120: FS,SLAC,0%,REQ.Requisition,Requisition,Nonlabor,0.0d,1.0,1.0,At Completion Units,7/11/2024,7/11/2024,RQN,0,0,0,0,0,0,0,0,0,1.03_Accelerator Systems (AS),1.03.04_AS Cryogenic Distribution System (CDS),1.03.04.20_AS Cryogenic Distribution System Installation,1.03.04.20.60_End Cap 3 Upstream - Installation Support,AS_CDS_EC3_9110_RQN: Approval of Requisition - Installation Support - End Cap 3 Upstream,Material,,SLAC,M&S
94988,1.03,1.03.04,1.03.04.20,1.03.04.20.60,1.03.04.20.60,End Cap 3 Upstream - Installation Support,AS_CDS_EC3_9200,RCV: Goods/Services/Final Report - Installation Support - End Cap 3 Upstream,1.0,90000.0,90000.0,90000.0,06-25-25,06-25-25,AS_CDS_EC3_9190: FS,AS_CDS_EC3_9210: FS,SLAC,0%,SL_MSSC.SLAC M&S (<$500K) (gets G&A) (gets ESC),SLAC M&S (<$500K) (gets G&A) (gets ESC),Nonlabor,0.0d,1.0,1.0,At Completion Units,6/25/2025,6/25/2025,0,0,0,0,0,0,0,0,0,0,1.03_Accelerator Systems (AS),1.03.04_AS Cryogenic Distribution System (CDS),1.03.04.20_AS Cryogenic Distribution System Installation,1.03.04.20.60_End Cap 3 Upstream - Installation Support,AS_CDS_EC3_9200_RCV: Goods/Services/Final Report - Installation Support - End Cap 3 Upstream,Material,,SLAC,M&S
94989,1.03,1.03.04,1.03.04.20,1.03.04.20.60,1.03.04.20.60,End Cap 3 Upstream - Installation Support,AS_CDS_EC3_9020,Site Acceptance Test Upon Receipt - End Cap 3 Upstream,20.0,16.0,16.0,16.0,10-17-24,11-13-24,AS_CDS_EC3_9010: FS,AS_CDS_EC3_9030: FS,SLAC,0%,52148.52148_FAC Engineering & Construction,52148_FAC Engineering & Construction,Labor,0.0d,20.0,20.0,At Completion Units,7/3/2024,7/31/2024,0,0,0,0,0,0,0,0,0,0,1.03_Accelerator Systems (AS),1.03.04_AS Cryogenic Distribution System (CDS),1.03.04.20_AS Cryogenic Distribution System Installation,1.03.04.20.60_End Cap 3 Upstream - Installation Support,AS_CDS_EC3_9020_Site Acceptance Test Upon Receipt - End Cap 3 Upstream,FAC,,SLAC,Labor
94990,1.03,1.03.04,1.03.04.20,1.03.04.20.60,1.03.04.20.60,End Cap 3 Upstream - Installation Support,AS_CDS_EC3_9020,Site Acceptance Test Upon Receipt - End Cap 3 Upstream,20.0,32.0,32.0,32.0,10-17-24,11-13-24,AS_CDS_EC3_9010: FS,AS_CDS_EC3_9030: FS,SLAC,0%,52191.52191_METSMET Metrology,52191_METSMET Metrology,Labor,0.0d,20.0,20.0,At Completion Units,7/3/2024,7/31/2024,0,0,0,0,0,0,0,0,0,0,1.03_Accelerator Systems (AS),1.03.04_AS Cryogenic Distribution System (CDS),1.03.04.20_AS Cryogenic Distribution System Installation,1.03.04.20.60_End Cap 3 Upstream - Installation Support,AS_CDS_EC3_9020_Site Acceptance Test Upon Receipt - End Cap 3 Upstream,Metrology,,SLAC,Labor
94991,1.03,1.03.04,1.03.04.20,1.03.04.20.60,1.03.04.20.60,End Cap 3 Upstream - Installation Support,AS_CDS_EC3_9020,Site Acceptance Test Upon Receipt - End Cap 3 Upstream,20.0,8.0,8.0,8.0,10-17-24,11-13-24,AS_CDS_EC3_9010: FS,AS_CDS_EC3_9030: FS,SLAC,0%,52190.52190_METSTP Tech Planning - Reinstated FY16,52190_METSTP Tech Planning - Reinstated FY16,Labor,0.0d,20.0,20.0,At Completion Units,7/3/2024,7/31/2024,0,0,0,0,0,0,0,0,0,0,1.03_Accelerator Systems (AS),1.03.04_AS Cryogenic Distribution System (CDS),1.03.04.20_AS Cryogenic Distribution System Installation,1.03.04.20.60_End Cap 3 Upstream - Installation Support,AS_CDS_EC3_9020_Site Acceptance Test Upon Receipt - End Cap 3 Upstream,METSTPT Tech Planning,Tech,SLAC,Labor
94992,1.03,1.03.04,1.03.04.20,1.03.04.20.60,1.03.04.20.60,End Cap 3 Upstream - Installation Support,AS_CDS_EC3_9020,Site Acceptance Test Upon Receipt - End Cap 3 Upstream,20.0,128.0,128.0,128.0,10-17-24,11-13-24,AS_CDS_EC3_9010: FS,AS_CDS_EC3_9030: FS,SLAC,0%,52152.52152_FAC Fleet,52152_FAC Fleet,Labor,0.0d,20.0,20.0,At Completion Units,7/3/2024,7/31/2024,0,0,0,0,0,0,0,0,0,0,1.03_Accelerator Systems (AS),1.03.04_AS Cryogenic Distribution System (CDS),1.03.04.20_AS Cryogenic Distribution System Installation,1.03.04.20.60_End Cap 3 Upstream - Installation Support,AS_CDS_EC3_9020_Site Acceptance Test Upon Receipt - End Cap 3 Upstream,Support System,,SLAC,Labor
94993,1.03,1.03.04,1.03.04.20,1.03.04.20.60,1.03.04.20.60,End Cap 3 Upstream - Installation Support,AS_CDS_EC3_9070,Verification and Test - End Cap 3 Upstream,10.0,36.0,36.0,36.0,07-24-25,08-06-25,AS_CDS_EC3_9050: FS,AS_CDS_EC3_9210: FS,SLAC,0%,52149.52149_Field Construction Manager (FCM),52149_Field Construction Manager (FCM),Labor,0.0d,10.0,10.0,At Completion Units,7/24/2025,8/6/2025,0,0,0,0,0,0,0,0,0,0,1.03_Accelerator Systems (AS),1.03.04_AS Cryogenic Distribution System (CDS),1.03.04.20_AS Cryogenic Distribution System Installation,1.03.04.20.60_End Cap 3 Upstream - Installation Support,AS_CDS_EC3_9070_Verification and Test - End Cap 3 Upstream,FAC,Engineer,SLAC,Labor
94994,1.03,1.03.04,1.03.04.20,1.03.04.20.60,1.03.04.20.60,End Cap 3 Upstream - Installation Support,AS_CDS_EC3_9050,Mechanical Installation - End Cap 3 Upstream,40.0,48.0,48.0,48.0,05-28-25,07-23-25,AS_CDS_EC3_9040: FS,"AS_ScL_EXT_9170: FS, AS_CDS_EC3_9070: FS",SLAC,0%,52149.52149_Field Construction Manager (FCM),52149_Field Construction Manager (FCM),Labor,0.0d,40.0,40.0,At Completion Units,5/28/2025,7/23/2025,0,0,0,0,0,0,0,0,0,0,1.03_Accelerator Systems (AS),1.03.04_AS Cryogenic Distribution System (CDS),1.03.04.20_AS Cryogenic Distribution System Installation,1.03.04.20.60_End Cap 3 Upstream - Installation Support,AS_CDS_EC3_9050_Mechanical Installation - End Cap 3 Upstream,FAC,Engineer,SLAC,Labor
94995,1.03,1.03.04,1.03.04.20,1.03.04.20.60,1.03.04.20.60,End Cap 3 Upstream - Installation Support,AS_CDS_EC3_9040,Setting - End Cap 3 Upstream,20.0,24.0,24.0,24.0,04-29-25,05-27-25,"AS_CDS_EC3_9030: FS, AS_ScL_EXT_9120: FS","AS_CDS_EC3_9050: FS, AS_ScL_CM32_9012: FS",SLAC,0%,52149.52149_Field Construction Manager (FCM),52149_Field Construction Manager (FCM),Labor,0.0d,20.0,20.0,At Completion Units,4/29/2025,5/27/2025,0,0,0,0,0,0,0,0,0,0,1.03_Accelerator Systems (AS),1.03.04_AS Cryogenic Distribution System (CDS),1.03.04.20_AS Cryogenic Distribution System Installation,1.03.04.20.60_End Cap 3 Upstream - Installation Support,AS_CDS_EC3_9040_Setting - End Cap 3 Upstream,FAC,Engineer,SLAC,Labor
94996,1.03,1.03.04,1.03.04.20,1.03.04.20.60,1.03.04.20.60,End Cap 3 Upstream - Installation Support,AS_CDS_EC3_9030,Transport to Final Position - End Cap 3 Upstream,20.0,24.0,24.0,24.0,11-14-24,12-13-24,AS_CDS_EC3_9020: FS,AS_CDS_EC3_9040: FS,SLAC,0%,52149.52149_Field Construction Manager (FCM),52149_Field Construction Manager (FCM),Labor,0.0d,20.0,20.0,At Completion Units,8/1/2024,8/28/2024,0,0,0,0,0,0,0,0,0,0,1.03_Accelerator Systems (AS),1.03.04_AS Cryogenic Distribution System (CDS),1.03.04.20_AS Cryogenic Distribution System Installation,1.03.04.20.60_End Cap 3 Upstream - Installation Support,AS_CDS_EC3_9030_Transport to Final Position - End Cap 3 Upstream,FAC,Engineer,SLAC,Labor
94997,1.03,1.03.04,1.03.04.20,1.03.04.20.60,1.03.04.20.60,End Cap 3 Upstream - Installation Support,AS_CDS_EC3_9020,Site Acceptance Test Upon Receipt - End Cap 3 Upstream,20.0,24.0,24.0,24.0,10-17-24,11-13-24,AS_CDS_EC3_9010: FS,AS_CDS_EC3_9030: FS,SLAC,0%,52149.52149_Field Construction Manager (FCM),52149_Field Construction Manager (FCM),Labor,0.0d,20.0,20.0,At Completion Units,7/3/2024,7/31/2024,0,0,0,0,0,0,0,0,0,0,1.03_Accelerator Systems (AS),1.03.04_AS Cryogenic Distribution System (CDS),1.03.04.20_AS Cryogenic Distribution System Installation,1.03.04.20.60_End Cap 3 Upstream - Installation Support,AS_CDS_EC3_9020_Site Acceptance Test Upon Receipt - End Cap 3 Upstream,FAC,Engineer,SLAC,Labor
94998,1.03,1.03.04,1.03.04.20,1.03.04.20.60,1.03.04.20.60,End Cap 3 Upstream - Installation Support,AS_CDS_EC3_9010,Transport Support - End Cap 3 Upstream,10.0,12.0,12.0,12.0,10-03-24,10-16-24,AS_CDS_EC_6210: FS,AS_CDS_EC3_9020: FS,SLAC,0%,52149.52149_Field Construction Manager (FCM),52149_Field Construction Manager (FCM),Labor,0.0d,10.0,10.0,At Completion Units,6/19/2024,7/2/2024,0,0,0,0,0,0,0,0,0,0,1.03_Accelerator Systems (AS),1.03.04_AS Cryogenic Distribution System (CDS),1.03.04.20_AS Cryogenic Distribution System Installation,1.03.04.20.60_End Cap 3 Upstream - Installation Support,AS_CDS_EC3_9010_Transport Support - End Cap 3 Upstream,FAC,Engineer,SLAC,Labor
94999,1.03,1.03.04,1.03.04.20,1.03.04.20.60,1.03.04.20.60,End Cap 3 Upstream - Installation Support,AS_CDS_EC3_9010,Transport Support - End Cap 3 Upstream,10.0,32.0,32.0,32.0,10-03-24,10-16-24,AS_CDS_EC_6210: FS,AS_CDS_EC3_9020: FS,SLAC,0%,0140_E3.0140_Engineer-Electrical_E3,0140_Engineer-Electrical_E3,Labor,0.0d,10.0,10.0,At Completion Units,6/19/2024,7/2/2024,0,0,0,0,0,0,0,0,0,0,1.03_Accelerator Systems (AS),1.03.04_AS Cryogenic Distribution System (CDS),1.03.04.20_AS Cryogenic Distribution System Installation,1.03.04.20.60_End Cap 3 Upstream - Installation Support,AS_CDS_EC3_9010_Transport Support - End Cap 3 Upstream,Electrical,,SLAC,Labor
95000,1.03,1.03.04,1.03.04.20,1.03.04.20.60,1.03.04.20.60,End Cap 3 Upstream - Installation Support,AS_CDS_EC3_9010,Transport Support - End Cap 3 Upstream,10.0,10.0,10.0,10.0,10-03-24,10-16-24,AS_CDS_EC_6210: FS,AS_CDS_EC3_9020: FS,SLAC,0%,52169.52169_METS Mechanical Engineer,52169_METS Mechanical Engineer,Labor,0.0d,10.0,10.0,At Completion Units,6/19/2024,7/2/2024,0,0,0,0,0,0,0,0,0,0,1.03_Accelerator Systems (AS),1.03.04_AS Cryogenic Distribution System (CDS),1.03.04.20_AS Cryogenic Distribution System Installation,1.03.04.20.60_End Cap 3 Upstream - Installation Support,AS_CDS_EC3_9010_Transport Support - End Cap 3 Upstream,Mechanical,,SLAC,Labor
95001,1.03,1.03.04,1.03.04.20,1.03.04.20.60,1.03.04.20.60,End Cap 3 Upstream - Installation Support,AS_CDS_EC3_9070,Verification and Test - End Cap 3 Upstream,10.0,80.0,80.0,80.0,07-24-25,08-06-25,AS_CDS_EC3_9050: FS,AS_CDS_EC3_9210: FS,SLAC,0%,52198.52198_METSMANF (METSD Manufacturing),52198_METSMANF (METSD Manufacturing),Labor,0.0d,10.0,10.0,At Completion Units,7/24/2025,8/6/2025,0,0,0,0,0,0,0,0,0,0,1.03_Accelerator Systems (AS),1.03.04_AS Cryogenic Distribution System (CDS),1.03.04.20_AS Cryogenic Distribution System Installation,1.03.04.20.60_End Cap 3 Upstream - Installation Support,AS_CDS_EC3_9070_Verification and Test - End Cap 3 Upstream,Manufacturing,,SLAC,Labor
95002,1.03,1.03.04,1.03.04.20,1.03.04.20.60,1.03.04.20.60,End Cap 3 Upstream - Installation Support,AS_CDS_EC3_9070,Verification and Test - End Cap 3 Upstream,10.0,80.0,80.0,80.0,07-24-25,08-06-25,AS_CDS_EC3_9050: FS,AS_CDS_EC3_9210: FS,SLAC,0%,52169.52169_METS Mechanical Engineer,52169_METS Mechanical Engineer,Labor,0.0d,10.0,10.0,At Completion Units,7/24/2025,8/6/2025,0,0,0,0,0,0,0,0,0,0,1.03_Accelerator Systems (AS),1.03.04_AS Cryogenic Distribution System (CDS),1.03.04.20_AS Cryogenic Distribution System Installation,1.03.04.20.60_End Cap 3 Upstream - Installation Support,AS_CDS_EC3_9070_Verification and Test - End Cap 3 Upstream,Mechanical,,SLAC,Labor
95003,1.03,1.03.04,1.03.04.20,1.03.04.20.60,1.03.04.20.60,End Cap 3 Upstream - Installation Support,AS_CDS_EC3_9050,Mechanical Installation - End Cap 3 Upstream,40.0,160.0,160.0,160.0,05-28-25,07-23-25,AS_CDS_EC3_9040: FS,"AS_ScL_EXT_9170: FS, AS_CDS_EC3_9070: FS",SLAC,0%,52198.52198_METSMANF (METSD Manufacturing),52198_METSMANF (METSD Manufacturing),Labor,0.0d,40.0,40.0,At Completion Units,5/28/2025,7/23/2025,0,0,0,0,0,0,0,0,0,0,1.03_Accelerator Systems (AS),1.03.04_AS Cryogenic Distribution System (CDS),1.03.04.20_AS Cryogenic Distribution System Installation,1.03.04.20.60_End Cap 3 Upstream - Installation Support,AS_CDS_EC3_9050_Mechanical Installation - End Cap 3 Upstream,Manufacturing,,SLAC,Labor
95004,1.03,1.03.04,1.03.04.20,1.03.04.20.60,1.03.04.20.60,End Cap 3 Upstream - Installation Support,AS_CDS_EC3_9040,Setting - End Cap 3 Upstream,20.0,80.0,80.0,80.0,04-29-25,05-27-25,"AS_CDS_EC3_9030: FS, AS_ScL_EXT_9120: FS","AS_CDS_EC3_9050: FS, AS_ScL_CM32_9012: FS",SLAC,0%,52198.52198_METSMANF (METSD Manufacturing),52198_METSMANF (METSD Manufacturing),Labor,0.0d,20.0,20.0,At Completion Units,4/29/2025,5/27/2025,0,0,0,0,0,0,0,0,0,0,1.03_Accelerator Systems (AS),1.03.04_AS Cryogenic Distribution System (CDS),1.03.04.20_AS Cryogenic Distribution System Installation,1.03.04.20.60_End Cap 3 Upstream - Installation Support,AS_CDS_EC3_9040_Setting - End Cap 3 Upstream,Manufacturing,,SLAC,Labor
95005,1.03,1.03.04,1.03.04.20,1.03.04.20.60,1.03.04.20.60,End Cap 3 Upstream - Installation Support,AS_CDS_EC3_9040,Setting - End Cap 3 Upstream,20.0,160.0,160.0,160.0,04-29-25,05-27-25,"AS_CDS_EC3_9030: FS, AS_ScL_EXT_9120: FS","AS_CDS_EC3_9050: FS, AS_ScL_CM32_9012: FS",SLAC,0%,52169.52169_METS Mechanical Engineer,52169_METS Mechanical Engineer,Labor,0.0d,20.0,20.0,At Completion Units,4/29/2025,5/27/2025,0,0,0,0,0,0,0,0,0,0,1.03_Accelerator Systems (AS),1.03.04_AS Cryogenic Distribution System (CDS),1.03.04.20_AS Cryogenic Distribution System Installation,1.03.04.20.60_End Cap 3 Upstream - Installation Support,AS_CDS_EC3_9040_Setting - End Cap 3 Upstream,Mechanical,,SLAC,Labor
95006,1.03,1.03.04,1.03.04.20,1.03.04.20.60,1.03.04.20.60,End Cap 3 Upstream - Installation Support,AS_CDS_EC3_9030,Transport to Final Position - End Cap 3 Upstream,20.0,48.0,48.0,48.0,11-14-24,12-13-24,AS_CDS_EC3_9020: FS,AS_CDS_EC3_9040: FS,SLAC,0%,52198.52198_METSMANF (METSD Manufacturing),52198_METSMANF (METSD Manufacturing),Labor,0.0d,20.0,20.0,At Completion Units,8/1/2024,8/28/2024,0,0,0,0,0,0,0,0,0,0,1.03_Accelerator Systems (AS),1.03.04_AS Cryogenic Distribution System (CDS),1.03.04.20_AS Cryogenic Distribution System Installation,1.03.04.20.60_End Cap 3 Upstream - Installation Support,AS_CDS_EC3_9030_Transport to Final Position - End Cap 3 Upstream,Manufacturing,,SLAC,Labor
95007,1.03,1.03.04,1.03.04.20,1.03.04.20.60,1.03.04.20.60,End Cap 3 Upstream - Installation Support,AS_CDS_EC3_9030,Transport to Final Position - End Cap 3 Upstream,20.0,64.0,64.0,64.0,11-14-24,12-13-24,AS_CDS_EC3_9020: FS,AS_CDS_EC3_9040: FS,SLAC,0%,52169.52169_METS Mechanical Engineer,52169_METS Mechanical Engineer,Labor,0.0d,20.0,20.0,At Completion Units,8/1/2024,8/28/2024,0,0,0,0,0,0,0,0,0,0,1.03_Accelerator Systems (AS),1.03.04_AS Cryogenic Distribution System (CDS),1.03.04.20_AS Cryogenic Distribution System Installation,1.03.04.20.60_End Cap 3 Upstream - Installation Support,AS_CDS_EC3_9030_Transport to Final Position - End Cap 3 Upstream,Mechanical,,SLAC,Labor
95008,1.03,1.03.04,1.03.04.20,1.03.04.20.60,1.03.04.20.60,End Cap 3 Upstream - Installation Support,AS_CDS_EC3_9020,Site Acceptance Test Upon Receipt - End Cap 3 Upstream,20.0,16.0,16.0,16.0,10-17-24,11-13-24,AS_CDS_EC3_9010: FS,AS_CDS_EC3_9030: FS,SLAC,0%,0140_E3.0140_Engineer-Electrical_E3,0140_Engineer-Electrical_E3,Labor,0.0d,20.0,20.0,At Completion Units,7/3/2024,7/31/2024,0,0,0,0,0,0,0,0,0,0,1.03_Accelerator Systems (AS),1.03.04_AS Cryogenic Distribution System (CDS),1.03.04.20_AS Cryogenic Distribution System Installation,1.03.04.20.60_End Cap 3 Upstream - Installation Support,AS_CDS_EC3_9020_Site Acceptance Test Upon Receipt - End Cap 3 Upstream,Electrical,,SLAC,Labor
95009,1.03,1.03.04,1.03.04.20,1.03.04.20.60,1.03.04.20.60,End Cap 3 Upstream - Installation Support,AS_CDS_EC3_9020,Site Acceptance Test Upon Receipt - End Cap 3 Upstream,20.0,96.0,96.0,96.0,10-17-24,11-13-24,AS_CDS_EC3_9010: FS,AS_CDS_EC3_9030: FS,SLAC,0%,52198.52198_METSMANF (METSD Manufacturing),52198_METSMANF (METSD Manufacturing),Labor,0.0d,20.0,20.0,At Completion Units,7/3/2024,7/31/2024,0,0,0,0,0,0,0,0,0,0,1.03_Accelerator Systems (AS),1.03.04_AS Cryogenic Distribution System (CDS),1.03.04.20_AS Cryogenic Distribution System Installation,1.03.04.20.60_End Cap 3 Upstream - Installation Support,AS_CDS_EC3_9020_Site Acceptance Test Upon Receipt - End Cap 3 Upstream,Manufacturing,,SLAC,Labor
95010,1.03,1.03.04,1.03.04.20,1.03.04.20.60,1.03.04.20.60,End Cap 3 Upstream - Installation Support,AS_CDS_EC3_9020,Site Acceptance Test Upon Receipt - End Cap 3 Upstream,20.0,88.0,88.0,88.0,10-17-24,11-13-24,AS_CDS_EC3_9010: FS,AS_CDS_EC3_9030: FS,SLAC,0%,52169.52169_METS Mechanical Engineer,52169_METS Mechanical Engineer,Labor,0.0d,20.0,20.0,At Completion Units,7/3/2024,7/31/2024,0,0,0,0,0,0,0,0,0,0,1.03_Accelerator Systems (AS),1.03.04_AS Cryogenic Distribution System (CDS),1.03.04.20_AS Cryogenic Distribution System Installation,1.03.04.20.60_End Cap 3 Upstream - Installation Support,AS_CDS_EC3_9020_Site Acceptance Test Upon Receipt - End Cap 3 Upstream,Mechanical,,SLAC,Labor
95330,1.03,1.03.04,1.03.04.20,1.03.04.20.61,1.03.04.20.61,End Cap Downstream - Installation Support,AS_CDS_EC4_9070,Verification and Test - End Cap Downstream,10.0,64.0,64.0,64.0,11-11-26,11-24-26,AS_CDS_EC4_9050: FS,AS_CDS_EC4_9210: FS,SLAC,0%,0140_E3.0140_Engineer-Electrical_E3,0140_Engineer-Electrical_E3,Labor,0.0d,10.0,10.0,At Completion Units,5/7/2026,5/20/2026,0,0,0,0,0,0,0,0,0,0,1.03_Accelerator Systems (AS),1.03.04_AS Cryogenic Distribution System (CDS),1.03.04.20_AS Cryogenic Distribution System Installation,1.03.04.20.61_End Cap Downstream - Installation Support,AS_CDS_EC4_9070_Verification and Test - End Cap Downstream,Electrical,,SLAC,Labor
95331,1.03,1.03.04,1.03.04.20,1.03.04.20.61,1.03.04.20.61,End Cap Downstream - Installation Support,AS_CDS_EC4_9180,AWARD: Procurement - Installation Support - End Cap Downstream,1.0,90000.0,90000.0,90000.0,01-16-25,01-16-25,AS_CDS_EC4_9170: FS,AS_CDS_EC4_9190: FS,SLAC,0%,AWARD_USE.AWARD - Use this AWARD,AWARD - Use this AWARD,Nonlabor,0.0d,1.0,1.0,At Completion Units,9/18/2024,9/18/2024,AWARD < $500K,0,0,0,0,0,0,0,0,0,1.03_Accelerator Systems (AS),1.03.04_AS Cryogenic Distribution System (CDS),1.03.04.20_AS Cryogenic Distribution System Installation,1.03.04.20.61_End Cap Downstream - Installation Support,AS_CDS_EC4_9180_AWARD: Procurement - Installation Support - End Cap Downstream,Material,,SLAC,M&S
95332,1.03,1.03.04,1.03.04.20,1.03.04.20.61,1.03.04.20.61,End Cap Downstream - Installation Support,AS_CDS_EC4_9110,RQN: Approval of Requisition - Installation Support - End Cap Downstream,1.0,90000.0,90000.0,90000.0,10-24-24,10-24-24,AS_CDS_EC4_9100: FS,AS_CDS_EC4_9120: FS,SLAC,0%,REQ.Requisition,Requisition,Nonlabor,0.0d,1.0,1.0,At Completion Units,7/11/2024,7/11/2024,RQN,0,0,0,0,0,0,0,0,0,1.03_Accelerator Systems (AS),1.03.04_AS Cryogenic Distribution System (CDS),1.03.04.20_AS Cryogenic Distribution System Installation,1.03.04.20.61_End Cap Downstream - Installation Support,AS_CDS_EC4_9110_RQN: Approval of Requisition - Installation Support - End Cap Downstream,Material,,SLAC,M&S
95333,1.03,1.03.04,1.03.04.20,1.03.04.20.61,1.03.04.20.61,End Cap Downstream - Installation Support,AS_CDS_EC4_9200,RCV: Installation Support - End Cap Downstream,1.0,90000.0,90000.0,90000.0,04-15-25,04-15-25,AS_CDS_EC4_9190: FS,AS_CDS_EC4_9210: FS,SLAC,0%,SL_MSSC.SLAC M&S (<$500K) (gets G&A) (gets ESC),SLAC M&S (<$500K) (gets G&A) (gets ESC),Nonlabor,0.0d,1.0,1.0,At Completion Units,12/16/2024,12/16/2024,0,0,0,0,0,0,0,0,0,0,1.03_Accelerator Systems (AS),1.03.04_AS Cryogenic Distribution System (CDS),1.03.04.20_AS Cryogenic Distribution System Installation,1.03.04.20.61_End Cap Downstream - Installation Support,AS_CDS_EC4_9200_RCV: Installation Support - End Cap Downstream,Material,,SLAC,M&S
95334,1.03,1.03.04,1.03.04.20,1.03.04.20.61,1.03.04.20.61,End Cap Downstream - Installation Support,AS_CDS_EC4_9020,Site Acceptance Test Upon Receipt - End Cap Downstream,20.0,16.0,16.0,16.0,07-17-25,08-13-25,AS_CDS_EC4_9010: FS,AS_CDS_EC4_9030: FS,SLAC,0%,52148.52148_FAC Engineering & Construction,52148_FAC Engineering & Construction,Labor,0.0d,20.0,20.0,At Completion Units,7/17/2025,8/13/2025,0,0,0,0,0,0,0,0,0,0,1.03_Accelerator Systems (AS),1.03.04_AS Cryogenic Distribution System (CDS),1.03.04.20_AS Cryogenic Distribution System Installation,1.03.04.20.61_End Cap Downstream - Installation Support,AS_CDS_EC4_9020_Site Acceptance Test Upon Receipt - End Cap Downstream,FAC,,SLAC,Labor
95335,1.03,1.03.04,1.03.04.20,1.03.04.20.61,1.03.04.20.61,End Cap Downstream - Installation Support,AS_CDS_EC4_9020,Site Acceptance Test Upon Receipt - End Cap Downstream,20.0,32.0,32.0,32.0,07-17-25,08-13-25,AS_CDS_EC4_9010: FS,AS_CDS_EC4_9030: FS,SLAC,0%,52191.52191_METSMET Metrology,52191_METSMET Metrology,Labor,0.0d,20.0,20.0,At Completion Units,7/17/2025,8/13/2025,0,0,0,0,0,0,0,0,0,0,1.03_Accelerator Systems (AS),1.03.04_AS Cryogenic Distribution System (CDS),1.03.04.20_AS Cryogenic Distribution System Installation,1.03.04.20.61_End Cap Downstream - Installation Support,AS_CDS_EC4_9020_Site Acceptance Test Upon Receipt - End Cap Downstream,Metrology,,SLAC,Labor
95336,1.03,1.03.04,1.03.04.20,1.03.04.20.61,1.03.04.20.61,End Cap Downstream - Installation Support,AS_CDS_EC4_9020,Site Acceptance Test Upon Receipt - End Cap Downstream,20.0,8.0,8.0,8.0,07-17-25,08-13-25,AS_CDS_EC4_9010: FS,AS_CDS_EC4_9030: FS,SLAC,0%,52190.52190_METSTP Tech Planning - Reinstated FY16,52190_METSTP Tech Planning - Reinstated FY16,Labor,0.0d,20.0,20.0,At Completion Units,7/17/2025,8/13/2025,0,0,0,0,0,0,0,0,0,0,1.03_Accelerator Systems (AS),1.03.04_AS Cryogenic Distribution System (CDS),1.03.04.20_AS Cryogenic Distribution System Installation,1.03.04.20.61_End Cap Downstream - Installation Support,AS_CDS_EC4_9020_Site Acceptance Test Upon Receipt - End Cap Downstream,METSTPT Tech Planning,Tech,SLAC,Labor
95337,1.03,1.03.04,1.03.04.20,1.03.04.20.61,1.03.04.20.61,End Cap Downstream - Installation Support,AS_CDS_EC4_9020,Site Acceptance Test Upon Receipt - End Cap Downstream,20.0,128.0,128.0,128.0,07-17-25,08-13-25,AS_CDS_EC4_9010: FS,AS_CDS_EC4_9030: FS,SLAC,0%,52152.52152_FAC Fleet,52152_FAC Fleet,Labor,0.0d,20.0,20.0,At Completion Units,7/17/2025,8/13/2025,0,0,0,0,0,0,0,0,0,0,1.03_Accelerator Systems (AS),1.03.04_AS Cryogenic Distribution System (CDS),1.03.04.20_AS Cryogenic Distribution System Installation,1.03.04.20.61_End Cap Downstream - Installation Support,AS_CDS_EC4_9020_Site Acceptance Test Upon Receipt - End Cap Downstream,Support System,,SLAC,Labor
95338,1.03,1.03.04,1.03.04.20,1.03.04.20.61,1.03.04.20.61,End Cap Downstream - Installation Support,AS_CDS_EC4_9070,Verification and Test - End Cap Downstream,10.0,36.0,36.0,36.0,11-11-26,11-24-26,AS_CDS_EC4_9050: FS,AS_CDS_EC4_9210: FS,SLAC,0%,52149.52149_Field Construction Manager (FCM),52149_Field Construction Manager (FCM),Labor,0.0d,10.0,10.0,At Completion Units,5/7/2026,5/20/2026,0,0,0,0,0,0,0,0,0,0,1.03_Accelerator Systems (AS),1.03.04_AS Cryogenic Distribution System (CDS),1.03.04.20_AS Cryogenic Distribution System Installation,1.03.04.20.61_End Cap Downstream - Installation Support,AS_CDS_EC4_9070_Verification and Test - End Cap Downstream,FAC,Engineer,SLAC,Labor
95339,1.03,1.03.04,1.03.04.20,1.03.04.20.61,1.03.04.20.61,End Cap Downstream - Installation Support,AS_CDS_EC4_9050,Mechanical Installation - End Cap Downstream,40.0,48.0,48.0,48.0,09-16-26,11-10-26,AS_CDS_EC4_9040: FS,AS_CDS_EC4_9070: FS,SLAC,0%,52149.52149_Field Construction Manager (FCM),52149_Field Construction Manager (FCM),Labor,0.0d,40.0,40.0,At Completion Units,3/12/2026,5/6/2026,0,0,0,0,0,0,0,0,0,0,1.03_Accelerator Systems (AS),1.03.04_AS Cryogenic Distribution System (CDS),1.03.04.20_AS Cryogenic Distribution System Installation,1.03.04.20.61_End Cap Downstream - Installation Support,AS_CDS_EC4_9050_Mechanical Installation - End Cap Downstream,FAC,Engineer,SLAC,Labor
95340,1.03,1.03.04,1.03.04.20,1.03.04.20.61,1.03.04.20.61,End Cap Downstream - Installation Support,AS_CDS_EC4_9040,Setting - End Cap Downstream,10.0,24.0,24.0,24.0,09-01-26,09-15-26,"AS_CDS_EC4_9030: FS, AS_ScL_CM59_9010: FS","AS_CDS_EC4_9050: FS, AS_ScL_EXT_9170: FS, AS_CDS_BT_9040: FS",SLAC,0%,52149.52149_Field Construction Manager (FCM),52149_Field Construction Manager (FCM),Labor,0.0d,10.0,10.0,At Completion Units,2/26/2026,3/11/2026,0,0,0,0,0,0,0,0,0,0,1.03_Accelerator Systems (AS),1.03.04_AS Cryogenic Distribution System (CDS),1.03.04.20_AS Cryogenic Distribution System Installation,1.03.04.20.61_End Cap Downstream - Installation Support,AS_CDS_EC4_9040_Setting - End Cap Downstream,FAC,Engineer,SLAC,Labor
95341,1.03,1.03.04,1.03.04.20,1.03.04.20.61,1.03.04.20.61,End Cap Downstream - Installation Support,AS_CDS_EC4_9030,Transport to Final Position - End Cap Downstream,5.0,24.0,24.0,24.0,08-14-25,08-20-25,AS_CDS_EC4_9020: FS,AS_CDS_EC4_9040: FS,SLAC,0%,52149.52149_Field Construction Manager (FCM),52149_Field Construction Manager (FCM),Labor,0.0d,5.0,5.0,At Completion Units,8/14/2025,8/20/2025,0,0,0,0,0,0,0,0,0,0,1.03_Accelerator Systems (AS),1.03.04_AS Cryogenic Distribution System (CDS),1.03.04.20_AS Cryogenic Distribution System Installation,1.03.04.20.61_End Cap Downstream - Installation Support,AS_CDS_EC4_9030_Transport to Final Position - End Cap Downstream,FAC,Engineer,SLAC,Labor
95342,1.03,1.03.04,1.03.04.20,1.03.04.20.61,1.03.04.20.61,End Cap Downstream - Installation Support,AS_CDS_EC4_9020,Site Acceptance Test Upon Receipt - End Cap Downstream,20.0,24.0,24.0,24.0,07-17-25,08-13-25,AS_CDS_EC4_9010: FS,AS_CDS_EC4_9030: FS,SLAC,0%,52149.52149_Field Construction Manager (FCM),52149_Field Construction Manager (FCM),Labor,0.0d,20.0,20.0,At Completion Units,7/17/2025,8/13/2025,0,0,0,0,0,0,0,0,0,0,1.03_Accelerator Systems (AS),1.03.04_AS Cryogenic Distribution System (CDS),1.03.04.20_AS Cryogenic Distribution System Installation,1.03.04.20.61_End Cap Downstream - Installation Support,AS_CDS_EC4_9020_Site Acceptance Test Upon Receipt - End Cap Downstream,FAC,Engineer,SLAC,Labor
95343,1.03,1.03.04,1.03.04.20,1.03.04.20.61,1.03.04.20.61,End Cap Downstream - Installation Support,AS_CDS_EC4_9010,Transport Support - End Cap Downstream,10.0,12.0,12.0,12.0,07-02-25,07-16-25,"AS_CDS_EC_6210: FS, MS_FY_2025_Q4: FS",AS_CDS_EC4_9020: FS,SLAC,0%,52149.52149_Field Construction Manager (FCM),52149_Field Construction Manager (FCM),Labor,0.0d,10.0,10.0,At Completion Units,7/2/2025,7/16/2025,0,0,0,0,0,0,0,0,0,0,1.03_Accelerator Systems (AS),1.03.04_AS Cryogenic Distribution System (CDS),1.03.04.20_AS Cryogenic Distribution System Installation,1.03.04.20.61_End Cap Downstream - Installation Support,AS_CDS_EC4_9010_Transport Support - End Cap Downstream,FAC,Engineer,SLAC,Labor
95344,1.03,1.03.04,1.03.04.20,1.03.04.20.61,1.03.04.20.61,End Cap Downstream - Installation Support,AS_CDS_EC4_9010,Transport Support - End Cap Downstream,10.0,32.0,32.0,32.0,07-02-25,07-16-25,"AS_CDS_EC_6210: FS, MS_FY_2025_Q4: FS",AS_CDS_EC4_9020: FS,SLAC,0%,0140_E3.0140_Engineer-Electrical_E3,0140_Engineer-Electrical_E3,Labor,0.0d,10.0,10.0,At Completion Units,7/2/2025,7/16/2025,0,0,0,0,0,0,0,0,0,0,1.03_Accelerator Systems (AS),1.03.04_AS Cryogenic Distribution System (CDS),1.03.04.20_AS Cryogenic Distribution System Installation,1.03.04.20.61_End Cap Downstream - Installation Support,AS_CDS_EC4_9010_Transport Support - End Cap Downstream,Electrical,,SLAC,Labor
95345,1.03,1.03.04,1.03.04.20,1.03.04.20.61,1.03.04.20.61,End Cap Downstream - Installation Support,AS_CDS_EC4_9010,Transport Support - End Cap Downstream,10.0,10.0,10.0,10.0,07-02-25,07-16-25,"AS_CDS_EC_6210: FS, MS_FY_2025_Q4: FS",AS_CDS_EC4_9020: FS,SLAC,0%,52169.52169_METS Mechanical Engineer,52169_METS Mechanical Engineer,Labor,0.0d,10.0,10.0,At Completion Units,7/2/2025,7/16/2025,0,0,0,0,0,0,0,0,0,0,1.03_Accelerator Systems (AS),1.03.04_AS Cryogenic Distribution System (CDS),1.03.04.20_AS Cryogenic Distribution System Installation,1.03.04.20.61_End Cap Downstream - Installation Support,AS_CDS_EC4_9010_Transport Support - End Cap Downstream,Mechanical,,SLAC,Labor
95346,1.03,1.03.04,1.03.04.20,1.03.04.20.61,1.03.04.20.61,End Cap Downstream - Installation Support,AS_CDS_EC4_9070,Verification and Test - End Cap Downstream,10.0,80.0,80.0,80.0,11-11-26,11-24-26,AS_CDS_EC4_9050: FS,AS_CDS_EC4_9210: FS,SLAC,0%,52198.52198_METSMANF (METSD Manufacturing),52198_METSMANF (METSD Manufacturing),Labor,0.0d,10.0,10.0,At Completion Units,5/7/2026,5/20/2026,0,0,0,0,0,0,0,0,0,0,1.03_Accelerator Systems (AS),1.03.04_AS Cryogenic Distribution System (CDS),1.03.04.20_AS Cryogenic Distribution System Installation,1.03.04.20.61_End Cap Downstream - Installation Support,AS_CDS_EC4_9070_Verification and Test - End Cap Downstream,Manufacturing,,SLAC,Labor
95347,1.03,1.03.04,1.03.04.20,1.03.04.20.61,1.03.04.20.61,End Cap Downstream - Installation Support,AS_CDS_EC4_9070,Verification and Test - End Cap Downstream,10.0,80.0,80.0,80.0,11-11-26,11-24-26,AS_CDS_EC4_9050: FS,AS_CDS_EC4_9210: FS,SLAC,0%,52129.52129_Research Mechanical Engineering,52129_Research Mechanical Engineering,Labor,0.0d,10.0,10.0,At Completion Units,5/7/2026,5/20/2026,0,0,0,0,0,0,0,0,0,0,1.03_Accelerator Systems (AS),1.03.04_AS Cryogenic Distribution System (CDS),1.03.04.20_AS Cryogenic Distribution System Installation,1.03.04.20.61_End Cap Downstream - Installation Support,AS_CDS_EC4_9070_Verification and Test - End Cap Downstream,Mechanical,,SLAC,Labor
95348,1.03,1.03.04,1.03.04.20,1.03.04.20.61,1.03.04.20.61,End Cap Downstream - Installation Support,AS_CDS_EC4_9050,Mechanical Installation - End Cap Downstream,40.0,160.0,160.0,160.0,09-16-26,11-10-26,AS_CDS_EC4_9040: FS,AS_CDS_EC4_9070: FS,SLAC,0%,52198.52198_METSMANF (METSD Manufacturing),52198_METSMANF (METSD Manufacturing),Labor,0.0d,40.0,40.0,At Completion Units,3/12/2026,5/6/2026,0,0,0,0,0,0,0,0,0,0,1.03_Accelerator Systems (AS),1.03.04_AS Cryogenic Distribution System (CDS),1.03.04.20_AS Cryogenic Distribution System Installation,1.03.04.20.61_End Cap Downstream - Installation Support,AS_CDS_EC4_9050_Mechanical Installation - End Cap Downstream,Manufacturing,,SLAC,Labor
95349,1.03,1.03.04,1.03.04.20,1.03.04.20.61,1.03.04.20.61,End Cap Downstream - Installation Support,AS_CDS_EC4_9040,Setting - End Cap Downstream,10.0,80.0,80.0,80.0,09-01-26,09-15-26,"AS_CDS_EC4_9030: FS, AS_ScL_CM59_9010: FS","AS_CDS_EC4_9050: FS, AS_ScL_EXT_9170: FS, AS_CDS_BT_9040: FS",SLAC,0%,52198.52198_METSMANF (METSD Manufacturing),52198_METSMANF (METSD Manufacturing),Labor,0.0d,10.0,10.0,At Completion Units,2/26/2026,3/11/2026,0,0,0,0,0,0,0,0,0,0,1.03_Accelerator Systems (AS),1.03.04_AS Cryogenic Distribution System (CDS),1.03.04.20_AS Cryogenic Distribution System Installation,1.03.04.20.61_End Cap Downstream - Installation Support,AS_CDS_EC4_9040_Setting - End Cap Downstream,Manufacturing,,SLAC,Labor
95350,1.03,1.03.04,1.03.04.20,1.03.04.20.61,1.03.04.20.61,End Cap Downstream - Installation Support,AS_CDS_EC4_9040,Setting - End Cap Downstream,10.0,160.0,160.0,160.0,09-01-26,09-15-26,"AS_CDS_EC4_9030: FS, AS_ScL_CM59_9010: FS","AS_CDS_EC4_9050: FS, AS_ScL_EXT_9170: FS, AS_CDS_BT_9040: FS",SLAC,0%,52169.52169_METS Mechanical Engineer,52169_METS Mechanical Engineer,Labor,0.0d,10.0,10.0,At Completion Units,2/26/2026,3/11/2026,0,0,0,0,0,0,0,0,0,0,1.03_Accelerator Systems (AS),1.03.04_AS Cryogenic Distribution System (CDS),1.03.04.20_AS Cryogenic Distribution System Installation,1.03.04.20.61_End Cap Downstream - Installation Support,AS_CDS_EC4_9040_Setting - End Cap Downstream,Mechanical,,SLAC,Labor
95351,1.03,1.03.04,1.03.04.20,1.03.04.20.61,1.03.04.20.61,End Cap Downstream - Installation Support,AS_CDS_EC4_9030,Transport to Final Position - End Cap Downstream,5.0,48.0,48.0,48.0,08-14-25,08-20-25,AS_CDS_EC4_9020: FS,AS_CDS_EC4_9040: FS,SLAC,0%,52198.52198_METSMANF (METSD Manufacturing),52198_METSMANF (METSD Manufacturing),Labor,0.0d,5.0,5.0,At Completion Units,8/14/2025,8/20/2025,0,0,0,0,0,0,0,0,0,0,1.03_Accelerator Systems (AS),1.03.04_AS Cryogenic Distribution System (CDS),1.03.04.20_AS Cryogenic Distribution System Installation,1.03.04.20.61_End Cap Downstream - Installation Support,AS_CDS_EC4_9030_Transport to Final Position - End Cap Downstream,Manufacturing,,SLAC,Labor
95352,1.03,1.03.04,1.03.04.20,1.03.04.20.61,1.03.04.20.61,End Cap Downstream - Installation Support,AS_CDS_EC4_9030,Transport to Final Position - End Cap Downstream,5.0,64.0,64.0,64.0,08-14-25,08-20-25,AS_CDS_EC4_9020: FS,AS_CDS_EC4_9040: FS,SLAC,0%,52169.52169_METS Mechanical Engineer,52169_METS Mechanical Engineer,Labor,0.0d,5.0,5.0,At Completion Units,8/14/2025,8/20/2025,0,0,0,0,0,0,0,0,0,0,1.03_Accelerator Systems (AS),1.03.04_AS Cryogenic Distribution System (CDS),1.03.04.20_AS Cryogenic Distribution System Installation,1.03.04.20.61_End Cap Downstream - Installation Support,AS_CDS_EC4_9030_Transport to Final Position - End Cap Downstream,Mechanical,,SLAC,Labor
95353,1.03,1.03.04,1.03.04.20,1.03.04.20.61,1.03.04.20.61,End Cap Downstream - Installation Support,AS_CDS_EC4_9020,Site Acceptance Test Upon Receipt - End Cap Downstream,20.0,16.0,16.0,16.0,07-17-25,08-13-25,AS_CDS_EC4_9010: FS,AS_CDS_EC4_9030: FS,SLAC,0%,0140_E3.0140_Engineer-Electrical_E3,0140_Engineer-Electrical_E3,Labor,0.0d,20.0,20.0,At Completion Units,7/17/2025,8/13/2025,0,0,0,0,0,0,0,0,0,0,1.03_Accelerator Systems (AS),1.03.04_AS Cryogenic Distribution System (CDS),1.03.04.20_AS Cryogenic Distribution System Installation,1.03.04.20.61_End Cap Downstream - Installation Support,AS_CDS_EC4_9020_Site Acceptance Test Upon Receipt - End Cap Downstream,Electrical,,SLAC,Labor
95354,1.03,1.03.04,1.03.04.20,1.03.04.20.61,1.03.04.20.61,End Cap Downstream - Installation Support,AS_CDS_EC4_9020,Site Acceptance Test Upon Receipt - End Cap Downstream,20.0,96.0,96.0,96.0,07-17-25,08-13-25,AS_CDS_EC4_9010: FS,AS_CDS_EC4_9030: FS,SLAC,0%,52198.52198_METSMANF (METSD Manufacturing),52198_METSMANF (METSD Manufacturing),Labor,0.0d,20.0,20.0,At Completion Units,7/17/2025,8/13/2025,0,0,0,0,0,0,0,0,0,0,1.03_Accelerator Systems (AS),1.03.04_AS Cryogenic Distribution System (CDS),1.03.04.20_AS Cryogenic Distribution System Installation,1.03.04.20.61_End Cap Downstream - Installation Support,AS_CDS_EC4_9020_Site Acceptance Test Upon Receipt - End Cap Downstream,Manufacturing,,SLAC,Labor
95355,1.03,1.03.04,1.03.04.20,1.03.04.20.61,1.03.04.20.61,End Cap Downstream - Installation Support,AS_CDS_EC4_9020,Site Acceptance Test Upon Receipt - End Cap Downstream,20.0,88.0,88.0,88.0,07-17-25,08-13-25,AS_CDS_EC4_9010: FS,AS_CDS_EC4_9030: FS,SLAC,0%,52169.52169_METS Mechanical Engineer,52169_METS Mechanical Engineer,Labor,0.0d,20.0,20.0,At Completion Units,7/17/2025,8/13/2025,0,0,0,0,0,0,0,0,0,0,1.03_Accelerator Systems (AS),1.03.04_AS Cryogenic Distribution System (CDS),1.03.04.20_AS Cryogenic Distribution System Installation,1.03.04.20.61_End Cap Downstream - Installation Support,AS_CDS_EC4_9020_Site Acceptance Test Upon Receipt - End Cap Downstream,Mechanical,,SLAC,Labor
95675,1.03,1.03.04,1.03.04.20,1.03.04.20.70,1.03.04.20.70,Beam Tubes (EC/Tee/VB) - Installation Support,AS_CDS_BT_9020,Site Acceptance Test Upon Receipt - Beam Tubes (EC/Tee/VB),20.0,32.0,32.0,32.0,08-14-24,09-11-24,AS_CDS_BT_9010: FS,AS_CDS_BT_9030: FS,SLAC,0%,52191.52191_METSMET Metrology,52191_METSMET Metrology,Labor,0.0d,20.0,20.0,At Completion Units,6/11/2024,7/9/2024,0,0,0,0,0,0,0,0,0,0,1.03_Accelerator Systems (AS),1.03.04_AS Cryogenic Distribution System (CDS),1.03.04.20_AS Cryogenic Distribution System Installation,1.03.04.20.70_Beam Tubes (EC/Tee/VB) - Installation Support,AS_CDS_BT_9020_Site Acceptance Test Upon Receipt - Beam Tubes (EC/Tee/VB),Metrology,,SLAC,Labor
95676,1.03,1.03.04,1.03.04.20,1.03.04.20.70,1.03.04.20.70,Beam Tubes (EC/Tee/VB) - Installation Support,AS_CDS_BT_9020,Site Acceptance Test Upon Receipt - Beam Tubes (EC/Tee/VB),20.0,32.0,32.0,32.0,08-14-24,09-11-24,AS_CDS_BT_9010: FS,AS_CDS_BT_9030: FS,SLAC,0%,52190.52190_METSTP Tech Planning - Reinstated FY16,52190_METSTP Tech Planning - Reinstated FY16,Labor,0.0d,20.0,20.0,At Completion Units,6/11/2024,7/9/2024,0,0,0,0,0,0,0,0,0,0,1.03_Accelerator Systems (AS),1.03.04_AS Cryogenic Distribution System (CDS),1.03.04.20_AS Cryogenic Distribution System Installation,1.03.04.20.70_Beam Tubes (EC/Tee/VB) - Installation Support,AS_CDS_BT_9020_Site Acceptance Test Upon Receipt - Beam Tubes (EC/Tee/VB),METSTPT Tech Planning,Tech,SLAC,Labor
95677,1.03,1.03.04,1.03.04.20,1.03.04.20.70,1.03.04.20.70,Beam Tubes (EC/Tee/VB) - Installation Support,AS_CDS_BT_9020,Site Acceptance Test Upon Receipt - Beam Tubes (EC/Tee/VB),20.0,32.0,32.0,32.0,08-14-24,09-11-24,AS_CDS_BT_9010: FS,AS_CDS_BT_9030: FS,SLAC,0%,52152.52152_FAC Fleet,52152_FAC Fleet,Labor,0.0d,20.0,20.0,At Completion Units,6/11/2024,7/9/2024,0,0,0,0,0,0,0,0,0,0,1.03_Accelerator Systems (AS),1.03.04_AS Cryogenic Distribution System (CDS),1.03.04.20_AS Cryogenic Distribution System Installation,1.03.04.20.70_Beam Tubes (EC/Tee/VB) - Installation Support,AS_CDS_BT_9020_Site Acceptance Test Upon Receipt - Beam Tubes (EC/Tee/VB),Support System,,SLAC,Labor
95678,1.03,1.03.04,1.03.04.20,1.03.04.20.70,1.03.04.20.70,Beam Tubes (EC/Tee/VB) - Installation Support,AS_CDS_BT_9020,Site Acceptance Test Upon Receipt - Beam Tubes (EC/Tee/VB),20.0,16.0,16.0,16.0,08-14-24,09-11-24,AS_CDS_BT_9010: FS,AS_CDS_BT_9030: FS,SLAC,0%,52148.52148_FAC Engineering & Construction,52148_FAC Engineering & Construction,Labor,0.0d,20.0,20.0,At Completion Units,6/11/2024,7/9/2024,0,0,0,0,0,0,0,0,0,0,1.03_Accelerator Systems (AS),1.03.04_AS Cryogenic Distribution System (CDS),1.03.04.20_AS Cryogenic Distribution System Installation,1.03.04.20.70_Beam Tubes (EC/Tee/VB) - Installation Support,AS_CDS_BT_9020_Site Acceptance Test Upon Receipt - Beam Tubes (EC/Tee/VB),FAC,,SLAC,Labor
95679,1.03,1.03.04,1.03.04.20,1.03.04.20.70,1.03.04.20.70,Beam Tubes (EC/Tee/VB) - Installation Support,AS_CDS_BT_9070,Verification and Test - Beam Tubes (EC/Tee/VB),10.0,12.0,12.0,12.0,01-25-27,02-05-27,AS_CDS_BT_9060: FS,AS_CDS_9010: FS,SLAC,0%,52149.52149_Field Construction Manager (FCM),52149_Field Construction Manager (FCM),Labor,0.0d,10.0,10.0,At Completion Units,5/7/2026,5/20/2026,0,0,0,0,0,0,0,0,0,0,1.03_Accelerator Systems (AS),1.03.04_AS Cryogenic Distribution System (CDS),1.03.04.20_AS Cryogenic Distribution System Installation,1.03.04.20.70_Beam Tubes (EC/Tee/VB) - Installation Support,AS_CDS_BT_9070_Verification and Test - Beam Tubes (EC/Tee/VB),FAC,Engineer,SLAC,Labor
95680,1.03,1.03.04,1.03.04.20,1.03.04.20.70,1.03.04.20.70,Beam Tubes (EC/Tee/VB) - Installation Support,AS_CDS_BT_9060,Installation Oversight - Beam Tubes (EC/Tee/VB),20.0,24.0,24.0,24.0,12-11-26,01-22-27,AS_CDS_BT_9050: FS,AS_CDS_BT_9070: FS,SLAC,0%,52149.52149_Field Construction Manager (FCM),52149_Field Construction Manager (FCM),Labor,0.0d,20.0,20.0,At Completion Units,4/9/2026,5/6/2026,0,0,0,0,0,0,0,0,0,0,1.03_Accelerator Systems (AS),1.03.04_AS Cryogenic Distribution System (CDS),1.03.04.20_AS Cryogenic Distribution System Installation,1.03.04.20.70_Beam Tubes (EC/Tee/VB) - Installation Support,AS_CDS_BT_9060_Installation Oversight - Beam Tubes (EC/Tee/VB),FAC,Engineer,SLAC,Labor
95681,1.03,1.03.04,1.03.04.20,1.03.04.20.70,1.03.04.20.70,Beam Tubes (EC/Tee/VB) - Installation Support,AS_CDS_BT_9050,Mechanical Installation - Beam Tubes (EC/Tee/VB),40.0,48.0,48.0,48.0,10-14-26,12-10-26,AS_CDS_BT_9040: FS,AS_CDS_BT_9060: FS,SLAC,0%,52149.52149_Field Construction Manager (FCM),52149_Field Construction Manager (FCM),Labor,0.0d,40.0,40.0,At Completion Units,4/9/2026,6/4/2026,0,0,0,0,0,0,0,0,0,0,1.03_Accelerator Systems (AS),1.03.04_AS Cryogenic Distribution System (CDS),1.03.04.20_AS Cryogenic Distribution System Installation,1.03.04.20.70_Beam Tubes (EC/Tee/VB) - Installation Support,AS_CDS_BT_9050_Mechanical Installation - Beam Tubes (EC/Tee/VB),FAC,Engineer,SLAC,Labor
95682,1.03,1.03.04,1.03.04.20,1.03.04.20.70,1.03.04.20.70,Beam Tubes (EC/Tee/VB) - Installation Support,AS_CDS_BT_9040,Setting - Beam Tubes (EC/Tee/VB),20.0,24.0,24.0,24.0,09-16-26,10-13-26,"AS_CDS_BT_9030: FS, AS_CDS_VB_6210: FS, AS_CDS_EC4_9040: FS",AS_CDS_BT_9050: FS,SLAC,0%,52149.52149_Field Construction Manager (FCM),52149_Field Construction Manager (FCM),Labor,0.0d,20.0,20.0,At Completion Units,3/12/2026,4/8/2026,0,0,0,0,0,0,0,0,0,0,1.03_Accelerator Systems (AS),1.03.04_AS Cryogenic Distribution System (CDS),1.03.04.20_AS Cryogenic Distribution System Installation,1.03.04.20.70_Beam Tubes (EC/Tee/VB) - Installation Support,AS_CDS_BT_9040_Setting - Beam Tubes (EC/Tee/VB),FAC,Engineer,SLAC,Labor
95683,1.03,1.03.04,1.03.04.20,1.03.04.20.70,1.03.04.20.70,Beam Tubes (EC/Tee/VB) - Installation Support,AS_CDS_BT_9030,Transport to Final Position - Beam Tubes (EC/Tee/VB),20.0,24.0,24.0,24.0,09-12-24,10-09-24,AS_CDS_BT_9020: FS,AS_CDS_BT_9040: FS,SLAC,0%,52149.52149_Field Construction Manager (FCM),52149_Field Construction Manager (FCM),Labor,0.0d,20.0,20.0,At Completion Units,7/10/2024,8/6/2024,0,0,0,0,0,0,0,0,0,0,1.03_Accelerator Systems (AS),1.03.04_AS Cryogenic Distribution System (CDS),1.03.04.20_AS Cryogenic Distribution System Installation,1.03.04.20.70_Beam Tubes (EC/Tee/VB) - Installation Support,AS_CDS_BT_9030_Transport to Final Position - Beam Tubes (EC/Tee/VB),FAC,Engineer,SLAC,Labor
95684,1.03,1.03.04,1.03.04.20,1.03.04.20.70,1.03.04.20.70,Beam Tubes (EC/Tee/VB) - Installation Support,AS_CDS_BT_9010,Transport Support - Beam Tubes (EC/Tee/VB),10.0,12.0,12.0,12.0,07-31-24,08-13-24,"AS_CDS_BT_6210: FS, AS_CDS_BC_6080: FS",AS_CDS_BT_9020: FS,SLAC,0%,52149.52149_Field Construction Manager (FCM),52149_Field Construction Manager (FCM),Labor,0.0d,10.0,10.0,At Completion Units,5/28/2024,6/10/2024,0,0,0,0,0,0,0,0,0,0,1.03_Accelerator Systems (AS),1.03.04_AS Cryogenic Distribution System (CDS),1.03.04.20_AS Cryogenic Distribution System Installation,1.03.04.20.70_Beam Tubes (EC/Tee/VB) - Installation Support,AS_CDS_BT_9010_Transport Support - Beam Tubes (EC/Tee/VB),FAC,Engineer,SLAC,Labor
95685,1.03,1.03.04,1.03.04.20,1.03.04.20.70,1.03.04.20.70,Beam Tubes (EC/Tee/VB) - Installation Support,AS_CDS_BT_9070,Verification and Test - Beam Tubes (EC/Tee/VB),10.0,40.0,40.0,40.0,01-25-27,02-05-27,AS_CDS_BT_9060: FS,AS_CDS_9010: FS,SLAC,0%,52198.52198_METSMANF (METSD Manufacturing),52198_METSMANF (METSD Manufacturing),Labor,0.0d,10.0,10.0,At Completion Units,5/7/2026,5/20/2026,0,0,0,0,0,0,0,0,0,0,1.03_Accelerator Systems (AS),1.03.04_AS Cryogenic Distribution System (CDS),1.03.04.20_AS Cryogenic Distribution System Installation,1.03.04.20.70_Beam Tubes (EC/Tee/VB) - Installation Support,AS_CDS_BT_9070_Verification and Test - Beam Tubes (EC/Tee/VB),Manufacturing,,SLAC,Labor
95686,1.03,1.03.04,1.03.04.20,1.03.04.20.70,1.03.04.20.70,Beam Tubes (EC/Tee/VB) - Installation Support,AS_CDS_BT_9070,Verification and Test - Beam Tubes (EC/Tee/VB),10.0,40.0,40.0,40.0,01-25-27,02-05-27,AS_CDS_BT_9060: FS,AS_CDS_9010: FS,SLAC,0%,52169.52169_METS Mechanical Engineer,52169_METS Mechanical Engineer,Labor,0.0d,10.0,10.0,At Completion Units,5/7/2026,5/20/2026,0,0,0,0,0,0,0,0,0,0,1.03_Accelerator Systems (AS),1.03.04_AS Cryogenic Distribution System (CDS),1.03.04.20_AS Cryogenic Distribution System Installation,1.03.04.20.70_Beam Tubes (EC/Tee/VB) - Installation Support,AS_CDS_BT_9070_Verification and Test - Beam Tubes (EC/Tee/VB),Mechanical,,SLAC,Labor
95687,1.03,1.03.04,1.03.04.20,1.03.04.20.70,1.03.04.20.70,Beam Tubes (EC/Tee/VB) - Installation Support,AS_CDS_BT_9050,Mechanical Installation - Beam Tubes (EC/Tee/VB),40.0,160.0,160.0,160.0,10-14-26,12-10-26,AS_CDS_BT_9040: FS,AS_CDS_BT_9060: FS,SLAC,0%,52198.52198_METSMANF (METSD Manufacturing),52198_METSMANF (METSD Manufacturing),Labor,0.0d,40.0,40.0,At Completion Units,4/9/2026,6/4/2026,0,0,0,0,0,0,0,0,0,0,1.03_Accelerator Systems (AS),1.03.04_AS Cryogenic Distribution System (CDS),1.03.04.20_AS Cryogenic Distribution System Installation,1.03.04.20.70_Beam Tubes (EC/Tee/VB) - Installation Support,AS_CDS_BT_9050_Mechanical Installation - Beam Tubes (EC/Tee/VB),Manufacturing,,SLAC,Labor
95688,1.03,1.03.04,1.03.04.20,1.03.04.20.70,1.03.04.20.70,Beam Tubes (EC/Tee/VB) - Installation Support,AS_CDS_BT_9030,Transport to Final Position - Beam Tubes (EC/Tee/VB),20.0,24.0,24.0,24.0,09-12-24,10-09-24,AS_CDS_BT_9020: FS,AS_CDS_BT_9040: FS,SLAC,0%,52198.52198_METSMANF (METSD Manufacturing),52198_METSMANF (METSD Manufacturing),Labor,0.0d,20.0,20.0,At Completion Units,7/10/2024,8/6/2024,0,0,0,0,0,0,0,0,0,0,1.03_Accelerator Systems (AS),1.03.04_AS Cryogenic Distribution System (CDS),1.03.04.20_AS Cryogenic Distribution System Installation,1.03.04.20.70_Beam Tubes (EC/Tee/VB) - Installation Support,AS_CDS_BT_9030_Transport to Final Position - Beam Tubes (EC/Tee/VB),Manufacturing,,SLAC,Labor
95689,1.03,1.03.04,1.03.04.20,1.03.04.20.70,1.03.04.20.70,Beam Tubes (EC/Tee/VB) - Installation Support,AS_CDS_BT_9030,Transport to Final Position - Beam Tubes (EC/Tee/VB),20.0,32.0,32.0,32.0,09-12-24,10-09-24,AS_CDS_BT_9020: FS,AS_CDS_BT_9040: FS,SLAC,0%,52169.52169_METS Mechanical Engineer,52169_METS Mechanical Engineer,Labor,0.0d,20.0,20.0,At Completion Units,7/10/2024,8/6/2024,0,0,0,0,0,0,0,0,0,0,1.03_Accelerator Systems (AS),1.03.04_AS Cryogenic Distribution System (CDS),1.03.04.20_AS Cryogenic Distribution System Installation,1.03.04.20.70_Beam Tubes (EC/Tee/VB) - Installation Support,AS_CDS_BT_9030_Transport to Final Position - Beam Tubes (EC/Tee/VB),Mechanical,,SLAC,Labor
95690,1.03,1.03.04,1.03.04.20,1.03.04.20.70,1.03.04.20.70,Beam Tubes (EC/Tee/VB) - Installation Support,AS_CDS_BT_9020,Site Acceptance Test Upon Receipt - Beam Tubes (EC/Tee/VB),20.0,48.0,48.0,48.0,08-14-24,09-11-24,AS_CDS_BT_9010: FS,AS_CDS_BT_9030: FS,SLAC,0%,52198.52198_METSMANF (METSD Manufacturing),52198_METSMANF (METSD Manufacturing),Labor,0.0d,20.0,20.0,At Completion Units,6/11/2024,7/9/2024,0,0,0,0,0,0,0,0,0,0,1.03_Accelerator Systems (AS),1.03.04_AS Cryogenic Distribution System (CDS),1.03.04.20_AS Cryogenic Distribution System Installation,1.03.04.20.70_Beam Tubes (EC/Tee/VB) - Installation Support,AS_CDS_BT_9020_Site Acceptance Test Upon Receipt - Beam Tubes (EC/Tee/VB),Manufacturing,,SLAC,Labor
96010,1.03,1.03.04,1.03.04.25,1.03.04.25,1.03.04.25,AS Cryogenic Distribution System Engineer Support - FNAL,AS_FNL_CD_1010,FNL_FY2021 - CDS Support,245.0,798.0,160.0,798.0,10-01-2020,12-02-21,AS_FNL_CD_1000: FS,AS_FNL_CD_1020: FS,FNAL,79.95%,c_FNAD_CRYO_EN.c_FNAD_Cryogenics Engineer,c_FNAD_Cryogenics Engineer,Labor,245.0d,43.0,288.0,At Completion Units,10/1/2020,9/30/2021,0,0,0,0,0,0,0,0,0,0,1.03_Accelerator Systems (AS),1.03.04_AS Cryogenic Distribution System (CDS),1.03.04.25_AS Cryogenic Distribution System Engineer Support - FNAL,,AS_FNL_CD_1010_FNL_FY2021 - CDS Support,Cryogenic,,FNAL,Labor
96011,1.03,1.03.04,1.03.04.25,1.03.04.25,1.03.04.25,AS Cryogenic Distribution System Engineer Support - FNAL,AS_FNL_CD_1000,FNL_FY2020 - CDS Support,42.0,150.0,0.0,150.0,08-03-2020,09-30-2020,MS_FY_2020a: FS,AS_FNL_CD_1010: FS,FNAL,100%,c_FNAD_CRYO_EN.c_FNAD_Cryogenics Engineer,c_FNAD_Cryogenics Engineer,Labor,41.0d,0.0,41.0,At Completion Units,7/1/2020,9/30/2020,0,0,0,0,0,0,0,0,0,0,1.03_Accelerator Systems (AS),1.03.04_AS Cryogenic Distribution System (CDS),1.03.04.25_AS Cryogenic Distribution System Engineer Support - FNAL,,AS_FNL_CD_1000_FNL_FY2020 - CDS Support,Cryogenic,,FNAL,Labor
96012,1.03,1.03.04,1.03.04.25,1.03.04.25,1.03.04.25,AS Cryogenic Distribution System Engineer Support - FNAL,AS_FNL_CD_1040,FNL_FY2024 - CDS Support,243.0,86.0,86.0,86.0,12-04-23,12-02-24,AS_FNL_CD_1030: FS,PM_M4_1070: FS,FNAL,0%,c_FNAD_CRYO_EN.c_FNAD_Cryogenics Engineer,c_FNAD_Cryogenics Engineer,Labor,0.0d,243.0,243.0,At Completion Units,10/2/2023,9/30/2024,0,0,0,0,0,0,0,0,0,0,1.03_Accelerator Systems (AS),1.03.04_AS Cryogenic Distribution System (CDS),1.03.04.25_AS Cryogenic Distribution System Engineer Support - FNAL,,AS_FNL_CD_1040_FNL_FY2024 - CDS Support,Cryogenic,,FNAL,Labor
96013,1.03,1.03.04,1.03.04.25,1.03.04.25,1.03.04.25,AS Cryogenic Distribution System Engineer Support - FNAL,AS_FNL_CD_1030,FNL_FY2023 - CDS Support,243.0,1740.0,1740.0,1740.0,12-05-22,12-01-23,AS_FNL_CD_1020: FS,AS_FNL_CD_1040: FS,FNAL,0%,c_FNAD_CRYO_EN.c_FNAD_Cryogenics Engineer,c_FNAD_Cryogenics Engineer,Labor,0.0d,243.0,243.0,At Completion Units,10/3/2022,9/29/2023,0,0,0,0,0,0,0,0,0,0,1.03_Accelerator Systems (AS),1.03.04_AS Cryogenic Distribution System (CDS),1.03.04.25_AS Cryogenic Distribution System Engineer Support - FNAL,,AS_FNL_CD_1030_FNL_FY2023 - CDS Support,Cryogenic,,FNAL,Labor
96014,1.03,1.03.04,1.03.04.25,1.03.04.25,1.03.04.25,AS Cryogenic Distribution System Engineer Support - FNAL,AS_FNL_CD_1020,FNL_FY2022 - CDS Support,244.0,1740.0,1740.0,1740.0,12-03-21,12-02-22,AS_FNL_CD_1010: FS,AS_FNL_CD_1030: FS,FNAL,0%,c_FNAD_CRYO_EN.c_FNAD_Cryogenics Engineer,c_FNAD_Cryogenics Engineer,Labor,0.0d,244.0,244.0,At Completion Units,10/1/2021,9/30/2022,0,0,0,0,0,0,0,0,0,0,1.03_Accelerator Systems (AS),1.03.04_AS Cryogenic Distribution System (CDS),1.03.04.25_AS Cryogenic Distribution System Engineer Support - FNAL,,AS_FNL_CD_1020_FNL_FY2022 - CDS Support,Cryogenic,,FNAL,Labor
96972,1.03,1.03.05,1.03.05.05,1.03.05.05.01,1.03.05.05.01,Dogleg and Spreader Area Design,AS_DOG_DE_1010,Develop new Documentation - BTL - DOG,189.0,8.0,1.2,8.0,01-05-2021,12-10-21,AS_DOG_DE_1000: FS,AS_DOG_DE_1025: FS,SLAC,84.72%,52211.52211_EEDOPSE (Electronics & Engineering Div - Ops & PSE),52211_EEDOPSE (Electronics & Engineering Div - Ops & PSE),Labor,189.0d,49.0,238.0,At Completion Units,1/5/2021,7/1/2021,0,0,0,0,0,0,0,0,0,0,1.03_Accelerator Systems (AS),1.03.05_AS Beam Transfer Line (BTL),1.03.05.05_AS Beam Transfer Line Engineering and Design,1.03.05.05.01_Dogleg and Spreader Area Design,AS_DOG_DE_1010_Develop new Documentation - BTL - DOG,Electrical,,SLAC,Labor
96973,1.03,1.03.05,1.03.05.05,1.03.05.05.01,1.03.05.05.01,Dogleg and Spreader Area Design,AS_DOG_DE_1010,Develop new Documentation - BTL - DOG,189.0,16.0,2.4,16.0,01-05-2021,12-10-21,AS_DOG_DE_1000: FS,AS_DOG_DE_1025: FS,SLAC,84.72%,52213.52213_EEDHW (Electronics & Engineering Div - HW Engr),52213_EEDHW (Electronics & Engineering Div - HW Engr),Labor,189.0d,49.0,238.0,At Completion Units,1/5/2021,7/1/2021,0,0,0,0,0,0,0,0,0,0,1.03_Accelerator Systems (AS),1.03.05_AS Beam Transfer Line (BTL),1.03.05.05_AS Beam Transfer Line Engineering and Design,1.03.05.05.01_Dogleg and Spreader Area Design,AS_DOG_DE_1010_Develop new Documentation - BTL - DOG,Electrical,,SLAC,Labor
96974,1.03,1.03.05,1.03.05.05,1.03.05.05.01,1.03.05.05.01,Dogleg and Spreader Area Design,AS_DOG_DE_1010,Develop new Documentation - BTL - DOG,189.0,8.0,1.2,8.0,01-05-2021,12-10-21,AS_DOG_DE_1000: FS,AS_DOG_DE_1025: FS,SLAC,84.72%,0106.0106_Staff Scientist,0106_Staff Scientist,Labor,189.0d,49.0,238.0,At Completion Units,1/5/2021,7/1/2021,0,0,0,0,0,0,0,0,0,0,1.03_Accelerator Systems (AS),1.03.05_AS Beam Transfer Line (BTL),1.03.05.05_AS Beam Transfer Line Engineering and Design,1.03.05.05.01_Dogleg and Spreader Area Design,AS_DOG_DE_1010_Develop new Documentation - BTL - DOG,Scientist,,SLAC,Labor
96975,1.03,1.03.05,1.03.05.05,1.03.05.05.01,1.03.05.05.01,Dogleg and Spreader Area Design,AS_DOG_DE_1010,Develop new Documentation - BTL - DOG,189.0,40.0,6.1,40.0,01-05-2021,12-10-21,AS_DOG_DE_1000: FS,AS_DOG_DE_1025: FS,SLAC,84.72%,52169.52169_METS Mechanical Engineer,52169_METS Mechanical Engineer,Labor,189.0d,49.0,238.0,At Completion Units,1/5/2021,7/1/2021,0,0,0,0,0,0,0,0,0,0,1.03_Accelerator Systems (AS),1.03.05_AS Beam Transfer Line (BTL),1.03.05.05_AS Beam Transfer Line Engineering and Design,1.03.05.05.01_Dogleg and Spreader Area Design,AS_DOG_DE_1010_Develop new Documentation - BTL - DOG,Mechanical,,SLAC,Labor
96976,1.03,1.03.05,1.03.05.05,1.03.05.05.01,1.03.05.05.01,Dogleg and Spreader Area Design,AS_SPD_DE_1020,Beam line interference evaluation - BTL - SPD,124.0,116.0,0.0,0.0,01-05-2021,06-30-2021,AS_DOG_DE_1000: FS,AS_SPD_DE_1025: FS,SLAC,0%,52169.52169_METS Mechanical Engineer,52169_METS Mechanical Engineer,Labor,124.0d,0.0,124.0,At Completion Units,1/5/2021,7/16/2021,0,0,0,0,0,0,0,0,0,0,1.03_Accelerator Systems (AS),1.03.05_AS Beam Transfer Line (BTL),1.03.05.05_AS Beam Transfer Line Engineering and Design,1.03.05.05.01_Dogleg and Spreader Area Design,AS_SPD_DE_1020_Beam line interference evaluation - BTL - SPD,Mechanical,,SLAC,Labor
96977,1.03,1.03.05,1.03.05.05,1.03.05.05.01,1.03.05.05.01,Dogleg and Spreader Area Design,AS_DOG_DE_1020,Beam line interference evaluation - BTL - DOG,124.0,72.0,0.0,0.0,01-05-2021,06-30-2021,AS_DOG_DE_1000: FS,AS_DOG_DE_1025: FS,SLAC,0%,52169.52169_METS Mechanical Engineer,52169_METS Mechanical Engineer,Labor,124.0d,0.0,124.0,At Completion Units,1/5/2021,7/16/2021,0,0,0,0,0,0,0,0,0,0,1.03_Accelerator Systems (AS),1.03.05_AS Beam Transfer Line (BTL),1.03.05.05_AS Beam Transfer Line Engineering and Design,1.03.05.05.01_Dogleg and Spreader Area Design,AS_DOG_DE_1020_Beam line interference evaluation - BTL - DOG,Mechanical,,SLAC,Labor
96978,1.03,1.03.05,1.03.05.05,1.03.05.05.01,1.03.05.05.01,Dogleg and Spreader Area Design,AS_SPD_DE_1010,Develop new Documentation - BTL - SPD,151.0,16.0,0.0,16.0,01-05-2021,06-24-2021,AS_SPD_DE_1000: FS,AS_SPD_DE_1025: FS,SLAC,100%,52211.52211_EEDOPSE (Electronics & Engineering Div - Ops & PSE),52211_EEDOPSE (Electronics & Engineering Div - Ops & PSE),Labor,120.0d,0.0,120.0,At Completion Units,1/5/2021,6/24/2021,0,0,0,0,0,0,0,0,0,0,1.03_Accelerator Systems (AS),1.03.05_AS Beam Transfer Line (BTL),1.03.05.05_AS Beam Transfer Line Engineering and Design,1.03.05.05.01_Dogleg and Spreader Area Design,AS_SPD_DE_1010_Develop new Documentation - BTL - SPD,Electrical,,SLAC,Labor
96979,1.03,1.03.05,1.03.05.05,1.03.05.05.01,1.03.05.05.01,Dogleg and Spreader Area Design,AS_SPD_DE_1010,Develop new Documentation - BTL - SPD,151.0,20.0,0.0,20.0,01-05-2021,06-24-2021,AS_SPD_DE_1000: FS,AS_SPD_DE_1025: FS,SLAC,100%,52213.52213_EEDHW (Electronics & Engineering Div - HW Engr),52213_EEDHW (Electronics & Engineering Div - HW Engr),Labor,120.0d,0.0,120.0,At Completion Units,1/5/2021,6/24/2021,0,0,0,0,0,0,0,0,0,0,1.03_Accelerator Systems (AS),1.03.05_AS Beam Transfer Line (BTL),1.03.05.05_AS Beam Transfer Line Engineering and Design,1.03.05.05.01_Dogleg and Spreader Area Design,AS_SPD_DE_1010_Develop new Documentation - BTL - SPD,Electrical,,SLAC,Labor
96980,1.03,1.03.05,1.03.05.05,1.03.05.05.01,1.03.05.05.01,Dogleg and Spreader Area Design,AS_SPD_DE_1010,Develop new Documentation - BTL - SPD,151.0,4.0,0.0,4.0,01-05-2021,06-24-2021,AS_SPD_DE_1000: FS,AS_SPD_DE_1025: FS,SLAC,100%,52191.52191_METSMET Metrology,52191_METSMET Metrology,Labor,120.0d,0.0,120.0,At Completion Units,1/5/2021,6/24/2021,0,0,0,0,0,0,0,0,0,0,1.03_Accelerator Systems (AS),1.03.05_AS Beam Transfer Line (BTL),1.03.05.05_AS Beam Transfer Line Engineering and Design,1.03.05.05.01_Dogleg and Spreader Area Design,AS_SPD_DE_1010_Develop new Documentation - BTL - SPD,Metrology,,SLAC,Labor
96981,1.03,1.03.05,1.03.05.05,1.03.05.05.01,1.03.05.05.01,Dogleg and Spreader Area Design,AS_SPD_DE_1010,Develop new Documentation - BTL - SPD,151.0,12.0,0.0,12.0,01-05-2021,06-24-2021,AS_SPD_DE_1000: FS,AS_SPD_DE_1025: FS,SLAC,100%,0106.0106_Staff Scientist,0106_Staff Scientist,Labor,120.0d,0.0,120.0,At Completion Units,1/5/2021,6/24/2021,0,0,0,0,0,0,0,0,0,0,1.03_Accelerator Systems (AS),1.03.05_AS Beam Transfer Line (BTL),1.03.05.05_AS Beam Transfer Line Engineering and Design,1.03.05.05.01_Dogleg and Spreader Area Design,AS_SPD_DE_1010_Develop new Documentation - BTL - SPD,Scientist,,SLAC,Labor
96982,1.03,1.03.05,1.03.05.05,1.03.05.05.01,1.03.05.05.01,Dogleg and Spreader Area Design,AS_SPD_DE_1010,Develop new Documentation - BTL - SPD,151.0,80.0,0.0,80.0,01-05-2021,06-24-2021,AS_SPD_DE_1000: FS,AS_SPD_DE_1025: FS,SLAC,100%,52169.52169_METS Mechanical Engineer,52169_METS Mechanical Engineer,Labor,120.0d,0.0,120.0,At Completion Units,1/5/2021,6/24/2021,0,0,0,0,0,0,0,0,0,0,1.03_Accelerator Systems (AS),1.03.05_AS Beam Transfer Line (BTL),1.03.05.05_AS Beam Transfer Line Engineering and Design,1.03.05.05.01_Dogleg and Spreader Area Design,AS_SPD_DE_1010_Develop new Documentation - BTL - SPD,Mechanical,,SLAC,Labor
96983,1.03,1.03.05,1.03.05.05,1.03.05.05.01,1.03.05.05.01,Dogleg and Spreader Area Design,AS_DOG_DE_1025,Preliminary beam line layout - BTL - DOG,30.0,120.0,120.0,120.0,01-26-22,03-09-22,"AS_DOG_DE_1020: FS, AS_DOG_DE_1010: FS, AS_BTL_DE_1200: FS",AS_DOG_DE_1030: FS,SLAC,0%,52169.52169_METS Mechanical Engineer,52169_METS Mechanical Engineer,Labor,0.0d,30.0,30.0,At Completion Units,nn,,0,0,0,0,0,0,0,0,0,0,1.03_Accelerator Systems (AS),1.03.05_AS Beam Transfer Line (BTL),1.03.05.05_AS Beam Transfer Line Engineering and Design,1.03.05.05.01_Dogleg and Spreader Area Design,AS_DOG_DE_1025_Preliminary beam line layout - BTL - DOG,Mechanical,,SLAC,Labor
96984,1.03,1.03.05,1.03.05.05,1.03.05.05.01,1.03.05.05.01,Dogleg and Spreader Area Design,AS_SPD_DE_1025,Preliminary beam line layout - BTL - SPD,5.0,80.0,80.0,80.0,01-26-22,02-01-22,"AS_SPD_DE_1010: FS, AS_SPD_DE_1020: FS, AS_BTL_DE_1200: FS",AS_SPD_DE_1070: FS,SLAC,0%,52169.52169_METS Mechanical Engineer,52169_METS Mechanical Engineer,Labor,0.0d,5.0,5.0,At Completion Units,nn,,0,0,0,0,0,0,0,0,0,0,1.03_Accelerator Systems (AS),1.03.05_AS Beam Transfer Line (BTL),1.03.05.05_AS Beam Transfer Line Engineering and Design,1.03.05.05.01_Dogleg and Spreader Area Design,AS_SPD_DE_1025_Preliminary beam line layout - BTL - SPD,Mechanical,,SLAC,Labor
96985,1.03,1.03.05,1.03.05.05,1.03.05.05.01,1.03.05.05.01,Dogleg and Spreader Area Design,AS_BTL_DE_1035,Prepare for Final Design Review (FDR) - BTL - DOG,25.0,120.0,120.0,120.0,06-15-22,07-20-22,"AS_DOG_DE_1040: FS, AS_SPD_DE_1040: FS, AS_SPD_DE_1060: FS, AS_SPD_DE_1080: FS",AS_BTL_DE_1040: FS,SLAC,0%,52169.52169_METS Mechanical Engineer,52169_METS Mechanical Engineer,Labor,0.0d,25.0,25.0,At Completion Units,nn,,0,0,0,0,0,0,0,0,0,0,1.03_Accelerator Systems (AS),1.03.05_AS Beam Transfer Line (BTL),1.03.05.05_AS Beam Transfer Line Engineering and Design,1.03.05.05.01_Dogleg and Spreader Area Design,AS_BTL_DE_1035_Prepare for Final Design Review (FDR) - BTL - DOG,Mechanical,,SLAC,Labor
96986,1.03,1.03.05,1.03.05.05,1.03.05.05.01,1.03.05.05.01,Dogleg and Spreader Area Design,AS_BTL_DE_1005,Prepare for Preliminary Design Review (PDR) - BTL - DOG & SPD,15.0,120.0,120.0,120.0,03-23-22,04-12-22,"AS_DOG_DE_1030: FS, AS_SPD_DE_1070: FS",AS_BTL_DE_1010: FS,SLAC,0%,52169.52169_METS Mechanical Engineer,52169_METS Mechanical Engineer,Labor,0.0d,15.0,15.0,At Completion Units,nn,,0,0,0,0,0,0,0,0,0,0,1.03_Accelerator Systems (AS),1.03.05_AS Beam Transfer Line (BTL),1.03.05.05_AS Beam Transfer Line Engineering and Design,1.03.05.05.01_Dogleg and Spreader Area Design,AS_BTL_DE_1005_Prepare for Preliminary Design Review (PDR) - BTL - DOG & SPD,Mechanical,,SLAC,Labor
96987,1.03,1.03.05,1.03.05.05,1.03.05.05.01,1.03.05.05.01,Dogleg and Spreader Area Design,AS_BTL_DE_1020,Respond to Recommendations - PDR - BTL - DOG & SPD,10.0,16.0,16.0,16.0,04-14-22,04-27-22,AS_BTL_DE_1010: FS,AS_BTL_DE_1030: FS,SLAC,0%,52169.52169_METS Mechanical Engineer,52169_METS Mechanical Engineer,Labor,0.0d,10.0,10.0,At Completion Units,8/4/2021,8/18/2021,0,0,0,0,0,0,0,0,0,0,1.03_Accelerator Systems (AS),1.03.05_AS Beam Transfer Line (BTL),1.03.05.05_AS Beam Transfer Line Engineering and Design,1.03.05.05.01_Dogleg and Spreader Area Design,AS_BTL_DE_1020_Respond to Recommendations - PDR - BTL - DOG & SPD,Mechanical,,SLAC,Labor
96988,1.03,1.03.05,1.03.05.05,1.03.05.05.01,1.03.05.05.01,Dogleg and Spreader Area Design,AS_BTL_DE_1050,Respond to Recommendations - FDR - BTL - DOG & SPD,10.0,16.0,16.0,16.0,07-22-22,08-04-22,AS_BTL_DE_1040: FS,AS_BTL_DE_1060: FS,SLAC,0%,52169.52169_METS Mechanical Engineer,52169_METS Mechanical Engineer,Labor,0.0d,10.0,10.0,At Completion Units,11/11/2021,11/29/2021,0,0,0,0,0,0,0,0,0,0,1.03_Accelerator Systems (AS),1.03.05_AS Beam Transfer Line (BTL),1.03.05.05_AS Beam Transfer Line Engineering and Design,1.03.05.05.01_Dogleg and Spreader Area Design,AS_BTL_DE_1050_Respond to Recommendations - FDR - BTL - DOG & SPD,Mechanical,,SLAC,Labor
96989,1.03,1.03.05,1.03.05.05,1.03.05.05.01,1.03.05.05.01,Dogleg and Spreader Area Design,AS_BTL_DE_1040,R_FDR: Final Design Review - BTL - DOG & SPD,1.0,6.0,6.0,6.0,07-21-22,07-21-22,AS_BTL_DE_1035: FS,"AS_BTL_DE_1050: FS, AS_M4_3060: FS",SLAC,0%,52127.52127_Research Electrical & SW Engineer,52127_Research Electrical & SW Engineer,Labor,0.0d,1.0,1.0,At Completion Units,11/10/2021,11/10/2021,DM-A09-30%,0,0,0,0,0,0,0,0,0,1.03_Accelerator Systems (AS),1.03.05_AS Beam Transfer Line (BTL),1.03.05.05_AS Beam Transfer Line Engineering and Design,1.03.05.05.01_Dogleg and Spreader Area Design,AS_BTL_DE_1040_R_FDR: Final Design Review - BTL - DOG & SPD,Electrical,,SLAC,Labor
96990,1.03,1.03.05,1.03.05.05,1.03.05.05.01,1.03.05.05.01,Dogleg and Spreader Area Design,AS_BTL_DE_1040,R_FDR: Final Design Review - BTL - DOG & SPD,1.0,6.0,6.0,6.0,07-21-22,07-21-22,AS_BTL_DE_1035: FS,"AS_BTL_DE_1050: FS, AS_M4_3060: FS",SLAC,0%,52211.52211_EEDOPSE (Electronics & Engineering Div - Ops & PSE),52211_EEDOPSE (Electronics & Engineering Div - Ops & PSE),Labor,0.0d,1.0,1.0,At Completion Units,11/10/2021,11/10/2021,DM-A09-30%,0,0,0,0,0,0,0,0,0,1.03_Accelerator Systems (AS),1.03.05_AS Beam Transfer Line (BTL),1.03.05.05_AS Beam Transfer Line Engineering and Design,1.03.05.05.01_Dogleg and Spreader Area Design,AS_BTL_DE_1040_R_FDR: Final Design Review - BTL - DOG & SPD,Electrical,,SLAC,Labor
96991,1.03,1.03.05,1.03.05.05,1.03.05.05.01,1.03.05.05.01,Dogleg and Spreader Area Design,AS_BTL_DE_1040,R_FDR: Final Design Review - BTL - DOG & SPD,1.0,6.0,6.0,6.0,07-21-22,07-21-22,AS_BTL_DE_1035: FS,"AS_BTL_DE_1050: FS, AS_M4_3060: FS",SLAC,0%,52213.52213_EEDHW (Electronics & Engineering Div - HW Engr),52213_EEDHW (Electronics & Engineering Div - HW Engr),Labor,0.0d,1.0,1.0,At Completion Units,11/10/2021,11/10/2021,DM-A09-30%,0,0,0,0,0,0,0,0,0,1.03_Accelerator Systems (AS),1.03.05_AS Beam Transfer Line (BTL),1.03.05.05_AS Beam Transfer Line Engineering and Design,1.03.05.05.01_Dogleg and Spreader Area Design,AS_BTL_DE_1040_R_FDR: Final Design Review - BTL - DOG & SPD,Electrical,,SLAC,Labor
96992,1.03,1.03.05,1.03.05.05,1.03.05.05.01,1.03.05.05.01,Dogleg and Spreader Area Design,AS_BTL_DE_1040,R_FDR: Final Design Review - BTL - DOG & SPD,1.0,6.0,6.0,6.0,07-21-22,07-21-22,AS_BTL_DE_1035: FS,"AS_BTL_DE_1050: FS, AS_M4_3060: FS",SLAC,0%,0106.0106_Staff Scientist,0106_Staff Scientist,Labor,0.0d,1.0,1.0,At Completion Units,11/10/2021,11/10/2021,DM-A09-30%,0,0,0,0,0,0,0,0,0,1.03_Accelerator Systems (AS),1.03.05_AS Beam Transfer Line (BTL),1.03.05.05_AS Beam Transfer Line Engineering and Design,1.03.05.05.01_Dogleg and Spreader Area Design,AS_BTL_DE_1040_R_FDR: Final Design Review - BTL - DOG & SPD,Scientist,,SLAC,Labor
96993,1.03,1.03.05,1.03.05.05,1.03.05.05.01,1.03.05.05.01,Dogleg and Spreader Area Design,AS_BTL_DE_1040,R_FDR: Final Design Review - BTL - DOG & SPD,1.0,8.0,8.0,8.0,07-21-22,07-21-22,AS_BTL_DE_1035: FS,"AS_BTL_DE_1050: FS, AS_M4_3060: FS",SLAC,0%,52169.52169_METS Mechanical Engineer,52169_METS Mechanical Engineer,Labor,0.0d,1.0,1.0,At Completion Units,11/10/2021,11/10/2021,DM-A09-30%,0,0,0,0,0,0,0,0,0,1.03_Accelerator Systems (AS),1.03.05_AS Beam Transfer Line (BTL),1.03.05.05_AS Beam Transfer Line Engineering and Design,1.03.05.05.01_Dogleg and Spreader Area Design,AS_BTL_DE_1040_R_FDR: Final Design Review - BTL - DOG & SPD,Mechanical,,SLAC,Labor
96994,1.03,1.03.05,1.03.05.05,1.03.05.05.01,1.03.05.05.01,Dogleg and Spreader Area Design,AS_BTL_DE_1010,R_PDR: Prelim. Design Review - BTL - DOG & SPD,1.0,6.0,6.0,6.0,04-13-22,04-13-22,AS_BTL_DE_1005: FS,AS_BTL_DE_1020: FS,SLAC,0%,52127.52127_Research Electrical & SW Engineer,52127_Research Electrical & SW Engineer,Labor,0.0d,1.0,1.0,At Completion Units,8/3/2021,8/3/2021,DM-A08-60%,0,0,0,0,0,0,0,0,0,1.03_Accelerator Systems (AS),1.03.05_AS Beam Transfer Line (BTL),1.03.05.05_AS Beam Transfer Line Engineering and Design,1.03.05.05.01_Dogleg and Spreader Area Design,AS_BTL_DE_1010_R_PDR: Prelim. Design Review - BTL - DOG & SPD,Electrical,,SLAC,Labor
96995,1.03,1.03.05,1.03.05.05,1.03.05.05.01,1.03.05.05.01,Dogleg and Spreader Area Design,AS_BTL_DE_1010,R_PDR: Prelim. Design Review - BTL - DOG & SPD,1.0,6.0,6.0,6.0,04-13-22,04-13-22,AS_BTL_DE_1005: FS,AS_BTL_DE_1020: FS,SLAC,0%,52211.52211_EEDOPSE (Electronics & Engineering Div - Ops & PSE),52211_EEDOPSE (Electronics & Engineering Div - Ops & PSE),Labor,0.0d,1.0,1.0,At Completion Units,8/3/2021,8/3/2021,DM-A08-60%,0,0,0,0,0,0,0,0,0,1.03_Accelerator Systems (AS),1.03.05_AS Beam Transfer Line (BTL),1.03.05.05_AS Beam Transfer Line Engineering and Design,1.03.05.05.01_Dogleg and Spreader Area Design,AS_BTL_DE_1010_R_PDR: Prelim. Design Review - BTL - DOG & SPD,Electrical,,SLAC,Labor
96996,1.03,1.03.05,1.03.05.05,1.03.05.05.01,1.03.05.05.01,Dogleg and Spreader Area Design,AS_BTL_DE_1010,R_PDR: Prelim. Design Review - BTL - DOG & SPD,1.0,6.0,6.0,6.0,04-13-22,04-13-22,AS_BTL_DE_1005: FS,AS_BTL_DE_1020: FS,SLAC,0%,52213.52213_EEDHW (Electronics & Engineering Div - HW Engr),52213_EEDHW (Electronics & Engineering Div - HW Engr),Labor,0.0d,1.0,1.0,At Completion Units,8/3/2021,8/3/2021,DM-A08-60%,0,0,0,0,0,0,0,0,0,1.03_Accelerator Systems (AS),1.03.05_AS Beam Transfer Line (BTL),1.03.05.05_AS Beam Transfer Line Engineering and Design,1.03.05.05.01_Dogleg and Spreader Area Design,AS_BTL_DE_1010_R_PDR: Prelim. Design Review - BTL - DOG & SPD,Electrical,,SLAC,Labor
96997,1.03,1.03.05,1.03.05.05,1.03.05.05.01,1.03.05.05.01,Dogleg and Spreader Area Design,AS_BTL_DE_1010,R_PDR: Prelim. Design Review - BTL - DOG & SPD,1.0,6.0,6.0,6.0,04-13-22,04-13-22,AS_BTL_DE_1005: FS,AS_BTL_DE_1020: FS,SLAC,0%,0106.0106_Staff Scientist,0106_Staff Scientist,Labor,0.0d,1.0,1.0,At Completion Units,8/3/2021,8/3/2021,DM-A08-60%,0,0,0,0,0,0,0,0,0,1.03_Accelerator Systems (AS),1.03.05_AS Beam Transfer Line (BTL),1.03.05.05_AS Beam Transfer Line Engineering and Design,1.03.05.05.01_Dogleg and Spreader Area Design,AS_BTL_DE_1010_R_PDR: Prelim. Design Review - BTL - DOG & SPD,Scientist,,SLAC,Labor
96998,1.03,1.03.05,1.03.05.05,1.03.05.05.01,1.03.05.05.01,Dogleg and Spreader Area Design,AS_BTL_DE_1010,R_PDR: Prelim. Design Review - BTL - DOG & SPD,1.0,8.0,8.0,8.0,04-13-22,04-13-22,AS_BTL_DE_1005: FS,AS_BTL_DE_1020: FS,SLAC,0%,52169.52169_METS Mechanical Engineer,52169_METS Mechanical Engineer,Labor,0.0d,1.0,1.0,At Completion Units,8/3/2021,8/3/2021,DM-A08-60%,0,0,0,0,0,0,0,0,0,1.03_Accelerator Systems (AS),1.03.05_AS Beam Transfer Line (BTL),1.03.05.05_AS Beam Transfer Line Engineering and Design,1.03.05.05.01_Dogleg and Spreader Area Design,AS_BTL_DE_1010_R_PDR: Prelim. Design Review - BTL - DOG & SPD,Mechanical,,SLAC,Labor
96999,1.03,1.03.05,1.03.05.05,1.03.05.05.01,1.03.05.05.01,Dogleg and Spreader Area Design,AS_SPD_DE_1080,Final beam layout and drawings - BTL - SPD,15.0,4.0,4.0,4.0,05-24-22,06-14-22,"AS_SPD_DE_1050: FS, AS_SPD_DE_1030: FS",AS_BTL_DE_1035: FS,SLAC,0%,0106.0106_Staff Scientist,0106_Staff Scientist,Labor,0.0d,15.0,15.0,At Completion Units,9/15/2021,10/5/2021,0,0,0,0,0,0,0,0,0,0,1.03_Accelerator Systems (AS),1.03.05_AS Beam Transfer Line (BTL),1.03.05.05_AS Beam Transfer Line Engineering and Design,1.03.05.05.01_Dogleg and Spreader Area Design,AS_SPD_DE_1080_Final beam layout and drawings - BTL - SPD,Scientist,,SLAC,Labor
97000,1.03,1.03.05,1.03.05.05,1.03.05.05.01,1.03.05.05.01,Dogleg and Spreader Area Design,AS_SPD_DE_1080,Final beam layout and drawings - BTL - SPD,15.0,24.0,24.0,24.0,05-24-22,06-14-22,"AS_SPD_DE_1050: FS, AS_SPD_DE_1030: FS",AS_BTL_DE_1035: FS,SLAC,0%,52168.52168_METS - Mechanical Design,52168_METS - Mechanical Design,Labor,0.0d,15.0,15.0,At Completion Units,9/15/2021,10/5/2021,0,0,0,0,0,0,0,0,0,0,1.03_Accelerator Systems (AS),1.03.05_AS Beam Transfer Line (BTL),1.03.05.05_AS Beam Transfer Line Engineering and Design,1.03.05.05.01_Dogleg and Spreader Area Design,AS_SPD_DE_1080_Final beam layout and drawings - BTL - SPD,Mechanical,,SLAC,Labor
97001,1.03,1.03.05,1.03.05.05,1.03.05.05.01,1.03.05.05.01,Dogleg and Spreader Area Design,AS_SPD_DE_1080,Final beam layout and drawings - BTL - SPD,15.0,120.0,120.0,120.0,05-24-22,06-14-22,"AS_SPD_DE_1050: FS, AS_SPD_DE_1030: FS",AS_BTL_DE_1035: FS,SLAC,0%,52169.52169_METS Mechanical Engineer,52169_METS Mechanical Engineer,Labor,0.0d,15.0,15.0,At Completion Units,9/15/2021,10/5/2021,0,0,0,0,0,0,0,0,0,0,1.03_Accelerator Systems (AS),1.03.05_AS Beam Transfer Line (BTL),1.03.05.05_AS Beam Transfer Line Engineering and Design,1.03.05.05.01_Dogleg and Spreader Area Design,AS_SPD_DE_1080_Final beam layout and drawings - BTL - SPD,Mechanical,,SLAC,Labor
97002,1.03,1.03.05,1.03.05.05,1.03.05.05.01,1.03.05.05.01,Dogleg and Spreader Area Design,AS_SPD_DE_1070,Vacuum analysis - BTL - SPD,10.0,4.0,4.0,4.0,02-02-22,02-15-22,AS_SPD_DE_1025: FS,AS_BTL_DE_1005: FS,SLAC,0%,52213.52213_EEDHW (Electronics & Engineering Div - HW Engr),52213_EEDHW (Electronics & Engineering Div - HW Engr),Labor,0.0d,10.0,10.0,At Completion Units,8/19/2021,9/1/2021,0,0,0,0,0,0,0,0,0,0,1.03_Accelerator Systems (AS),1.03.05_AS Beam Transfer Line (BTL),1.03.05.05_AS Beam Transfer Line Engineering and Design,1.03.05.05.01_Dogleg and Spreader Area Design,AS_SPD_DE_1070_Vacuum analysis - BTL - SPD,Electrical,,SLAC,Labor
97003,1.03,1.03.05,1.03.05.05,1.03.05.05.01,1.03.05.05.01,Dogleg and Spreader Area Design,AS_SPD_DE_1070,Vacuum analysis - BTL - SPD,10.0,4.0,4.0,4.0,02-02-22,02-15-22,AS_SPD_DE_1025: FS,AS_BTL_DE_1005: FS,SLAC,0%,0106.0106_Staff Scientist,0106_Staff Scientist,Labor,0.0d,10.0,10.0,At Completion Units,8/19/2021,9/1/2021,0,0,0,0,0,0,0,0,0,0,1.03_Accelerator Systems (AS),1.03.05_AS Beam Transfer Line (BTL),1.03.05.05_AS Beam Transfer Line Engineering and Design,1.03.05.05.01_Dogleg and Spreader Area Design,AS_SPD_DE_1070_Vacuum analysis - BTL - SPD,Scientist,,SLAC,Labor
97004,1.03,1.03.05,1.03.05.05,1.03.05.05.01,1.03.05.05.01,Dogleg and Spreader Area Design,AS_SPD_DE_1070,Vacuum analysis - BTL - SPD,10.0,32.0,32.0,32.0,02-02-22,02-15-22,AS_SPD_DE_1025: FS,AS_BTL_DE_1005: FS,SLAC,0%,52169.52169_METS Mechanical Engineer,52169_METS Mechanical Engineer,Labor,0.0d,10.0,10.0,At Completion Units,8/19/2021,9/1/2021,0,0,0,0,0,0,0,0,0,0,1.03_Accelerator Systems (AS),1.03.05_AS Beam Transfer Line (BTL),1.03.05.05_AS Beam Transfer Line Engineering and Design,1.03.05.05.01_Dogleg and Spreader Area Design,AS_SPD_DE_1070_Vacuum analysis - BTL - SPD,Mechanical,,SLAC,Labor
97005,1.03,1.03.05,1.03.05.05,1.03.05.05.01,1.03.05.05.01,Dogleg and Spreader Area Design,AS_SPD_DE_1060,Vacuum drift / component drawings - BTL- SPD,15.0,90.0,90.0,90.0,05-24-22,06-14-22,AS_SPD_DE_1050: FS,AS_BTL_DE_1035: FS,SLAC,0%,52169.52169_METS Mechanical Engineer,52169_METS Mechanical Engineer,Labor,0.0d,15.0,15.0,At Completion Units,9/15/2021,10/5/2021,0,0,0,0,0,0,0,0,0,0,1.03_Accelerator Systems (AS),1.03.05_AS Beam Transfer Line (BTL),1.03.05.05_AS Beam Transfer Line Engineering and Design,1.03.05.05.01_Dogleg and Spreader Area Design,AS_SPD_DE_1060_Vacuum drift / component drawings - BTL- SPD,Mechanical,,SLAC,Labor
97006,1.03,1.03.05,1.03.05.05,1.03.05.05.01,1.03.05.05.01,Dogleg and Spreader Area Design,AS_SPD_DE_1050,Vacuum drift / component design - BTL - SPD,18.0,90.0,90.0,90.0,04-28-22,05-23-22,AS_BTL_DE_1030: FS,"AS_SPD_DE_1060: FS, AS_SPD_DE_1080: FS",SLAC,0%,52169.52169_METS Mechanical Engineer,52169_METS Mechanical Engineer,Labor,0.0d,18.0,18.0,At Completion Units,8/19/2021,9/14/2021,0,0,0,0,0,0,0,0,0,0,1.03_Accelerator Systems (AS),1.03.05_AS Beam Transfer Line (BTL),1.03.05.05_AS Beam Transfer Line Engineering and Design,1.03.05.05.01_Dogleg and Spreader Area Design,AS_SPD_DE_1050_Vacuum drift / component design - BTL - SPD,Mechanical,,SLAC,Labor
97007,1.03,1.03.05,1.03.05.05,1.03.05.05.01,1.03.05.05.01,Dogleg and Spreader Area Design,AS_SPD_DE_1040,1.378K35 magnet drawings - BTL- SPD,20.0,8.0,8.0,8.0,03-10-22,04-06-22,AS_SPD_DE_1030: FS,AS_BTL_DE_1035: FS,SLAC,0%,52198.52198_METSMANF (METSD Manufacturing),52198_METSMANF (METSD Manufacturing),Labor,0.0d,20.0,20.0,At Completion Units,8/9/2021,9/3/2021,0,0,0,0,0,0,0,0,0,0,1.03_Accelerator Systems (AS),1.03.05_AS Beam Transfer Line (BTL),1.03.05.05_AS Beam Transfer Line Engineering and Design,1.03.05.05.01_Dogleg and Spreader Area Design,AS_SPD_DE_1040_1.378K35 magnet drawings - BTL- SPD,Manufacturing,,SLAC,Labor
97008,1.03,1.03.05,1.03.05.05,1.03.05.05.01,1.03.05.05.01,Dogleg and Spreader Area Design,AS_SPD_DE_1040,1.378K35 magnet drawings - BTL- SPD,20.0,16.0,16.0,16.0,03-10-22,04-06-22,AS_SPD_DE_1030: FS,AS_BTL_DE_1035: FS,SLAC,0%,52211.52211_EEDOPSE (Electronics & Engineering Div - Ops & PSE),52211_EEDOPSE (Electronics & Engineering Div - Ops & PSE),Labor,0.0d,20.0,20.0,At Completion Units,8/9/2021,9/3/2021,0,0,0,0,0,0,0,0,0,0,1.03_Accelerator Systems (AS),1.03.05_AS Beam Transfer Line (BTL),1.03.05.05_AS Beam Transfer Line Engineering and Design,1.03.05.05.01_Dogleg and Spreader Area Design,AS_SPD_DE_1040_1.378K35 magnet drawings - BTL- SPD,Electrical,,SLAC,Labor
97009,1.03,1.03.05,1.03.05.05,1.03.05.05.01,1.03.05.05.01,Dogleg and Spreader Area Design,AS_SPD_DE_1040,1.378K35 magnet drawings - BTL- SPD,20.0,40.0,40.0,40.0,03-10-22,04-06-22,AS_SPD_DE_1030: FS,AS_BTL_DE_1035: FS,SLAC,0%,52168.52168_METS - Mechanical Design,52168_METS - Mechanical Design,Labor,0.0d,20.0,20.0,At Completion Units,8/9/2021,9/3/2021,0,0,0,0,0,0,0,0,0,0,1.03_Accelerator Systems (AS),1.03.05_AS Beam Transfer Line (BTL),1.03.05.05_AS Beam Transfer Line Engineering and Design,1.03.05.05.01_Dogleg and Spreader Area Design,AS_SPD_DE_1040_1.378K35 magnet drawings - BTL- SPD,Mechanical,,SLAC,Labor
97010,1.03,1.03.05,1.03.05.05,1.03.05.05.01,1.03.05.05.01,Dogleg and Spreader Area Design,AS_SPD_DE_1040,1.378K35 magnet drawings - BTL- SPD,20.0,20.0,20.0,20.0,03-10-22,04-06-22,AS_SPD_DE_1030: FS,AS_BTL_DE_1035: FS,SLAC,0%,52169.52169_METS Mechanical Engineer,52169_METS Mechanical Engineer,Labor,0.0d,20.0,20.0,At Completion Units,8/9/2021,9/3/2021,0,0,0,0,0,0,0,0,0,0,1.03_Accelerator Systems (AS),1.03.05_AS Beam Transfer Line (BTL),1.03.05.05_AS Beam Transfer Line Engineering and Design,1.03.05.05.01_Dogleg and Spreader Area Design,AS_SPD_DE_1040_1.378K35 magnet drawings - BTL- SPD,Mechanical,,SLAC,Labor
97011,1.03,1.03.05,1.03.05.05,1.03.05.05.01,1.03.05.05.01,Dogleg and Spreader Area Design,AS_SPD_DE_1030,1.378K35 magnet design - BTL - SPD,30.0,16.0,16.0,16.0,01-26-22,03-09-22,"AS_SPD_DE_1029: FS, AS_BTL_DE_1200: FS","AS_SPD_DE_1040: FS, AS_SPD_DE_1080: FS",SLAC,0%,52198.52198_METSMANF (METSD Manufacturing),52198_METSMANF (METSD Manufacturing),Labor,0.0d,30.0,30.0,At Completion Units,6/25/2021,8/6/2021,0,0,0,0,0,0,0,0,0,0,1.03_Accelerator Systems (AS),1.03.05_AS Beam Transfer Line (BTL),1.03.05.05_AS Beam Transfer Line Engineering and Design,1.03.05.05.01_Dogleg and Spreader Area Design,AS_SPD_DE_1030_1.378K35 magnet design - BTL - SPD,Manufacturing,,SLAC,Labor
97012,1.03,1.03.05,1.03.05.05,1.03.05.05.01,1.03.05.05.01,Dogleg and Spreader Area Design,AS_SPD_DE_1030,1.378K35 magnet design - BTL - SPD,30.0,120.0,120.0,120.0,01-26-22,03-09-22,"AS_SPD_DE_1029: FS, AS_BTL_DE_1200: FS","AS_SPD_DE_1040: FS, AS_SPD_DE_1080: FS",SLAC,0%,52211.52211_EEDOPSE (Electronics & Engineering Div - Ops & PSE),52211_EEDOPSE (Electronics & Engineering Div - Ops & PSE),Labor,0.0d,30.0,30.0,At Completion Units,6/25/2021,8/6/2021,0,0,0,0,0,0,0,0,0,0,1.03_Accelerator Systems (AS),1.03.05_AS Beam Transfer Line (BTL),1.03.05.05_AS Beam Transfer Line Engineering and Design,1.03.05.05.01_Dogleg and Spreader Area Design,AS_SPD_DE_1030_1.378K35 magnet design - BTL - SPD,Electrical,,SLAC,Labor
97013,1.03,1.03.05,1.03.05.05,1.03.05.05.01,1.03.05.05.01,Dogleg and Spreader Area Design,AS_SPD_DE_1030,1.378K35 magnet design - BTL - SPD,30.0,0.0,0.0,0.0,01-26-22,03-09-22,"AS_SPD_DE_1029: FS, AS_BTL_DE_1200: FS","AS_SPD_DE_1040: FS, AS_SPD_DE_1080: FS",SLAC,0%,52213.52213_EEDHW (Electronics & Engineering Div - HW Engr),52213_EEDHW (Electronics & Engineering Div - HW Engr),Labor,0.0d,30.0,30.0,At Completion Units,6/25/2021,8/6/2021,0,0,0,0,0,0,0,0,0,0,1.03_Accelerator Systems (AS),1.03.05_AS Beam Transfer Line (BTL),1.03.05.05_AS Beam Transfer Line Engineering and Design,1.03.05.05.01_Dogleg and Spreader Area Design,AS_SPD_DE_1030_1.378K35 magnet design - BTL - SPD,Electrical,,SLAC,Labor
97014,1.03,1.03.05,1.03.05.05,1.03.05.05.01,1.03.05.05.01,Dogleg and Spreader Area Design,AS_DOG_DE_1040,Final beam layout and drawings - BTL - DOG,10.0,104.0,104.0,104.0,04-28-22,05-11-22,AS_BTL_DE_1030: FS,AS_BTL_DE_1035: FS,SLAC,0%,52169.52169_METS Mechanical Engineer,52169_METS Mechanical Engineer,Labor,0.0d,10.0,10.0,At Completion Units,8/19/2021,9/1/2021,0,0,0,0,0,0,0,0,0,0,1.03_Accelerator Systems (AS),1.03.05_AS Beam Transfer Line (BTL),1.03.05.05_AS Beam Transfer Line Engineering and Design,1.03.05.05.01_Dogleg and Spreader Area Design,AS_DOG_DE_1040_Final beam layout and drawings - BTL - DOG,Mechanical,,SLAC,Labor
97015,1.03,1.03.05,1.03.05.05,1.03.05.05.01,1.03.05.05.01,Dogleg and Spreader Area Design,AS_DOG_DE_1030,Vacuum analysis - BTL - DOG,9.0,4.0,4.0,4.0,03-10-22,03-22-22,AS_DOG_DE_1025: FS,AS_BTL_DE_1005: FS,SLAC,0%,52213.52213_EEDHW (Electronics & Engineering Div - HW Engr),52213_EEDHW (Electronics & Engineering Div - HW Engr),Labor,0.0d,9.0,9.0,At Completion Units,8/19/2021,8/31/2021,0,0,0,0,0,0,0,0,0,0,1.03_Accelerator Systems (AS),1.03.05_AS Beam Transfer Line (BTL),1.03.05.05_AS Beam Transfer Line Engineering and Design,1.03.05.05.01_Dogleg and Spreader Area Design,AS_DOG_DE_1030_Vacuum analysis - BTL - DOG,Electrical,,SLAC,Labor
97016,1.03,1.03.05,1.03.05.05,1.03.05.05.01,1.03.05.05.01,Dogleg and Spreader Area Design,AS_DOG_DE_1030,Vacuum analysis - BTL - DOG,9.0,4.0,4.0,4.0,03-10-22,03-22-22,AS_DOG_DE_1025: FS,AS_BTL_DE_1005: FS,SLAC,0%,0106.0106_Staff Scientist,0106_Staff Scientist,Labor,0.0d,9.0,9.0,At Completion Units,8/19/2021,8/31/2021,0,0,0,0,0,0,0,0,0,0,1.03_Accelerator Systems (AS),1.03.05_AS Beam Transfer Line (BTL),1.03.05.05_AS Beam Transfer Line Engineering and Design,1.03.05.05.01_Dogleg and Spreader Area Design,AS_DOG_DE_1030_Vacuum analysis - BTL - DOG,Scientist,,SLAC,Labor
97017,1.03,1.03.05,1.03.05.05,1.03.05.05.01,1.03.05.05.01,Dogleg and Spreader Area Design,AS_DOG_DE_1030,Vacuum analysis - BTL - DOG,9.0,32.0,32.0,32.0,03-10-22,03-22-22,AS_DOG_DE_1025: FS,AS_BTL_DE_1005: FS,SLAC,0%,52169.52169_METS Mechanical Engineer,52169_METS Mechanical Engineer,Labor,0.0d,9.0,9.0,At Completion Units,8/19/2021,8/31/2021,0,0,0,0,0,0,0,0,0,0,1.03_Accelerator Systems (AS),1.03.05_AS Beam Transfer Line (BTL),1.03.05.05_AS Beam Transfer Line Engineering and Design,1.03.05.05.01_Dogleg and Spreader Area Design,AS_DOG_DE_1030_Vacuum analysis - BTL - DOG,Mechanical,,SLAC,Labor
97337,1.03,1.03.05,1.03.05.05,1.03.05.05.02,1.03.05.05.02,BSY and EBD Area Design,AS_BSY_DE_1010,Develop Documentation - BTL - BSY,238.0,8.0,4.0,8.0,01-05-2021,12-10-21,AS_BSY_DE_1000: FS,AS_BSY_DE_1030: FS,SLAC,50%,52211.52211_EEDOPSE (Electronics & Engineering Div - Ops & PSE),52211_EEDOPSE (Electronics & Engineering Div - Ops & PSE),Labor,189.0d,49.0,238.0,At Completion Units,1/5/2021,6/16/2021,0,0,0,0,0,0,0,0,0,0,1.03_Accelerator Systems (AS),1.03.05_AS Beam Transfer Line (BTL),1.03.05.05_AS Beam Transfer Line Engineering and Design,1.03.05.05.02_BSY and EBD Area Design,AS_BSY_DE_1010_Develop Documentation - BTL - BSY,Electrical,,SLAC,Labor
97338,1.03,1.03.05,1.03.05.05,1.03.05.05.02,1.03.05.05.02,BSY and EBD Area Design,AS_BSY_DE_1010,Develop Documentation - BTL - BSY,238.0,16.0,8.0,16.0,01-05-2021,12-10-21,AS_BSY_DE_1000: FS,AS_BSY_DE_1030: FS,SLAC,50%,52213.52213_EEDHW (Electronics & Engineering Div - HW Engr),52213_EEDHW (Electronics & Engineering Div - HW Engr),Labor,189.0d,49.0,238.0,At Completion Units,1/5/2021,6/16/2021,0,0,0,0,0,0,0,0,0,0,1.03_Accelerator Systems (AS),1.03.05_AS Beam Transfer Line (BTL),1.03.05.05_AS Beam Transfer Line Engineering and Design,1.03.05.05.02_BSY and EBD Area Design,AS_BSY_DE_1010_Develop Documentation - BTL - BSY,Electrical,,SLAC,Labor
97339,1.03,1.03.05,1.03.05.05,1.03.05.05.02,1.03.05.05.02,BSY and EBD Area Design,AS_BSY_DE_1010,Develop Documentation - BTL - BSY,238.0,12.0,6.0,12.0,01-05-2021,12-10-21,AS_BSY_DE_1000: FS,AS_BSY_DE_1030: FS,SLAC,50%,0106.0106_Staff Scientist,0106_Staff Scientist,Labor,189.0d,49.0,238.0,At Completion Units,1/5/2021,6/16/2021,0,0,0,0,0,0,0,0,0,0,1.03_Accelerator Systems (AS),1.03.05_AS Beam Transfer Line (BTL),1.03.05.05_AS Beam Transfer Line Engineering and Design,1.03.05.05.02_BSY and EBD Area Design,AS_BSY_DE_1010_Develop Documentation - BTL - BSY,Scientist,,SLAC,Labor
97340,1.03,1.03.05,1.03.05.05,1.03.05.05.02,1.03.05.05.02,BSY and EBD Area Design,AS_BSY_DE_1010,Develop Documentation - BTL - BSY,238.0,40.0,20.0,40.0,01-05-2021,10-18-21,AS_BSY_DE_1000: FS,AS_BSY_DE_1030: FS,SLAC,50%,52169.52169_METS Mechanical Engineer,52169_METS Mechanical Engineer,Labor,189.0d,12.0,201.0,At Completion Units,1/5/2021,6/16/2021,0,0,0,0,0,0,0,0,0,0,1.03_Accelerator Systems (AS),1.03.05_AS Beam Transfer Line (BTL),1.03.05.05_AS Beam Transfer Line Engineering and Design,1.03.05.05.02_BSY and EBD Area Design,AS_BSY_DE_1010_Develop Documentation - BTL - BSY,Mechanical,,SLAC,Labor
97341,1.03,1.03.05,1.03.05.05,1.03.05.05.02,1.03.05.05.02,BSY and EBD Area Design,AS_RAS_DE_1020,Develop Preliminary Design - Rastering Magnet - BTL - RAS,111.0,166.0,120.0,120.0,07-06-2021,12-10-21,AS_RAS_DE_2030: FS,"AS_RAS_DE_2100: FS, AS_EBD_MANF_1000: FS",SLAC,0%,52191.52191_METSMET Metrology,52191_METSMET Metrology,Labor,62.0d,49.0,111.0,At Completion Units,nn,,0,0,0,0,0,0,0,0,0,0,1.03_Accelerator Systems (AS),1.03.05_AS Beam Transfer Line (BTL),1.03.05.05_AS Beam Transfer Line Engineering and Design,1.03.05.05.02_BSY and EBD Area Design,AS_RAS_DE_1020_Develop Preliminary Design - Rastering Magnet - BTL - RAS,Metrology,,SLAC,Labor
97342,1.03,1.03.05,1.03.05.05,1.03.05.05.02,1.03.05.05.02,BSY and EBD Area Design,AS_RAS_DE_1020,Develop Preliminary Design - Rastering Magnet - BTL - RAS,111.0,108.0,80.0,80.0,07-06-2021,12-10-21,AS_RAS_DE_2030: FS,"AS_RAS_DE_2100: FS, AS_EBD_MANF_1000: FS",SLAC,0%,52211.52211_EEDOPSE (Electronics & Engineering Div - Ops & PSE),52211_EEDOPSE (Electronics & Engineering Div - Ops & PSE),Labor,62.0d,49.0,111.0,At Completion Units,nn,,0,0,0,0,0,0,0,0,0,0,1.03_Accelerator Systems (AS),1.03.05_AS Beam Transfer Line (BTL),1.03.05.05_AS Beam Transfer Line Engineering and Design,1.03.05.05.02_BSY and EBD Area Design,AS_RAS_DE_1020_Develop Preliminary Design - Rastering Magnet - BTL - RAS,Electrical,,SLAC,Labor
97343,1.03,1.03.05,1.03.05.05,1.03.05.05.02,1.03.05.05.02,BSY and EBD Area Design,AS_RAS_DE_1020,Develop Preliminary Design - Rastering Magnet - BTL - RAS,111.0,55.0,40.0,40.0,07-06-2021,12-10-21,AS_RAS_DE_2030: FS,"AS_RAS_DE_2100: FS, AS_EBD_MANF_1000: FS",SLAC,0%,52168.52168_METS - Mechanical Design,52168_METS - Mechanical Design,Labor,62.0d,49.0,111.0,At Completion Units,nn,,0,0,0,0,0,0,0,0,0,0,1.03_Accelerator Systems (AS),1.03.05_AS Beam Transfer Line (BTL),1.03.05.05_AS Beam Transfer Line Engineering and Design,1.03.05.05.02_BSY and EBD Area Design,AS_RAS_DE_1020_Develop Preliminary Design - Rastering Magnet - BTL - RAS,Mechanical,,SLAC,Labor
97344,1.03,1.03.05,1.03.05.05,1.03.05.05.02,1.03.05.05.02,BSY and EBD Area Design,AS_RAS_DE_1020,Develop Preliminary Design - Rastering Magnet - BTL - RAS,111.0,83.0,60.0,60.0,07-06-2021,12-10-21,AS_RAS_DE_2030: FS,"AS_RAS_DE_2100: FS, AS_EBD_MANF_1000: FS",SLAC,0%,52169.52169_METS Mechanical Engineer,52169_METS Mechanical Engineer,Labor,62.0d,49.0,111.0,At Completion Units,nn,,0,0,0,0,0,0,0,0,0,0,1.03_Accelerator Systems (AS),1.03.05_AS Beam Transfer Line (BTL),1.03.05.05_AS Beam Transfer Line Engineering and Design,1.03.05.05.02_BSY and EBD Area Design,AS_RAS_DE_1020_Develop Preliminary Design - Rastering Magnet - BTL - RAS,Mechanical,,SLAC,Labor
97345,1.03,1.03.05,1.03.05.05,1.03.05.05.02,1.03.05.05.02,BSY and EBD Area Design,AS_RAS_DE_1000,Evaluate Rastering Magnets - BTL - RAS,55.0,40.0,0.0,32.0,04-02-2021,06-02-2021,AS_EBD_DE_1000: FS,AS_RAS_DE_2000: FS,SLAC,100%,52211.52211_EEDOPSE (Electronics & Engineering Div - Ops & PSE),52211_EEDOPSE (Electronics & Engineering Div - Ops & PSE),Labor,42.0d,0.0,42.0,At Completion Units,nn,,0,0,0,0,0,0,0,0,0,0,1.03_Accelerator Systems (AS),1.03.05_AS Beam Transfer Line (BTL),1.03.05.05_AS Beam Transfer Line Engineering and Design,1.03.05.05.02_BSY and EBD Area Design,AS_RAS_DE_1000_Evaluate Rastering Magnets - BTL - RAS,Electrical,,SLAC,Labor
97346,1.03,1.03.05,1.03.05.05,1.03.05.05.02,1.03.05.05.02,BSY and EBD Area Design,AS_RAS_DE_1000,Evaluate Rastering Magnets - BTL - RAS,55.0,24.0,0.0,32.0,04-02-2021,06-02-2021,AS_EBD_DE_1000: FS,AS_RAS_DE_2000: FS,SLAC,100%,0106.0106_Staff Scientist,0106_Staff Scientist,Labor,42.0d,0.0,42.0,At Completion Units,nn,,0,0,0,0,0,0,0,0,0,0,1.03_Accelerator Systems (AS),1.03.05_AS Beam Transfer Line (BTL),1.03.05.05_AS Beam Transfer Line Engineering and Design,1.03.05.05.02_BSY and EBD Area Design,AS_RAS_DE_1000_Evaluate Rastering Magnets - BTL - RAS,Scientist,,SLAC,Labor
97347,1.03,1.03.05,1.03.05.05,1.03.05.05.02,1.03.05.05.02,BSY and EBD Area Design,AS_RAS_DE_1000,Evaluate Rastering Magnets - BTL - RAS,55.0,32.0,0.0,32.0,04-02-2021,06-02-2021,AS_EBD_DE_1000: FS,AS_RAS_DE_2000: FS,SLAC,100%,52169.52169_METS Mechanical Engineer,52169_METS Mechanical Engineer,Labor,42.0d,0.0,42.0,At Completion Units,nn,,0,0,0,0,0,0,0,0,0,0,1.03_Accelerator Systems (AS),1.03.05_AS Beam Transfer Line (BTL),1.03.05.05_AS Beam Transfer Line Engineering and Design,1.03.05.05.02_BSY and EBD Area Design,AS_RAS_DE_1000_Evaluate Rastering Magnets - BTL - RAS,Mechanical,,SLAC,Labor
97348,1.03,1.03.05,1.03.05.05,1.03.05.05.02,1.03.05.05.02,BSY and EBD Area Design,AS_RAS_DE_2000,Prepare for Conceptual Design Review - BTL - RAS,17.0,8.0,0.0,8.0,06-03-2021,06-29-2021,AS_RAS_DE_1000: FS,AS_RAS_DE_2010: FS,SLAC,100%,52190.52190_METSTP Tech Planning - Reinstated FY16,52190_METSTP Tech Planning - Reinstated FY16,Labor,18.0d,0.0,18.0,At Completion Units,nn,,0,0,0,0,0,0,0,0,0,0,1.03_Accelerator Systems (AS),1.03.05_AS Beam Transfer Line (BTL),1.03.05.05_AS Beam Transfer Line Engineering and Design,1.03.05.05.02_BSY and EBD Area Design,AS_RAS_DE_2000_Prepare for Conceptual Design Review - BTL - RAS,METSTPT Tech Planning,Tech,SLAC,Labor
97349,1.03,1.03.05,1.03.05.05,1.03.05.05.02,1.03.05.05.02,BSY and EBD Area Design,AS_RAS_DE_2000,Prepare for Conceptual Design Review - BTL - RAS,17.0,8.0,0.0,8.0,06-03-2021,06-29-2021,AS_RAS_DE_1000: FS,AS_RAS_DE_2010: FS,SLAC,100%,52127.52127_Research Electrical & SW Engineer,52127_Research Electrical & SW Engineer,Labor,18.0d,0.0,18.0,At Completion Units,nn,,0,0,0,0,0,0,0,0,0,0,1.03_Accelerator Systems (AS),1.03.05_AS Beam Transfer Line (BTL),1.03.05.05_AS Beam Transfer Line Engineering and Design,1.03.05.05.02_BSY and EBD Area Design,AS_RAS_DE_2000_Prepare for Conceptual Design Review - BTL - RAS,Electrical,,SLAC,Labor
97350,1.03,1.03.05,1.03.05.05,1.03.05.05.02,1.03.05.05.02,BSY and EBD Area Design,AS_RAS_DE_2000,Prepare for Conceptual Design Review - BTL - RAS,17.0,8.0,0.0,8.0,06-03-2021,06-29-2021,AS_RAS_DE_1000: FS,AS_RAS_DE_2010: FS,SLAC,100%,52211.52211_EEDOPSE (Electronics & Engineering Div - Ops & PSE),52211_EEDOPSE (Electronics & Engineering Div - Ops & PSE),Labor,18.0d,0.0,18.0,At Completion Units,nn,,0,0,0,0,0,0,0,0,0,0,1.03_Accelerator Systems (AS),1.03.05_AS Beam Transfer Line (BTL),1.03.05.05_AS Beam Transfer Line Engineering and Design,1.03.05.05.02_BSY and EBD Area Design,AS_RAS_DE_2000_Prepare for Conceptual Design Review - BTL - RAS,Electrical,,SLAC,Labor
97351,1.03,1.03.05,1.03.05.05,1.03.05.05.02,1.03.05.05.02,BSY and EBD Area Design,AS_RAS_DE_2000,Prepare for Conceptual Design Review - BTL - RAS,17.0,16.0,0.0,16.0,06-03-2021,06-29-2021,AS_RAS_DE_1000: FS,AS_RAS_DE_2010: FS,SLAC,100%,52213.52213_EEDHW (Electronics & Engineering Div - HW Engr),52213_EEDHW (Electronics & Engineering Div - HW Engr),Labor,18.0d,0.0,18.0,At Completion Units,nn,,0,0,0,0,0,0,0,0,0,0,1.03_Accelerator Systems (AS),1.03.05_AS Beam Transfer Line (BTL),1.03.05.05_AS Beam Transfer Line Engineering and Design,1.03.05.05.02_BSY and EBD Area Design,AS_RAS_DE_2000_Prepare for Conceptual Design Review - BTL - RAS,Electrical,,SLAC,Labor
97352,1.03,1.03.05,1.03.05.05,1.03.05.05.02,1.03.05.05.02,BSY and EBD Area Design,AS_RAS_DE_2000,Prepare for Conceptual Design Review - BTL - RAS,17.0,8.0,0.0,8.0,06-03-2021,06-29-2021,AS_RAS_DE_1000: FS,AS_RAS_DE_2010: FS,SLAC,100%,0106.0106_Staff Scientist,0106_Staff Scientist,Labor,18.0d,0.0,18.0,At Completion Units,nn,,0,0,0,0,0,0,0,0,0,0,1.03_Accelerator Systems (AS),1.03.05_AS Beam Transfer Line (BTL),1.03.05.05_AS Beam Transfer Line Engineering and Design,1.03.05.05.02_BSY and EBD Area Design,AS_RAS_DE_2000_Prepare for Conceptual Design Review - BTL - RAS,Scientist,,SLAC,Labor
97353,1.03,1.03.05,1.03.05.05,1.03.05.05.02,1.03.05.05.02,BSY and EBD Area Design,AS_RAS_DE_2000,Prepare for Conceptual Design Review - BTL - RAS,17.0,16.0,0.0,16.0,06-03-2021,06-29-2021,AS_RAS_DE_1000: FS,AS_RAS_DE_2010: FS,SLAC,100%,52168.52168_METS - Mechanical Design,52168_METS - Mechanical Design,Labor,18.0d,0.0,18.0,At Completion Units,nn,,0,0,0,0,0,0,0,0,0,0,1.03_Accelerator Systems (AS),1.03.05_AS Beam Transfer Line (BTL),1.03.05.05_AS Beam Transfer Line Engineering and Design,1.03.05.05.02_BSY and EBD Area Design,AS_RAS_DE_2000_Prepare for Conceptual Design Review - BTL - RAS,Mechanical,,SLAC,Labor
97354,1.03,1.03.05,1.03.05.05,1.03.05.05.02,1.03.05.05.02,BSY and EBD Area Design,AS_RAS_DE_2000,Prepare for Conceptual Design Review - BTL - RAS,17.0,48.0,0.0,48.0,06-03-2021,06-29-2021,AS_RAS_DE_1000: FS,AS_RAS_DE_2010: FS,SLAC,100%,52169.52169_METS Mechanical Engineer,52169_METS Mechanical Engineer,Labor,18.0d,0.0,18.0,At Completion Units,nn,,0,0,0,0,0,0,0,0,0,0,1.03_Accelerator Systems (AS),1.03.05_AS Beam Transfer Line (BTL),1.03.05.05_AS Beam Transfer Line Engineering and Design,1.03.05.05.02_BSY and EBD Area Design,AS_RAS_DE_2000_Prepare for Conceptual Design Review - BTL - RAS,Mechanical,,SLAC,Labor
97355,1.03,1.03.05,1.03.05.05,1.03.05.05.02,1.03.05.05.02,BSY and EBD Area Design,AS_RAS_DE_2020,Respond to Recommendations - Conceptual Design Review - Rastering Systems - BTL - BSY & EBD,10.0,6.0,0.0,6.0,07-01-2021,07-16-2021,AS_RAS_DE_2010: FS,AS_RAS_DE_2030: FS,SLAC,100%,52169.52169_METS Mechanical Engineer,52169_METS Mechanical Engineer,Labor,10.0d,0.0,10.0,At Completion Units,nn,,0,0,0,0,0,0,0,0,0,0,1.03_Accelerator Systems (AS),1.03.05_AS Beam Transfer Line (BTL),1.03.05.05_AS Beam Transfer Line Engineering and Design,1.03.05.05.02_BSY and EBD Area Design,AS_RAS_DE_2020_Respond to Recommendations - Conceptual Design Review - Rastering Systems - BTL - BSY & EBD,Mechanical,,SLAC,Labor
97356,1.03,1.03.05,1.03.05.05,1.03.05.05.02,1.03.05.05.02,BSY and EBD Area Design,AS_RAS_DE_2220,Respond to Recommendations - FDR - Rastering Systems - BTL - BSY & EBD,10.0,0.0,0.0,0.0,09-13-22,09-26-22,AS_RAS_DE_2210: FS,AS_RAS_DE_2230: FS,SLAC,0%,52211.52211_EEDOPSE (Electronics & Engineering Div - Ops & PSE),52211_EEDOPSE (Electronics & Engineering Div - Ops & PSE),Labor,0.0d,10.0,10.0,At Completion Units,nn,,0,0,0,0,0,0,0,0,0,0,1.03_Accelerator Systems (AS),1.03.05_AS Beam Transfer Line (BTL),1.03.05.05_AS Beam Transfer Line Engineering and Design,1.03.05.05.02_BSY and EBD Area Design,AS_RAS_DE_2220_Respond to Recommendations - FDR - Rastering Systems - BTL - BSY & EBD,Electrical,,SLAC,Labor
97357,1.03,1.03.05,1.03.05.05,1.03.05.05.02,1.03.05.05.02,BSY and EBD Area Design,AS_RAS_DE_2210,R_FDR: Final Design Review - Rastering Systems - BTL - BSY & EBD,1.0,0.0,0.0,0.0,09-12-22,09-12-22,AS_RAS_DE_2200: FS,AS_RAS_DE_2220: FS,SLAC,0%,52211.52211_EEDOPSE (Electronics & Engineering Div - Ops & PSE),52211_EEDOPSE (Electronics & Engineering Div - Ops & PSE),Labor,0.0d,1.0,1.0,At Completion Units,nn,,DM-A09-30%,0,0,0,0,0,0,0,0,0,1.03_Accelerator Systems (AS),1.03.05_AS Beam Transfer Line (BTL),1.03.05.05_AS Beam Transfer Line Engineering and Design,1.03.05.05.02_BSY and EBD Area Design,AS_RAS_DE_2210_R_FDR: Final Design Review - Rastering Systems - BTL - BSY & EBD,Electrical,,SLAC,Labor
97358,1.03,1.03.05,1.03.05.05,1.03.05.05.02,1.03.05.05.02,BSY and EBD Area Design,AS_RAS_DE_2120,Respond to Recommendations - PDR - Rastering Systems - BTL - BSY & EBD,10.0,0.0,0.0,0.0,01-11-22,01-25-22,AS_RAS_DE_2110: FS,AS_RAS_DE_2130: FS,SLAC,0%,52211.52211_EEDOPSE (Electronics & Engineering Div - Ops & PSE),52211_EEDOPSE (Electronics & Engineering Div - Ops & PSE),Labor,0.0d,10.0,10.0,At Completion Units,nn,,0,0,0,0,0,0,0,0,0,0,1.03_Accelerator Systems (AS),1.03.05_AS Beam Transfer Line (BTL),1.03.05.05_AS Beam Transfer Line Engineering and Design,1.03.05.05.02_BSY and EBD Area Design,AS_RAS_DE_2120_Respond to Recommendations - PDR - Rastering Systems - BTL - BSY & EBD,Electrical,,SLAC,Labor
97359,1.03,1.03.05,1.03.05.05,1.03.05.05.02,1.03.05.05.02,BSY and EBD Area Design,AS_RAS_DE_2110,R_PDR: Prelim. Design Review - Rastering Systems - BTL - BSY & EBD,1.0,0.0,0.0,0.0,01-10-22,01-10-22,AS_RAS_DE_2100: FS,AS_RAS_DE_2120: FS,SLAC,0%,52211.52211_EEDOPSE (Electronics & Engineering Div - Ops & PSE),52211_EEDOPSE (Electronics & Engineering Div - Ops & PSE),Labor,0.0d,1.0,1.0,At Completion Units,nn,,Review,0,0,0,0,0,0,0,0,0,1.03_Accelerator Systems (AS),1.03.05_AS Beam Transfer Line (BTL),1.03.05.05_AS Beam Transfer Line Engineering and Design,1.03.05.05.02_BSY and EBD Area Design,AS_RAS_DE_2110_R_PDR: Prelim. Design Review - Rastering Systems - BTL - BSY & EBD,Electrical,,SLAC,Labor
97360,1.03,1.03.05,1.03.05.05,1.03.05.05.02,1.03.05.05.02,BSY and EBD Area Design,AS_RAS_DE_1030,Finalize Design - Rastering Magnet - BTL - RAS,30.0,64.0,64.0,64.0,06-23-22,08-04-22,AS_EBD_MANF_1120: FS,AS_RAS_DE_1040: FS,SLAC,0%,52191.52191_METSMET Metrology,52191_METSMET Metrology,Labor,0.0d,30.0,30.0,At Completion Units,nn,,0,0,0,0,0,0,0,0,0,0,1.03_Accelerator Systems (AS),1.03.05_AS Beam Transfer Line (BTL),1.03.05.05_AS Beam Transfer Line Engineering and Design,1.03.05.05.02_BSY and EBD Area Design,AS_RAS_DE_1030_Finalize Design - Rastering Magnet - BTL - RAS,Metrology,,SLAC,Labor
97361,1.03,1.03.05,1.03.05.05,1.03.05.05.02,1.03.05.05.02,BSY and EBD Area Design,AS_RAS_DE_2010,R_CDR: Conceptual Design Review - Rastering Systems - BTL - BSY & EBD,1.0,0.8,0.0,1.0,06-30-2021,06-30-2021,AS_RAS_DE_2000: FS,AS_RAS_DE_2020: FS,SLAC,100%,52211.52211_EEDOPSE (Electronics & Engineering Div - Ops & PSE),52211_EEDOPSE (Electronics & Engineering Div - Ops & PSE),Labor,0.0d,0.0,0.0,At Completion Units,nn,,DM-A03-30%,0,0,0,0,0,0,0,0,0,1.03_Accelerator Systems (AS),1.03.05_AS Beam Transfer Line (BTL),1.03.05.05_AS Beam Transfer Line Engineering and Design,1.03.05.05.02_BSY and EBD Area Design,AS_RAS_DE_2010_R_CDR: Conceptual Design Review - Rastering Systems - BTL - BSY & EBD,Electrical,,SLAC,Labor
97362,1.03,1.03.05,1.03.05.05,1.03.05.05.02,1.03.05.05.02,BSY and EBD Area Design,AS_RAS_DE_2010,R_CDR: Conceptual Design Review - Rastering Systems - BTL - BSY & EBD,1.0,0.8,0.0,1.0,06-30-2021,06-30-2021,AS_RAS_DE_2000: FS,AS_RAS_DE_2020: FS,SLAC,100%,52213.52213_EEDHW (Electronics & Engineering Div - HW Engr),52213_EEDHW (Electronics & Engineering Div - HW Engr),Labor,0.0d,0.0,0.0,At Completion Units,nn,,DM-A03-30%,0,0,0,0,0,0,0,0,0,1.03_Accelerator Systems (AS),1.03.05_AS Beam Transfer Line (BTL),1.03.05.05_AS Beam Transfer Line Engineering and Design,1.03.05.05.02_BSY and EBD Area Design,AS_RAS_DE_2010_R_CDR: Conceptual Design Review - Rastering Systems - BTL - BSY & EBD,Electrical,,SLAC,Labor
97363,1.03,1.03.05,1.03.05.05,1.03.05.05.02,1.03.05.05.02,BSY and EBD Area Design,AS_RAS_DE_2010,R_CDR: Conceptual Design Review - Rastering Systems - BTL - BSY & EBD,1.0,1.2,0.0,1.0,06-30-2021,06-30-2021,AS_RAS_DE_2000: FS,AS_RAS_DE_2020: FS,SLAC,100%,52169.52169_METS Mechanical Engineer,52169_METS Mechanical Engineer,Labor,0.0d,0.0,0.0,At Completion Units,nn,,DM-A03-30%,0,0,0,0,0,0,0,0,0,1.03_Accelerator Systems (AS),1.03.05_AS Beam Transfer Line (BTL),1.03.05.05_AS Beam Transfer Line Engineering and Design,1.03.05.05.02_BSY and EBD Area Design,AS_RAS_DE_2010_R_CDR: Conceptual Design Review - Rastering Systems - BTL - BSY & EBD,Mechanical,,SLAC,Labor
97364,1.03,1.03.05,1.03.05.05,1.03.05.05.02,1.03.05.05.02,BSY and EBD Area Design,AS_RAS_DE_2010,R_CDR: Conceptual Design Review - Rastering Systems - BTL - BSY & EBD,1.0,0.8,0.0,1.0,06-30-2021,06-30-2021,AS_RAS_DE_2000: FS,AS_RAS_DE_2020: FS,SLAC,100%,0106.0106_Staff Scientist,0106_Staff Scientist,Labor,0.0d,0.0,0.0,At Completion Units,nn,,DM-A03-30%,0,0,0,0,0,0,0,0,0,1.03_Accelerator Systems (AS),1.03.05_AS Beam Transfer Line (BTL),1.03.05.05_AS Beam Transfer Line Engineering and Design,1.03.05.05.02_BSY and EBD Area Design,AS_RAS_DE_2010_R_CDR: Conceptual Design Review - Rastering Systems - BTL - BSY & EBD,Scientist,,SLAC,Labor
97365,1.03,1.03.05,1.03.05.05,1.03.05.05.02,1.03.05.05.02,BSY and EBD Area Design,AS_RAS_DE_2220,Respond to Recommendations - FDR - Rastering Systems - BTL - BSY & EBD,10.0,8.0,8.0,8.0,09-13-22,09-26-22,AS_RAS_DE_2210: FS,AS_RAS_DE_2230: FS,SLAC,0%,52191.52191_METSMET Metrology,52191_METSMET Metrology,Labor,0.0d,10.0,10.0,At Completion Units,nn,,0,0,0,0,0,0,0,0,0,0,1.03_Accelerator Systems (AS),1.03.05_AS Beam Transfer Line (BTL),1.03.05.05_AS Beam Transfer Line Engineering and Design,1.03.05.05.02_BSY and EBD Area Design,AS_RAS_DE_2220_Respond to Recommendations - FDR - Rastering Systems - BTL - BSY & EBD,Metrology,,SLAC,Labor
97366,1.03,1.03.05,1.03.05.05,1.03.05.05.02,1.03.05.05.02,BSY and EBD Area Design,AS_RAS_DE_2220,Respond to Recommendations - FDR - Rastering Systems - BTL - BSY & EBD,10.0,8.0,8.0,8.0,09-13-22,09-26-22,AS_RAS_DE_2210: FS,AS_RAS_DE_2230: FS,SLAC,0%,52169.52169_METS Mechanical Engineer,52169_METS Mechanical Engineer,Labor,0.0d,10.0,10.0,At Completion Units,nn,,0,0,0,0,0,0,0,0,0,0,1.03_Accelerator Systems (AS),1.03.05_AS Beam Transfer Line (BTL),1.03.05.05_AS Beam Transfer Line Engineering and Design,1.03.05.05.02_BSY and EBD Area Design,AS_RAS_DE_2220_Respond to Recommendations - FDR - Rastering Systems - BTL - BSY & EBD,Mechanical,,SLAC,Labor
97367,1.03,1.03.05,1.03.05.05,1.03.05.05.02,1.03.05.05.02,BSY and EBD Area Design,AS_RAS_DE_2210,R_FDR: Final Design Review - Rastering Systems - BTL - BSY & EBD,1.0,4.0,4.0,4.0,09-12-22,09-12-22,AS_RAS_DE_2200: FS,AS_RAS_DE_2220: FS,SLAC,0%,52198.52198_METSMANF (METSD Manufacturing),52198_METSMANF (METSD Manufacturing),Labor,0.0d,1.0,1.0,At Completion Units,nn,,DM-A09-30%,0,0,0,0,0,0,0,0,0,1.03_Accelerator Systems (AS),1.03.05_AS Beam Transfer Line (BTL),1.03.05.05_AS Beam Transfer Line Engineering and Design,1.03.05.05.02_BSY and EBD Area Design,AS_RAS_DE_2210_R_FDR: Final Design Review - Rastering Systems - BTL - BSY & EBD,Manufacturing,,SLAC,Labor
97368,1.03,1.03.05,1.03.05.05,1.03.05.05.02,1.03.05.05.02,BSY and EBD Area Design,AS_RAS_DE_2210,R_FDR: Final Design Review - Rastering Systems - BTL - BSY & EBD,1.0,8.0,8.0,8.0,09-12-22,09-12-22,AS_RAS_DE_2200: FS,AS_RAS_DE_2220: FS,SLAC,0%,52191.52191_METSMET Metrology,52191_METSMET Metrology,Labor,0.0d,1.0,1.0,At Completion Units,nn,,DM-A09-30%,0,0,0,0,0,0,0,0,0,1.03_Accelerator Systems (AS),1.03.05_AS Beam Transfer Line (BTL),1.03.05.05_AS Beam Transfer Line Engineering and Design,1.03.05.05.02_BSY and EBD Area Design,AS_RAS_DE_2210_R_FDR: Final Design Review - Rastering Systems - BTL - BSY & EBD,Metrology,,SLAC,Labor
97369,1.03,1.03.05,1.03.05.05,1.03.05.05.02,1.03.05.05.02,BSY and EBD Area Design,AS_RAS_DE_2210,R_FDR: Final Design Review - Rastering Systems - BTL - BSY & EBD,1.0,4.0,4.0,4.0,09-12-22,09-12-22,AS_RAS_DE_2200: FS,AS_RAS_DE_2220: FS,SLAC,0%,52213.52213_EEDHW (Electronics & Engineering Div - HW Engr),52213_EEDHW (Electronics & Engineering Div - HW Engr),Labor,0.0d,1.0,1.0,At Completion Units,nn,,DM-A09-30%,0,0,0,0,0,0,0,0,0,1.03_Accelerator Systems (AS),1.03.05_AS Beam Transfer Line (BTL),1.03.05.05_AS Beam Transfer Line Engineering and Design,1.03.05.05.02_BSY and EBD Area Design,AS_RAS_DE_2210_R_FDR: Final Design Review - Rastering Systems - BTL - BSY & EBD,Electrical,,SLAC,Labor
97370,1.03,1.03.05,1.03.05.05,1.03.05.05.02,1.03.05.05.02,BSY and EBD Area Design,AS_RAS_DE_2210,R_FDR: Final Design Review - Rastering Systems - BTL - BSY & EBD,1.0,4.0,4.0,4.0,09-12-22,09-12-22,AS_RAS_DE_2200: FS,AS_RAS_DE_2220: FS,SLAC,0%,0106.0106_Staff Scientist,0106_Staff Scientist,Labor,0.0d,1.0,1.0,At Completion Units,nn,,DM-A09-30%,0,0,0,0,0,0,0,0,0,1.03_Accelerator Systems (AS),1.03.05_AS Beam Transfer Line (BTL),1.03.05.05_AS Beam Transfer Line Engineering and Design,1.03.05.05.02_BSY and EBD Area Design,AS_RAS_DE_2210_R_FDR: Final Design Review - Rastering Systems - BTL - BSY & EBD,Scientist,,SLAC,Labor
97371,1.03,1.03.05,1.03.05.05,1.03.05.05.02,1.03.05.05.02,BSY and EBD Area Design,AS_RAS_DE_2210,R_FDR: Final Design Review - Rastering Systems - BTL - BSY & EBD,1.0,12.0,12.0,12.0,09-12-22,09-12-22,AS_RAS_DE_2200: FS,AS_RAS_DE_2220: FS,SLAC,0%,52168.52168_METS - Mechanical Design,52168_METS - Mechanical Design,Labor,0.0d,1.0,1.0,At Completion Units,nn,,DM-A09-30%,0,0,0,0,0,0,0,0,0,1.03_Accelerator Systems (AS),1.03.05_AS Beam Transfer Line (BTL),1.03.05.05_AS Beam Transfer Line Engineering and Design,1.03.05.05.02_BSY and EBD Area Design,AS_RAS_DE_2210_R_FDR: Final Design Review - Rastering Systems - BTL - BSY & EBD,Mechanical,,SLAC,Labor
97372,1.03,1.03.05,1.03.05.05,1.03.05.05.02,1.03.05.05.02,BSY and EBD Area Design,AS_RAS_DE_2210,R_FDR: Final Design Review - Rastering Systems - BTL - BSY & EBD,1.0,16.0,16.0,16.0,09-12-22,09-12-22,AS_RAS_DE_2200: FS,AS_RAS_DE_2220: FS,SLAC,0%,52169.52169_METS Mechanical Engineer,52169_METS Mechanical Engineer,Labor,0.0d,1.0,1.0,At Completion Units,nn,,DM-A09-30%,0,0,0,0,0,0,0,0,0,1.03_Accelerator Systems (AS),1.03.05_AS Beam Transfer Line (BTL),1.03.05.05_AS Beam Transfer Line Engineering and Design,1.03.05.05.02_BSY and EBD Area Design,AS_RAS_DE_2210_R_FDR: Final Design Review - Rastering Systems - BTL - BSY & EBD,Mechanical,,SLAC,Labor
97373,1.03,1.03.05,1.03.05.05,1.03.05.05.02,1.03.05.05.02,BSY and EBD Area Design,AS_RAS_DE_2120,Respond to Recommendations - PDR - Rastering Systems - BTL - BSY & EBD,10.0,8.0,8.0,8.0,01-11-22,01-25-22,AS_RAS_DE_2110: FS,AS_RAS_DE_2130: FS,SLAC,0%,52191.52191_METSMET Metrology,52191_METSMET Metrology,Labor,0.0d,10.0,10.0,At Completion Units,nn,,0,0,0,0,0,0,0,0,0,0,1.03_Accelerator Systems (AS),1.03.05_AS Beam Transfer Line (BTL),1.03.05.05_AS Beam Transfer Line Engineering and Design,1.03.05.05.02_BSY and EBD Area Design,AS_RAS_DE_2120_Respond to Recommendations - PDR - Rastering Systems - BTL - BSY & EBD,Metrology,,SLAC,Labor
97374,1.03,1.03.05,1.03.05.05,1.03.05.05.02,1.03.05.05.02,BSY and EBD Area Design,AS_RAS_DE_2120,Respond to Recommendations - PDR - Rastering Systems - BTL - BSY & EBD,10.0,8.0,8.0,8.0,01-11-22,01-25-22,AS_RAS_DE_2110: FS,AS_RAS_DE_2130: FS,SLAC,0%,52169.52169_METS Mechanical Engineer,52169_METS Mechanical Engineer,Labor,0.0d,10.0,10.0,At Completion Units,nn,,0,0,0,0,0,0,0,0,0,0,1.03_Accelerator Systems (AS),1.03.05_AS Beam Transfer Line (BTL),1.03.05.05_AS Beam Transfer Line Engineering and Design,1.03.05.05.02_BSY and EBD Area Design,AS_RAS_DE_2120_Respond to Recommendations - PDR - Rastering Systems - BTL - BSY & EBD,Mechanical,,SLAC,Labor
97375,1.03,1.03.05,1.03.05.05,1.03.05.05.02,1.03.05.05.02,BSY and EBD Area Design,AS_RAS_DE_2110,R_PDR: Prelim. Design Review - Rastering Systems - BTL - BSY & EBD,1.0,4.0,4.0,4.0,01-10-22,01-10-22,AS_RAS_DE_2100: FS,AS_RAS_DE_2120: FS,SLAC,0%,52198.52198_METSMANF (METSD Manufacturing),52198_METSMANF (METSD Manufacturing),Labor,0.0d,1.0,1.0,At Completion Units,nn,,Review,0,0,0,0,0,0,0,0,0,1.03_Accelerator Systems (AS),1.03.05_AS Beam Transfer Line (BTL),1.03.05.05_AS Beam Transfer Line Engineering and Design,1.03.05.05.02_BSY and EBD Area Design,AS_RAS_DE_2110_R_PDR: Prelim. Design Review - Rastering Systems - BTL - BSY & EBD,Manufacturing,,SLAC,Labor
97376,1.03,1.03.05,1.03.05.05,1.03.05.05.02,1.03.05.05.02,BSY and EBD Area Design,AS_RAS_DE_2110,R_PDR: Prelim. Design Review - Rastering Systems - BTL - BSY & EBD,1.0,12.0,12.0,12.0,01-10-22,01-10-22,AS_RAS_DE_2100: FS,AS_RAS_DE_2120: FS,SLAC,0%,52191.52191_METSMET Metrology,52191_METSMET Metrology,Labor,0.0d,1.0,1.0,At Completion Units,nn,,Review,0,0,0,0,0,0,0,0,0,1.03_Accelerator Systems (AS),1.03.05_AS Beam Transfer Line (BTL),1.03.05.05_AS Beam Transfer Line Engineering and Design,1.03.05.05.02_BSY and EBD Area Design,AS_RAS_DE_2110_R_PDR: Prelim. Design Review - Rastering Systems - BTL - BSY & EBD,Metrology,,SLAC,Labor
97377,1.03,1.03.05,1.03.05.05,1.03.05.05.02,1.03.05.05.02,BSY and EBD Area Design,AS_RAS_DE_2110,R_PDR: Prelim. Design Review - Rastering Systems - BTL - BSY & EBD,1.0,4.0,4.0,4.0,01-10-22,01-10-22,AS_RAS_DE_2100: FS,AS_RAS_DE_2120: FS,SLAC,0%,52213.52213_EEDHW (Electronics & Engineering Div - HW Engr),52213_EEDHW (Electronics & Engineering Div - HW Engr),Labor,0.0d,1.0,1.0,At Completion Units,nn,,Review,0,0,0,0,0,0,0,0,0,1.03_Accelerator Systems (AS),1.03.05_AS Beam Transfer Line (BTL),1.03.05.05_AS Beam Transfer Line Engineering and Design,1.03.05.05.02_BSY and EBD Area Design,AS_RAS_DE_2110_R_PDR: Prelim. Design Review - Rastering Systems - BTL - BSY & EBD,Electrical,,SLAC,Labor
97378,1.03,1.03.05,1.03.05.05,1.03.05.05.02,1.03.05.05.02,BSY and EBD Area Design,AS_RAS_DE_2110,R_PDR: Prelim. Design Review - Rastering Systems - BTL - BSY & EBD,1.0,4.0,4.0,4.0,01-10-22,01-10-22,AS_RAS_DE_2100: FS,AS_RAS_DE_2120: FS,SLAC,0%,0106.0106_Staff Scientist,0106_Staff Scientist,Labor,0.0d,1.0,1.0,At Completion Units,nn,,Review,0,0,0,0,0,0,0,0,0,1.03_Accelerator Systems (AS),1.03.05_AS Beam Transfer Line (BTL),1.03.05.05_AS Beam Transfer Line Engineering and Design,1.03.05.05.02_BSY and EBD Area Design,AS_RAS_DE_2110_R_PDR: Prelim. Design Review - Rastering Systems - BTL - BSY & EBD,Scientist,,SLAC,Labor
97379,1.03,1.03.05,1.03.05.05,1.03.05.05.02,1.03.05.05.02,BSY and EBD Area Design,AS_RAS_DE_2110,R_PDR: Prelim. Design Review - Rastering Systems - BTL - BSY & EBD,1.0,12.0,12.0,12.0,01-10-22,01-10-22,AS_RAS_DE_2100: FS,AS_RAS_DE_2120: FS,SLAC,0%,52168.52168_METS - Mechanical Design,52168_METS - Mechanical Design,Labor,0.0d,1.0,1.0,At Completion Units,nn,,Review,0,0,0,0,0,0,0,0,0,1.03_Accelerator Systems (AS),1.03.05_AS Beam Transfer Line (BTL),1.03.05.05_AS Beam Transfer Line Engineering and Design,1.03.05.05.02_BSY and EBD Area Design,AS_RAS_DE_2110_R_PDR: Prelim. Design Review - Rastering Systems - BTL - BSY & EBD,Mechanical,,SLAC,Labor
97380,1.03,1.03.05,1.03.05.05,1.03.05.05.02,1.03.05.05.02,BSY and EBD Area Design,AS_RAS_DE_2110,R_PDR: Prelim. Design Review - Rastering Systems - BTL - BSY & EBD,1.0,16.0,16.0,16.0,01-10-22,01-10-22,AS_RAS_DE_2100: FS,AS_RAS_DE_2120: FS,SLAC,0%,52169.52169_METS Mechanical Engineer,52169_METS Mechanical Engineer,Labor,0.0d,1.0,1.0,At Completion Units,nn,,Review,0,0,0,0,0,0,0,0,0,1.03_Accelerator Systems (AS),1.03.05_AS Beam Transfer Line (BTL),1.03.05.05_AS Beam Transfer Line Engineering and Design,1.03.05.05.02_BSY and EBD Area Design,AS_RAS_DE_2110_R_PDR: Prelim. Design Review - Rastering Systems - BTL - BSY & EBD,Mechanical,,SLAC,Labor
97381,1.03,1.03.05,1.03.05.05,1.03.05.05.02,1.03.05.05.02,BSY and EBD Area Design,AS_RAS_DE_2200,Prepare for Final Design Review (FDR) - BTL - RAS,10.0,88.0,88.0,88.0,08-26-22,09-09-22,AS_RAS_DE_1040: FS,AS_RAS_DE_2210: FS,SLAC,0%,52169.52169_METS Mechanical Engineer,52169_METS Mechanical Engineer,Labor,0.0d,10.0,10.0,At Completion Units,nn,,0,0,0,0,0,0,0,0,0,0,1.03_Accelerator Systems (AS),1.03.05_AS Beam Transfer Line (BTL),1.03.05.05_AS Beam Transfer Line Engineering and Design,1.03.05.05.02_BSY and EBD Area Design,AS_RAS_DE_2200_Prepare for Final Design Review (FDR) - BTL - RAS,Mechanical,,SLAC,Labor
97382,1.03,1.03.05,1.03.05.05,1.03.05.05.02,1.03.05.05.02,BSY and EBD Area Design,AS_RAS_DE_2100,Prepare for Preliminary Design Review (PDR) - BTL - RAS,10.0,40.0,40.0,40.0,12-13-21,01-07-22,"AS_RAS_DE_1010: FS, AS_RAS_DE_1020: FS",AS_RAS_DE_2110: FS,SLAC,0%,52169.52169_METS Mechanical Engineer,52169_METS Mechanical Engineer,Labor,0.0d,10.0,10.0,At Completion Units,nn,,DM-A06-30%,0,0,0,0,0,0,0,0,0,1.03_Accelerator Systems (AS),1.03.05_AS Beam Transfer Line (BTL),1.03.05.05_AS Beam Transfer Line Engineering and Design,1.03.05.05.02_BSY and EBD Area Design,AS_RAS_DE_2100_Prepare for Preliminary Design Review (PDR) - BTL - RAS,Mechanical,,SLAC,Labor
97383,1.03,1.03.05,1.03.05.05,1.03.05.05.02,1.03.05.05.02,BSY and EBD Area Design,AS_RAS_DE_1040,Rastering Magnet Drawings - BTL - RAS,15.0,100.0,100.0,100.0,08-05-22,08-25-22,AS_RAS_DE_1030: FS,AS_RAS_DE_2200: FS,SLAC,0%,52169.52169_METS Mechanical Engineer,52169_METS Mechanical Engineer,Labor,0.0d,15.0,15.0,At Completion Units,nn,,0,0,0,0,0,0,0,0,0,0,1.03_Accelerator Systems (AS),1.03.05_AS Beam Transfer Line (BTL),1.03.05.05_AS Beam Transfer Line Engineering and Design,1.03.05.05.02_BSY and EBD Area Design,AS_RAS_DE_1040_Rastering Magnet Drawings - BTL - RAS,Mechanical,,SLAC,Labor
97384,1.03,1.03.05,1.03.05.05,1.03.05.05.02,1.03.05.05.02,BSY and EBD Area Design,AS_RAS_DE_1030,Finalize Design - Rastering Magnet - BTL - RAS,30.0,0.0,0.0,0.0,06-23-22,08-04-22,AS_EBD_MANF_1120: FS,AS_RAS_DE_1040: FS,SLAC,0%,52211.52211_EEDOPSE (Electronics & Engineering Div - Ops & PSE),52211_EEDOPSE (Electronics & Engineering Div - Ops & PSE),Labor,0.0d,30.0,30.0,At Completion Units,nn,,0,0,0,0,0,0,0,0,0,0,1.03_Accelerator Systems (AS),1.03.05_AS Beam Transfer Line (BTL),1.03.05.05_AS Beam Transfer Line Engineering and Design,1.03.05.05.02_BSY and EBD Area Design,AS_RAS_DE_1030_Finalize Design - Rastering Magnet - BTL - RAS,Electrical,,SLAC,Labor
97385,1.03,1.03.05,1.03.05.05,1.03.05.05.02,1.03.05.05.02,BSY and EBD Area Design,AS_RAS_DE_1030,Finalize Design - Rastering Magnet - BTL - RAS,30.0,22.0,22.0,22.0,06-23-22,08-04-22,AS_EBD_MANF_1120: FS,AS_RAS_DE_1040: FS,SLAC,0%,0106.0106_Staff Scientist,0106_Staff Scientist,Labor,0.0d,30.0,30.0,At Completion Units,nn,,0,0,0,0,0,0,0,0,0,0,1.03_Accelerator Systems (AS),1.03.05_AS Beam Transfer Line (BTL),1.03.05.05_AS Beam Transfer Line Engineering and Design,1.03.05.05.02_BSY and EBD Area Design,AS_RAS_DE_1030_Finalize Design - Rastering Magnet - BTL - RAS,Scientist,,SLAC,Labor
97386,1.03,1.03.05,1.03.05.05,1.03.05.05.02,1.03.05.05.02,BSY and EBD Area Design,AS_RAS_DE_1030,Finalize Design - Rastering Magnet - BTL - RAS,30.0,28.0,28.0,28.0,06-23-22,08-04-22,AS_EBD_MANF_1120: FS,AS_RAS_DE_1040: FS,SLAC,0%,52168.52168_METS - Mechanical Design,52168_METS - Mechanical Design,Labor,0.0d,30.0,30.0,At Completion Units,nn,,0,0,0,0,0,0,0,0,0,0,1.03_Accelerator Systems (AS),1.03.05_AS Beam Transfer Line (BTL),1.03.05.05_AS Beam Transfer Line Engineering and Design,1.03.05.05.02_BSY and EBD Area Design,AS_RAS_DE_1030_Finalize Design - Rastering Magnet - BTL - RAS,Mechanical,,SLAC,Labor
97387,1.03,1.03.05,1.03.05.05,1.03.05.05.02,1.03.05.05.02,BSY and EBD Area Design,AS_RAS_DE_1030,Finalize Design - Rastering Magnet - BTL - RAS,30.0,86.0,86.0,86.0,06-23-22,08-04-22,AS_EBD_MANF_1120: FS,AS_RAS_DE_1040: FS,SLAC,0%,52169.52169_METS Mechanical Engineer,52169_METS Mechanical Engineer,Labor,0.0d,30.0,30.0,At Completion Units,nn,,0,0,0,0,0,0,0,0,0,0,1.03_Accelerator Systems (AS),1.03.05_AS Beam Transfer Line (BTL),1.03.05.05_AS Beam Transfer Line Engineering and Design,1.03.05.05.02_BSY and EBD Area Design,AS_RAS_DE_1030_Finalize Design - Rastering Magnet - BTL - RAS,Mechanical,,SLAC,Labor
97388,1.03,1.03.05,1.03.05.05,1.03.05.05.02,1.03.05.05.02,BSY and EBD Area Design,AS_RAS_DE_1010,Develop ESD - Rastering Magnets - BTL - RAS,10.0,16.0,16.0,16.0,11-15-21,11-30-21,"AS_RAS_DE_2030: FS, AS_SXU_DE_2400: FS","AS_RAS_DE_2100: FS, AS_EBD_MANF_1000: FS",SLAC,0%,52211.52211_EEDOPSE (Electronics & Engineering Div - Ops & PSE),52211_EEDOPSE (Electronics & Engineering Div - Ops & PSE),Labor,0.0d,10.0,10.0,At Completion Units,nn,,0,0,0,0,0,0,0,0,0,0,1.03_Accelerator Systems (AS),1.03.05_AS Beam Transfer Line (BTL),1.03.05.05_AS Beam Transfer Line Engineering and Design,1.03.05.05.02_BSY and EBD Area Design,AS_RAS_DE_1010_Develop ESD - Rastering Magnets - BTL - RAS,Electrical,,SLAC,Labor
97389,1.03,1.03.05,1.03.05.05,1.03.05.05.02,1.03.05.05.02,BSY and EBD Area Design,AS_RAS_DE_1010,Develop ESD - Rastering Magnets - BTL - RAS,10.0,4.0,4.0,4.0,11-15-21,11-30-21,"AS_RAS_DE_2030: FS, AS_SXU_DE_2400: FS","AS_RAS_DE_2100: FS, AS_EBD_MANF_1000: FS",SLAC,0%,0106.0106_Staff Scientist,0106_Staff Scientist,Labor,0.0d,10.0,10.0,At Completion Units,nn,,0,0,0,0,0,0,0,0,0,0,1.03_Accelerator Systems (AS),1.03.05_AS Beam Transfer Line (BTL),1.03.05.05_AS Beam Transfer Line Engineering and Design,1.03.05.05.02_BSY and EBD Area Design,AS_RAS_DE_1010_Develop ESD - Rastering Magnets - BTL - RAS,Scientist,,SLAC,Labor
97390,1.03,1.03.05,1.03.05.05,1.03.05.05.02,1.03.05.05.02,BSY and EBD Area Design,AS_RAS_DE_1010,Develop ESD - Rastering Magnets - BTL - RAS,10.0,16.0,16.0,16.0,11-15-21,11-30-21,"AS_RAS_DE_2030: FS, AS_SXU_DE_2400: FS","AS_RAS_DE_2100: FS, AS_EBD_MANF_1000: FS",SLAC,0%,52169.52169_METS Mechanical Engineer,52169_METS Mechanical Engineer,Labor,0.0d,10.0,10.0,At Completion Units,nn,,0,0,0,0,0,0,0,0,0,0,1.03_Accelerator Systems (AS),1.03.05_AS Beam Transfer Line (BTL),1.03.05.05_AS Beam Transfer Line Engineering and Design,1.03.05.05.02_BSY and EBD Area Design,AS_RAS_DE_1010_Develop ESD - Rastering Magnets - BTL - RAS,Mechanical,,SLAC,Labor
97391,1.03,1.03.05,1.03.05.05,1.03.05.05.02,1.03.05.05.02,BSY and EBD Area Design,AS_DMP_DE_1060,Respond to recommendations Final Design Review - BTL - BSY & EBD,10.0,4.0,4.0,4.0,10-05-22,10-18-22,AS_DMP_DE_1050: FS,AS_DMP_DE_1070: FS,SLAC,0%,52169.52169_METS Mechanical Engineer,52169_METS Mechanical Engineer,Labor,0.0d,10.0,10.0,At Completion Units,1/13/2022,1/27/2022,0,0,0,0,0,0,0,0,0,0,1.03_Accelerator Systems (AS),1.03.05_AS Beam Transfer Line (BTL),1.03.05.05_AS Beam Transfer Line Engineering and Design,1.03.05.05.02_BSY and EBD Area Design,AS_DMP_DE_1060_Respond to recommendations Final Design Review - BTL - BSY & EBD,Mechanical,,SLAC,Labor
97392,1.03,1.03.05,1.03.05.05,1.03.05.05.02,1.03.05.05.02,BSY and EBD Area Design,AS_DMP_DE_1050,R_FDR: Final Design Review - BTL - BSY & EBD,1.0,8.0,8.0,8.0,10-04-22,10-04-22,AS_DMP_DE_1040: FS,"AS_DMP_DE_1060: FS, AS_M4_3060: FS",SLAC,0%,52169.52169_METS Mechanical Engineer,52169_METS Mechanical Engineer,Labor,0.0d,1.0,1.0,At Completion Units,1/12/2022,1/12/2022,DM-A09-30%,0,0,0,0,0,0,0,0,0,1.03_Accelerator Systems (AS),1.03.05_AS Beam Transfer Line (BTL),1.03.05.05_AS Beam Transfer Line Engineering and Design,1.03.05.05.02_BSY and EBD Area Design,AS_DMP_DE_1050_R_FDR: Final Design Review - BTL - BSY & EBD,Mechanical,,SLAC,Labor
97393,1.03,1.03.05,1.03.05.05,1.03.05.05.02,1.03.05.05.02,BSY and EBD Area Design,AS_DMP_DE_1040,Prepare for Final Design Review - BTL - BSY & EBD,5.0,32.0,32.0,32.0,09-27-22,10-03-22,"AS_BSY_DE_1070: FS, AS_EBD_DE_1110: FS, AS_EBD_DE_1120: FS, AS_RAS_DE_2230: FS",AS_DMP_DE_1050: FS,SLAC,0%,52169.52169_METS Mechanical Engineer,52169_METS Mechanical Engineer,Labor,0.0d,5.0,5.0,At Completion Units,1/5/2022,1/11/2022,0,0,0,0,0,0,0,0,0,0,1.03_Accelerator Systems (AS),1.03.05_AS Beam Transfer Line (BTL),1.03.05.05_AS Beam Transfer Line Engineering and Design,1.03.05.05.02_BSY and EBD Area Design,AS_DMP_DE_1040_Prepare for Final Design Review - BTL - BSY & EBD,Mechanical,,SLAC,Labor
97394,1.03,1.03.05,1.03.05.05,1.03.05.05.02,1.03.05.05.02,BSY and EBD Area Design,AS_DMP_DE_1020,Respond to recommendations Preliminary Design Review - BTL - BSY & EBD,10.0,4.0,4.0,4.0,03-11-22,03-24-22,AS_DMP_DE_1010: FS,AS_DMP_DE_1030: FS,SLAC,0%,52169.52169_METS Mechanical Engineer,52169_METS Mechanical Engineer,Labor,0.0d,10.0,10.0,At Completion Units,9/27/2021,10/8/2021,0,0,0,0,0,0,0,0,0,0,1.03_Accelerator Systems (AS),1.03.05_AS Beam Transfer Line (BTL),1.03.05.05_AS Beam Transfer Line Engineering and Design,1.03.05.05.02_BSY and EBD Area Design,AS_DMP_DE_1020_Respond to recommendations Preliminary Design Review - BTL - BSY & EBD,Mechanical,,SLAC,Labor
97395,1.03,1.03.05,1.03.05.05,1.03.05.05.02,1.03.05.05.02,BSY and EBD Area Design,AS_DMP_DE_1010,R_PDR: Preliminary Design Review - BTL - BSY & EBD,1.0,8.0,8.0,8.0,03-10-22,03-10-22,AS_DMP_DE_1000: FS,AS_DMP_DE_1020: FS,SLAC,0%,52169.52169_METS Mechanical Engineer,52169_METS Mechanical Engineer,Labor,0.0d,1.0,1.0,At Completion Units,9/24/2021,9/24/2021,DM-A08-60%,0,0,0,0,0,0,0,0,0,1.03_Accelerator Systems (AS),1.03.05_AS Beam Transfer Line (BTL),1.03.05.05_AS Beam Transfer Line Engineering and Design,1.03.05.05.02_BSY and EBD Area Design,AS_DMP_DE_1010_R_PDR: Preliminary Design Review - BTL - BSY & EBD,Mechanical,,SLAC,Labor
97396,1.03,1.03.05,1.03.05.05,1.03.05.05.02,1.03.05.05.02,BSY and EBD Area Design,AS_DMP_DE_1000,Prepare Preliminary Design Review - BTL - BSY & EBD,5.0,32.0,32.0,32.0,03-03-22,03-09-22,"AS_EBD_DE_1010: FS, AS_EBD_DE_1100: FS, AS_RAS_DE_2130: FS, AS_BSY_DE_1020: FS",AS_DMP_DE_1010: FS,SLAC,0%,52169.52169_METS Mechanical Engineer,52169_METS Mechanical Engineer,Labor,0.0d,5.0,5.0,At Completion Units,9/17/2021,9/23/2021,0,0,0,0,0,0,0,0,0,0,1.03_Accelerator Systems (AS),1.03.05_AS Beam Transfer Line (BTL),1.03.05.05_AS Beam Transfer Line Engineering and Design,1.03.05.05.02_BSY and EBD Area Design,AS_DMP_DE_1000_Prepare Preliminary Design Review - BTL - BSY & EBD,Mechanical,,SLAC,Labor
97397,1.03,1.03.05,1.03.05.05,1.03.05.05.02,1.03.05.05.02,BSY and EBD Area Design,AS_BSY_DE_1070,Finalize beam layout and drawings - BTL - BSY,25.0,32.0,32.0,32.0,06-23-22,07-28-22,"AS_DMP_DE_1030: FS, AS_EBD_MANF_1120: FS",AS_DMP_DE_1040: FS,SLAC,0%,52168.52168_METS - Mechanical Design,52168_METS - Mechanical Design,Labor,0.0d,25.0,25.0,At Completion Units,10/11/2021,11/12/2021,0,0,0,0,0,0,0,0,0,0,1.03_Accelerator Systems (AS),1.03.05_AS Beam Transfer Line (BTL),1.03.05.05_AS Beam Transfer Line Engineering and Design,1.03.05.05.02_BSY and EBD Area Design,AS_BSY_DE_1070_Finalize beam layout and drawings - BTL - BSY,Mechanical,,SLAC,Labor
97398,1.03,1.03.05,1.03.05.05,1.03.05.05.02,1.03.05.05.02,BSY and EBD Area Design,AS_BSY_DE_1070,Finalize beam layout and drawings - BTL - BSY,25.0,12.0,12.0,12.0,06-23-22,07-28-22,"AS_DMP_DE_1030: FS, AS_EBD_MANF_1120: FS",AS_DMP_DE_1040: FS,SLAC,0%,52211.52211_EEDOPSE (Electronics & Engineering Div - Ops & PSE),52211_EEDOPSE (Electronics & Engineering Div - Ops & PSE),Labor,0.0d,25.0,25.0,At Completion Units,10/11/2021,11/12/2021,0,0,0,0,0,0,0,0,0,0,1.03_Accelerator Systems (AS),1.03.05_AS Beam Transfer Line (BTL),1.03.05.05_AS Beam Transfer Line Engineering and Design,1.03.05.05.02_BSY and EBD Area Design,AS_BSY_DE_1070_Finalize beam layout and drawings - BTL - BSY,Electrical,,SLAC,Labor
97399,1.03,1.03.05,1.03.05.05,1.03.05.05.02,1.03.05.05.02,BSY and EBD Area Design,AS_BSY_DE_1070,Finalize beam layout and drawings - BTL - BSY,25.0,12.0,12.0,12.0,06-23-22,07-28-22,"AS_DMP_DE_1030: FS, AS_EBD_MANF_1120: FS",AS_DMP_DE_1040: FS,SLAC,0%,52169.52169_METS Mechanical Engineer,52169_METS Mechanical Engineer,Labor,0.0d,25.0,25.0,At Completion Units,10/11/2021,11/12/2021,0,0,0,0,0,0,0,0,0,0,1.03_Accelerator Systems (AS),1.03.05_AS Beam Transfer Line (BTL),1.03.05.05_AS Beam Transfer Line Engineering and Design,1.03.05.05.02_BSY and EBD Area Design,AS_BSY_DE_1070_Finalize beam layout and drawings - BTL - BSY,Mechanical,,SLAC,Labor
97400,1.03,1.03.05,1.03.05.05,1.03.05.05.02,1.03.05.05.02,BSY and EBD Area Design,AS_BSY_DE_1030,Preliminary beam layout and drawings - BTL - BSY,20.0,80.0,80.0,80.0,01-26-22,02-23-22,"AS_BSY_DE_1010: FS, AS_BTL_DE_1200: FS",AS_BSY_DE_1020: FS,SLAC,0%,52169.52169_METS Mechanical Engineer,52169_METS Mechanical Engineer,Labor,0.0d,20.0,20.0,At Completion Units,8/18/2021,8/31/2021,0,0,0,0,0,0,0,0,0,0,1.03_Accelerator Systems (AS),1.03.05_AS Beam Transfer Line (BTL),1.03.05.05_AS Beam Transfer Line Engineering and Design,1.03.05.05.02_BSY and EBD Area Design,AS_BSY_DE_1030_Preliminary beam layout and drawings - BTL - BSY,Mechanical,,SLAC,Labor
97401,1.03,1.03.05,1.03.05.05,1.03.05.05.02,1.03.05.05.02,BSY and EBD Area Design,AS_BSY_DE_1020,Vacuum analysis - BTL - BSY,5.0,8.0,8.0,8.0,02-24-22,03-02-22,AS_BSY_DE_1030: FS,AS_DMP_DE_1000: FS,SLAC,0%,52213.52213_EEDHW (Electronics & Engineering Div - HW Engr),52213_EEDHW (Electronics & Engineering Div - HW Engr),Labor,0.0d,5.0,5.0,At Completion Units,9/1/2021,9/8/2021,0,0,0,0,0,0,0,0,0,0,1.03_Accelerator Systems (AS),1.03.05_AS Beam Transfer Line (BTL),1.03.05.05_AS Beam Transfer Line Engineering and Design,1.03.05.05.02_BSY and EBD Area Design,AS_BSY_DE_1020_Vacuum analysis - BTL - BSY,Electrical,,SLAC,Labor
97402,1.03,1.03.05,1.03.05.05,1.03.05.05.02,1.03.05.05.02,BSY and EBD Area Design,AS_BSY_DE_1020,Vacuum analysis - BTL - BSY,5.0,4.0,4.0,4.0,02-24-22,03-02-22,AS_BSY_DE_1030: FS,AS_DMP_DE_1000: FS,SLAC,0%,0106.0106_Staff Scientist,0106_Staff Scientist,Labor,0.0d,5.0,5.0,At Completion Units,9/1/2021,9/8/2021,0,0,0,0,0,0,0,0,0,0,1.03_Accelerator Systems (AS),1.03.05_AS Beam Transfer Line (BTL),1.03.05.05_AS Beam Transfer Line Engineering and Design,1.03.05.05.02_BSY and EBD Area Design,AS_BSY_DE_1020_Vacuum analysis - BTL - BSY,Scientist,,SLAC,Labor
97403,1.03,1.03.05,1.03.05.05,1.03.05.05.02,1.03.05.05.02,BSY and EBD Area Design,AS_BSY_DE_1020,Vacuum analysis - BTL - BSY,5.0,20.0,20.0,20.0,02-24-22,03-02-22,AS_BSY_DE_1030: FS,AS_DMP_DE_1000: FS,SLAC,0%,52169.52169_METS Mechanical Engineer,52169_METS Mechanical Engineer,Labor,0.0d,5.0,5.0,At Completion Units,9/1/2021,9/8/2021,0,0,0,0,0,0,0,0,0,0,1.03_Accelerator Systems (AS),1.03.05_AS Beam Transfer Line (BTL),1.03.05.05_AS Beam Transfer Line Engineering and Design,1.03.05.05.02_BSY and EBD Area Design,AS_BSY_DE_1020_Vacuum analysis - BTL - BSY,Mechanical,,SLAC,Labor
97404,1.03,1.03.05,1.03.05.05,1.03.05.05.02,1.03.05.05.02,BSY and EBD Area Design,AS_EBD_DE_1120,Final beam layout and drawings - BTL - EBD,10.0,80.0,80.0,80.0,06-23-22,07-07-22,"AS_DMP_DE_1030: FS, AS_EBD_MANF_1120: FS",AS_DMP_DE_1040: FS,SLAC,0%,52169.52169_METS Mechanical Engineer,52169_METS Mechanical Engineer,Labor,0.0d,10.0,10.0,At Completion Units,10/29/2021,11/11/2021,0,0,0,0,0,0,0,0,0,0,1.03_Accelerator Systems (AS),1.03.05_AS Beam Transfer Line (BTL),1.03.05.05_AS Beam Transfer Line Engineering and Design,1.03.05.05.02_BSY and EBD Area Design,AS_EBD_DE_1120_Final beam layout and drawings - BTL - EBD,Mechanical,,SLAC,Labor
97405,1.03,1.03.05,1.03.05.05,1.03.05.05.02,1.03.05.05.02,BSY and EBD Area Design,AS_EBD_DE_1110,Vacuum analysis - BTL - EBD,5.0,8.0,8.0,8.0,10-29-21,11-04-21,AS_EBD_DE_1100: FS,AS_DMP_DE_1040: FS,SLAC,0%,52213.52213_EEDHW (Electronics & Engineering Div - HW Engr),52213_EEDHW (Electronics & Engineering Div - HW Engr),Labor,0.0d,5.0,5.0,At Completion Units,9/16/2021,9/22/2021,0,0,0,0,0,0,0,0,0,0,1.03_Accelerator Systems (AS),1.03.05_AS Beam Transfer Line (BTL),1.03.05.05_AS Beam Transfer Line Engineering and Design,1.03.05.05.02_BSY and EBD Area Design,AS_EBD_DE_1110_Vacuum analysis - BTL - EBD,Electrical,,SLAC,Labor
97406,1.03,1.03.05,1.03.05.05,1.03.05.05.02,1.03.05.05.02,BSY and EBD Area Design,AS_EBD_DE_1110,Vacuum analysis - BTL - EBD,5.0,4.0,4.0,4.0,10-29-21,11-04-21,AS_EBD_DE_1100: FS,AS_DMP_DE_1040: FS,SLAC,0%,0106.0106_Staff Scientist,0106_Staff Scientist,Labor,0.0d,5.0,5.0,At Completion Units,9/16/2021,9/22/2021,0,0,0,0,0,0,0,0,0,0,1.03_Accelerator Systems (AS),1.03.05_AS Beam Transfer Line (BTL),1.03.05.05_AS Beam Transfer Line Engineering and Design,1.03.05.05.02_BSY and EBD Area Design,AS_EBD_DE_1110_Vacuum analysis - BTL - EBD,Scientist,,SLAC,Labor
97407,1.03,1.03.05,1.03.05.05,1.03.05.05.02,1.03.05.05.02,BSY and EBD Area Design,AS_EBD_DE_1110,Vacuum analysis - BTL - EBD,5.0,20.0,20.0,20.0,10-29-21,11-04-21,AS_EBD_DE_1100: FS,AS_DMP_DE_1040: FS,SLAC,0%,52169.52169_METS Mechanical Engineer,52169_METS Mechanical Engineer,Labor,0.0d,5.0,5.0,At Completion Units,9/16/2021,9/22/2021,0,0,0,0,0,0,0,0,0,0,1.03_Accelerator Systems (AS),1.03.05_AS Beam Transfer Line (BTL),1.03.05.05_AS Beam Transfer Line Engineering and Design,1.03.05.05.02_BSY and EBD Area Design,AS_EBD_DE_1110_Vacuum analysis - BTL - EBD,Mechanical,,SLAC,Labor
97408,1.03,1.03.05,1.03.05.05,1.03.05.05.02,1.03.05.05.02,BSY and EBD Area Design,AS_EBD_DE_1100,Preliminary beam layout and drawings - BTL - EBD,20.0,60.0,60.0,60.0,10-01-21,10-28-21,AS_RAS_DE_2030: FS,"AS_EBD_DE_1110: FS, AS_DMP_DE_1000: FS",SLAC,0%,52169.52169_METS Mechanical Engineer,52169_METS Mechanical Engineer,Labor,0.0d,20.0,20.0,At Completion Units,8/18/2021,9/15/2021,0,0,0,0,0,0,0,0,0,0,1.03_Accelerator Systems (AS),1.03.05_AS Beam Transfer Line (BTL),1.03.05.05_AS Beam Transfer Line Engineering and Design,1.03.05.05.02_BSY and EBD Area Design,AS_EBD_DE_1100_Preliminary beam layout and drawings - BTL - EBD,Mechanical,,SLAC,Labor
97409,1.03,1.03.05,1.03.05.05,1.03.05.05.02,1.03.05.05.02,BSY and EBD Area Design,AS_EBD_DE_1010,Develop Documentation - BTL - EBD,15.0,8.0,8.0,8.0,10-01-21,10-21-21,AS_RAS_DE_2030: FS,AS_DMP_DE_1000: FS,SLAC,0%,52211.52211_EEDOPSE (Electronics & Engineering Div - Ops & PSE),52211_EEDOPSE (Electronics & Engineering Div - Ops & PSE),Labor,0.0d,15.0,15.0,At Completion Units,7/7/2021,7/27/2021,0,0,0,0,0,0,0,0,0,0,1.03_Accelerator Systems (AS),1.03.05_AS Beam Transfer Line (BTL),1.03.05.05_AS Beam Transfer Line Engineering and Design,1.03.05.05.02_BSY and EBD Area Design,AS_EBD_DE_1010_Develop Documentation - BTL - EBD,Electrical,,SLAC,Labor
97410,1.03,1.03.05,1.03.05.05,1.03.05.05.02,1.03.05.05.02,BSY and EBD Area Design,AS_EBD_DE_1010,Develop Documentation - BTL - EBD,15.0,8.0,8.0,8.0,10-01-21,10-21-21,AS_RAS_DE_2030: FS,AS_DMP_DE_1000: FS,SLAC,0%,52213.52213_EEDHW (Electronics & Engineering Div - HW Engr),52213_EEDHW (Electronics & Engineering Div - HW Engr),Labor,0.0d,15.0,15.0,At Completion Units,7/7/2021,7/27/2021,0,0,0,0,0,0,0,0,0,0,1.03_Accelerator Systems (AS),1.03.05_AS Beam Transfer Line (BTL),1.03.05.05_AS Beam Transfer Line Engineering and Design,1.03.05.05.02_BSY and EBD Area Design,AS_EBD_DE_1010_Develop Documentation - BTL - EBD,Electrical,,SLAC,Labor
97411,1.03,1.03.05,1.03.05.05,1.03.05.05.02,1.03.05.05.02,BSY and EBD Area Design,AS_EBD_DE_1010,Develop Documentation - BTL - EBD,15.0,16.0,16.0,16.0,10-01-21,10-21-21,AS_RAS_DE_2030: FS,AS_DMP_DE_1000: FS,SLAC,0%,52169.52169_METS Mechanical Engineer,52169_METS Mechanical Engineer,Labor,0.0d,15.0,15.0,At Completion Units,7/7/2021,7/27/2021,0,0,0,0,0,0,0,0,0,0,1.03_Accelerator Systems (AS),1.03.05_AS Beam Transfer Line (BTL),1.03.05.05_AS Beam Transfer Line Engineering and Design,1.03.05.05.02_BSY and EBD Area Design,AS_EBD_DE_1010_Develop Documentation - BTL - EBD,Mechanical,,SLAC,Labor
98050,1.03,1.03.05,1.03.05.06,1.03.05.06.01,1.03.05.06.01,Dogleg and Spreader Area - Procurement & Fab,AS_BTL_MANF_2000,Procurement & storage support - DOG / SPD,90.0,60.0,60.0,60.0,10-04-22,02-24-23,"AS_SPD_DE_1130: FS, MS_FY_2023_Q1: FS",AS_M4_DTL1_1010: FS,SLAC,0%,52198.52198_METSMANF (METSD Manufacturing),52198_METSMANF (METSD Manufacturing),Labor,0.0d,90.0,90.0,At Completion Units,nn,,0,0,0,0,0,0,0,0,0,0,1.03_Accelerator Systems (AS),1.03.05_AS Beam Transfer Line (BTL),1.03.05.06_AS Beam Transfer Line Procurement and Fabrication,1.03.05.06.01_Dogleg and Spreader Area - Procurement & Fab,AS_BTL_MANF_2000_Procurement & storage support - DOG / SPD,Manufacturing,,SLAC,Labor
98051,1.03,1.03.05,1.03.05.06,1.03.05.06.01,1.03.05.06.01,Dogleg and Spreader Area - Procurement & Fab,AS_BTL_MANF_2000,Procurement & storage support - DOG / SPD,90.0,60.0,60.0,60.0,10-04-22,02-24-23,"AS_SPD_DE_1130: FS, MS_FY_2023_Q1: FS",AS_M4_DTL1_1010: FS,SLAC,0%,52190.52190_METSTP Tech Planning - Reinstated FY16,52190_METSTP Tech Planning - Reinstated FY16,Labor,0.0d,90.0,90.0,At Completion Units,nn,,0,0,0,0,0,0,0,0,0,0,1.03_Accelerator Systems (AS),1.03.05_AS Beam Transfer Line (BTL),1.03.05.06_AS Beam Transfer Line Procurement and Fabrication,1.03.05.06.01_Dogleg and Spreader Area - Procurement & Fab,AS_BTL_MANF_2000_Procurement & storage support - DOG / SPD,METSTPT Tech Planning,Tech,SLAC,Labor
98052,1.03,1.03.05,1.03.05.06,1.03.05.06.01,1.03.05.06.01,Dogleg and Spreader Area - Procurement & Fab,AS_BTL_MANF_2000,Procurement & storage support - DOG / SPD,90.0,80.0,80.0,80.0,10-04-22,02-24-23,"AS_SPD_DE_1130: FS, MS_FY_2023_Q1: FS",AS_M4_DTL1_1010: FS,SLAC,0%,52169.52169_METS Mechanical Engineer,52169_METS Mechanical Engineer,Labor,0.0d,90.0,90.0,At Completion Units,nn,,0,0,0,0,0,0,0,0,0,0,1.03_Accelerator Systems (AS),1.03.05_AS Beam Transfer Line (BTL),1.03.05.06_AS Beam Transfer Line Procurement and Fabrication,1.03.05.06.01_Dogleg and Spreader Area - Procurement & Fab,AS_BTL_MANF_2000_Procurement & storage support - DOG / SPD,Mechanical,,SLAC,Labor
98053,1.03,1.03.05,1.03.05.06,1.03.05.06.01,1.03.05.06.01,Dogleg and Spreader Area - Procurement & Fab,AS_SPD_MANF_3250,Receiving Inspection - ACMs - BTL - SPD,10.0,0.0,0.0,0.0,03-27-24,04-09-24,AS_SPD_MANF_3240: FS,AS_SPD_MANF_3260: FS,SLAC,0%,52198.52198_METSMANF (METSD Manufacturing),52198_METSMANF (METSD Manufacturing),Labor,0.0d,10.0,10.0,At Completion Units,4/12/2023,4/25/2023,0,0,0,0,0,0,0,0,0,0,1.03_Accelerator Systems (AS),1.03.05_AS Beam Transfer Line (BTL),1.03.05.06_AS Beam Transfer Line Procurement and Fabrication,1.03.05.06.01_Dogleg and Spreader Area - Procurement & Fab,AS_SPD_MANF_3250_Receiving Inspection - ACMs - BTL - SPD,Manufacturing,,SLAC,Labor
98054,1.03,1.03.05,1.03.05.06,1.03.05.06.01,1.03.05.06.01,Dogleg and Spreader Area - Procurement & Fab,AS_SPD_MANF_3250,Receiving Inspection - ACMs - BTL - SPD,10.0,0.0,0.0,0.0,03-27-24,04-09-24,AS_SPD_MANF_3240: FS,AS_SPD_MANF_3260: FS,SLAC,0%,52190.52190_METSTP Tech Planning - Reinstated FY16,52190_METSTP Tech Planning - Reinstated FY16,Labor,0.0d,10.0,10.0,At Completion Units,4/12/2023,4/25/2023,0,0,0,0,0,0,0,0,0,0,1.03_Accelerator Systems (AS),1.03.05_AS Beam Transfer Line (BTL),1.03.05.06_AS Beam Transfer Line Procurement and Fabrication,1.03.05.06.01_Dogleg and Spreader Area - Procurement & Fab,AS_SPD_MANF_3250_Receiving Inspection - ACMs - BTL - SPD,METSTPT Tech Planning,Tech,SLAC,Labor
98055,1.03,1.03.05,1.03.05.06,1.03.05.06.01,1.03.05.06.01,Dogleg and Spreader Area - Procurement & Fab,AS_SPD_MANF_3250,Receiving Inspection - ACMs - BTL - SPD,10.0,8.0,8.0,8.0,03-27-24,04-09-24,AS_SPD_MANF_3240: FS,AS_SPD_MANF_3260: FS,SLAC,0%,52169.52169_METS Mechanical Engineer,52169_METS Mechanical Engineer,Labor,0.0d,10.0,10.0,At Completion Units,4/12/2023,4/25/2023,0,0,0,0,0,0,0,0,0,0,1.03_Accelerator Systems (AS),1.03.05_AS Beam Transfer Line (BTL),1.03.05.06_AS Beam Transfer Line Procurement and Fabrication,1.03.05.06.01_Dogleg and Spreader Area - Procurement & Fab,AS_SPD_MANF_3250_Receiving Inspection - ACMs - BTL - SPD,Mechanical,,SLAC,Labor
98056,1.03,1.03.05,1.03.05.06,1.03.05.06.01,1.03.05.06.01,Dogleg and Spreader Area - Procurement & Fab,AS_SPD_MANF_2270,Qualification testing - 1.38S3.00 Sextupoles - BTL - SPD,30.0,408.0,408.0,408.0,06-07-24,07-19-24,"AS_SPD_MANF_2260: FS, AS_SPD_MANF_2660: FS, AS_SPD_MANF_2470: FS",AS_SPD_MANF_2280: FS,SLAC,0%,52198.52198_METSMANF (METSD Manufacturing),52198_METSMANF (METSD Manufacturing),Labor,0.0d,30.0,30.0,At Completion Units,5/9/2023,6/20/2023,0,0,0,0,0,0,0,0,0,0,1.03_Accelerator Systems (AS),1.03.05_AS Beam Transfer Line (BTL),1.03.05.06_AS Beam Transfer Line Procurement and Fabrication,1.03.05.06.01_Dogleg and Spreader Area - Procurement & Fab,AS_SPD_MANF_2270_Qualification testing - 1.38S3.00 Sextupoles - BTL - SPD,Manufacturing,,SLAC,Labor
98057,1.03,1.03.05,1.03.05.06,1.03.05.06.01,1.03.05.06.01,Dogleg and Spreader Area - Procurement & Fab,AS_SPD_MANF_2270,Qualification testing - 1.38S3.00 Sextupoles - BTL - SPD,30.0,12.0,12.0,12.0,06-07-24,07-19-24,"AS_SPD_MANF_2260: FS, AS_SPD_MANF_2660: FS, AS_SPD_MANF_2470: FS",AS_SPD_MANF_2280: FS,SLAC,0%,52190.52190_METSTP Tech Planning - Reinstated FY16,52190_METSTP Tech Planning - Reinstated FY16,Labor,0.0d,30.0,30.0,At Completion Units,5/9/2023,6/20/2023,0,0,0,0,0,0,0,0,0,0,1.03_Accelerator Systems (AS),1.03.05_AS Beam Transfer Line (BTL),1.03.05.06_AS Beam Transfer Line Procurement and Fabrication,1.03.05.06.01_Dogleg and Spreader Area - Procurement & Fab,AS_SPD_MANF_2270_Qualification testing - 1.38S3.00 Sextupoles - BTL - SPD,METSTPT Tech Planning,Tech,SLAC,Labor
98058,1.03,1.03.05,1.03.05.06,1.03.05.06.01,1.03.05.06.01,Dogleg and Spreader Area - Procurement & Fab,AS_SPD_MANF_2270,Qualification testing - 1.38S3.00 Sextupoles - BTL - SPD,30.0,12.0,12.0,12.0,06-07-24,07-19-24,"AS_SPD_MANF_2260: FS, AS_SPD_MANF_2660: FS, AS_SPD_MANF_2470: FS",AS_SPD_MANF_2280: FS,SLAC,0%,52169.52169_METS Mechanical Engineer,52169_METS Mechanical Engineer,Labor,0.0d,30.0,30.0,At Completion Units,5/9/2023,6/20/2023,0,0,0,0,0,0,0,0,0,0,1.03_Accelerator Systems (AS),1.03.05_AS Beam Transfer Line (BTL),1.03.05.06_AS Beam Transfer Line Procurement and Fabrication,1.03.05.06.01_Dogleg and Spreader Area - Procurement & Fab,AS_SPD_MANF_2270_Qualification testing - 1.38S3.00 Sextupoles - BTL - SPD,Mechanical,,SLAC,Labor
98059,1.03,1.03.05,1.03.05.06,1.03.05.06.01,1.03.05.06.01,Dogleg and Spreader Area - Procurement & Fab,AS_SPD_MANF_1670,"Inspection, Assy, Processing - 1.378K35 Drift Tube - BTL - SPD",40.0,8.0,8.0,8.0,04-11-24,06-06-24,AS_SPD_MANF_1660: FS,AS_SPD_MANF_1680: FS,SLAC,0%,52190.52190_METSTP Tech Planning - Reinstated FY16,52190_METSTP Tech Planning - Reinstated FY16,Labor,0.0d,40.0,40.0,At Completion Units,3/14/2023,5/8/2023,0,0,0,0,0,0,0,0,0,0,1.03_Accelerator Systems (AS),1.03.05_AS Beam Transfer Line (BTL),1.03.05.06_AS Beam Transfer Line Procurement and Fabrication,1.03.05.06.01_Dogleg and Spreader Area - Procurement & Fab,"AS_SPD_MANF_1670_Inspection, Assy, Processing - 1.378K35 Drift Tube - BTL - SPD",METSTPT Tech Planning,Tech,SLAC,Labor
98060,1.03,1.03.05,1.03.05.06,1.03.05.06.01,1.03.05.06.01,Dogleg and Spreader Area - Procurement & Fab,AS_SPD_MANF_1670,"Inspection, Assy, Processing - 1.378K35 Drift Tube - BTL - SPD",40.0,8.0,8.0,8.0,04-11-24,06-06-24,AS_SPD_MANF_1660: FS,AS_SPD_MANF_1680: FS,SLAC,0%,52169.52169_METS Mechanical Engineer,52169_METS Mechanical Engineer,Labor,0.0d,40.0,40.0,At Completion Units,3/14/2023,5/8/2023,0,0,0,0,0,0,0,0,0,0,1.03_Accelerator Systems (AS),1.03.05_AS Beam Transfer Line (BTL),1.03.05.06_AS Beam Transfer Line Procurement and Fabrication,1.03.05.06.01_Dogleg and Spreader Area - Procurement & Fab,"AS_SPD_MANF_1670_Inspection, Assy, Processing - 1.378K35 Drift Tube - BTL - SPD",Mechanical,,SLAC,Labor
98061,1.03,1.03.05,1.03.05.06,1.03.05.06.01,1.03.05.06.01,Dogleg and Spreader Area - Procurement & Fab,AS_SPD_MANF_1670,"Inspection, Assy, Processing - 1.378K35 Drift Tube - BTL - SPD",40.0,112.0,112.0,112.0,04-11-24,06-06-24,AS_SPD_MANF_1660: FS,AS_SPD_MANF_1680: FS,SLAC,0%,52198.52198_METSMANF (METSD Manufacturing),52198_METSMANF (METSD Manufacturing),Labor,0.0d,40.0,40.0,At Completion Units,3/14/2023,5/8/2023,0,0,0,0,0,0,0,0,0,0,1.03_Accelerator Systems (AS),1.03.05_AS Beam Transfer Line (BTL),1.03.05.06_AS Beam Transfer Line Procurement and Fabrication,1.03.05.06.01_Dogleg and Spreader Area - Procurement & Fab,"AS_SPD_MANF_1670_Inspection, Assy, Processing - 1.378K35 Drift Tube - BTL - SPD",Manufacturing,,SLAC,Labor
98062,1.03,1.03.05,1.03.05.06,1.03.05.06.01,1.03.05.06.01,Dogleg and Spreader Area - Procurement & Fab,AS_SPD_MANF_1670,"Inspection, Assy, Processing - 1.378K35 Drift Tube - BTL - SPD",40.0,16.0,16.0,16.0,04-11-24,06-06-24,AS_SPD_MANF_1660: FS,AS_SPD_MANF_1680: FS,SLAC,0%,52128.52128_Research Electrical & SW Technican,52128_Research Electrical & SW Technican,Labor,0.0d,40.0,40.0,At Completion Units,3/14/2023,5/8/2023,0,0,0,0,0,0,0,0,0,0,1.03_Accelerator Systems (AS),1.03.05_AS Beam Transfer Line (BTL),1.03.05.06_AS Beam Transfer Line Procurement and Fabrication,1.03.05.06.01_Dogleg and Spreader Area - Procurement & Fab,"AS_SPD_MANF_1670_Inspection, Assy, Processing - 1.378K35 Drift Tube - BTL - SPD",Electrical,Tech,SLAC,Labor
98063,1.03,1.03.05,1.03.05.06,1.03.05.06.01,1.03.05.06.01,Dogleg and Spreader Area - Procurement & Fab,AS_SPD_MANF_1470,Qualification Testing - 0.787K35 Kicker Magnet - BTL - SPD,40.0,24.0,24.0,24.0,06-07-24,08-02-24,"AS_SPD_MANF_1460: FS, AS_SPD_MANF_4260: FS, AS_SPD_MANF_1680: FS",AS_SPD_MANF_1480: FS,SLAC,0%,52211.52211_EEDOPSE (Electronics & Engineering Div - Ops & PSE),52211_EEDOPSE (Electronics & Engineering Div - Ops & PSE),Labor,0.0d,40.0,40.0,At Completion Units,5/9/2023,7/5/2023,0,0,0,0,0,0,0,0,0,0,1.03_Accelerator Systems (AS),1.03.05_AS Beam Transfer Line (BTL),1.03.05.06_AS Beam Transfer Line Procurement and Fabrication,1.03.05.06.01_Dogleg and Spreader Area - Procurement & Fab,AS_SPD_MANF_1470_Qualification Testing - 0.787K35 Kicker Magnet - BTL - SPD,Electrical,,SLAC,Labor
98064,1.03,1.03.05,1.03.05.06,1.03.05.06.01,1.03.05.06.01,Dogleg and Spreader Area - Procurement & Fab,AS_SPD_MANF_1470,Qualification Testing - 0.787K35 Kicker Magnet - BTL - SPD,40.0,270.0,270.0,270.0,06-07-24,08-02-24,"AS_SPD_MANF_1460: FS, AS_SPD_MANF_4260: FS, AS_SPD_MANF_1680: FS",AS_SPD_MANF_1480: FS,SLAC,0%,52198.52198_METSMANF (METSD Manufacturing),52198_METSMANF (METSD Manufacturing),Labor,0.0d,40.0,40.0,At Completion Units,5/9/2023,7/5/2023,0,0,0,0,0,0,0,0,0,0,1.03_Accelerator Systems (AS),1.03.05_AS Beam Transfer Line (BTL),1.03.05.06_AS Beam Transfer Line Procurement and Fabrication,1.03.05.06.01_Dogleg and Spreader Area - Procurement & Fab,AS_SPD_MANF_1470_Qualification Testing - 0.787K35 Kicker Magnet - BTL - SPD,Manufacturing,,SLAC,Labor
98065,1.03,1.03.05,1.03.05.06,1.03.05.06.01,1.03.05.06.01,Dogleg and Spreader Area - Procurement & Fab,AS_SPD_MANF_1470,Qualification Testing - 0.787K35 Kicker Magnet - BTL - SPD,40.0,8.0,8.0,8.0,06-07-24,08-02-24,"AS_SPD_MANF_1460: FS, AS_SPD_MANF_4260: FS, AS_SPD_MANF_1680: FS",AS_SPD_MANF_1480: FS,SLAC,0%,52190.52190_METSTP Tech Planning - Reinstated FY16,52190_METSTP Tech Planning - Reinstated FY16,Labor,0.0d,40.0,40.0,At Completion Units,5/9/2023,7/5/2023,0,0,0,0,0,0,0,0,0,0,1.03_Accelerator Systems (AS),1.03.05_AS Beam Transfer Line (BTL),1.03.05.06_AS Beam Transfer Line Procurement and Fabrication,1.03.05.06.01_Dogleg and Spreader Area - Procurement & Fab,AS_SPD_MANF_1470_Qualification Testing - 0.787K35 Kicker Magnet - BTL - SPD,METSTPT Tech Planning,Tech,SLAC,Labor
98066,1.03,1.03.05,1.03.05.06,1.03.05.06.01,1.03.05.06.01,Dogleg and Spreader Area - Procurement & Fab,AS_SPD_MANF_1470,Qualification Testing - 0.787K35 Kicker Magnet - BTL - SPD,40.0,8.0,8.0,8.0,06-07-24,08-02-24,"AS_SPD_MANF_1460: FS, AS_SPD_MANF_4260: FS, AS_SPD_MANF_1680: FS",AS_SPD_MANF_1480: FS,SLAC,0%,52169.52169_METS Mechanical Engineer,52169_METS Mechanical Engineer,Labor,0.0d,40.0,40.0,At Completion Units,5/9/2023,7/5/2023,0,0,0,0,0,0,0,0,0,0,1.03_Accelerator Systems (AS),1.03.05_AS Beam Transfer Line (BTL),1.03.05.06_AS Beam Transfer Line Procurement and Fabrication,1.03.05.06.01_Dogleg and Spreader Area - Procurement & Fab,AS_SPD_MANF_1470_Qualification Testing - 0.787K35 Kicker Magnet - BTL - SPD,Mechanical,,SLAC,Labor
98067,1.03,1.03.05,1.03.05.06,1.03.05.06.01,1.03.05.06.01,Dogleg and Spreader Area - Procurement & Fab,AS_SPD_MANF_1270,"Inspection, Assy, Processing - 0.787K35 Drift Tube - BTL - SPD",40.0,184.0,184.0,184.0,04-11-24,06-06-24,AS_SPD_MANF_1260: FS,AS_SPD_MANF_1280: FS,SLAC,0%,52198.52198_METSMANF (METSD Manufacturing),52198_METSMANF (METSD Manufacturing),Labor,0.0d,40.0,40.0,At Completion Units,3/14/2023,5/8/2023,0,0,0,0,0,0,0,0,0,0,1.03_Accelerator Systems (AS),1.03.05_AS Beam Transfer Line (BTL),1.03.05.06_AS Beam Transfer Line Procurement and Fabrication,1.03.05.06.01_Dogleg and Spreader Area - Procurement & Fab,"AS_SPD_MANF_1270_Inspection, Assy, Processing - 0.787K35 Drift Tube - BTL - SPD",Manufacturing,,SLAC,Labor
98068,1.03,1.03.05,1.03.05.06,1.03.05.06.01,1.03.05.06.01,Dogleg and Spreader Area - Procurement & Fab,AS_SPD_MANF_1270,"Inspection, Assy, Processing - 0.787K35 Drift Tube - BTL - SPD",40.0,40.0,40.0,40.0,04-11-24,06-06-24,AS_SPD_MANF_1260: FS,AS_SPD_MANF_1280: FS,SLAC,0%,52128.52128_Research Electrical & SW Technican,52128_Research Electrical & SW Technican,Labor,0.0d,40.0,40.0,At Completion Units,3/14/2023,5/8/2023,0,0,0,0,0,0,0,0,0,0,1.03_Accelerator Systems (AS),1.03.05_AS Beam Transfer Line (BTL),1.03.05.06_AS Beam Transfer Line Procurement and Fabrication,1.03.05.06.01_Dogleg and Spreader Area - Procurement & Fab,"AS_SPD_MANF_1270_Inspection, Assy, Processing - 0.787K35 Drift Tube - BTL - SPD",Electrical,Tech,SLAC,Labor
98069,1.03,1.03.05,1.03.05.06,1.03.05.06.01,1.03.05.06.01,Dogleg and Spreader Area - Procurement & Fab,AS_SPD_MANF_1070,Qualification Testing - 0.787K35 Kicker Magnet - BTL - SPD,40.0,300.0,300.0,300.0,06-07-24,08-02-24,"AS_SPD_MANF_1060: FS, AS_SPD_MANF_1280: FS, AS_SPD_MANF_4260: FS",AS_SPD_MANF_1080: FS,SLAC,0%,52211.52211_EEDOPSE (Electronics & Engineering Div - Ops & PSE),52211_EEDOPSE (Electronics & Engineering Div - Ops & PSE),Labor,0.0d,40.0,40.0,At Completion Units,5/9/2023,7/5/2023,0,0,0,0,0,0,0,0,0,0,1.03_Accelerator Systems (AS),1.03.05_AS Beam Transfer Line (BTL),1.03.05.06_AS Beam Transfer Line Procurement and Fabrication,1.03.05.06.01_Dogleg and Spreader Area - Procurement & Fab,AS_SPD_MANF_1070_Qualification Testing - 0.787K35 Kicker Magnet - BTL - SPD,Electrical,,SLAC,Labor
98070,1.03,1.03.05,1.03.05.06,1.03.05.06.01,1.03.05.06.01,Dogleg and Spreader Area - Procurement & Fab,AS_SPD_MANF_1070,Qualification Testing - 0.787K35 Kicker Magnet - BTL - SPD,40.0,468.0,468.0,468.0,06-07-24,08-02-24,"AS_SPD_MANF_1060: FS, AS_SPD_MANF_1280: FS, AS_SPD_MANF_4260: FS",AS_SPD_MANF_1080: FS,SLAC,0%,52198.52198_METSMANF (METSD Manufacturing),52198_METSMANF (METSD Manufacturing),Labor,0.0d,40.0,40.0,At Completion Units,5/9/2023,7/5/2023,0,0,0,0,0,0,0,0,0,0,1.03_Accelerator Systems (AS),1.03.05_AS Beam Transfer Line (BTL),1.03.05.06_AS Beam Transfer Line Procurement and Fabrication,1.03.05.06.01_Dogleg and Spreader Area - Procurement & Fab,AS_SPD_MANF_1070_Qualification Testing - 0.787K35 Kicker Magnet - BTL - SPD,Manufacturing,,SLAC,Labor
98071,1.03,1.03.05,1.03.05.06,1.03.05.06.01,1.03.05.06.01,Dogleg and Spreader Area - Procurement & Fab,AS_SPD_MANF_1070,Qualification Testing - 0.787K35 Kicker Magnet - BTL - SPD,40.0,8.0,8.0,8.0,06-07-24,08-02-24,"AS_SPD_MANF_1060: FS, AS_SPD_MANF_1280: FS, AS_SPD_MANF_4260: FS",AS_SPD_MANF_1080: FS,SLAC,0%,52190.52190_METSTP Tech Planning - Reinstated FY16,52190_METSTP Tech Planning - Reinstated FY16,Labor,0.0d,40.0,40.0,At Completion Units,5/9/2023,7/5/2023,0,0,0,0,0,0,0,0,0,0,1.03_Accelerator Systems (AS),1.03.05_AS Beam Transfer Line (BTL),1.03.05.06_AS Beam Transfer Line Procurement and Fabrication,1.03.05.06.01_Dogleg and Spreader Area - Procurement & Fab,AS_SPD_MANF_1070_Qualification Testing - 0.787K35 Kicker Magnet - BTL - SPD,METSTPT Tech Planning,Tech,SLAC,Labor
98072,1.03,1.03.05,1.03.05.06,1.03.05.06.01,1.03.05.06.01,Dogleg and Spreader Area - Procurement & Fab,AS_SPD_MANF_1070,Qualification Testing - 0.787K35 Kicker Magnet - BTL - SPD,40.0,0.0,0.0,0.0,06-07-24,08-02-24,"AS_SPD_MANF_1060: FS, AS_SPD_MANF_1280: FS, AS_SPD_MANF_4260: FS",AS_SPD_MANF_1080: FS,SLAC,0%,52169.52169_METS Mechanical Engineer,52169_METS Mechanical Engineer,Labor,0.0d,40.0,40.0,At Completion Units,5/9/2023,7/5/2023,0,0,0,0,0,0,0,0,0,0,1.03_Accelerator Systems (AS),1.03.05_AS Beam Transfer Line (BTL),1.03.05.06_AS Beam Transfer Line Procurement and Fabrication,1.03.05.06.01_Dogleg and Spreader Area - Procurement & Fab,AS_SPD_MANF_1070_Qualification Testing - 0.787K35 Kicker Magnet - BTL - SPD,Mechanical,,SLAC,Labor
98073,1.03,1.03.05,1.03.05.06,1.03.05.06.01,1.03.05.06.01,Dogleg and Spreader Area - Procurement & Fab,AS_SPD_MANF_4060,Inspect and Process - Misc Vacuum Hardware - BTL - SPD,20.0,4.0,4.0,4.0,01-02-24,01-30-24,AS_SPD_MANF_4050: FS,AS_SPD_MANF_4070: FS,SLAC,0%,52190.52190_METSTP Tech Planning - Reinstated FY16,52190_METSTP Tech Planning - Reinstated FY16,Labor,0.0d,20.0,20.0,At Completion Units,4/4/2023,5/1/2023,0,0,0,0,0,0,0,0,0,0,1.03_Accelerator Systems (AS),1.03.05_AS Beam Transfer Line (BTL),1.03.05.06_AS Beam Transfer Line Procurement and Fabrication,1.03.05.06.01_Dogleg and Spreader Area - Procurement & Fab,AS_SPD_MANF_4060_Inspect and Process - Misc Vacuum Hardware - BTL - SPD,METSTPT Tech Planning,Tech,SLAC,Labor
98074,1.03,1.03.05,1.03.05.06,1.03.05.06.01,1.03.05.06.01,Dogleg and Spreader Area - Procurement & Fab,AS_SPD_MANF_4060,Inspect and Process - Misc Vacuum Hardware - BTL - SPD,20.0,32.0,32.0,32.0,01-02-24,01-30-24,AS_SPD_MANF_4050: FS,AS_SPD_MANF_4070: FS,SLAC,0%,52198.52198_METSMANF (METSD Manufacturing),52198_METSMANF (METSD Manufacturing),Labor,0.0d,20.0,20.0,At Completion Units,4/4/2023,5/1/2023,0,0,0,0,0,0,0,0,0,0,1.03_Accelerator Systems (AS),1.03.05_AS Beam Transfer Line (BTL),1.03.05.06_AS Beam Transfer Line Procurement and Fabrication,1.03.05.06.01_Dogleg and Spreader Area - Procurement & Fab,AS_SPD_MANF_4060_Inspect and Process - Misc Vacuum Hardware - BTL - SPD,Manufacturing,,SLAC,Labor
98075,1.03,1.03.05,1.03.05.06,1.03.05.06.01,1.03.05.06.01,Dogleg and Spreader Area - Procurement & Fab,AS_SPD_MANF_3460,Receiving Inspection - ACM Interface Drift Tubes - BTL - SPD,10.0,4.0,4.0,4.0,01-31-24,02-13-24,AS_SPD_MANF_3450: FS,AS_SPD_MANF_3470: FS,SLAC,0%,52190.52190_METSTP Tech Planning - Reinstated FY16,52190_METSTP Tech Planning - Reinstated FY16,Labor,0.0d,10.0,10.0,At Completion Units,3/2/2023,3/15/2023,0,0,0,0,0,0,0,0,0,0,1.03_Accelerator Systems (AS),1.03.05_AS Beam Transfer Line (BTL),1.03.05.06_AS Beam Transfer Line Procurement and Fabrication,1.03.05.06.01_Dogleg and Spreader Area - Procurement & Fab,AS_SPD_MANF_3460_Receiving Inspection - ACM Interface Drift Tubes - BTL - SPD,METSTPT Tech Planning,Tech,SLAC,Labor
98076,1.03,1.03.05,1.03.05.06,1.03.05.06.01,1.03.05.06.01,Dogleg and Spreader Area - Procurement & Fab,AS_SPD_MANF_3460,Receiving Inspection - ACM Interface Drift Tubes - BTL - SPD,10.0,48.0,48.0,48.0,01-31-24,02-13-24,AS_SPD_MANF_3450: FS,AS_SPD_MANF_3470: FS,SLAC,0%,52198.52198_METSMANF (METSD Manufacturing),52198_METSMANF (METSD Manufacturing),Labor,0.0d,10.0,10.0,At Completion Units,3/2/2023,3/15/2023,0,0,0,0,0,0,0,0,0,0,1.03_Accelerator Systems (AS),1.03.05_AS Beam Transfer Line (BTL),1.03.05.06_AS Beam Transfer Line Procurement and Fabrication,1.03.05.06.01_Dogleg and Spreader Area - Procurement & Fab,AS_SPD_MANF_3460_Receiving Inspection - ACM Interface Drift Tubes - BTL - SPD,Manufacturing,,SLAC,Labor
98077,1.03,1.03.05,1.03.05.06,1.03.05.06.01,1.03.05.06.01,Dogleg and Spreader Area - Procurement & Fab,AS_SPD_MANF_3460,Receiving Inspection - ACM Interface Drift Tubes - BTL - SPD,10.0,4.0,4.0,4.0,01-31-24,02-13-24,AS_SPD_MANF_3450: FS,AS_SPD_MANF_3470: FS,SLAC,0%,52169.52169_METS Mechanical Engineer,52169_METS Mechanical Engineer,Labor,0.0d,10.0,10.0,At Completion Units,3/2/2023,3/15/2023,0,0,0,0,0,0,0,0,0,0,1.03_Accelerator Systems (AS),1.03.05_AS Beam Transfer Line (BTL),1.03.05.06_AS Beam Transfer Line Procurement and Fabrication,1.03.05.06.01_Dogleg and Spreader Area - Procurement & Fab,AS_SPD_MANF_3460_Receiving Inspection - ACM Interface Drift Tubes - BTL - SPD,Mechanical,,SLAC,Labor
98078,1.03,1.03.05,1.03.05.06,1.03.05.06.01,1.03.05.06.01,Dogleg and Spreader Area - Procurement & Fab,AS_SPD_MANF_2060,Assemble Kicker Load Water Hoses - BTL - SPD,20.0,8.0,8.0,8.0,01-02-24,01-30-24,AS_SPD_MANF_2050: FS,AS_SPD_MANF_2070: FS,SLAC,0%,52190.52190_METSTP Tech Planning - Reinstated FY16,52190_METSTP Tech Planning - Reinstated FY16,Labor,0.0d,20.0,20.0,At Completion Units,4/4/2023,5/1/2023,0,0,0,0,0,0,0,0,0,0,1.03_Accelerator Systems (AS),1.03.05_AS Beam Transfer Line (BTL),1.03.05.06_AS Beam Transfer Line Procurement and Fabrication,1.03.05.06.01_Dogleg and Spreader Area - Procurement & Fab,AS_SPD_MANF_2060_Assemble Kicker Load Water Hoses - BTL - SPD,METSTPT Tech Planning,Tech,SLAC,Labor
98079,1.03,1.03.05,1.03.05.06,1.03.05.06.01,1.03.05.06.01,Dogleg and Spreader Area - Procurement & Fab,AS_SPD_MANF_2060,Assemble Kicker Load Water Hoses - BTL - SPD,20.0,96.0,96.0,96.0,01-02-24,01-30-24,AS_SPD_MANF_2050: FS,AS_SPD_MANF_2070: FS,SLAC,0%,52198.52198_METSMANF (METSD Manufacturing),52198_METSMANF (METSD Manufacturing),Labor,0.0d,20.0,20.0,At Completion Units,4/4/2023,5/1/2023,0,0,0,0,0,0,0,0,0,0,1.03_Accelerator Systems (AS),1.03.05_AS Beam Transfer Line (BTL),1.03.05.06_AS Beam Transfer Line Procurement and Fabrication,1.03.05.06.01_Dogleg and Spreader Area - Procurement & Fab,AS_SPD_MANF_2060_Assemble Kicker Load Water Hoses - BTL - SPD,Manufacturing,,SLAC,Labor
98080,1.03,1.03.05,1.03.05.06,1.03.05.06.01,1.03.05.06.01,Dogleg and Spreader Area - Procurement & Fab,AS_SPD_MANF_2060,Assemble Kicker Load Water Hoses - BTL - SPD,20.0,4.0,4.0,4.0,01-02-24,01-30-24,AS_SPD_MANF_2050: FS,AS_SPD_MANF_2070: FS,SLAC,0%,52169.52169_METS Mechanical Engineer,52169_METS Mechanical Engineer,Labor,0.0d,20.0,20.0,At Completion Units,4/4/2023,5/1/2023,0,0,0,0,0,0,0,0,0,0,1.03_Accelerator Systems (AS),1.03.05_AS Beam Transfer Line (BTL),1.03.05.06_AS Beam Transfer Line Procurement and Fabrication,1.03.05.06.01_Dogleg and Spreader Area - Procurement & Fab,AS_SPD_MANF_2060_Assemble Kicker Load Water Hoses - BTL - SPD,Mechanical,,SLAC,Labor
98081,1.03,1.03.05,1.03.05.06,1.03.05.06.01,1.03.05.06.01,Dogleg and Spreader Area - Procurement & Fab,AS_DOG_MANF_2260,Inspect and Process - Misc Vacuum Hardware - BTL - DOG,20.0,34.0,34.0,34.0,01-02-24,01-30-24,AS_DOG_MANF_2250: FS,AS_DOG_MANF_2270: FS,SLAC,0%,52198.52198_METSMANF (METSD Manufacturing),52198_METSMANF (METSD Manufacturing),Labor,0.0d,20.0,20.0,At Completion Units,4/4/2023,5/1/2023,0,0,0,0,0,0,0,0,0,0,1.03_Accelerator Systems (AS),1.03.05_AS Beam Transfer Line (BTL),1.03.05.06_AS Beam Transfer Line Procurement and Fabrication,1.03.05.06.01_Dogleg and Spreader Area - Procurement & Fab,AS_DOG_MANF_2260_Inspect and Process - Misc Vacuum Hardware - BTL - DOG,Manufacturing,,SLAC,Labor
98082,1.03,1.03.05,1.03.05.06,1.03.05.06.01,1.03.05.06.01,Dogleg and Spreader Area - Procurement & Fab,AS_DOG_MANF_2070,Testing & Processing - Drift Tubes - BTL - DOG,20.0,0.0,0.0,0.0,03-14-24,04-10-24,"AS_DOG_MANF_2270: FS, AS_DOG_MANF_2060: FS",AS_DOG_MANF_2080: FS,SLAC,0%,52190.52190_METSTP Tech Planning - Reinstated FY16,52190_METSTP Tech Planning - Reinstated FY16,Labor,0.0d,20.0,20.0,At Completion Units,5/2/2023,5/30/2023,0,0,0,0,0,0,0,0,0,0,1.03_Accelerator Systems (AS),1.03.05_AS Beam Transfer Line (BTL),1.03.05.06_AS Beam Transfer Line Procurement and Fabrication,1.03.05.06.01_Dogleg and Spreader Area - Procurement & Fab,AS_DOG_MANF_2070_Testing & Processing - Drift Tubes - BTL - DOG,METSTPT Tech Planning,Tech,SLAC,Labor
98083,1.03,1.03.05,1.03.05.06,1.03.05.06.01,1.03.05.06.01,Dogleg and Spreader Area - Procurement & Fab,AS_DOG_MANF_2070,Testing & Processing - Drift Tubes - BTL - DOG,20.0,60.0,60.0,60.0,03-14-24,04-10-24,"AS_DOG_MANF_2270: FS, AS_DOG_MANF_2060: FS",AS_DOG_MANF_2080: FS,SLAC,0%,52198.52198_METSMANF (METSD Manufacturing),52198_METSMANF (METSD Manufacturing),Labor,0.0d,20.0,20.0,At Completion Units,5/2/2023,5/30/2023,0,0,0,0,0,0,0,0,0,0,1.03_Accelerator Systems (AS),1.03.05_AS Beam Transfer Line (BTL),1.03.05.06_AS Beam Transfer Line Procurement and Fabrication,1.03.05.06.01_Dogleg and Spreader Area - Procurement & Fab,AS_DOG_MANF_2070_Testing & Processing - Drift Tubes - BTL - DOG,Manufacturing,,SLAC,Labor
98084,1.03,1.03.05,1.03.05.06,1.03.05.06.01,1.03.05.06.01,Dogleg and Spreader Area - Procurement & Fab,AS_DOG_MANF_2070,Testing & Processing - Drift Tubes - BTL - DOG,20.0,0.0,0.0,0.0,03-14-24,04-10-24,"AS_DOG_MANF_2270: FS, AS_DOG_MANF_2060: FS",AS_DOG_MANF_2080: FS,SLAC,0%,52169.52169_METS Mechanical Engineer,52169_METS Mechanical Engineer,Labor,0.0d,20.0,20.0,At Completion Units,5/2/2023,5/30/2023,0,0,0,0,0,0,0,0,0,0,1.03_Accelerator Systems (AS),1.03.05_AS Beam Transfer Line (BTL),1.03.05.06_AS Beam Transfer Line Procurement and Fabrication,1.03.05.06.01_Dogleg and Spreader Area - Procurement & Fab,AS_DOG_MANF_2070_Testing & Processing - Drift Tubes - BTL - DOG,Mechanical,,SLAC,Labor
98085,1.03,1.03.05,1.03.05.06,1.03.05.06.01,1.03.05.06.01,Dogleg and Spreader Area - Procurement & Fab,AS_DOG_MANF_1270,Testing & Processing - Sextupole Drift Pipes - BTL - DOG,20.0,2.0,2.0,2.0,04-04-24,05-01-24,AS_DOG_MANF_1260: FS,AS_DOG_MANF_1280: FS,SLAC,0%,52190.52190_METSTP Tech Planning - Reinstated FY16,52190_METSTP Tech Planning - Reinstated FY16,Labor,0.0d,20.0,20.0,At Completion Units,3/7/2023,4/3/2023,0,0,0,0,0,0,0,0,0,0,1.03_Accelerator Systems (AS),1.03.05_AS Beam Transfer Line (BTL),1.03.05.06_AS Beam Transfer Line Procurement and Fabrication,1.03.05.06.01_Dogleg and Spreader Area - Procurement & Fab,AS_DOG_MANF_1270_Testing & Processing - Sextupole Drift Pipes - BTL - DOG,METSTPT Tech Planning,Tech,SLAC,Labor
98086,1.03,1.03.05,1.03.05.06,1.03.05.06.01,1.03.05.06.01,Dogleg and Spreader Area - Procurement & Fab,AS_DOG_MANF_1270,Testing & Processing - Sextupole Drift Pipes - BTL - DOG,20.0,48.0,48.0,48.0,04-04-24,05-01-24,AS_DOG_MANF_1260: FS,AS_DOG_MANF_1280: FS,SLAC,0%,52198.52198_METSMANF (METSD Manufacturing),52198_METSMANF (METSD Manufacturing),Labor,0.0d,20.0,20.0,At Completion Units,3/7/2023,4/3/2023,0,0,0,0,0,0,0,0,0,0,1.03_Accelerator Systems (AS),1.03.05_AS Beam Transfer Line (BTL),1.03.05.06_AS Beam Transfer Line Procurement and Fabrication,1.03.05.06.01_Dogleg and Spreader Area - Procurement & Fab,AS_DOG_MANF_1270_Testing & Processing - Sextupole Drift Pipes - BTL - DOG,Manufacturing,,SLAC,Labor
98087,1.03,1.03.05,1.03.05.06,1.03.05.06.01,1.03.05.06.01,Dogleg and Spreader Area - Procurement & Fab,AS_DOG_MANF_1270,Testing & Processing - Sextupole Drift Pipes - BTL - DOG,20.0,0.0,0.0,0.0,04-04-24,05-01-24,AS_DOG_MANF_1260: FS,AS_DOG_MANF_1280: FS,SLAC,0%,52169.52169_METS Mechanical Engineer,52169_METS Mechanical Engineer,Labor,0.0d,20.0,20.0,At Completion Units,3/7/2023,4/3/2023,0,0,0,0,0,0,0,0,0,0,1.03_Accelerator Systems (AS),1.03.05_AS Beam Transfer Line (BTL),1.03.05.06_AS Beam Transfer Line Procurement and Fabrication,1.03.05.06.01_Dogleg and Spreader Area - Procurement & Fab,AS_DOG_MANF_1270_Testing & Processing - Sextupole Drift Pipes - BTL - DOG,Mechanical,,SLAC,Labor
98088,1.03,1.03.05,1.03.05.06,1.03.05.06.01,1.03.05.06.01,Dogleg and Spreader Area - Procurement & Fab,AS_DOG_MANF_1070,Inspection & Test - 1.38S3.00 Sextupoles - BTL - DOG,30.0,4.0,4.0,4.0,06-07-24,07-19-24,"AS_DOG_MANF_1060: FS, AS_DOG_MANF_1670: FS, AS_DOG_MANF_2460: FS, AS_DOG_MANF_1280: FS",AS_DOG_MANF_1080: FS,SLAC,0%,52190.52190_METSTP Tech Planning - Reinstated FY16,52190_METSTP Tech Planning - Reinstated FY16,Labor,0.0d,30.0,30.0,At Completion Units,5/9/2023,6/20/2023,0,0,0,0,0,0,0,0,0,0,1.03_Accelerator Systems (AS),1.03.05_AS Beam Transfer Line (BTL),1.03.05.06_AS Beam Transfer Line Procurement and Fabrication,1.03.05.06.01_Dogleg and Spreader Area - Procurement & Fab,AS_DOG_MANF_1070_Inspection & Test - 1.38S3.00 Sextupoles - BTL - DOG,METSTPT Tech Planning,Tech,SLAC,Labor
98089,1.03,1.03.05,1.03.05.06,1.03.05.06.01,1.03.05.06.01,Dogleg and Spreader Area - Procurement & Fab,AS_DOG_MANF_1070,Inspection & Test - 1.38S3.00 Sextupoles - BTL - DOG,30.0,12.0,12.0,12.0,06-07-24,07-19-24,"AS_DOG_MANF_1060: FS, AS_DOG_MANF_1670: FS, AS_DOG_MANF_2460: FS, AS_DOG_MANF_1280: FS",AS_DOG_MANF_1080: FS,SLAC,0%,52169.52169_METS Mechanical Engineer,52169_METS Mechanical Engineer,Labor,0.0d,30.0,30.0,At Completion Units,5/9/2023,6/20/2023,0,0,0,0,0,0,0,0,0,0,1.03_Accelerator Systems (AS),1.03.05_AS Beam Transfer Line (BTL),1.03.05.06_AS Beam Transfer Line Procurement and Fabrication,1.03.05.06.01_Dogleg and Spreader Area - Procurement & Fab,AS_DOG_MANF_1070_Inspection & Test - 1.38S3.00 Sextupoles - BTL - DOG,Mechanical,,SLAC,Labor
98090,1.03,1.03.05,1.03.05.06,1.03.05.06.01,1.03.05.06.01,Dogleg and Spreader Area - Procurement & Fab,AS_DOG_MANF_1070,Inspection & Test - 1.38S3.00 Sextupoles - BTL - DOG,30.0,120.0,120.0,120.0,06-07-24,07-19-24,"AS_DOG_MANF_1060: FS, AS_DOG_MANF_1670: FS, AS_DOG_MANF_2460: FS, AS_DOG_MANF_1280: FS",AS_DOG_MANF_1080: FS,SLAC,0%,52198.52198_METSMANF (METSD Manufacturing),52198_METSMANF (METSD Manufacturing),Labor,0.0d,30.0,30.0,At Completion Units,5/9/2023,6/20/2023,0,0,0,0,0,0,0,0,0,0,1.03_Accelerator Systems (AS),1.03.05_AS Beam Transfer Line (BTL),1.03.05.06_AS Beam Transfer Line Procurement and Fabrication,1.03.05.06.01_Dogleg and Spreader Area - Procurement & Fab,AS_DOG_MANF_1070_Inspection & Test - 1.38S3.00 Sextupoles - BTL - DOG,Manufacturing,,SLAC,Labor
98091,1.03,1.03.05,1.03.05.06,1.03.05.06.01,1.03.05.06.01,Dogleg and Spreader Area - Procurement & Fab,AS_SPD_MANF_4250,RCV: Misc Mech Hardware - BTL - SPD,1.0,3000.0,3000.0,3000.0,12-15-23,12-15-23,AS_SPD_MANF_4240: FS,AS_SPD_MANF_4260: FS,SLAC,0%,SL_MSSC.SLAC M&S (<$500K) (gets G&A) (gets ESC),SLAC M&S (<$500K) (gets G&A) (gets ESC),Nonlabor,0.0d,1.0,1.0,At Completion Units,4/3/2023,4/3/2023,0,0,0,0,0,0,0,0,0,0,1.03_Accelerator Systems (AS),1.03.05_AS Beam Transfer Line (BTL),1.03.05.06_AS Beam Transfer Line Procurement and Fabrication,1.03.05.06.01_Dogleg and Spreader Area - Procurement & Fab,AS_SPD_MANF_4250_RCV: Misc Mech Hardware - BTL - SPD,Material,,SLAC,M&S
98092,1.03,1.03.05,1.03.05.06,1.03.05.06.01,1.03.05.06.01,Dogleg and Spreader Area - Procurement & Fab,AS_SPD_MANF_4200,Prepare Requisition (Specs/SOW/ETC) - Misc Mech Hardware - BTL - SPD,10.0,0.0,0.0,0.0,01-03-23,01-17-23,"AS_BTL_DE_1060: FS, MS_FY_2023_Q2: FS",AS_SPD_MANF_4210: FS,SLAC,0%,52198.52198_METSMANF (METSD Manufacturing),52198_METSMANF (METSD Manufacturing),Labor,0.0d,10.0,10.0,At Completion Units,1/3/2023,1/17/2023,0,0,0,0,0,0,0,0,0,0,1.03_Accelerator Systems (AS),1.03.05_AS Beam Transfer Line (BTL),1.03.05.06_AS Beam Transfer Line Procurement and Fabrication,1.03.05.06.01_Dogleg and Spreader Area - Procurement & Fab,AS_SPD_MANF_4200_Prepare Requisition (Specs/SOW/ETC) - Misc Mech Hardware - BTL - SPD,Manufacturing,,SLAC,Labor
98093,1.03,1.03.05,1.03.05.06,1.03.05.06.01,1.03.05.06.01,Dogleg and Spreader Area - Procurement & Fab,AS_SPD_MANF_4200,Prepare Requisition (Specs/SOW/ETC) - Misc Mech Hardware - BTL - SPD,10.0,8.0,8.0,8.0,01-03-23,01-17-23,"AS_BTL_DE_1060: FS, MS_FY_2023_Q2: FS",AS_SPD_MANF_4210: FS,SLAC,0%,52190.52190_METSTP Tech Planning - Reinstated FY16,52190_METSTP Tech Planning - Reinstated FY16,Labor,0.0d,10.0,10.0,At Completion Units,1/3/2023,1/17/2023,0,0,0,0,0,0,0,0,0,0,1.03_Accelerator Systems (AS),1.03.05_AS Beam Transfer Line (BTL),1.03.05.06_AS Beam Transfer Line Procurement and Fabrication,1.03.05.06.01_Dogleg and Spreader Area - Procurement & Fab,AS_SPD_MANF_4200_Prepare Requisition (Specs/SOW/ETC) - Misc Mech Hardware - BTL - SPD,METSTPT Tech Planning,Tech,SLAC,Labor
98094,1.03,1.03.05,1.03.05.06,1.03.05.06.01,1.03.05.06.01,Dogleg and Spreader Area - Procurement & Fab,AS_SPD_MANF_4200,Prepare Requisition (Specs/SOW/ETC) - Misc Mech Hardware - BTL - SPD,10.0,0.0,0.0,0.0,01-03-23,01-17-23,"AS_BTL_DE_1060: FS, MS_FY_2023_Q2: FS",AS_SPD_MANF_4210: FS,SLAC,0%,52169.52169_METS Mechanical Engineer,52169_METS Mechanical Engineer,Labor,0.0d,10.0,10.0,At Completion Units,1/3/2023,1/17/2023,0,0,0,0,0,0,0,0,0,0,1.03_Accelerator Systems (AS),1.03.05_AS Beam Transfer Line (BTL),1.03.05.06_AS Beam Transfer Line Procurement and Fabrication,1.03.05.06.01_Dogleg and Spreader Area - Procurement & Fab,AS_SPD_MANF_4200_Prepare Requisition (Specs/SOW/ETC) - Misc Mech Hardware - BTL - SPD,Mechanical,,SLAC,Labor
98095,1.03,1.03.05,1.03.05.06,1.03.05.06.01,1.03.05.06.01,Dogleg and Spreader Area - Procurement & Fab,AS_SPD_MANF_4230,AWARD: Procurement - Misc Mech Hardware - BTL - SPD,1.0,3000.0,3000.0,3000.0,10-17-23,10-17-23,AS_SPD_MANF_4220: FS,AS_SPD_MANF_4240: FS,SLAC,0%,AWARD_USE.AWARD - Use this AWARD,AWARD - Use this AWARD,Nonlabor,0.0d,1.0,1.0,At Completion Units,2/2/2023,2/2/2023,AWARD < $500K,0,0,0,0,0,0,0,0,0,1.03_Accelerator Systems (AS),1.03.05_AS Beam Transfer Line (BTL),1.03.05.06_AS Beam Transfer Line Procurement and Fabrication,1.03.05.06.01_Dogleg and Spreader Area - Procurement & Fab,AS_SPD_MANF_4230_AWARD: Procurement - Misc Mech Hardware - BTL - SPD,Material,,SLAC,M&S
98096,1.03,1.03.05,1.03.05.06,1.03.05.06.01,1.03.05.06.01,Dogleg and Spreader Area - Procurement & Fab,AS_SPD_MANF_4210,RQN: Approval of Requisition - Misc Mech Hardware - BTL - SPD,1.0,3000.0,3000.0,3000.0,10-02-23,10-02-23,"AS_SPD_MANF_4200: FS, AS_BTL_MANF_1000: FS",AS_SPD_MANF_4220: FS,SLAC,0%,REQ.Requisition,Requisition,Nonlabor,0.0d,1.0,1.0,At Completion Units,1/18/2023,1/18/2023,RQN,0,0,0,0,0,0,0,0,0,1.03_Accelerator Systems (AS),1.03.05_AS Beam Transfer Line (BTL),1.03.05.06_AS Beam Transfer Line Procurement and Fabrication,1.03.05.06.01_Dogleg and Spreader Area - Procurement & Fab,AS_SPD_MANF_4210_RQN: Approval of Requisition - Misc Mech Hardware - BTL - SPD,Material,,SLAC,M&S
98097,1.03,1.03.05,1.03.05.06,1.03.05.06.01,1.03.05.06.01,Dogleg and Spreader Area - Procurement & Fab,AS_SPD_MANF_4050,RCV: Goods/Services - Misc Vacuum Hardware - BTL - SPD,1.0,2000.0,2000.0,2000.0,12-15-23,12-15-23,AS_SPD_MANF_4040: FS,AS_SPD_MANF_4060: FS,SLAC,0%,SL_MSSC.SLAC M&S (<$500K) (gets G&A) (gets ESC),SLAC M&S (<$500K) (gets G&A) (gets ESC),Nonlabor,0.0d,1.0,1.0,At Completion Units,4/3/2023,4/3/2023,0,0,0,0,0,0,0,0,0,0,1.03_Accelerator Systems (AS),1.03.05_AS Beam Transfer Line (BTL),1.03.05.06_AS Beam Transfer Line Procurement and Fabrication,1.03.05.06.01_Dogleg and Spreader Area - Procurement & Fab,AS_SPD_MANF_4050_RCV: Goods/Services - Misc Vacuum Hardware - BTL - SPD,Material,,SLAC,M&S
98098,1.03,1.03.05,1.03.05.06,1.03.05.06.01,1.03.05.06.01,Dogleg and Spreader Area - Procurement & Fab,AS_SPD_MANF_4000,Prepare Requisition (Specs/SOW/ETC) - Misc Vacuum Hardware - BTL - SPD,10.0,0.0,0.0,0.0,01-03-23,01-17-23,"AS_BTL_DE_1060: FS, MS_FY_2023_Q2: FS",AS_SPD_MANF_4010: FS,SLAC,0%,52198.52198_METSMANF (METSD Manufacturing),52198_METSMANF (METSD Manufacturing),Labor,0.0d,10.0,10.0,At Completion Units,1/3/2023,1/17/2023,0,0,0,0,0,0,0,0,0,0,1.03_Accelerator Systems (AS),1.03.05_AS Beam Transfer Line (BTL),1.03.05.06_AS Beam Transfer Line Procurement and Fabrication,1.03.05.06.01_Dogleg and Spreader Area - Procurement & Fab,AS_SPD_MANF_4000_Prepare Requisition (Specs/SOW/ETC) - Misc Vacuum Hardware - BTL - SPD,Manufacturing,,SLAC,Labor
98099,1.03,1.03.05,1.03.05.06,1.03.05.06.01,1.03.05.06.01,Dogleg and Spreader Area - Procurement & Fab,AS_SPD_MANF_4000,Prepare Requisition (Specs/SOW/ETC) - Misc Vacuum Hardware - BTL - SPD,10.0,4.0,4.0,4.0,01-03-23,01-17-23,"AS_BTL_DE_1060: FS, MS_FY_2023_Q2: FS",AS_SPD_MANF_4010: FS,SLAC,0%,52190.52190_METSTP Tech Planning - Reinstated FY16,52190_METSTP Tech Planning - Reinstated FY16,Labor,0.0d,10.0,10.0,At Completion Units,1/3/2023,1/17/2023,0,0,0,0,0,0,0,0,0,0,1.03_Accelerator Systems (AS),1.03.05_AS Beam Transfer Line (BTL),1.03.05.06_AS Beam Transfer Line Procurement and Fabrication,1.03.05.06.01_Dogleg and Spreader Area - Procurement & Fab,AS_SPD_MANF_4000_Prepare Requisition (Specs/SOW/ETC) - Misc Vacuum Hardware - BTL - SPD,METSTPT Tech Planning,Tech,SLAC,Labor
98100,1.03,1.03.05,1.03.05.06,1.03.05.06.01,1.03.05.06.01,Dogleg and Spreader Area - Procurement & Fab,AS_SPD_MANF_4000,Prepare Requisition (Specs/SOW/ETC) - Misc Vacuum Hardware - BTL - SPD,10.0,0.0,0.0,0.0,01-03-23,01-17-23,"AS_BTL_DE_1060: FS, MS_FY_2023_Q2: FS",AS_SPD_MANF_4010: FS,SLAC,0%,52169.52169_METS Mechanical Engineer,52169_METS Mechanical Engineer,Labor,0.0d,10.0,10.0,At Completion Units,1/3/2023,1/17/2023,0,0,0,0,0,0,0,0,0,0,1.03_Accelerator Systems (AS),1.03.05_AS Beam Transfer Line (BTL),1.03.05.06_AS Beam Transfer Line Procurement and Fabrication,1.03.05.06.01_Dogleg and Spreader Area - Procurement & Fab,AS_SPD_MANF_4000_Prepare Requisition (Specs/SOW/ETC) - Misc Vacuum Hardware - BTL - SPD,Mechanical,,SLAC,Labor
98101,1.03,1.03.05,1.03.05.06,1.03.05.06.01,1.03.05.06.01,Dogleg and Spreader Area - Procurement & Fab,AS_SPD_MANF_4030,AWARD: Procurement - Misc Vacuum Hardware - BTL - SPD,1.0,2000.0,2000.0,2000.0,10-17-23,10-17-23,AS_SPD_MANF_4020: FS,AS_SPD_MANF_4040: FS,SLAC,0%,AWARD_USE.AWARD - Use this AWARD,AWARD - Use this AWARD,Nonlabor,0.0d,1.0,1.0,At Completion Units,2/2/2023,2/2/2023,AWARD < $500K,0,0,0,0,0,0,0,0,0,1.03_Accelerator Systems (AS),1.03.05_AS Beam Transfer Line (BTL),1.03.05.06_AS Beam Transfer Line Procurement and Fabrication,1.03.05.06.01_Dogleg and Spreader Area - Procurement & Fab,AS_SPD_MANF_4030_AWARD: Procurement - Misc Vacuum Hardware - BTL - SPD,Material,,SLAC,M&S
98102,1.03,1.03.05,1.03.05.06,1.03.05.06.01,1.03.05.06.01,Dogleg and Spreader Area - Procurement & Fab,AS_SPD_MANF_4010,RQN: Approval of Requisition - Misc Vacuum Hardware - BTL - SPD,1.0,2000.0,2000.0,2000.0,10-02-23,10-02-23,"AS_SPD_MANF_4000: FS, AS_BTL_MANF_1000: FS",AS_SPD_MANF_4020: FS,SLAC,0%,REQ.Requisition,Requisition,Nonlabor,0.0d,1.0,1.0,At Completion Units,1/18/2023,1/18/2023,RQN,0,0,0,0,0,0,0,0,0,1.03_Accelerator Systems (AS),1.03.05_AS Beam Transfer Line (BTL),1.03.05.06_AS Beam Transfer Line Procurement and Fabrication,1.03.05.06.01_Dogleg and Spreader Area - Procurement & Fab,AS_SPD_MANF_4010_RQN: Approval of Requisition - Misc Vacuum Hardware - BTL - SPD,Material,,SLAC,M&S
98103,1.03,1.03.05,1.03.05.06,1.03.05.06.01,1.03.05.06.01,Dogleg and Spreader Area - Procurement & Fab,AS_SPD_MANF_2450,Receiving Inspection - Sextupole Drift Pipes - BTL - SPD,10.0,4.0,4.0,4.0,03-27-24,04-09-24,AS_SPD_MANF_2440: FS,AS_SPD_MANF_2460: FS,SLAC,0%,52190.52190_METSTP Tech Planning - Reinstated FY16,52190_METSTP Tech Planning - Reinstated FY16,Labor,0.0d,10.0,10.0,At Completion Units,2/27/2023,3/10/2023,0,0,0,0,0,0,0,0,0,0,1.03_Accelerator Systems (AS),1.03.05_AS Beam Transfer Line (BTL),1.03.05.06_AS Beam Transfer Line Procurement and Fabrication,1.03.05.06.01_Dogleg and Spreader Area - Procurement & Fab,AS_SPD_MANF_2450_Receiving Inspection - Sextupole Drift Pipes - BTL - SPD,METSTPT Tech Planning,Tech,SLAC,Labor
98104,1.03,1.03.05,1.03.05.06,1.03.05.06.01,1.03.05.06.01,Dogleg and Spreader Area - Procurement & Fab,AS_SPD_MANF_2450,Receiving Inspection - Sextupole Drift Pipes - BTL - SPD,10.0,0.0,0.0,0.0,03-27-24,04-09-24,AS_SPD_MANF_2440: FS,AS_SPD_MANF_2460: FS,SLAC,0%,52198.52198_METSMANF (METSD Manufacturing),52198_METSMANF (METSD Manufacturing),Labor,0.0d,10.0,10.0,At Completion Units,2/27/2023,3/10/2023,0,0,0,0,0,0,0,0,0,0,1.03_Accelerator Systems (AS),1.03.05_AS Beam Transfer Line (BTL),1.03.05.06_AS Beam Transfer Line Procurement and Fabrication,1.03.05.06.01_Dogleg and Spreader Area - Procurement & Fab,AS_SPD_MANF_2450_Receiving Inspection - Sextupole Drift Pipes - BTL - SPD,Manufacturing,,SLAC,Labor
98105,1.03,1.03.05,1.03.05.06,1.03.05.06.01,1.03.05.06.01,Dogleg and Spreader Area - Procurement & Fab,AS_SPD_MANF_2450,Receiving Inspection - Sextupole Drift Pipes - BTL - SPD,10.0,4.0,4.0,4.0,03-27-24,04-09-24,AS_SPD_MANF_2440: FS,AS_SPD_MANF_2460: FS,SLAC,0%,52169.52169_METS Mechanical Engineer,52169_METS Mechanical Engineer,Labor,0.0d,10.0,10.0,At Completion Units,2/27/2023,3/10/2023,0,0,0,0,0,0,0,0,0,0,1.03_Accelerator Systems (AS),1.03.05_AS Beam Transfer Line (BTL),1.03.05.06_AS Beam Transfer Line Procurement and Fabrication,1.03.05.06.01_Dogleg and Spreader Area - Procurement & Fab,AS_SPD_MANF_2450_Receiving Inspection - Sextupole Drift Pipes - BTL - SPD,Mechanical,,SLAC,Labor
98106,1.03,1.03.05,1.03.05.06,1.03.05.06.01,1.03.05.06.01,Dogleg and Spreader Area - Procurement & Fab,AS_SPD_MANF_2400,Prepare Requisition (Specs/SOW/ETC) - Sextupole Drift Pipes - BTL - SPD,10.0,4.0,4.0,4.0,08-05-22,08-18-22,"AS_BTL_DE_1060: FS, MS_FY_2022_Q4: FS",AS_SPD_MANF_2410: FS,SLAC,0%,52190.52190_METSTP Tech Planning - Reinstated FY16,52190_METSTP Tech Planning - Reinstated FY16,Labor,0.0d,10.0,10.0,At Completion Units,7/5/2022,7/18/2022,0,0,0,0,0,0,0,0,0,0,1.03_Accelerator Systems (AS),1.03.05_AS Beam Transfer Line (BTL),1.03.05.06_AS Beam Transfer Line Procurement and Fabrication,1.03.05.06.01_Dogleg and Spreader Area - Procurement & Fab,AS_SPD_MANF_2400_Prepare Requisition (Specs/SOW/ETC) - Sextupole Drift Pipes - BTL - SPD,METSTPT Tech Planning,Tech,SLAC,Labor
98107,1.03,1.03.05,1.03.05.06,1.03.05.06.01,1.03.05.06.01,Dogleg and Spreader Area - Procurement & Fab,AS_SPD_MANF_2400,Prepare Requisition (Specs/SOW/ETC) - Sextupole Drift Pipes - BTL - SPD,10.0,0.0,0.0,0.0,08-05-22,08-18-22,"AS_BTL_DE_1060: FS, MS_FY_2022_Q4: FS",AS_SPD_MANF_2410: FS,SLAC,0%,52198.52198_METSMANF (METSD Manufacturing),52198_METSMANF (METSD Manufacturing),Labor,0.0d,10.0,10.0,At Completion Units,7/5/2022,7/18/2022,0,0,0,0,0,0,0,0,0,0,1.03_Accelerator Systems (AS),1.03.05_AS Beam Transfer Line (BTL),1.03.05.06_AS Beam Transfer Line Procurement and Fabrication,1.03.05.06.01_Dogleg and Spreader Area - Procurement & Fab,AS_SPD_MANF_2400_Prepare Requisition (Specs/SOW/ETC) - Sextupole Drift Pipes - BTL - SPD,Manufacturing,,SLAC,Labor
98108,1.03,1.03.05,1.03.05.06,1.03.05.06.01,1.03.05.06.01,Dogleg and Spreader Area - Procurement & Fab,AS_SPD_MANF_2400,Prepare Requisition (Specs/SOW/ETC) - Sextupole Drift Pipes - BTL - SPD,10.0,4.0,4.0,4.0,08-05-22,08-18-22,"AS_BTL_DE_1060: FS, MS_FY_2022_Q4: FS",AS_SPD_MANF_2410: FS,SLAC,0%,52169.52169_METS Mechanical Engineer,52169_METS Mechanical Engineer,Labor,0.0d,10.0,10.0,At Completion Units,7/5/2022,7/18/2022,0,0,0,0,0,0,0,0,0,0,1.03_Accelerator Systems (AS),1.03.05_AS Beam Transfer Line (BTL),1.03.05.06_AS Beam Transfer Line Procurement and Fabrication,1.03.05.06.01_Dogleg and Spreader Area - Procurement & Fab,AS_SPD_MANF_2400_Prepare Requisition (Specs/SOW/ETC) - Sextupole Drift Pipes - BTL - SPD,Mechanical,,SLAC,Labor
98109,1.03,1.03.05,1.03.05.06,1.03.05.06.01,1.03.05.06.01,Dogleg and Spreader Area - Procurement & Fab,AS_SPD_MANF_2460,RCV: Goods/Services - Sextupole Drift Pipes - BTL - SPD,1.0,18000.0,18000.0,18000.0,04-10-24,04-10-24,"AS_SPD_MANF_2440: FS, AS_SPD_MANF_2450: FS",AS_SPD_MANF_2470: FS,SLAC,0%,SL_MSSC.SLAC M&S (<$500K) (gets G&A) (gets ESC),SLAC M&S (<$500K) (gets G&A) (gets ESC),Nonlabor,0.0d,1.0,1.0,At Completion Units,3/13/2023,3/13/2023,0,0,0,0,0,0,0,0,0,0,1.03_Accelerator Systems (AS),1.03.05_AS Beam Transfer Line (BTL),1.03.05.06_AS Beam Transfer Line Procurement and Fabrication,1.03.05.06.01_Dogleg and Spreader Area - Procurement & Fab,AS_SPD_MANF_2460_RCV: Goods/Services - Sextupole Drift Pipes - BTL - SPD,Material,,SLAC,M&S
98110,1.03,1.03.05,1.03.05.06,1.03.05.06.01,1.03.05.06.01,Dogleg and Spreader Area - Procurement & Fab,AS_SPD_MANF_2430,AWARD: Procurement - Sextupole Drift Pipes - BTL - SPD,1.0,18000.0,18000.0,18000.0,10-31-23,10-31-23,AS_SPD_MANF_2420: FS,AS_SPD_MANF_2440: FS,SLAC,0%,AWARD_USE.AWARD - Use this AWARD,AWARD - Use this AWARD,Nonlabor,0.0d,1.0,1.0,At Completion Units,10/3/2022,10/3/2022,AWARD < $500K,0,0,0,0,0,0,0,0,0,1.03_Accelerator Systems (AS),1.03.05_AS Beam Transfer Line (BTL),1.03.05.06_AS Beam Transfer Line Procurement and Fabrication,1.03.05.06.01_Dogleg and Spreader Area - Procurement & Fab,AS_SPD_MANF_2430_AWARD: Procurement - Sextupole Drift Pipes - BTL - SPD,Material,,SLAC,M&S
98111,1.03,1.03.05,1.03.05.06,1.03.05.06.01,1.03.05.06.01,Dogleg and Spreader Area - Procurement & Fab,AS_SPD_MANF_2410,RQN: Approval of Requisition - Sextupole Drift Pipes - BTL - SPD,1.0,18000.0,18000.0,18000.0,10-02-23,10-02-23,"AS_SPD_MANF_2400: FS, AS_BTL_MANF_1000: FS",AS_SPD_MANF_2420: FS,SLAC,0%,REQ.Requisition,Requisition,Nonlabor,0.0d,1.0,1.0,At Completion Units,9/1/2022,9/1/2022,RQN,0,0,0,0,0,0,0,0,0,1.03_Accelerator Systems (AS),1.03.05_AS Beam Transfer Line (BTL),1.03.05.06_AS Beam Transfer Line Procurement and Fabrication,1.03.05.06.01_Dogleg and Spreader Area - Procurement & Fab,AS_SPD_MANF_2410_RQN: Approval of Requisition - Sextupole Drift Pipes - BTL - SPD,Material,,SLAC,M&S
98112,1.03,1.03.05,1.03.05.06,1.03.05.06.01,1.03.05.06.01,Dogleg and Spreader Area - Procurement & Fab,AS_SPD_MANF_2050,RCV: Goods/Services - Kicker Load Water Hoses - BTL - SPD,1.0,4800.0,4800.0,4800.0,12-15-23,12-15-23,AS_SPD_MANF_2040: FS,AS_SPD_MANF_2060: FS,SLAC,0%,SL_MSSC.SLAC M&S (<$500K) (gets G&A) (gets ESC),SLAC M&S (<$500K) (gets G&A) (gets ESC),Nonlabor,0.0d,1.0,1.0,At Completion Units,4/3/2023,4/3/2023,0,0,0,0,0,0,0,0,0,0,1.03_Accelerator Systems (AS),1.03.05_AS Beam Transfer Line (BTL),1.03.05.06_AS Beam Transfer Line Procurement and Fabrication,1.03.05.06.01_Dogleg and Spreader Area - Procurement & Fab,AS_SPD_MANF_2050_RCV: Goods/Services - Kicker Load Water Hoses - BTL - SPD,Material,,SLAC,M&S
98113,1.03,1.03.05,1.03.05.06,1.03.05.06.01,1.03.05.06.01,Dogleg and Spreader Area - Procurement & Fab,AS_SPD_MANF_2000,Prepare Requisition - Kicker Load Water Hoses - BTL - SPD,10.0,0.0,0.0,0.0,01-03-23,01-17-23,"AS_BTL_DE_1060: FS, MS_FY_2023_Q2: FS",AS_SPD_MANF_2010: FS,SLAC,0%,52198.52198_METSMANF (METSD Manufacturing),52198_METSMANF (METSD Manufacturing),Labor,0.0d,10.0,10.0,At Completion Units,1/3/2023,1/17/2023,0,0,0,0,0,0,0,0,0,0,1.03_Accelerator Systems (AS),1.03.05_AS Beam Transfer Line (BTL),1.03.05.06_AS Beam Transfer Line Procurement and Fabrication,1.03.05.06.01_Dogleg and Spreader Area - Procurement & Fab,AS_SPD_MANF_2000_Prepare Requisition - Kicker Load Water Hoses - BTL - SPD,Manufacturing,,SLAC,Labor
98114,1.03,1.03.05,1.03.05.06,1.03.05.06.01,1.03.05.06.01,Dogleg and Spreader Area - Procurement & Fab,AS_SPD_MANF_2000,Prepare Requisition - Kicker Load Water Hoses - BTL - SPD,10.0,8.0,8.0,8.0,01-03-23,01-17-23,"AS_BTL_DE_1060: FS, MS_FY_2023_Q2: FS",AS_SPD_MANF_2010: FS,SLAC,0%,52190.52190_METSTP Tech Planning - Reinstated FY16,52190_METSTP Tech Planning - Reinstated FY16,Labor,0.0d,10.0,10.0,At Completion Units,1/3/2023,1/17/2023,0,0,0,0,0,0,0,0,0,0,1.03_Accelerator Systems (AS),1.03.05_AS Beam Transfer Line (BTL),1.03.05.06_AS Beam Transfer Line Procurement and Fabrication,1.03.05.06.01_Dogleg and Spreader Area - Procurement & Fab,AS_SPD_MANF_2000_Prepare Requisition - Kicker Load Water Hoses - BTL - SPD,METSTPT Tech Planning,Tech,SLAC,Labor
98115,1.03,1.03.05,1.03.05.06,1.03.05.06.01,1.03.05.06.01,Dogleg and Spreader Area - Procurement & Fab,AS_SPD_MANF_2000,Prepare Requisition - Kicker Load Water Hoses - BTL - SPD,10.0,4.0,4.0,4.0,01-03-23,01-17-23,"AS_BTL_DE_1060: FS, MS_FY_2023_Q2: FS",AS_SPD_MANF_2010: FS,SLAC,0%,52169.52169_METS Mechanical Engineer,52169_METS Mechanical Engineer,Labor,0.0d,10.0,10.0,At Completion Units,1/3/2023,1/17/2023,0,0,0,0,0,0,0,0,0,0,1.03_Accelerator Systems (AS),1.03.05_AS Beam Transfer Line (BTL),1.03.05.06_AS Beam Transfer Line Procurement and Fabrication,1.03.05.06.01_Dogleg and Spreader Area - Procurement & Fab,AS_SPD_MANF_2000_Prepare Requisition - Kicker Load Water Hoses - BTL - SPD,Mechanical,,SLAC,Labor
98116,1.03,1.03.05,1.03.05.06,1.03.05.06.01,1.03.05.06.01,Dogleg and Spreader Area - Procurement & Fab,AS_SPD_MANF_2030,AWARD: Procurement - Kicker Load Water Hoses - BTL - SPD,1.0,4800.0,4800.0,4800.0,10-31-23,10-31-23,AS_SPD_MANF_2020: FS,AS_SPD_MANF_2040: FS,SLAC,0%,AWARD_USE.AWARD - Use this AWARD,AWARD - Use this AWARD,Nonlabor,0.0d,1.0,1.0,At Completion Units,2/16/2023,2/16/2023,AWARD < $500K,0,0,0,0,0,0,0,0,0,1.03_Accelerator Systems (AS),1.03.05_AS Beam Transfer Line (BTL),1.03.05.06_AS Beam Transfer Line Procurement and Fabrication,1.03.05.06.01_Dogleg and Spreader Area - Procurement & Fab,AS_SPD_MANF_2030_AWARD: Procurement - Kicker Load Water Hoses - BTL - SPD,Material,,SLAC,M&S
98117,1.03,1.03.05,1.03.05.06,1.03.05.06.01,1.03.05.06.01,Dogleg and Spreader Area - Procurement & Fab,AS_SPD_MANF_2010,RQN: Approval of Requisition - Kicker Load Water Hoses - BTL - SPD,1.0,4800.0,4800.0,4800.0,10-02-23,10-02-23,"AS_SPD_MANF_2000: FS, AS_BTL_MANF_1000: FS",AS_SPD_MANF_2020: FS,SLAC,0%,REQ.Requisition,Requisition,Nonlabor,0.0d,1.0,1.0,At Completion Units,1/18/2023,1/18/2023,RQN,0,0,0,0,0,0,0,0,0,1.03_Accelerator Systems (AS),1.03.05_AS Beam Transfer Line (BTL),1.03.05.06_AS Beam Transfer Line Procurement and Fabrication,1.03.05.06.01_Dogleg and Spreader Area - Procurement & Fab,AS_SPD_MANF_2010_RQN: Approval of Requisition - Kicker Load Water Hoses - BTL - SPD,Material,,SLAC,M&S
98118,1.03,1.03.05,1.03.05.06,1.03.05.06.01,1.03.05.06.01,Dogleg and Spreader Area - Procurement & Fab,AS_SPD_MANF_3050,RCV: Goods/Services - Interface Vacuum Drift Tubes & Bellows - BTL - SPD,1.0,16584.0,16584.0,16584.0,01-30-24,01-30-24,AS_SPD_MANF_3040: FS,AS_SPD_MANF_3060: FS,SLAC,0%,SL_MSSC.SLAC M&S (<$500K) (gets G&A) (gets ESC),SLAC M&S (<$500K) (gets G&A) (gets ESC),Nonlabor,0.0d,1.0,1.0,At Completion Units,2/14/2023,2/14/2023,0,0,0,0,0,0,0,0,0,0,1.03_Accelerator Systems (AS),1.03.05_AS Beam Transfer Line (BTL),1.03.05.06_AS Beam Transfer Line Procurement and Fabrication,1.03.05.06.01_Dogleg and Spreader Area - Procurement & Fab,AS_SPD_MANF_3050_RCV: Goods/Services - Interface Vacuum Drift Tubes & Bellows - BTL - SPD,Material,,SLAC,M&S
98119,1.03,1.03.05,1.03.05.06,1.03.05.06.01,1.03.05.06.01,Dogleg and Spreader Area - Procurement & Fab,AS_SPD_MANF_3000,Prepare Requisition - Interface Vacuum Drift Tubes & Bellows - BTL - SPD,10.0,8.0,8.0,8.0,10-04-22,10-17-22,"AS_BTL_DE_1060: FS, MS_FY_2023_Q1: FS",AS_SPD_MANF_3010: FS,SLAC,0%,52169.52169_METS Mechanical Engineer,52169_METS Mechanical Engineer,Labor,0.0d,10.0,10.0,At Completion Units,10/4/2022,10/17/2022,0,0,0,0,0,0,0,0,0,0,1.03_Accelerator Systems (AS),1.03.05_AS Beam Transfer Line (BTL),1.03.05.06_AS Beam Transfer Line Procurement and Fabrication,1.03.05.06.01_Dogleg and Spreader Area - Procurement & Fab,AS_SPD_MANF_3000_Prepare Requisition - Interface Vacuum Drift Tubes & Bellows - BTL - SPD,Mechanical,,SLAC,Labor
98120,1.03,1.03.05,1.03.05.06,1.03.05.06.01,1.03.05.06.01,Dogleg and Spreader Area - Procurement & Fab,AS_SPD_MANF_3030,AWARD: Procurement - Interface Vacuum Drift Tubes & Bellows - BTL - SPD,1.0,16584.0,16584.0,16584.0,10-31-23,10-31-23,AS_SPD_MANF_3020: FS,AS_SPD_MANF_3040: FS,SLAC,0%,AWARD_USE.AWARD - Use this AWARD,AWARD - Use this AWARD,Nonlabor,0.0d,1.0,1.0,At Completion Units,11/16/2022,11/16/2022,AWARD < $500K,0,0,0,0,0,0,0,0,0,1.03_Accelerator Systems (AS),1.03.05_AS Beam Transfer Line (BTL),1.03.05.06_AS Beam Transfer Line Procurement and Fabrication,1.03.05.06.01_Dogleg and Spreader Area - Procurement & Fab,AS_SPD_MANF_3030_AWARD: Procurement - Interface Vacuum Drift Tubes & Bellows - BTL - SPD,Material,,SLAC,M&S
98121,1.03,1.03.05,1.03.05.06,1.03.05.06.01,1.03.05.06.01,Dogleg and Spreader Area - Procurement & Fab,AS_SPD_MANF_3010,RQN: Approval of Requisition - Interface Vacuum Drift Tubes & Bellows - BTL - SPD,1.0,16584.0,16584.0,16584.0,10-02-23,10-02-23,"AS_SPD_MANF_3000: FS, AS_BTL_MANF_1000: FS",AS_SPD_MANF_3020: FS,SLAC,0%,REQ.Requisition,Requisition,Nonlabor,0.0d,1.0,1.0,At Completion Units,10/18/2022,10/18/2022,RQN,0,0,0,0,0,0,0,0,0,1.03_Accelerator Systems (AS),1.03.05_AS Beam Transfer Line (BTL),1.03.05.06_AS Beam Transfer Line Procurement and Fabrication,1.03.05.06.01_Dogleg and Spreader Area - Procurement & Fab,AS_SPD_MANF_3010_RQN: Approval of Requisition - Interface Vacuum Drift Tubes & Bellows - BTL - SPD,Material,,SLAC,M&S
98122,1.03,1.03.05,1.03.05.06,1.03.05.06.01,1.03.05.06.01,Dogleg and Spreader Area - Procurement & Fab,AS_SPD_MANF_3850,RCV: Goods/Services - ACM Shielding - BTL - SPD,1.0,18000.0,18000.0,18000.0,02-13-24,02-13-24,AS_SPD_MANF_3840: FS,AS_SPD_MANF_3860: FS,SLAC,0%,SL_MSSC.SLAC M&S (<$500K) (gets G&A) (gets ESC),SLAC M&S (<$500K) (gets G&A) (gets ESC),Nonlabor,0.0d,1.0,1.0,At Completion Units,5/15/2023,5/15/2023,0,0,0,0,0,0,0,0,0,0,1.03_Accelerator Systems (AS),1.03.05_AS Beam Transfer Line (BTL),1.03.05.06_AS Beam Transfer Line Procurement and Fabrication,1.03.05.06.01_Dogleg and Spreader Area - Procurement & Fab,AS_SPD_MANF_3850_RCV: Goods/Services - ACM Shielding - BTL - SPD,Material,,SLAC,M&S
98123,1.03,1.03.05,1.03.05.06,1.03.05.06.01,1.03.05.06.01,Dogleg and Spreader Area - Procurement & Fab,AS_SPD_MANF_3800,Prepare Requisition (Specs/SOW/ETC) - ACM Shielding - BTL - SPD,10.0,0.0,0.0,0.0,01-03-23,01-17-23,"AS_BTL_DE_1060: FS, MS_FY_2023_Q2: FS",AS_SPD_MANF_3810: FS,SLAC,0%,52198.52198_METSMANF (METSD Manufacturing),52198_METSMANF (METSD Manufacturing),Labor,0.0d,10.0,10.0,At Completion Units,1/3/2023,1/17/2023,0,0,0,0,0,0,0,0,0,0,1.03_Accelerator Systems (AS),1.03.05_AS Beam Transfer Line (BTL),1.03.05.06_AS Beam Transfer Line Procurement and Fabrication,1.03.05.06.01_Dogleg and Spreader Area - Procurement & Fab,AS_SPD_MANF_3800_Prepare Requisition (Specs/SOW/ETC) - ACM Shielding - BTL - SPD,Manufacturing,,SLAC,Labor
98124,1.03,1.03.05,1.03.05.06,1.03.05.06.01,1.03.05.06.01,Dogleg and Spreader Area - Procurement & Fab,AS_SPD_MANF_3800,Prepare Requisition (Specs/SOW/ETC) - ACM Shielding - BTL - SPD,10.0,8.0,8.0,8.0,01-03-23,01-17-23,"AS_BTL_DE_1060: FS, MS_FY_2023_Q2: FS",AS_SPD_MANF_3810: FS,SLAC,0%,52190.52190_METSTP Tech Planning - Reinstated FY16,52190_METSTP Tech Planning - Reinstated FY16,Labor,0.0d,10.0,10.0,At Completion Units,1/3/2023,1/17/2023,0,0,0,0,0,0,0,0,0,0,1.03_Accelerator Systems (AS),1.03.05_AS Beam Transfer Line (BTL),1.03.05.06_AS Beam Transfer Line Procurement and Fabrication,1.03.05.06.01_Dogleg and Spreader Area - Procurement & Fab,AS_SPD_MANF_3800_Prepare Requisition (Specs/SOW/ETC) - ACM Shielding - BTL - SPD,METSTPT Tech Planning,Tech,SLAC,Labor
98125,1.03,1.03.05,1.03.05.06,1.03.05.06.01,1.03.05.06.01,Dogleg and Spreader Area - Procurement & Fab,AS_SPD_MANF_3800,Prepare Requisition (Specs/SOW/ETC) - ACM Shielding - BTL - SPD,10.0,8.0,8.0,8.0,01-03-23,01-17-23,"AS_BTL_DE_1060: FS, MS_FY_2023_Q2: FS",AS_SPD_MANF_3810: FS,SLAC,0%,52169.52169_METS Mechanical Engineer,52169_METS Mechanical Engineer,Labor,0.0d,10.0,10.0,At Completion Units,1/3/2023,1/17/2023,0,0,0,0,0,0,0,0,0,0,1.03_Accelerator Systems (AS),1.03.05_AS Beam Transfer Line (BTL),1.03.05.06_AS Beam Transfer Line Procurement and Fabrication,1.03.05.06.01_Dogleg and Spreader Area - Procurement & Fab,AS_SPD_MANF_3800_Prepare Requisition (Specs/SOW/ETC) - ACM Shielding - BTL - SPD,Mechanical,,SLAC,Labor
98126,1.03,1.03.05,1.03.05.06,1.03.05.06.01,1.03.05.06.01,Dogleg and Spreader Area - Procurement & Fab,AS_SPD_MANF_3830,AWARD: Procurement - ACM Shielding - BTL - SPD,1.0,18000.0,18000.0,18000.0,10-31-23,10-31-23,AS_SPD_MANF_3820: FS,AS_SPD_MANF_3840: FS,SLAC,0%,AWARD_USE.AWARD - Use this AWARD,AWARD - Use this AWARD,Nonlabor,0.0d,1.0,1.0,At Completion Units,2/16/2023,2/16/2023,AWARD < $500K,0,0,0,0,0,0,0,0,0,1.03_Accelerator Systems (AS),1.03.05_AS Beam Transfer Line (BTL),1.03.05.06_AS Beam Transfer Line Procurement and Fabrication,1.03.05.06.01_Dogleg and Spreader Area - Procurement & Fab,AS_SPD_MANF_3830_AWARD: Procurement - ACM Shielding - BTL - SPD,Material,,SLAC,M&S
98127,1.03,1.03.05,1.03.05.06,1.03.05.06.01,1.03.05.06.01,Dogleg and Spreader Area - Procurement & Fab,AS_SPD_MANF_3810,RQN: Approval of Requisition - ACM Shielding - BTL - SPD,1.0,18000.0,18000.0,18000.0,10-02-23,10-02-23,"AS_SPD_MANF_3800: FS, AS_BTL_MANF_1000: FS",AS_SPD_MANF_3820: FS,SLAC,0%,REQ.Requisition,Requisition,Nonlabor,0.0d,1.0,1.0,At Completion Units,1/18/2023,1/18/2023,RQN,0,0,0,0,0,0,0,0,0,1.03_Accelerator Systems (AS),1.03.05_AS Beam Transfer Line (BTL),1.03.05.06_AS Beam Transfer Line Procurement and Fabrication,1.03.05.06.01_Dogleg and Spreader Area - Procurement & Fab,AS_SPD_MANF_3810_RQN: Approval of Requisition - ACM Shielding - BTL - SPD,Material,,SLAC,M&S
98128,1.03,1.03.05,1.03.05.06,1.03.05.06.01,1.03.05.06.01,Dogleg and Spreader Area - Procurement & Fab,AS_SPD_MANF_3650,RCV: Goods/Services - ACM Stand and Supports - BTL - SPD,1.0,5641.0,5641.0,5641.0,02-13-24,02-13-24,AS_SPD_MANF_3640: FS,AS_SPD_MANF_3660: FS,SLAC,0%,SL_MSSC.SLAC M&S (<$500K) (gets G&A) (gets ESC),SLAC M&S (<$500K) (gets G&A) (gets ESC),Nonlabor,0.0d,1.0,1.0,At Completion Units,3/15/2023,3/15/2023,0,0,0,0,0,0,0,0,0,0,1.03_Accelerator Systems (AS),1.03.05_AS Beam Transfer Line (BTL),1.03.05.06_AS Beam Transfer Line Procurement and Fabrication,1.03.05.06.01_Dogleg and Spreader Area - Procurement & Fab,AS_SPD_MANF_3650_RCV: Goods/Services - ACM Stand and Supports - BTL - SPD,Material,,SLAC,M&S
98129,1.03,1.03.05,1.03.05.06,1.03.05.06.01,1.03.05.06.01,Dogleg and Spreader Area - Procurement & Fab,AS_SPD_MANF_3600,Prepare Requisition (Specs/SOW/ETC) - ACM Stand and Supports - BTL - SPD,20.0,0.0,0.0,0.0,10-04-22,10-31-22,"AS_BTL_DE_1060: FS, MS_FY_2023_Q1: FS",AS_SPD_MANF_3610: FS,SLAC,0%,52198.52198_METSMANF (METSD Manufacturing),52198_METSMANF (METSD Manufacturing),Labor,0.0d,20.0,20.0,At Completion Units,10/4/2022,10/31/2022,0,0,0,0,0,0,0,0,0,0,1.03_Accelerator Systems (AS),1.03.05_AS Beam Transfer Line (BTL),1.03.05.06_AS Beam Transfer Line Procurement and Fabrication,1.03.05.06.01_Dogleg and Spreader Area - Procurement & Fab,AS_SPD_MANF_3600_Prepare Requisition (Specs/SOW/ETC) - ACM Stand and Supports - BTL - SPD,Manufacturing,,SLAC,Labor
98130,1.03,1.03.05,1.03.05.06,1.03.05.06.01,1.03.05.06.01,Dogleg and Spreader Area - Procurement & Fab,AS_SPD_MANF_3600,Prepare Requisition (Specs/SOW/ETC) - ACM Stand and Supports - BTL - SPD,20.0,8.0,8.0,8.0,10-04-22,10-31-22,"AS_BTL_DE_1060: FS, MS_FY_2023_Q1: FS",AS_SPD_MANF_3610: FS,SLAC,0%,52190.52190_METSTP Tech Planning - Reinstated FY16,52190_METSTP Tech Planning - Reinstated FY16,Labor,0.0d,20.0,20.0,At Completion Units,10/4/2022,10/31/2022,0,0,0,0,0,0,0,0,0,0,1.03_Accelerator Systems (AS),1.03.05_AS Beam Transfer Line (BTL),1.03.05.06_AS Beam Transfer Line Procurement and Fabrication,1.03.05.06.01_Dogleg and Spreader Area - Procurement & Fab,AS_SPD_MANF_3600_Prepare Requisition (Specs/SOW/ETC) - ACM Stand and Supports - BTL - SPD,METSTPT Tech Planning,Tech,SLAC,Labor
98131,1.03,1.03.05,1.03.05.06,1.03.05.06.01,1.03.05.06.01,Dogleg and Spreader Area - Procurement & Fab,AS_SPD_MANF_3600,Prepare Requisition (Specs/SOW/ETC) - ACM Stand and Supports - BTL - SPD,20.0,8.0,8.0,8.0,10-04-22,10-31-22,"AS_BTL_DE_1060: FS, MS_FY_2023_Q1: FS",AS_SPD_MANF_3610: FS,SLAC,0%,52169.52169_METS Mechanical Engineer,52169_METS Mechanical Engineer,Labor,0.0d,20.0,20.0,At Completion Units,10/4/2022,10/31/2022,0,0,0,0,0,0,0,0,0,0,1.03_Accelerator Systems (AS),1.03.05_AS Beam Transfer Line (BTL),1.03.05.06_AS Beam Transfer Line Procurement and Fabrication,1.03.05.06.01_Dogleg and Spreader Area - Procurement & Fab,AS_SPD_MANF_3600_Prepare Requisition (Specs/SOW/ETC) - ACM Stand and Supports - BTL - SPD,Mechanical,,SLAC,Labor
98132,1.03,1.03.05,1.03.05.06,1.03.05.06.01,1.03.05.06.01,Dogleg and Spreader Area - Procurement & Fab,AS_SPD_MANF_3630,AWARD: Procurement - ACM Stand and Supports - BTL - SPD,1.0,5641.0,5641.0,5641.0,10-31-23,10-31-23,AS_SPD_MANF_3620: FS,AS_SPD_MANF_3640: FS,SLAC,0%,AWARD_USE.AWARD - Use this AWARD,AWARD - Use this AWARD,Nonlabor,0.0d,1.0,1.0,At Completion Units,12/2/2022,12/2/2022,AWARD < $500K,0,0,0,0,0,0,0,0,0,1.03_Accelerator Systems (AS),1.03.05_AS Beam Transfer Line (BTL),1.03.05.06_AS Beam Transfer Line Procurement and Fabrication,1.03.05.06.01_Dogleg and Spreader Area - Procurement & Fab,AS_SPD_MANF_3630_AWARD: Procurement - ACM Stand and Supports - BTL - SPD,Material,,SLAC,M&S
98133,1.03,1.03.05,1.03.05.06,1.03.05.06.01,1.03.05.06.01,Dogleg and Spreader Area - Procurement & Fab,AS_SPD_MANF_3610,RQN: Approval of Requisition - ACM Stand and Supports - BTL - SPD,1.0,5641.0,5641.0,5641.0,10-02-23,10-02-23,"AS_SPD_MANF_3600: FS, AS_BTL_MANF_1000: FS",AS_SPD_MANF_3620: FS,SLAC,0%,REQ.Requisition,Requisition,Nonlabor,0.0d,1.0,1.0,At Completion Units,11/1/2022,11/1/2022,RQN,0,0,0,0,0,0,0,0,0,1.03_Accelerator Systems (AS),1.03.05_AS Beam Transfer Line (BTL),1.03.05.06_AS Beam Transfer Line Procurement and Fabrication,1.03.05.06.01_Dogleg and Spreader Area - Procurement & Fab,AS_SPD_MANF_3610_RQN: Approval of Requisition - ACM Stand and Supports - BTL - SPD,Material,,SLAC,M&S
98134,1.03,1.03.05,1.03.05.06,1.03.05.06.01,1.03.05.06.01,Dogleg and Spreader Area - Procurement & Fab,AS_SPD_MANF_3450,RCV: Goods/Services - ACM Interface Drift Tubes - BTL - SPD,1.0,5890.0,5890.0,5890.0,01-30-24,01-30-24,AS_SPD_MANF_3440: FS,AS_SPD_MANF_3460: FS,SLAC,0%,SL_MSSC.SLAC M&S (<$500K) (gets G&A) (gets ESC),SLAC M&S (<$500K) (gets G&A) (gets ESC),Nonlabor,0.0d,1.0,1.0,At Completion Units,3/1/2023,3/1/2023,0,0,0,0,0,0,0,0,0,0,1.03_Accelerator Systems (AS),1.03.05_AS Beam Transfer Line (BTL),1.03.05.06_AS Beam Transfer Line Procurement and Fabrication,1.03.05.06.01_Dogleg and Spreader Area - Procurement & Fab,AS_SPD_MANF_3450_RCV: Goods/Services - ACM Interface Drift Tubes - BTL - SPD,Material,,SLAC,M&S
98135,1.03,1.03.05,1.03.05.06,1.03.05.06.01,1.03.05.06.01,Dogleg and Spreader Area - Procurement & Fab,AS_SPD_MANF_3400,Prepare Requisition (Specs/SOW/ETC) - ACM Interface Drift Tubes - BTL - SPD,20.0,0.0,0.0,0.0,10-04-22,10-31-22,"AS_BTL_DE_1060: FS, MS_FY_2023_Q1: FS",AS_SPD_MANF_3410: FS,SLAC,0%,52198.52198_METSMANF (METSD Manufacturing),52198_METSMANF (METSD Manufacturing),Labor,0.0d,20.0,20.0,At Completion Units,10/4/2022,10/31/2022,0,0,0,0,0,0,0,0,0,0,1.03_Accelerator Systems (AS),1.03.05_AS Beam Transfer Line (BTL),1.03.05.06_AS Beam Transfer Line Procurement and Fabrication,1.03.05.06.01_Dogleg and Spreader Area - Procurement & Fab,AS_SPD_MANF_3400_Prepare Requisition (Specs/SOW/ETC) - ACM Interface Drift Tubes - BTL - SPD,Manufacturing,,SLAC,Labor
98136,1.03,1.03.05,1.03.05.06,1.03.05.06.01,1.03.05.06.01,Dogleg and Spreader Area - Procurement & Fab,AS_SPD_MANF_3400,Prepare Requisition (Specs/SOW/ETC) - ACM Interface Drift Tubes - BTL - SPD,20.0,4.0,4.0,4.0,10-04-22,10-31-22,"AS_BTL_DE_1060: FS, MS_FY_2023_Q1: FS",AS_SPD_MANF_3410: FS,SLAC,0%,52190.52190_METSTP Tech Planning - Reinstated FY16,52190_METSTP Tech Planning - Reinstated FY16,Labor,0.0d,20.0,20.0,At Completion Units,10/4/2022,10/31/2022,0,0,0,0,0,0,0,0,0,0,1.03_Accelerator Systems (AS),1.03.05_AS Beam Transfer Line (BTL),1.03.05.06_AS Beam Transfer Line Procurement and Fabrication,1.03.05.06.01_Dogleg and Spreader Area - Procurement & Fab,AS_SPD_MANF_3400_Prepare Requisition (Specs/SOW/ETC) - ACM Interface Drift Tubes - BTL - SPD,METSTPT Tech Planning,Tech,SLAC,Labor
98137,1.03,1.03.05,1.03.05.06,1.03.05.06.01,1.03.05.06.01,Dogleg and Spreader Area - Procurement & Fab,AS_SPD_MANF_3400,Prepare Requisition (Specs/SOW/ETC) - ACM Interface Drift Tubes - BTL - SPD,20.0,4.0,4.0,4.0,10-04-22,10-31-22,"AS_BTL_DE_1060: FS, MS_FY_2023_Q1: FS",AS_SPD_MANF_3410: FS,SLAC,0%,52169.52169_METS Mechanical Engineer,52169_METS Mechanical Engineer,Labor,0.0d,20.0,20.0,At Completion Units,10/4/2022,10/31/2022,0,0,0,0,0,0,0,0,0,0,1.03_Accelerator Systems (AS),1.03.05_AS Beam Transfer Line (BTL),1.03.05.06_AS Beam Transfer Line Procurement and Fabrication,1.03.05.06.01_Dogleg and Spreader Area - Procurement & Fab,AS_SPD_MANF_3400_Prepare Requisition (Specs/SOW/ETC) - ACM Interface Drift Tubes - BTL - SPD,Mechanical,,SLAC,Labor
98138,1.03,1.03.05,1.03.05.06,1.03.05.06.01,1.03.05.06.01,Dogleg and Spreader Area - Procurement & Fab,AS_SPD_MANF_3430,AWARD: Procurement - ACM Interface Drift Tubes - BTL - SPD,1.0,5890.0,5890.0,5890.0,10-31-23,10-31-23,AS_SPD_MANF_3420: FS,AS_SPD_MANF_3440: FS,SLAC,0%,AWARD_USE.AWARD - Use this AWARD,AWARD - Use this AWARD,Nonlabor,0.0d,1.0,1.0,At Completion Units,12/2/2022,12/2/2022,AWARD < $500K,0,0,0,0,0,0,0,0,0,1.03_Accelerator Systems (AS),1.03.05_AS Beam Transfer Line (BTL),1.03.05.06_AS Beam Transfer Line Procurement and Fabrication,1.03.05.06.01_Dogleg and Spreader Area - Procurement & Fab,AS_SPD_MANF_3430_AWARD: Procurement - ACM Interface Drift Tubes - BTL - SPD,Material,,SLAC,M&S
98139,1.03,1.03.05,1.03.05.06,1.03.05.06.01,1.03.05.06.01,Dogleg and Spreader Area - Procurement & Fab,AS_SPD_MANF_3410,RQN: Approval of Requisition - ACM Interface Drift Tubes - BTL - SPD,1.0,5890.0,5890.0,5890.0,10-02-23,10-02-23,"AS_SPD_MANF_3400: FS, AS_BTL_MANF_1000: FS",AS_SPD_MANF_3420: FS,SLAC,0%,REQ.Requisition,Requisition,Nonlabor,0.0d,1.0,1.0,At Completion Units,11/1/2022,11/1/2022,RQN,0,0,0,0,0,0,0,0,0,1.03_Accelerator Systems (AS),1.03.05_AS Beam Transfer Line (BTL),1.03.05.06_AS Beam Transfer Line Procurement and Fabrication,1.03.05.06.01_Dogleg and Spreader Area - Procurement & Fab,AS_SPD_MANF_3410_RQN: Approval of Requisition - ACM Interface Drift Tubes - BTL - SPD,Material,,SLAC,M&S
98140,1.03,1.03.05,1.03.05.06,1.03.05.06.01,1.03.05.06.01,Dogleg and Spreader Area - Procurement & Fab,AS_DOG_MANF_2450,RCV: Misc Mech Hardware - BTL - DOG,1.0,2640.0,2640.0,2640.0,12-15-23,12-15-23,AS_DOG_MANF_2440: FS,AS_DOG_MANF_2460: FS,SLAC,0%,SL_MSSC.SLAC M&S (<$500K) (gets G&A) (gets ESC),SLAC M&S (<$500K) (gets G&A) (gets ESC),Nonlabor,0.0d,1.0,1.0,At Completion Units,4/3/2023,4/3/2023,0,0,0,0,0,0,0,0,0,0,1.03_Accelerator Systems (AS),1.03.05_AS Beam Transfer Line (BTL),1.03.05.06_AS Beam Transfer Line Procurement and Fabrication,1.03.05.06.01_Dogleg and Spreader Area - Procurement & Fab,AS_DOG_MANF_2450_RCV: Misc Mech Hardware - BTL - DOG,Material,,SLAC,M&S
98141,1.03,1.03.05,1.03.05.06,1.03.05.06.01,1.03.05.06.01,Dogleg and Spreader Area - Procurement & Fab,AS_DOG_MANF_2400,Prepare Requisition (Specs/SOW/ETC) - Misc Mech Hardware - BTL - DOG,10.0,3.0,3.0,3.0,01-03-23,01-17-23,"AS_BTL_DE_1060: FS, MS_FY_2023_Q2: FS",AS_DOG_MANF_2410: FS,SLAC,0%,52198.52198_METSMANF (METSD Manufacturing),52198_METSMANF (METSD Manufacturing),Labor,0.0d,10.0,10.0,At Completion Units,1/3/2023,1/17/2023,0,0,0,0,0,0,0,0,0,0,1.03_Accelerator Systems (AS),1.03.05_AS Beam Transfer Line (BTL),1.03.05.06_AS Beam Transfer Line Procurement and Fabrication,1.03.05.06.01_Dogleg and Spreader Area - Procurement & Fab,AS_DOG_MANF_2400_Prepare Requisition (Specs/SOW/ETC) - Misc Mech Hardware - BTL - DOG,Manufacturing,,SLAC,Labor
98142,1.03,1.03.05,1.03.05.06,1.03.05.06.01,1.03.05.06.01,Dogleg and Spreader Area - Procurement & Fab,AS_DOG_MANF_2400,Prepare Requisition (Specs/SOW/ETC) - Misc Mech Hardware - BTL - DOG,10.0,1.1,1.1,1.1,01-03-23,01-17-23,"AS_BTL_DE_1060: FS, MS_FY_2023_Q2: FS",AS_DOG_MANF_2410: FS,SLAC,0%,52190.52190_METSTP Tech Planning - Reinstated FY16,52190_METSTP Tech Planning - Reinstated FY16,Labor,0.0d,10.0,10.0,At Completion Units,1/3/2023,1/17/2023,0,0,0,0,0,0,0,0,0,0,1.03_Accelerator Systems (AS),1.03.05_AS Beam Transfer Line (BTL),1.03.05.06_AS Beam Transfer Line Procurement and Fabrication,1.03.05.06.01_Dogleg and Spreader Area - Procurement & Fab,AS_DOG_MANF_2400_Prepare Requisition (Specs/SOW/ETC) - Misc Mech Hardware - BTL - DOG,METSTPT Tech Planning,Tech,SLAC,Labor
98143,1.03,1.03.05,1.03.05.06,1.03.05.06.01,1.03.05.06.01,Dogleg and Spreader Area - Procurement & Fab,AS_DOG_MANF_2400,Prepare Requisition (Specs/SOW/ETC) - Misc Mech Hardware - BTL - DOG,10.0,0.9,0.9,0.9,01-03-23,01-17-23,"AS_BTL_DE_1060: FS, MS_FY_2023_Q2: FS",AS_DOG_MANF_2410: FS,SLAC,0%,52169.52169_METS Mechanical Engineer,52169_METS Mechanical Engineer,Labor,0.0d,10.0,10.0,At Completion Units,1/3/2023,1/17/2023,0,0,0,0,0,0,0,0,0,0,1.03_Accelerator Systems (AS),1.03.05_AS Beam Transfer Line (BTL),1.03.05.06_AS Beam Transfer Line Procurement and Fabrication,1.03.05.06.01_Dogleg and Spreader Area - Procurement & Fab,AS_DOG_MANF_2400_Prepare Requisition (Specs/SOW/ETC) - Misc Mech Hardware - BTL - DOG,Mechanical,,SLAC,Labor
98144,1.03,1.03.05,1.03.05.06,1.03.05.06.01,1.03.05.06.01,Dogleg and Spreader Area - Procurement & Fab,AS_DOG_MANF_2430,AWARD: Procurement - Misc Mech Hardware - BTL - DOG,1.0,2640.0,2640.0,2640.0,10-17-23,10-17-23,AS_DOG_MANF_2420: FS,AS_DOG_MANF_2440: FS,SLAC,0%,AWARD_USE.AWARD - Use this AWARD,AWARD - Use this AWARD,Nonlabor,0.0d,1.0,1.0,At Completion Units,2/2/2023,2/2/2023,AWARD < $500K,0,0,0,0,0,0,0,0,0,1.03_Accelerator Systems (AS),1.03.05_AS Beam Transfer Line (BTL),1.03.05.06_AS Beam Transfer Line Procurement and Fabrication,1.03.05.06.01_Dogleg and Spreader Area - Procurement & Fab,AS_DOG_MANF_2430_AWARD: Procurement - Misc Mech Hardware - BTL - DOG,Material,,SLAC,M&S
98145,1.03,1.03.05,1.03.05.06,1.03.05.06.01,1.03.05.06.01,Dogleg and Spreader Area - Procurement & Fab,AS_DOG_MANF_2410,RQN: Approval of Requisition - Misc Mech Hardware - BTL - DOG,1.0,2640.0,2640.0,2640.0,10-02-23,10-02-23,"AS_DOG_MANF_2400: FS, AS_BTL_MANF_1000: FS",AS_DOG_MANF_2420: FS,SLAC,0%,REQ.Requisition,Requisition,Nonlabor,0.0d,1.0,1.0,At Completion Units,1/18/2023,1/18/2023,RQN,0,0,0,0,0,0,0,0,0,1.03_Accelerator Systems (AS),1.03.05_AS Beam Transfer Line (BTL),1.03.05.06_AS Beam Transfer Line Procurement and Fabrication,1.03.05.06.01_Dogleg and Spreader Area - Procurement & Fab,AS_DOG_MANF_2410_RQN: Approval of Requisition - Misc Mech Hardware - BTL - DOG,Material,,SLAC,M&S
98146,1.03,1.03.05,1.03.05.06,1.03.05.06.01,1.03.05.06.01,Dogleg and Spreader Area - Procurement & Fab,AS_DOG_MANF_2250,RCV: Goods/Services - Misc Vacuum Hardware - BTL - DOG,1.0,1760.0,1760.0,1760.0,12-15-23,12-15-23,AS_DOG_MANF_2240: FS,"AS_DOG_MANF_2270: FS, AS_DOG_MANF_2260: FS",SLAC,0%,SL_MSSC.SLAC M&S (<$500K) (gets G&A) (gets ESC),SLAC M&S (<$500K) (gets G&A) (gets ESC),Nonlabor,0.0d,1.0,1.0,At Completion Units,4/3/2023,4/3/2023,0,0,0,0,0,0,0,0,0,0,1.03_Accelerator Systems (AS),1.03.05_AS Beam Transfer Line (BTL),1.03.05.06_AS Beam Transfer Line Procurement and Fabrication,1.03.05.06.01_Dogleg and Spreader Area - Procurement & Fab,AS_DOG_MANF_2250_RCV: Goods/Services - Misc Vacuum Hardware - BTL - DOG,Material,,SLAC,M&S
98147,1.03,1.03.05,1.03.05.06,1.03.05.06.01,1.03.05.06.01,Dogleg and Spreader Area - Procurement & Fab,AS_DOG_MANF_2200,Prepare Requisition (Specs/SOW/ETC) - Misc Vacuum Hardware - BTL - DOG,10.0,0.0,0.0,0.0,01-03-23,01-17-23,"AS_BTL_DE_1060: FS, MS_FY_2023_Q2: FS",AS_DOG_MANF_2210: FS,SLAC,0%,52198.52198_METSMANF (METSD Manufacturing),52198_METSMANF (METSD Manufacturing),Labor,0.0d,10.0,10.0,At Completion Units,1/3/2023,1/17/2023,0,0,0,0,0,0,0,0,0,0,1.03_Accelerator Systems (AS),1.03.05_AS Beam Transfer Line (BTL),1.03.05.06_AS Beam Transfer Line Procurement and Fabrication,1.03.05.06.01_Dogleg and Spreader Area - Procurement & Fab,AS_DOG_MANF_2200_Prepare Requisition (Specs/SOW/ETC) - Misc Vacuum Hardware - BTL - DOG,Manufacturing,,SLAC,Labor
98148,1.03,1.03.05,1.03.05.06,1.03.05.06.01,1.03.05.06.01,Dogleg and Spreader Area - Procurement & Fab,AS_DOG_MANF_2200,Prepare Requisition (Specs/SOW/ETC) - Misc Vacuum Hardware - BTL - DOG,10.0,2.0,2.0,2.0,01-03-23,01-17-23,"AS_BTL_DE_1060: FS, MS_FY_2023_Q2: FS",AS_DOG_MANF_2210: FS,SLAC,0%,52190.52190_METSTP Tech Planning - Reinstated FY16,52190_METSTP Tech Planning - Reinstated FY16,Labor,0.0d,10.0,10.0,At Completion Units,1/3/2023,1/17/2023,0,0,0,0,0,0,0,0,0,0,1.03_Accelerator Systems (AS),1.03.05_AS Beam Transfer Line (BTL),1.03.05.06_AS Beam Transfer Line Procurement and Fabrication,1.03.05.06.01_Dogleg and Spreader Area - Procurement & Fab,AS_DOG_MANF_2200_Prepare Requisition (Specs/SOW/ETC) - Misc Vacuum Hardware - BTL - DOG,METSTPT Tech Planning,Tech,SLAC,Labor
98149,1.03,1.03.05,1.03.05.06,1.03.05.06.01,1.03.05.06.01,Dogleg and Spreader Area - Procurement & Fab,AS_DOG_MANF_2200,Prepare Requisition (Specs/SOW/ETC) - Misc Vacuum Hardware - BTL - DOG,10.0,3.0,3.0,3.0,01-03-23,01-17-23,"AS_BTL_DE_1060: FS, MS_FY_2023_Q2: FS",AS_DOG_MANF_2210: FS,SLAC,0%,52169.52169_METS Mechanical Engineer,52169_METS Mechanical Engineer,Labor,0.0d,10.0,10.0,At Completion Units,1/3/2023,1/17/2023,0,0,0,0,0,0,0,0,0,0,1.03_Accelerator Systems (AS),1.03.05_AS Beam Transfer Line (BTL),1.03.05.06_AS Beam Transfer Line Procurement and Fabrication,1.03.05.06.01_Dogleg and Spreader Area - Procurement & Fab,AS_DOG_MANF_2200_Prepare Requisition (Specs/SOW/ETC) - Misc Vacuum Hardware - BTL - DOG,Mechanical,,SLAC,Labor
98150,1.03,1.03.05,1.03.05.06,1.03.05.06.01,1.03.05.06.01,Dogleg and Spreader Area - Procurement & Fab,AS_DOG_MANF_2230,AWARD: Procurement - Misc Vacuum Hardware - BTL - DOG,1.0,1760.0,1760.0,1760.0,10-17-23,10-17-23,AS_DOG_MANF_2220: FS,AS_DOG_MANF_2240: FS,SLAC,0%,AWARD_USE.AWARD - Use this AWARD,AWARD - Use this AWARD,Nonlabor,0.0d,1.0,1.0,At Completion Units,2/2/2023,2/2/2023,AWARD < $500K,0,0,0,0,0,0,0,0,0,1.03_Accelerator Systems (AS),1.03.05_AS Beam Transfer Line (BTL),1.03.05.06_AS Beam Transfer Line Procurement and Fabrication,1.03.05.06.01_Dogleg and Spreader Area - Procurement & Fab,AS_DOG_MANF_2230_AWARD: Procurement - Misc Vacuum Hardware - BTL - DOG,Material,,SLAC,M&S
98151,1.03,1.03.05,1.03.05.06,1.03.05.06.01,1.03.05.06.01,Dogleg and Spreader Area - Procurement & Fab,AS_DOG_MANF_2210,RQN: Approval of Requisition - Misc Vacuum Hardware - BTL - DOG,1.0,1760.0,1760.0,1760.0,10-02-23,10-02-23,"AS_DOG_MANF_2200: FS, AS_BTL_MANF_1000: FS",AS_DOG_MANF_2220: FS,SLAC,0%,REQ.Requisition,Requisition,Nonlabor,0.0d,1.0,1.0,At Completion Units,1/18/2023,1/18/2023,RQN,0,0,0,0,0,0,0,0,0,1.03_Accelerator Systems (AS),1.03.05_AS Beam Transfer Line (BTL),1.03.05.06_AS Beam Transfer Line Procurement and Fabrication,1.03.05.06.01_Dogleg and Spreader Area - Procurement & Fab,AS_DOG_MANF_2210_RQN: Approval of Requisition - Misc Vacuum Hardware - BTL - DOG,Material,,SLAC,M&S
98152,1.03,1.03.05,1.03.05.06,1.03.05.06.01,1.03.05.06.01,Dogleg and Spreader Area - Procurement & Fab,AS_DOG_MANF_2050,Receiving Inspection - Drift Tubes - BTL - DOG,10.0,2.0,2.0,2.0,02-28-24,03-12-24,AS_DOG_MANF_2040: FS,AS_DOG_MANF_2060: FS,SLAC,0%,52190.52190_METSTP Tech Planning - Reinstated FY16,52190_METSTP Tech Planning - Reinstated FY16,Labor,0.0d,10.0,10.0,At Completion Units,3/15/2023,3/28/2023,0,0,0,0,0,0,0,0,0,0,1.03_Accelerator Systems (AS),1.03.05_AS Beam Transfer Line (BTL),1.03.05.06_AS Beam Transfer Line Procurement and Fabrication,1.03.05.06.01_Dogleg and Spreader Area - Procurement & Fab,AS_DOG_MANF_2050_Receiving Inspection - Drift Tubes - BTL - DOG,METSTPT Tech Planning,Tech,SLAC,Labor
98153,1.03,1.03.05,1.03.05.06,1.03.05.06.01,1.03.05.06.01,Dogleg and Spreader Area - Procurement & Fab,AS_DOG_MANF_2050,Receiving Inspection - Drift Tubes - BTL - DOG,10.0,12.0,12.0,12.0,02-28-24,03-12-24,AS_DOG_MANF_2040: FS,AS_DOG_MANF_2060: FS,SLAC,0%,52198.52198_METSMANF (METSD Manufacturing),52198_METSMANF (METSD Manufacturing),Labor,0.0d,10.0,10.0,At Completion Units,3/15/2023,3/28/2023,0,0,0,0,0,0,0,0,0,0,1.03_Accelerator Systems (AS),1.03.05_AS Beam Transfer Line (BTL),1.03.05.06_AS Beam Transfer Line Procurement and Fabrication,1.03.05.06.01_Dogleg and Spreader Area - Procurement & Fab,AS_DOG_MANF_2050_Receiving Inspection - Drift Tubes - BTL - DOG,Manufacturing,,SLAC,Labor
98154,1.03,1.03.05,1.03.05.06,1.03.05.06.01,1.03.05.06.01,Dogleg and Spreader Area - Procurement & Fab,AS_DOG_MANF_2050,Receiving Inspection - Drift Tubes - BTL - DOG,10.0,0.0,0.0,0.0,02-28-24,03-12-24,AS_DOG_MANF_2040: FS,AS_DOG_MANF_2060: FS,SLAC,0%,52169.52169_METS Mechanical Engineer,52169_METS Mechanical Engineer,Labor,0.0d,10.0,10.0,At Completion Units,3/15/2023,3/28/2023,0,0,0,0,0,0,0,0,0,0,1.03_Accelerator Systems (AS),1.03.05_AS Beam Transfer Line (BTL),1.03.05.06_AS Beam Transfer Line Procurement and Fabrication,1.03.05.06.01_Dogleg and Spreader Area - Procurement & Fab,AS_DOG_MANF_2050_Receiving Inspection - Drift Tubes - BTL - DOG,Mechanical,,SLAC,Labor
98155,1.03,1.03.05,1.03.05.06,1.03.05.06.01,1.03.05.06.01,Dogleg and Spreader Area - Procurement & Fab,AS_DOG_MANF_2000,Prepare Requisition (Specs/SOW/ETC) - Drift Tubes - BTL - DOG,10.0,4.0,4.0,4.0,10-04-22,10-17-22,"AS_BTL_DE_1060: FS, MS_FY_2023_Q1: FS",AS_DOG_MANF_2010: FS,SLAC,0%,52190.52190_METSTP Tech Planning - Reinstated FY16,52190_METSTP Tech Planning - Reinstated FY16,Labor,0.0d,10.0,10.0,At Completion Units,10/4/2022,10/17/2022,0,0,0,0,0,0,0,0,0,0,1.03_Accelerator Systems (AS),1.03.05_AS Beam Transfer Line (BTL),1.03.05.06_AS Beam Transfer Line Procurement and Fabrication,1.03.05.06.01_Dogleg and Spreader Area - Procurement & Fab,AS_DOG_MANF_2000_Prepare Requisition (Specs/SOW/ETC) - Drift Tubes - BTL - DOG,METSTPT Tech Planning,Tech,SLAC,Labor
98156,1.03,1.03.05,1.03.05.06,1.03.05.06.01,1.03.05.06.01,Dogleg and Spreader Area - Procurement & Fab,AS_DOG_MANF_2000,Prepare Requisition (Specs/SOW/ETC) - Drift Tubes - BTL - DOG,10.0,0.0,0.0,0.0,10-04-22,10-17-22,"AS_BTL_DE_1060: FS, MS_FY_2023_Q1: FS",AS_DOG_MANF_2010: FS,SLAC,0%,52198.52198_METSMANF (METSD Manufacturing),52198_METSMANF (METSD Manufacturing),Labor,0.0d,10.0,10.0,At Completion Units,10/4/2022,10/17/2022,0,0,0,0,0,0,0,0,0,0,1.03_Accelerator Systems (AS),1.03.05_AS Beam Transfer Line (BTL),1.03.05.06_AS Beam Transfer Line Procurement and Fabrication,1.03.05.06.01_Dogleg and Spreader Area - Procurement & Fab,AS_DOG_MANF_2000_Prepare Requisition (Specs/SOW/ETC) - Drift Tubes - BTL - DOG,Manufacturing,,SLAC,Labor
98157,1.03,1.03.05,1.03.05.06,1.03.05.06.01,1.03.05.06.01,Dogleg and Spreader Area - Procurement & Fab,AS_DOG_MANF_2000,Prepare Requisition (Specs/SOW/ETC) - Drift Tubes - BTL - DOG,10.0,4.0,4.0,4.0,10-04-22,10-17-22,"AS_BTL_DE_1060: FS, MS_FY_2023_Q1: FS",AS_DOG_MANF_2010: FS,SLAC,0%,52169.52169_METS Mechanical Engineer,52169_METS Mechanical Engineer,Labor,0.0d,10.0,10.0,At Completion Units,10/4/2022,10/17/2022,0,0,0,0,0,0,0,0,0,0,1.03_Accelerator Systems (AS),1.03.05_AS Beam Transfer Line (BTL),1.03.05.06_AS Beam Transfer Line Procurement and Fabrication,1.03.05.06.01_Dogleg and Spreader Area - Procurement & Fab,AS_DOG_MANF_2000_Prepare Requisition (Specs/SOW/ETC) - Drift Tubes - BTL - DOG,Mechanical,,SLAC,Labor
98158,1.03,1.03.05,1.03.05.06,1.03.05.06.01,1.03.05.06.01,Dogleg and Spreader Area - Procurement & Fab,AS_DOG_MANF_2060,RCV: Drift Tubes - BTL - DOG,1.0,4278.0,4278.0,4278.0,03-13-24,03-13-24,"AS_DOG_MANF_2040: FS, AS_DOG_MANF_2050: FS",AS_DOG_MANF_2070: FS,SLAC,0%,SL_MSSC.SLAC M&S (<$500K) (gets G&A) (gets ESC),SLAC M&S (<$500K) (gets G&A) (gets ESC),Nonlabor,0.0d,1.0,1.0,At Completion Units,3/29/2023,3/29/2023,0,0,0,0,0,0,0,0,0,0,1.03_Accelerator Systems (AS),1.03.05_AS Beam Transfer Line (BTL),1.03.05.06_AS Beam Transfer Line Procurement and Fabrication,1.03.05.06.01_Dogleg and Spreader Area - Procurement & Fab,AS_DOG_MANF_2060_RCV: Drift Tubes - BTL - DOG,Material,,SLAC,M&S
98159,1.03,1.03.05,1.03.05.06,1.03.05.06.01,1.03.05.06.01,Dogleg and Spreader Area - Procurement & Fab,AS_DOG_MANF_2030,AWARD: Procurement - Drift Tubes - BTL - DOG,1.0,4278.0,4278.0,4278.0,10-31-23,10-31-23,AS_DOG_MANF_2020: FS,AS_DOG_MANF_2040: FS,SLAC,0%,AWARD_USE.AWARD - Use this AWARD,AWARD - Use this AWARD,Nonlabor,0.0d,1.0,1.0,At Completion Units,11/16/2022,11/16/2022,AWARD < $500K,0,0,0,0,0,0,0,0,0,1.03_Accelerator Systems (AS),1.03.05_AS Beam Transfer Line (BTL),1.03.05.06_AS Beam Transfer Line Procurement and Fabrication,1.03.05.06.01_Dogleg and Spreader Area - Procurement & Fab,AS_DOG_MANF_2030_AWARD: Procurement - Drift Tubes - BTL - DOG,Material,,SLAC,M&S
98160,1.03,1.03.05,1.03.05.06,1.03.05.06.01,1.03.05.06.01,Dogleg and Spreader Area - Procurement & Fab,AS_DOG_MANF_2010,RQN: Approval of Requisition - Drift Tubes - BTL - DOG,1.0,4278.0,4278.0,4278.0,10-02-23,10-02-23,"AS_DOG_MANF_2000: FS, AS_BTL_MANF_1000: FS",AS_DOG_MANF_2020: FS,SLAC,0%,REQ.Requisition,Requisition,Nonlabor,0.0d,1.0,1.0,At Completion Units,10/18/2022,10/18/2022,RQN,0,0,0,0,0,0,0,0,0,1.03_Accelerator Systems (AS),1.03.05_AS Beam Transfer Line (BTL),1.03.05.06_AS Beam Transfer Line Procurement and Fabrication,1.03.05.06.01_Dogleg and Spreader Area - Procurement & Fab,AS_DOG_MANF_2010_RQN: Approval of Requisition - Drift Tubes - BTL - DOG,Material,,SLAC,M&S
98161,1.03,1.03.05,1.03.05.06,1.03.05.06.01,1.03.05.06.01,Dogleg and Spreader Area - Procurement & Fab,AS_DOG_MANF_1250,Receiving - Sextupole Drift Pipes - BTL - DOG,5.0,2.0,2.0,2.0,03-27-24,04-02-24,AS_DOG_MANF_1240: FS,AS_DOG_MANF_1260: FS,SLAC,0%,52190.52190_METSTP Tech Planning - Reinstated FY16,52190_METSTP Tech Planning - Reinstated FY16,Labor,0.0d,5.0,5.0,At Completion Units,2/27/2023,3/3/2023,0,0,0,0,0,0,0,0,0,0,1.03_Accelerator Systems (AS),1.03.05_AS Beam Transfer Line (BTL),1.03.05.06_AS Beam Transfer Line Procurement and Fabrication,1.03.05.06.01_Dogleg and Spreader Area - Procurement & Fab,AS_DOG_MANF_1250_Receiving - Sextupole Drift Pipes - BTL - DOG,METSTPT Tech Planning,Tech,SLAC,Labor
98162,1.03,1.03.05,1.03.05.06,1.03.05.06.01,1.03.05.06.01,Dogleg and Spreader Area - Procurement & Fab,AS_DOG_MANF_1250,Receiving - Sextupole Drift Pipes - BTL - DOG,5.0,0.0,0.0,0.0,03-27-24,04-02-24,AS_DOG_MANF_1240: FS,AS_DOG_MANF_1260: FS,SLAC,0%,52198.52198_METSMANF (METSD Manufacturing),52198_METSMANF (METSD Manufacturing),Labor,0.0d,5.0,5.0,At Completion Units,2/27/2023,3/3/2023,0,0,0,0,0,0,0,0,0,0,1.03_Accelerator Systems (AS),1.03.05_AS Beam Transfer Line (BTL),1.03.05.06_AS Beam Transfer Line Procurement and Fabrication,1.03.05.06.01_Dogleg and Spreader Area - Procurement & Fab,AS_DOG_MANF_1250_Receiving - Sextupole Drift Pipes - BTL - DOG,Manufacturing,,SLAC,Labor
98163,1.03,1.03.05,1.03.05.06,1.03.05.06.01,1.03.05.06.01,Dogleg and Spreader Area - Procurement & Fab,AS_DOG_MANF_1250,Receiving - Sextupole Drift Pipes - BTL - DOG,5.0,4.0,4.0,4.0,03-27-24,04-02-24,AS_DOG_MANF_1240: FS,AS_DOG_MANF_1260: FS,SLAC,0%,52169.52169_METS Mechanical Engineer,52169_METS Mechanical Engineer,Labor,0.0d,5.0,5.0,At Completion Units,2/27/2023,3/3/2023,0,0,0,0,0,0,0,0,0,0,1.03_Accelerator Systems (AS),1.03.05_AS Beam Transfer Line (BTL),1.03.05.06_AS Beam Transfer Line Procurement and Fabrication,1.03.05.06.01_Dogleg and Spreader Area - Procurement & Fab,AS_DOG_MANF_1250_Receiving - Sextupole Drift Pipes - BTL - DOG,Mechanical,,SLAC,Labor
98164,1.03,1.03.05,1.03.05.06,1.03.05.06.01,1.03.05.06.01,Dogleg and Spreader Area - Procurement & Fab,AS_DOG_MANF_1200,Prepare Requisition (Specs/SOW/ETC) - Sextupole Drift Pipes - BTL - DOG,10.0,4.0,4.0,4.0,08-05-22,08-18-22,"AS_BTL_DE_1060: FS, MS_FY_2022_Q4: FS",AS_DOG_MANF_1210: FS,SLAC,0%,52190.52190_METSTP Tech Planning - Reinstated FY16,52190_METSTP Tech Planning - Reinstated FY16,Labor,0.0d,10.0,10.0,At Completion Units,7/5/2022,7/18/2022,0,0,0,0,0,0,0,0,0,0,1.03_Accelerator Systems (AS),1.03.05_AS Beam Transfer Line (BTL),1.03.05.06_AS Beam Transfer Line Procurement and Fabrication,1.03.05.06.01_Dogleg and Spreader Area - Procurement & Fab,AS_DOG_MANF_1200_Prepare Requisition (Specs/SOW/ETC) - Sextupole Drift Pipes - BTL - DOG,METSTPT Tech Planning,Tech,SLAC,Labor
98165,1.03,1.03.05,1.03.05.06,1.03.05.06.01,1.03.05.06.01,Dogleg and Spreader Area - Procurement & Fab,AS_DOG_MANF_1200,Prepare Requisition (Specs/SOW/ETC) - Sextupole Drift Pipes - BTL - DOG,10.0,0.0,0.0,0.0,08-05-22,08-18-22,"AS_BTL_DE_1060: FS, MS_FY_2022_Q4: FS",AS_DOG_MANF_1210: FS,SLAC,0%,52198.52198_METSMANF (METSD Manufacturing),52198_METSMANF (METSD Manufacturing),Labor,0.0d,10.0,10.0,At Completion Units,7/5/2022,7/18/2022,0,0,0,0,0,0,0,0,0,0,1.03_Accelerator Systems (AS),1.03.05_AS Beam Transfer Line (BTL),1.03.05.06_AS Beam Transfer Line Procurement and Fabrication,1.03.05.06.01_Dogleg and Spreader Area - Procurement & Fab,AS_DOG_MANF_1200_Prepare Requisition (Specs/SOW/ETC) - Sextupole Drift Pipes - BTL - DOG,Manufacturing,,SLAC,Labor
98166,1.03,1.03.05,1.03.05.06,1.03.05.06.01,1.03.05.06.01,Dogleg and Spreader Area - Procurement & Fab,AS_DOG_MANF_1200,Prepare Requisition (Specs/SOW/ETC) - Sextupole Drift Pipes - BTL - DOG,10.0,4.0,4.0,4.0,08-05-22,08-18-22,"AS_BTL_DE_1060: FS, MS_FY_2022_Q4: FS",AS_DOG_MANF_1210: FS,SLAC,0%,52169.52169_METS Mechanical Engineer,52169_METS Mechanical Engineer,Labor,0.0d,10.0,10.0,At Completion Units,7/5/2022,7/18/2022,0,0,0,0,0,0,0,0,0,0,1.03_Accelerator Systems (AS),1.03.05_AS Beam Transfer Line (BTL),1.03.05.06_AS Beam Transfer Line Procurement and Fabrication,1.03.05.06.01_Dogleg and Spreader Area - Procurement & Fab,AS_DOG_MANF_1200_Prepare Requisition (Specs/SOW/ETC) - Sextupole Drift Pipes - BTL - DOG,Mechanical,,SLAC,Labor
98167,1.03,1.03.05,1.03.05.06,1.03.05.06.01,1.03.05.06.01,Dogleg and Spreader Area - Procurement & Fab,AS_DOG_MANF_1260,RCV: Goods/Services - Sextupole Drift Pipes - BTL - DOG,1.0,6000.0,6000.0,6000.0,04-03-24,04-03-24,"AS_DOG_MANF_1240: FS, AS_DOG_MANF_1250: FS",AS_DOG_MANF_1270: FS,SLAC,0%,SL_MSSC.SLAC M&S (<$500K) (gets G&A) (gets ESC),SLAC M&S (<$500K) (gets G&A) (gets ESC),Nonlabor,0.0d,1.0,1.0,At Completion Units,3/6/2023,3/6/2023,0,0,0,0,0,0,0,0,0,0,1.03_Accelerator Systems (AS),1.03.05_AS Beam Transfer Line (BTL),1.03.05.06_AS Beam Transfer Line Procurement and Fabrication,1.03.05.06.01_Dogleg and Spreader Area - Procurement & Fab,AS_DOG_MANF_1260_RCV: Goods/Services - Sextupole Drift Pipes - BTL - DOG,Material,,SLAC,M&S
98168,1.03,1.03.05,1.03.05.06,1.03.05.06.01,1.03.05.06.01,Dogleg and Spreader Area - Procurement & Fab,AS_DOG_MANF_1230,AWARD: Procurement - Sextupole Drift Pipes - BTL - DOG,1.0,6000.0,6000.0,6000.0,10-31-23,10-31-23,AS_DOG_MANF_1220: FS,AS_DOG_MANF_1240: FS,SLAC,0%,AWARD_USE.AWARD - Use this AWARD,AWARD - Use this AWARD,Nonlabor,0.0d,1.0,1.0,At Completion Units,10/3/2022,10/3/2022,AWARD < $500K,0,0,0,0,0,0,0,0,0,1.03_Accelerator Systems (AS),1.03.05_AS Beam Transfer Line (BTL),1.03.05.06_AS Beam Transfer Line Procurement and Fabrication,1.03.05.06.01_Dogleg and Spreader Area - Procurement & Fab,AS_DOG_MANF_1230_AWARD: Procurement - Sextupole Drift Pipes - BTL - DOG,Material,,SLAC,M&S
98169,1.03,1.03.05,1.03.05.06,1.03.05.06.01,1.03.05.06.01,Dogleg and Spreader Area - Procurement & Fab,AS_DOG_MANF_1210,RQN: Approval of Requisition - Sextupole Drift Pipes - BTL - DOG,1.0,6000.0,6000.0,6000.0,10-02-23,10-02-23,"AS_DOG_MANF_1200: FS, AS_BTL_MANF_1000: FS",AS_DOG_MANF_1220: FS,SLAC,0%,REQ.Requisition,Requisition,Nonlabor,0.0d,1.0,1.0,At Completion Units,9/1/2022,9/1/2022,RQN,0,0,0,0,0,0,0,0,0,1.03_Accelerator Systems (AS),1.03.05_AS Beam Transfer Line (BTL),1.03.05.06_AS Beam Transfer Line Procurement and Fabrication,1.03.05.06.01_Dogleg and Spreader Area - Procurement & Fab,AS_DOG_MANF_1210_RQN: Approval of Requisition - Sextupole Drift Pipes - BTL - DOG,Material,,SLAC,M&S
98170,1.03,1.03.05,1.03.05.06,1.03.05.06.01,1.03.05.06.01,Dogleg and Spreader Area - Procurement & Fab,AS_DOG_MANF_1650,Inspection & Test - Magnet Stage - BTL - DOG,10.0,0.4,0.4,0.4,02-13-24,02-27-24,AS_DOG_MANF_1640: FS,AS_DOG_MANF_1660: FS,SLAC,0%,52190.52190_METSTP Tech Planning - Reinstated FY16,52190_METSTP Tech Planning - Reinstated FY16,Labor,0.0d,10.0,10.0,At Completion Units,3/1/2023,3/14/2023,0,0,0,0,0,0,0,0,0,0,1.03_Accelerator Systems (AS),1.03.05_AS Beam Transfer Line (BTL),1.03.05.06_AS Beam Transfer Line Procurement and Fabrication,1.03.05.06.01_Dogleg and Spreader Area - Procurement & Fab,AS_DOG_MANF_1650_Inspection & Test - Magnet Stage - BTL - DOG,METSTPT Tech Planning,Tech,SLAC,Labor
98171,1.03,1.03.05,1.03.05.06,1.03.05.06.01,1.03.05.06.01,Dogleg and Spreader Area - Procurement & Fab,AS_DOG_MANF_1650,Inspection & Test - Magnet Stage - BTL - DOG,10.0,4.0,4.0,4.0,02-13-24,02-27-24,AS_DOG_MANF_1640: FS,AS_DOG_MANF_1660: FS,SLAC,0%,52169.52169_METS Mechanical Engineer,52169_METS Mechanical Engineer,Labor,0.0d,10.0,10.0,At Completion Units,3/1/2023,3/14/2023,0,0,0,0,0,0,0,0,0,0,1.03_Accelerator Systems (AS),1.03.05_AS Beam Transfer Line (BTL),1.03.05.06_AS Beam Transfer Line Procurement and Fabrication,1.03.05.06.01_Dogleg and Spreader Area - Procurement & Fab,AS_DOG_MANF_1650_Inspection & Test - Magnet Stage - BTL - DOG,Mechanical,,SLAC,Labor
98172,1.03,1.03.05,1.03.05.06,1.03.05.06.01,1.03.05.06.01,Dogleg and Spreader Area - Procurement & Fab,AS_DOG_MANF_1650,Inspection & Test - Magnet Stage - BTL - DOG,10.0,0.0,0.0,0.0,02-13-24,02-27-24,AS_DOG_MANF_1640: FS,AS_DOG_MANF_1660: FS,SLAC,0%,52198.52198_METSMANF (METSD Manufacturing),52198_METSMANF (METSD Manufacturing),Labor,0.0d,10.0,10.0,At Completion Units,3/1/2023,3/14/2023,0,0,0,0,0,0,0,0,0,0,1.03_Accelerator Systems (AS),1.03.05_AS Beam Transfer Line (BTL),1.03.05.06_AS Beam Transfer Line Procurement and Fabrication,1.03.05.06.01_Dogleg and Spreader Area - Procurement & Fab,AS_DOG_MANF_1650_Inspection & Test - Magnet Stage - BTL - DOG,Manufacturing,,SLAC,Labor
98173,1.03,1.03.05,1.03.05.06,1.03.05.06.01,1.03.05.06.01,Dogleg and Spreader Area - Procurement & Fab,AS_DOG_MANF_1660,RCV: Goods/Services - Magnet Stage - BTL - DOG,1.0,4286.0,4286.0,4286.0,02-28-24,02-28-24,"AS_DOG_MANF_1640: FS, AS_DOG_MANF_1650: FS",AS_DOG_MANF_1670: FS,SLAC,0%,SL_MSSC.SLAC M&S (<$500K) (gets G&A) (gets ESC),SLAC M&S (<$500K) (gets G&A) (gets ESC),Nonlabor,0.0d,1.0,1.0,At Completion Units,3/15/2023,3/15/2023,0,0,0,0,0,0,0,0,0,0,1.03_Accelerator Systems (AS),1.03.05_AS Beam Transfer Line (BTL),1.03.05.06_AS Beam Transfer Line Procurement and Fabrication,1.03.05.06.01_Dogleg and Spreader Area - Procurement & Fab,AS_DOG_MANF_1660_RCV: Goods/Services - Magnet Stage - BTL - DOG,Material,,SLAC,M&S
98174,1.03,1.03.05,1.03.05.06,1.03.05.06.01,1.03.05.06.01,Dogleg and Spreader Area - Procurement & Fab,AS_DOG_MANF_1630,AWARD: Procurement - Magnet Stage - BTL - DOG,1.0,4286.0,4286.0,4286.0,10-31-23,10-31-23,AS_DOG_MANF_1620: FS,AS_DOG_MANF_1640: FS,SLAC,0%,AWARD_USE.AWARD - Use this AWARD,AWARD - Use this AWARD,Nonlabor,0.0d,1.0,1.0,At Completion Units,11/16/2022,11/16/2022,AWARD < $500K,0,0,0,0,0,0,0,0,0,1.03_Accelerator Systems (AS),1.03.05_AS Beam Transfer Line (BTL),1.03.05.06_AS Beam Transfer Line Procurement and Fabrication,1.03.05.06.01_Dogleg and Spreader Area - Procurement & Fab,AS_DOG_MANF_1630_AWARD: Procurement - Magnet Stage - BTL - DOG,Material,,SLAC,M&S
98175,1.03,1.03.05,1.03.05.06,1.03.05.06.01,1.03.05.06.01,Dogleg and Spreader Area - Procurement & Fab,AS_DOG_MANF_1610,RQN: Approval of Requisition - Magnet Stage - BTL - DOG,1.0,4286.0,4286.0,4286.0,10-02-23,10-02-23,"AS_DOG_MANF_1600: FS, AS_BTL_MANF_1000: FS",AS_DOG_MANF_1620: FS,SLAC,0%,REQ.Requisition,Requisition,Nonlabor,0.0d,1.0,1.0,At Completion Units,10/18/2022,10/18/2022,RQN,0,0,0,0,0,0,0,0,0,1.03_Accelerator Systems (AS),1.03.05_AS Beam Transfer Line (BTL),1.03.05.06_AS Beam Transfer Line Procurement and Fabrication,1.03.05.06.01_Dogleg and Spreader Area - Procurement & Fab,AS_DOG_MANF_1610_RQN: Approval of Requisition - Magnet Stage - BTL - DOG,Material,,SLAC,M&S
98176,1.03,1.03.05,1.03.05.06,1.03.05.06.01,1.03.05.06.01,Dogleg and Spreader Area - Procurement & Fab,AS_DOG_MANF_1600,Prepare Requisition (Specs/SOW/ETC) - Magnet Stage - BTL - DOG,10.0,0.0,0.0,0.0,10-04-22,10-17-22,"AS_BTL_DE_1060: FS, MS_FY_2023_Q1: FS",AS_DOG_MANF_1610: FS,SLAC,0%,52190.52190_METSTP Tech Planning - Reinstated FY16,52190_METSTP Tech Planning - Reinstated FY16,Labor,0.0d,10.0,10.0,At Completion Units,10/4/2022,10/17/2022,0,0,0,0,0,0,0,0,0,0,1.03_Accelerator Systems (AS),1.03.05_AS Beam Transfer Line (BTL),1.03.05.06_AS Beam Transfer Line Procurement and Fabrication,1.03.05.06.01_Dogleg and Spreader Area - Procurement & Fab,AS_DOG_MANF_1600_Prepare Requisition (Specs/SOW/ETC) - Magnet Stage - BTL - DOG,METSTPT Tech Planning,Tech,SLAC,Labor
98177,1.03,1.03.05,1.03.05.06,1.03.05.06.01,1.03.05.06.01,Dogleg and Spreader Area - Procurement & Fab,AS_DOG_MANF_1600,Prepare Requisition (Specs/SOW/ETC) - Magnet Stage - BTL - DOG,10.0,0.0,0.0,0.0,10-04-22,10-17-22,"AS_BTL_DE_1060: FS, MS_FY_2023_Q1: FS",AS_DOG_MANF_1610: FS,SLAC,0%,52169.52169_METS Mechanical Engineer,52169_METS Mechanical Engineer,Labor,0.0d,10.0,10.0,At Completion Units,10/4/2022,10/17/2022,0,0,0,0,0,0,0,0,0,0,1.03_Accelerator Systems (AS),1.03.05_AS Beam Transfer Line (BTL),1.03.05.06_AS Beam Transfer Line Procurement and Fabrication,1.03.05.06.01_Dogleg and Spreader Area - Procurement & Fab,AS_DOG_MANF_1600_Prepare Requisition (Specs/SOW/ETC) - Magnet Stage - BTL - DOG,Mechanical,,SLAC,Labor
98178,1.03,1.03.05,1.03.05.06,1.03.05.06.01,1.03.05.06.01,Dogleg and Spreader Area - Procurement & Fab,AS_DOG_MANF_1600,Prepare Requisition (Specs/SOW/ETC) - Magnet Stage - BTL - DOG,10.0,0.0,0.0,0.0,10-04-22,10-17-22,"AS_BTL_DE_1060: FS, MS_FY_2023_Q1: FS",AS_DOG_MANF_1610: FS,SLAC,0%,52198.52198_METSMANF (METSD Manufacturing),52198_METSMANF (METSD Manufacturing),Labor,0.0d,10.0,10.0,At Completion Units,10/4/2022,10/17/2022,0,0,0,0,0,0,0,0,0,0,1.03_Accelerator Systems (AS),1.03.05_AS Beam Transfer Line (BTL),1.03.05.06_AS Beam Transfer Line Procurement and Fabrication,1.03.05.06.01_Dogleg and Spreader Area - Procurement & Fab,AS_DOG_MANF_1600_Prepare Requisition (Specs/SOW/ETC) - Magnet Stage - BTL - DOG,Manufacturing,,SLAC,Labor
98179,1.03,1.03.05,1.03.05.06,1.03.05.06.01,1.03.05.06.01,Dogleg and Spreader Area - Procurement & Fab,AS_DOG_MANF_1450,Receiving Inspection - Magnet Stands - BTL - DOG,10.0,2.0,2.0,2.0,02-13-24,02-27-24,AS_DOG_MANF_1440: FS,AS_DOG_MANF_1460: FS,SLAC,0%,52190.52190_METSTP Tech Planning - Reinstated FY16,52190_METSTP Tech Planning - Reinstated FY16,Labor,0.0d,10.0,10.0,At Completion Units,3/1/2023,3/14/2023,0,0,0,0,0,0,0,0,0,0,1.03_Accelerator Systems (AS),1.03.05_AS Beam Transfer Line (BTL),1.03.05.06_AS Beam Transfer Line Procurement and Fabrication,1.03.05.06.01_Dogleg and Spreader Area - Procurement & Fab,AS_DOG_MANF_1450_Receiving Inspection - Magnet Stands - BTL - DOG,METSTPT Tech Planning,Tech,SLAC,Labor
98180,1.03,1.03.05,1.03.05.06,1.03.05.06.01,1.03.05.06.01,Dogleg and Spreader Area - Procurement & Fab,AS_DOG_MANF_1450,Receiving Inspection - Magnet Stands - BTL - DOG,10.0,2.4,2.4,2.4,02-13-24,02-27-24,AS_DOG_MANF_1440: FS,AS_DOG_MANF_1460: FS,SLAC,0%,52169.52169_METS Mechanical Engineer,52169_METS Mechanical Engineer,Labor,0.0d,10.0,10.0,At Completion Units,3/1/2023,3/14/2023,0,0,0,0,0,0,0,0,0,0,1.03_Accelerator Systems (AS),1.03.05_AS Beam Transfer Line (BTL),1.03.05.06_AS Beam Transfer Line Procurement and Fabrication,1.03.05.06.01_Dogleg and Spreader Area - Procurement & Fab,AS_DOG_MANF_1450_Receiving Inspection - Magnet Stands - BTL - DOG,Mechanical,,SLAC,Labor
98181,1.03,1.03.05,1.03.05.06,1.03.05.06.01,1.03.05.06.01,Dogleg and Spreader Area - Procurement & Fab,AS_DOG_MANF_1450,Receiving Inspection - Magnet Stands - BTL - DOG,10.0,4.0,4.0,4.0,02-13-24,02-27-24,AS_DOG_MANF_1440: FS,AS_DOG_MANF_1460: FS,SLAC,0%,52198.52198_METSMANF (METSD Manufacturing),52198_METSMANF (METSD Manufacturing),Labor,0.0d,10.0,10.0,At Completion Units,3/1/2023,3/14/2023,0,0,0,0,0,0,0,0,0,0,1.03_Accelerator Systems (AS),1.03.05_AS Beam Transfer Line (BTL),1.03.05.06_AS Beam Transfer Line Procurement and Fabrication,1.03.05.06.01_Dogleg and Spreader Area - Procurement & Fab,AS_DOG_MANF_1450_Receiving Inspection - Magnet Stands - BTL - DOG,Manufacturing,,SLAC,Labor
98182,1.03,1.03.05,1.03.05.06,1.03.05.06.01,1.03.05.06.01,Dogleg and Spreader Area - Procurement & Fab,AS_DOG_MANF_1460,RCV: Goods/Services - Magnet Stands - BTL - DOG,1.0,13182.0,13182.0,13182.0,02-28-24,02-28-24,"AS_DOG_MANF_1440: FS, AS_DOG_MANF_1450: FS",AS_DOG_MANF_1470: FS,SLAC,0%,SL_MSSC.SLAC M&S (<$500K) (gets G&A) (gets ESC),SLAC M&S (<$500K) (gets G&A) (gets ESC),Nonlabor,0.0d,1.0,1.0,At Completion Units,3/15/2023,3/15/2023,0,0,0,0,0,0,0,0,0,0,1.03_Accelerator Systems (AS),1.03.05_AS Beam Transfer Line (BTL),1.03.05.06_AS Beam Transfer Line Procurement and Fabrication,1.03.05.06.01_Dogleg and Spreader Area - Procurement & Fab,AS_DOG_MANF_1460_RCV: Goods/Services - Magnet Stands - BTL - DOG,Material,,SLAC,M&S
98183,1.03,1.03.05,1.03.05.06,1.03.05.06.01,1.03.05.06.01,Dogleg and Spreader Area - Procurement & Fab,AS_DOG_MANF_1430,AWARD: Procurement - Magnet Stands - BTL - DOG,1.0,13182.0,13182.0,13182.0,10-31-23,10-31-23,AS_DOG_MANF_1420: FS,AS_DOG_MANF_1440: FS,SLAC,0%,AWARD_USE.AWARD - Use this AWARD,AWARD - Use this AWARD,Nonlabor,0.0d,1.0,1.0,At Completion Units,11/16/2022,11/16/2022,AWARD < $500K,0,0,0,0,0,0,0,0,0,1.03_Accelerator Systems (AS),1.03.05_AS Beam Transfer Line (BTL),1.03.05.06_AS Beam Transfer Line Procurement and Fabrication,1.03.05.06.01_Dogleg and Spreader Area - Procurement & Fab,AS_DOG_MANF_1430_AWARD: Procurement - Magnet Stands - BTL - DOG,Material,,SLAC,M&S
98184,1.03,1.03.05,1.03.05.06,1.03.05.06.01,1.03.05.06.01,Dogleg and Spreader Area - Procurement & Fab,AS_DOG_MANF_1410,RQN: Approval of Requisition - Magnet Stands - BTL - DOG,1.0,13182.0,13182.0,13182.0,10-02-23,10-02-23,"AS_DOG_MANF_1400: FS, AS_BTL_MANF_1000: FS",AS_DOG_MANF_1420: FS,SLAC,0%,REQ.Requisition,Requisition,Nonlabor,0.0d,1.0,1.0,At Completion Units,10/18/2022,10/18/2022,RQN,0,0,0,0,0,0,0,0,0,1.03_Accelerator Systems (AS),1.03.05_AS Beam Transfer Line (BTL),1.03.05.06_AS Beam Transfer Line Procurement and Fabrication,1.03.05.06.01_Dogleg and Spreader Area - Procurement & Fab,AS_DOG_MANF_1410_RQN: Approval of Requisition - Magnet Stands - BTL - DOG,Material,,SLAC,M&S
98185,1.03,1.03.05,1.03.05.06,1.03.05.06.01,1.03.05.06.01,Dogleg and Spreader Area - Procurement & Fab,AS_DOG_MANF_1400,Prepare Requisition (Specs/SOW/ETC) - Magnet Stands - BTL - DOG,10.0,4.0,4.0,4.0,10-04-22,10-17-22,"AS_BTL_DE_1060: FS, MS_FY_2023_Q1: FS",AS_DOG_MANF_1410: FS,SLAC,0%,52190.52190_METSTP Tech Planning - Reinstated FY16,52190_METSTP Tech Planning - Reinstated FY16,Labor,0.0d,10.0,10.0,At Completion Units,10/4/2022,10/17/2022,0,0,0,0,0,0,0,0,0,0,1.03_Accelerator Systems (AS),1.03.05_AS Beam Transfer Line (BTL),1.03.05.06_AS Beam Transfer Line Procurement and Fabrication,1.03.05.06.01_Dogleg and Spreader Area - Procurement & Fab,AS_DOG_MANF_1400_Prepare Requisition (Specs/SOW/ETC) - Magnet Stands - BTL - DOG,METSTPT Tech Planning,Tech,SLAC,Labor
98186,1.03,1.03.05,1.03.05.06,1.03.05.06.01,1.03.05.06.01,Dogleg and Spreader Area - Procurement & Fab,AS_DOG_MANF_1400,Prepare Requisition (Specs/SOW/ETC) - Magnet Stands - BTL - DOG,10.0,4.0,4.0,4.0,10-04-22,10-17-22,"AS_BTL_DE_1060: FS, MS_FY_2023_Q1: FS",AS_DOG_MANF_1410: FS,SLAC,0%,52169.52169_METS Mechanical Engineer,52169_METS Mechanical Engineer,Labor,0.0d,10.0,10.0,At Completion Units,10/4/2022,10/17/2022,0,0,0,0,0,0,0,0,0,0,1.03_Accelerator Systems (AS),1.03.05_AS Beam Transfer Line (BTL),1.03.05.06_AS Beam Transfer Line Procurement and Fabrication,1.03.05.06.01_Dogleg and Spreader Area - Procurement & Fab,AS_DOG_MANF_1400_Prepare Requisition (Specs/SOW/ETC) - Magnet Stands - BTL - DOG,Mechanical,,SLAC,Labor
98187,1.03,1.03.05,1.03.05.06,1.03.05.06.01,1.03.05.06.01,Dogleg and Spreader Area - Procurement & Fab,AS_DOG_MANF_1050,Receiving Inspection - 1.38S3.00 Sextupoles - BTL - DOG,10.0,4.0,4.0,4.0,05-22-24,06-05-24,AS_DOG_MANF_1040: FS,AS_DOG_MANF_1060: FS,SLAC,0%,52190.52190_METSTP Tech Planning - Reinstated FY16,52190_METSTP Tech Planning - Reinstated FY16,Labor,0.0d,10.0,10.0,At Completion Units,4/24/2023,5/5/2023,0,0,0,0,0,0,0,0,0,0,1.03_Accelerator Systems (AS),1.03.05_AS Beam Transfer Line (BTL),1.03.05.06_AS Beam Transfer Line Procurement and Fabrication,1.03.05.06.01_Dogleg and Spreader Area - Procurement & Fab,AS_DOG_MANF_1050_Receiving Inspection - 1.38S3.00 Sextupoles - BTL - DOG,METSTPT Tech Planning,Tech,SLAC,Labor
98188,1.03,1.03.05,1.03.05.06,1.03.05.06.01,1.03.05.06.01,Dogleg and Spreader Area - Procurement & Fab,AS_DOG_MANF_1050,Receiving Inspection - 1.38S3.00 Sextupoles - BTL - DOG,10.0,4.0,4.0,4.0,05-22-24,06-05-24,AS_DOG_MANF_1040: FS,AS_DOG_MANF_1060: FS,SLAC,0%,52169.52169_METS Mechanical Engineer,52169_METS Mechanical Engineer,Labor,0.0d,10.0,10.0,At Completion Units,4/24/2023,5/5/2023,0,0,0,0,0,0,0,0,0,0,1.03_Accelerator Systems (AS),1.03.05_AS Beam Transfer Line (BTL),1.03.05.06_AS Beam Transfer Line Procurement and Fabrication,1.03.05.06.01_Dogleg and Spreader Area - Procurement & Fab,AS_DOG_MANF_1050_Receiving Inspection - 1.38S3.00 Sextupoles - BTL - DOG,Mechanical,,SLAC,Labor
98189,1.03,1.03.05,1.03.05.06,1.03.05.06.01,1.03.05.06.01,Dogleg and Spreader Area - Procurement & Fab,AS_DOG_MANF_1050,Receiving Inspection - 1.38S3.00 Sextupoles - BTL - DOG,10.0,8.0,8.0,8.0,05-22-24,06-05-24,AS_DOG_MANF_1040: FS,AS_DOG_MANF_1060: FS,SLAC,0%,52198.52198_METSMANF (METSD Manufacturing),52198_METSMANF (METSD Manufacturing),Labor,0.0d,10.0,10.0,At Completion Units,4/24/2023,5/5/2023,0,0,0,0,0,0,0,0,0,0,1.03_Accelerator Systems (AS),1.03.05_AS Beam Transfer Line (BTL),1.03.05.06_AS Beam Transfer Line Procurement and Fabrication,1.03.05.06.01_Dogleg and Spreader Area - Procurement & Fab,AS_DOG_MANF_1050_Receiving Inspection - 1.38S3.00 Sextupoles - BTL - DOG,Manufacturing,,SLAC,Labor
98190,1.03,1.03.05,1.03.05.06,1.03.05.06.01,1.03.05.06.01,Dogleg and Spreader Area - Procurement & Fab,AS_DOG_MANF_1060,RCV: Goods/Services - 1.38S3.00 Sextupoles - BTL - DOG,1.0,41705.0,41705.0,41705.0,06-06-24,06-06-24,"AS_DOG_MANF_1040: FS, AS_DOG_MANF_1050: FS",AS_DOG_MANF_1070: FS,SLAC,0%,SL_MSSC.SLAC M&S (<$500K) (gets G&A) (gets ESC),SLAC M&S (<$500K) (gets G&A) (gets ESC),Nonlabor,0.0d,1.0,1.0,At Completion Units,5/8/2023,5/8/2023,0,0,0,0,0,0,0,0,0,0,1.03_Accelerator Systems (AS),1.03.05_AS Beam Transfer Line (BTL),1.03.05.06_AS Beam Transfer Line Procurement and Fabrication,1.03.05.06.01_Dogleg and Spreader Area - Procurement & Fab,AS_DOG_MANF_1060_RCV: Goods/Services - 1.38S3.00 Sextupoles - BTL - DOG,Material,,SLAC,M&S
98191,1.03,1.03.05,1.03.05.06,1.03.05.06.01,1.03.05.06.01,Dogleg and Spreader Area - Procurement & Fab,AS_DOG_MANF_1030,AWARD: Procurement - 1.38S3.00 Sextupoles - BTL - DOG,1.0,41705.0,41705.0,41705.0,10-31-23,10-31-23,AS_DOG_MANF_1020: FS,AS_DOG_MANF_1040: FS,SLAC,0%,AWARD_USE.AWARD - Use this AWARD,AWARD - Use this AWARD,Nonlabor,0.0d,1.0,1.0,At Completion Units,10/3/2022,10/3/2022,AWARD < $500K,0,0,0,0,0,0,0,0,0,1.03_Accelerator Systems (AS),1.03.05_AS Beam Transfer Line (BTL),1.03.05.06_AS Beam Transfer Line Procurement and Fabrication,1.03.05.06.01_Dogleg and Spreader Area - Procurement & Fab,AS_DOG_MANF_1030_AWARD: Procurement - 1.38S3.00 Sextupoles - BTL - DOG,Material,,SLAC,M&S
98192,1.03,1.03.05,1.03.05.06,1.03.05.06.01,1.03.05.06.01,Dogleg and Spreader Area - Procurement & Fab,AS_DOG_MANF_1010,RQN: Approval of Requisition - 1.38S3.00 Sextupoles - BTL - DOG,1.0,41705.0,41705.0,41705.0,10-02-23,10-02-23,"AS_DOG_MANF_1000: FS, AS_BTL_MANF_1000: FS",AS_DOG_MANF_1020: FS,SLAC,0%,REQ.Requisition,Requisition,Nonlabor,0.0d,1.0,1.0,At Completion Units,9/1/2022,9/1/2022,RQN,0,0,0,0,0,0,0,0,0,1.03_Accelerator Systems (AS),1.03.05_AS Beam Transfer Line (BTL),1.03.05.06_AS Beam Transfer Line Procurement and Fabrication,1.03.05.06.01_Dogleg and Spreader Area - Procurement & Fab,AS_DOG_MANF_1010_RQN: Approval of Requisition - 1.38S3.00 Sextupoles - BTL - DOG,Material,,SLAC,M&S
98193,1.03,1.03.05,1.03.05.06,1.03.05.06.01,1.03.05.06.01,Dogleg and Spreader Area - Procurement & Fab,AS_DOG_MANF_1000,Prepare Requisition (Specs/SOW/ETC) - 1.38S3.00 Sextupoles - BTL - DOG,20.0,8.0,8.0,8.0,08-05-22,09-01-22,"AS_BTL_DE_1060: FS, MS_FY_2022_Q4: FS",AS_DOG_MANF_1010: FS,SLAC,0%,52190.52190_METSTP Tech Planning - Reinstated FY16,52190_METSTP Tech Planning - Reinstated FY16,Labor,0.0d,20.0,20.0,At Completion Units,7/5/2022,8/1/2022,0,0,0,0,0,0,0,0,0,0,1.03_Accelerator Systems (AS),1.03.05_AS Beam Transfer Line (BTL),1.03.05.06_AS Beam Transfer Line Procurement and Fabrication,1.03.05.06.01_Dogleg and Spreader Area - Procurement & Fab,AS_DOG_MANF_1000_Prepare Requisition (Specs/SOW/ETC) - 1.38S3.00 Sextupoles - BTL - DOG,METSTPT Tech Planning,Tech,SLAC,Labor
98194,1.03,1.03.05,1.03.05.06,1.03.05.06.01,1.03.05.06.01,Dogleg and Spreader Area - Procurement & Fab,AS_DOG_MANF_1000,Prepare Requisition (Specs/SOW/ETC) - 1.38S3.00 Sextupoles - BTL - DOG,20.0,8.0,8.0,8.0,08-05-22,09-01-22,"AS_BTL_DE_1060: FS, MS_FY_2022_Q4: FS",AS_DOG_MANF_1010: FS,SLAC,0%,52169.52169_METS Mechanical Engineer,52169_METS Mechanical Engineer,Labor,0.0d,20.0,20.0,At Completion Units,7/5/2022,8/1/2022,0,0,0,0,0,0,0,0,0,0,1.03_Accelerator Systems (AS),1.03.05_AS Beam Transfer Line (BTL),1.03.05.06_AS Beam Transfer Line Procurement and Fabrication,1.03.05.06.01_Dogleg and Spreader Area - Procurement & Fab,AS_DOG_MANF_1000_Prepare Requisition (Specs/SOW/ETC) - 1.38S3.00 Sextupoles - BTL - DOG,Mechanical,,SLAC,Labor
98195,1.03,1.03.05,1.03.05.06,1.03.05.06.01,1.03.05.06.01,Dogleg and Spreader Area - Procurement & Fab,AS_SPD_MANF_2650,RCV: Goods/Services - 1.38S3.00 Magnet Stage - BTL - SPD,1.0,12857.0,12857.0,12857.0,01-25-24,01-25-24,AS_SPD_MANF_2640: FS,AS_SPD_MANF_2660: FS,SLAC,0%,SL_MSSC.SLAC M&S (<$500K) (gets G&A) (gets ESC),SLAC M&S (<$500K) (gets G&A) (gets ESC),Nonlabor,0.0d,1.0,1.0,At Completion Units,2/24/2023,2/24/2023,0,0,0,0,0,0,0,0,0,0,1.03_Accelerator Systems (AS),1.03.05_AS Beam Transfer Line (BTL),1.03.05.06_AS Beam Transfer Line Procurement and Fabrication,1.03.05.06.01_Dogleg and Spreader Area - Procurement & Fab,AS_SPD_MANF_2650_RCV: Goods/Services - 1.38S3.00 Magnet Stage - BTL - SPD,Material,,SLAC,M&S
98196,1.03,1.03.05,1.03.05.06,1.03.05.06.01,1.03.05.06.01,Dogleg and Spreader Area - Procurement & Fab,AS_SPD_MANF_3260,RCV: ACMs - Beam Transfer Line - BTL - SPD,1.0,165000.0,165000.0,165000.0,04-10-24,04-10-24,AS_SPD_MANF_3250: FS,AS_SPD_MANF_3270: FS,SLAC,0%,SL_MSSC.SLAC M&S (<$500K) (gets G&A) (gets ESC),SLAC M&S (<$500K) (gets G&A) (gets ESC),Nonlabor,0.0d,1.0,1.0,At Completion Units,4/26/2023,4/26/2023,0,0,0,0,0,0,0,0,0,0,1.03_Accelerator Systems (AS),1.03.05_AS Beam Transfer Line (BTL),1.03.05.06_AS Beam Transfer Line Procurement and Fabrication,1.03.05.06.01_Dogleg and Spreader Area - Procurement & Fab,AS_SPD_MANF_3260_RCV: ACMs - Beam Transfer Line - BTL - SPD,Material,,SLAC,M&S
98197,1.03,1.03.05,1.03.05.06,1.03.05.06.01,1.03.05.06.01,Dogleg and Spreader Area - Procurement & Fab,AS_SPD_MANF_2250,Receiving Inspection - 1.38S3.00 Sextupoles - BTL - SPD,10.0,8.0,8.0,8.0,05-22-24,06-05-24,AS_SPD_MANF_2240: FS,AS_SPD_MANF_2260: FS,SLAC,0%,52198.52198_METSMANF (METSD Manufacturing),52198_METSMANF (METSD Manufacturing),Labor,0.0d,10.0,10.0,At Completion Units,4/24/2023,5/5/2023,0,0,0,0,0,0,0,0,0,0,1.03_Accelerator Systems (AS),1.03.05_AS Beam Transfer Line (BTL),1.03.05.06_AS Beam Transfer Line Procurement and Fabrication,1.03.05.06.01_Dogleg and Spreader Area - Procurement & Fab,AS_SPD_MANF_2250_Receiving Inspection - 1.38S3.00 Sextupoles - BTL - SPD,Manufacturing,,SLAC,Labor
98198,1.03,1.03.05,1.03.05.06,1.03.05.06.01,1.03.05.06.01,Dogleg and Spreader Area - Procurement & Fab,AS_SPD_MANF_2250,Receiving Inspection - 1.38S3.00 Sextupoles - BTL - SPD,10.0,4.0,4.0,4.0,05-22-24,06-05-24,AS_SPD_MANF_2240: FS,AS_SPD_MANF_2260: FS,SLAC,0%,52190.52190_METSTP Tech Planning - Reinstated FY16,52190_METSTP Tech Planning - Reinstated FY16,Labor,0.0d,10.0,10.0,At Completion Units,4/24/2023,5/5/2023,0,0,0,0,0,0,0,0,0,0,1.03_Accelerator Systems (AS),1.03.05_AS Beam Transfer Line (BTL),1.03.05.06_AS Beam Transfer Line Procurement and Fabrication,1.03.05.06.01_Dogleg and Spreader Area - Procurement & Fab,AS_SPD_MANF_2250_Receiving Inspection - 1.38S3.00 Sextupoles - BTL - SPD,METSTPT Tech Planning,Tech,SLAC,Labor
98199,1.03,1.03.05,1.03.05.06,1.03.05.06.01,1.03.05.06.01,Dogleg and Spreader Area - Procurement & Fab,AS_SPD_MANF_2250,Receiving Inspection - 1.38S3.00 Sextupoles - BTL - SPD,10.0,4.0,4.0,4.0,05-22-24,06-05-24,AS_SPD_MANF_2240: FS,AS_SPD_MANF_2260: FS,SLAC,0%,52169.52169_METS Mechanical Engineer,52169_METS Mechanical Engineer,Labor,0.0d,10.0,10.0,At Completion Units,4/24/2023,5/5/2023,0,0,0,0,0,0,0,0,0,0,1.03_Accelerator Systems (AS),1.03.05_AS Beam Transfer Line (BTL),1.03.05.06_AS Beam Transfer Line Procurement and Fabrication,1.03.05.06.01_Dogleg and Spreader Area - Procurement & Fab,AS_SPD_MANF_2250_Receiving Inspection - 1.38S3.00 Sextupoles - BTL - SPD,Mechanical,,SLAC,Labor
98200,1.03,1.03.05,1.03.05.06,1.03.05.06.01,1.03.05.06.01,Dogleg and Spreader Area - Procurement & Fab,AS_SPD_MANF_1650,Receiving Inspection - 1.378K35 Drift Tube - BTL - SPD,10.0,8.0,8.0,8.0,03-27-24,04-09-24,AS_SPD_MANF_1640: FS,AS_SPD_MANF_1660: FS,SLAC,0%,52198.52198_METSMANF (METSD Manufacturing),52198_METSMANF (METSD Manufacturing),Labor,0.0d,10.0,10.0,At Completion Units,2/27/2023,3/10/2023,0,0,0,0,0,0,0,0,0,0,1.03_Accelerator Systems (AS),1.03.05_AS Beam Transfer Line (BTL),1.03.05.06_AS Beam Transfer Line Procurement and Fabrication,1.03.05.06.01_Dogleg and Spreader Area - Procurement & Fab,AS_SPD_MANF_1650_Receiving Inspection - 1.378K35 Drift Tube - BTL - SPD,Manufacturing,,SLAC,Labor
98201,1.03,1.03.05,1.03.05.06,1.03.05.06.01,1.03.05.06.01,Dogleg and Spreader Area - Procurement & Fab,AS_SPD_MANF_1650,Receiving Inspection - 1.378K35 Drift Tube - BTL - SPD,10.0,8.0,8.0,8.0,03-27-24,04-09-24,AS_SPD_MANF_1640: FS,AS_SPD_MANF_1660: FS,SLAC,0%,52128.52128_Research Electrical & SW Technican,52128_Research Electrical & SW Technican,Labor,0.0d,10.0,10.0,At Completion Units,2/27/2023,3/10/2023,0,0,0,0,0,0,0,0,0,0,1.03_Accelerator Systems (AS),1.03.05_AS Beam Transfer Line (BTL),1.03.05.06_AS Beam Transfer Line Procurement and Fabrication,1.03.05.06.01_Dogleg and Spreader Area - Procurement & Fab,AS_SPD_MANF_1650_Receiving Inspection - 1.378K35 Drift Tube - BTL - SPD,Electrical,Tech,SLAC,Labor
98202,1.03,1.03.05,1.03.05.06,1.03.05.06.01,1.03.05.06.01,Dogleg and Spreader Area - Procurement & Fab,AS_SPD_MANF_1450,Receiving Inspection - 1.378K35 Kicker Magnet - BTL - SPD,10.0,8.0,8.0,8.0,05-08-24,05-21-24,AS_SPD_MANF_1440: FS,AS_SPD_MANF_1460: FS,SLAC,0%,52211.52211_EEDOPSE (Electronics & Engineering Div - Ops & PSE),52211_EEDOPSE (Electronics & Engineering Div - Ops & PSE),Labor,0.0d,10.0,10.0,At Completion Units,4/10/2023,4/21/2023,0,0,0,0,0,0,0,0,0,0,1.03_Accelerator Systems (AS),1.03.05_AS Beam Transfer Line (BTL),1.03.05.06_AS Beam Transfer Line Procurement and Fabrication,1.03.05.06.01_Dogleg and Spreader Area - Procurement & Fab,AS_SPD_MANF_1450_Receiving Inspection - 1.378K35 Kicker Magnet - BTL - SPD,Electrical,,SLAC,Labor
98203,1.03,1.03.05,1.03.05.06,1.03.05.06.01,1.03.05.06.01,Dogleg and Spreader Area - Procurement & Fab,AS_SPD_MANF_1450,Receiving Inspection - 1.378K35 Kicker Magnet - BTL - SPD,10.0,8.0,8.0,8.0,05-08-24,05-21-24,AS_SPD_MANF_1440: FS,AS_SPD_MANF_1460: FS,SLAC,0%,52198.52198_METSMANF (METSD Manufacturing),52198_METSMANF (METSD Manufacturing),Labor,0.0d,10.0,10.0,At Completion Units,4/10/2023,4/21/2023,0,0,0,0,0,0,0,0,0,0,1.03_Accelerator Systems (AS),1.03.05_AS Beam Transfer Line (BTL),1.03.05.06_AS Beam Transfer Line Procurement and Fabrication,1.03.05.06.01_Dogleg and Spreader Area - Procurement & Fab,AS_SPD_MANF_1450_Receiving Inspection - 1.378K35 Kicker Magnet - BTL - SPD,Manufacturing,,SLAC,Labor
98204,1.03,1.03.05,1.03.05.06,1.03.05.06.01,1.03.05.06.01,Dogleg and Spreader Area - Procurement & Fab,AS_SPD_MANF_1250,Receiving Inspection - 0.787K35 Drift Tube - BTL - SPD,10.0,8.0,8.0,8.0,03-27-24,04-09-24,AS_SPD_MANF_1240: FS,AS_SPD_MANF_1260: FS,SLAC,0%,52198.52198_METSMANF (METSD Manufacturing),52198_METSMANF (METSD Manufacturing),Labor,0.0d,10.0,10.0,At Completion Units,2/27/2023,3/10/2023,0,0,0,0,0,0,0,0,0,0,1.03_Accelerator Systems (AS),1.03.05_AS Beam Transfer Line (BTL),1.03.05.06_AS Beam Transfer Line Procurement and Fabrication,1.03.05.06.01_Dogleg and Spreader Area - Procurement & Fab,AS_SPD_MANF_1250_Receiving Inspection - 0.787K35 Drift Tube - BTL - SPD,Manufacturing,,SLAC,Labor
98205,1.03,1.03.05,1.03.05.06,1.03.05.06.01,1.03.05.06.01,Dogleg and Spreader Area - Procurement & Fab,AS_SPD_MANF_1250,Receiving Inspection - 0.787K35 Drift Tube - BTL - SPD,10.0,8.0,8.0,8.0,03-27-24,04-09-24,AS_SPD_MANF_1240: FS,AS_SPD_MANF_1260: FS,SLAC,0%,52128.52128_Research Electrical & SW Technican,52128_Research Electrical & SW Technican,Labor,0.0d,10.0,10.0,At Completion Units,2/27/2023,3/10/2023,0,0,0,0,0,0,0,0,0,0,1.03_Accelerator Systems (AS),1.03.05_AS Beam Transfer Line (BTL),1.03.05.06_AS Beam Transfer Line Procurement and Fabrication,1.03.05.06.01_Dogleg and Spreader Area - Procurement & Fab,AS_SPD_MANF_1250_Receiving Inspection - 0.787K35 Drift Tube - BTL - SPD,Electrical,Tech,SLAC,Labor
98206,1.03,1.03.05,1.03.05.06,1.03.05.06.01,1.03.05.06.01,Dogleg and Spreader Area - Procurement & Fab,AS_SPD_MANF_1050,Receiving Inspection - 0.787K35 Kicker Magnet - BTL - SPD,10.0,24.0,24.0,24.0,05-08-24,05-21-24,AS_SPD_MANF_1040: FS,AS_SPD_MANF_1060: FS,SLAC,0%,52211.52211_EEDOPSE (Electronics & Engineering Div - Ops & PSE),52211_EEDOPSE (Electronics & Engineering Div - Ops & PSE),Labor,0.0d,10.0,10.0,At Completion Units,4/10/2023,4/21/2023,0,0,0,0,0,0,0,0,0,0,1.03_Accelerator Systems (AS),1.03.05_AS Beam Transfer Line (BTL),1.03.05.06_AS Beam Transfer Line Procurement and Fabrication,1.03.05.06.01_Dogleg and Spreader Area - Procurement & Fab,AS_SPD_MANF_1050_Receiving Inspection - 0.787K35 Kicker Magnet - BTL - SPD,Electrical,,SLAC,Labor
98207,1.03,1.03.05,1.03.05.06,1.03.05.06.01,1.03.05.06.01,Dogleg and Spreader Area - Procurement & Fab,AS_SPD_MANF_1050,Receiving Inspection - 0.787K35 Kicker Magnet - BTL - SPD,10.0,24.0,24.0,24.0,05-08-24,05-21-24,AS_SPD_MANF_1040: FS,AS_SPD_MANF_1060: FS,SLAC,0%,52198.52198_METSMANF (METSD Manufacturing),52198_METSMANF (METSD Manufacturing),Labor,0.0d,10.0,10.0,At Completion Units,4/10/2023,4/21/2023,0,0,0,0,0,0,0,0,0,0,1.03_Accelerator Systems (AS),1.03.05_AS Beam Transfer Line (BTL),1.03.05.06_AS Beam Transfer Line Procurement and Fabrication,1.03.05.06.01_Dogleg and Spreader Area - Procurement & Fab,AS_SPD_MANF_1050_Receiving Inspection - 0.787K35 Kicker Magnet - BTL - SPD,Manufacturing,,SLAC,Labor
98208,1.03,1.03.05,1.03.05.06,1.03.05.06.01,1.03.05.06.01,Dogleg and Spreader Area - Procurement & Fab,AS_SPD_MANF_1050,Receiving Inspection - 0.787K35 Kicker Magnet - BTL - SPD,10.0,8.0,8.0,8.0,05-08-24,05-21-24,AS_SPD_MANF_1040: FS,AS_SPD_MANF_1060: FS,SLAC,0%,52190.52190_METSTP Tech Planning - Reinstated FY16,52190_METSTP Tech Planning - Reinstated FY16,Labor,0.0d,10.0,10.0,At Completion Units,4/10/2023,4/21/2023,0,0,0,0,0,0,0,0,0,0,1.03_Accelerator Systems (AS),1.03.05_AS Beam Transfer Line (BTL),1.03.05.06_AS Beam Transfer Line Procurement and Fabrication,1.03.05.06.01_Dogleg and Spreader Area - Procurement & Fab,AS_SPD_MANF_1050_Receiving Inspection - 0.787K35 Kicker Magnet - BTL - SPD,METSTPT Tech Planning,Tech,SLAC,Labor
98209,1.03,1.03.05,1.03.05.06,1.03.05.06.01,1.03.05.06.01,Dogleg and Spreader Area - Procurement & Fab,AS_SPD_MANF_1050,Receiving Inspection - 0.787K35 Kicker Magnet - BTL - SPD,10.0,0.0,0.0,0.0,05-08-24,05-21-24,AS_SPD_MANF_1040: FS,AS_SPD_MANF_1060: FS,SLAC,0%,52169.52169_METS Mechanical Engineer,52169_METS Mechanical Engineer,Labor,0.0d,10.0,10.0,At Completion Units,4/10/2023,4/21/2023,0,0,0,0,0,0,0,0,0,0,1.03_Accelerator Systems (AS),1.03.05_AS Beam Transfer Line (BTL),1.03.05.06_AS Beam Transfer Line Procurement and Fabrication,1.03.05.06.01_Dogleg and Spreader Area - Procurement & Fab,AS_SPD_MANF_1050_Receiving Inspection - 0.787K35 Kicker Magnet - BTL - SPD,Mechanical,,SLAC,Labor
98210,1.03,1.03.05,1.03.05.06,1.03.05.06.01,1.03.05.06.01,Dogleg and Spreader Area - Procurement & Fab,AS_SPD_MANF_2600,Prepare Requisition (Specs/SOW/ETC) - 1.38S3.00 Magnet Stage - BTL - SPD,20.0,4.0,4.0,4.0,10-04-22,10-31-22,"AS_BTL_DE_1060: FS, MS_FY_2023_Q1: FS",AS_SPD_MANF_2610: FS,SLAC,0%,52190.52190_METSTP Tech Planning - Reinstated FY16,52190_METSTP Tech Planning - Reinstated FY16,Labor,0.0d,20.0,20.0,At Completion Units,10/4/2022,10/31/2022,0,0,0,0,0,0,0,0,0,0,1.03_Accelerator Systems (AS),1.03.05_AS Beam Transfer Line (BTL),1.03.05.06_AS Beam Transfer Line Procurement and Fabrication,1.03.05.06.01_Dogleg and Spreader Area - Procurement & Fab,AS_SPD_MANF_2600_Prepare Requisition (Specs/SOW/ETC) - 1.38S3.00 Magnet Stage - BTL - SPD,METSTPT Tech Planning,Tech,SLAC,Labor
98211,1.03,1.03.05,1.03.05.06,1.03.05.06.01,1.03.05.06.01,Dogleg and Spreader Area - Procurement & Fab,AS_SPD_MANF_2600,Prepare Requisition (Specs/SOW/ETC) - 1.38S3.00 Magnet Stage - BTL - SPD,20.0,4.0,4.0,4.0,10-04-22,10-31-22,"AS_BTL_DE_1060: FS, MS_FY_2023_Q1: FS",AS_SPD_MANF_2610: FS,SLAC,0%,52169.52169_METS Mechanical Engineer,52169_METS Mechanical Engineer,Labor,0.0d,20.0,20.0,At Completion Units,10/4/2022,10/31/2022,0,0,0,0,0,0,0,0,0,0,1.03_Accelerator Systems (AS),1.03.05_AS Beam Transfer Line (BTL),1.03.05.06_AS Beam Transfer Line Procurement and Fabrication,1.03.05.06.01_Dogleg and Spreader Area - Procurement & Fab,AS_SPD_MANF_2600_Prepare Requisition (Specs/SOW/ETC) - 1.38S3.00 Magnet Stage - BTL - SPD,Mechanical,,SLAC,Labor
98212,1.03,1.03.05,1.03.05.06,1.03.05.06.01,1.03.05.06.01,Dogleg and Spreader Area - Procurement & Fab,AS_SPD_MANF_2260,RCV: Goods/Services - 1.38S3.00 Sextupoles -BTL - SPD,1.0,125115.0,125115.0,125115.0,06-06-24,06-06-24,"AS_SPD_MANF_2240: FS, AS_SPD_MANF_2250: FS",AS_SPD_MANF_2270: FS,SLAC,0%,SL_MSSC.SLAC M&S (<$500K) (gets G&A) (gets ESC),SLAC M&S (<$500K) (gets G&A) (gets ESC),Nonlabor,0.0d,1.0,1.0,At Completion Units,5/8/2023,5/8/2023,0,0,0,0,0,0,0,0,0,0,1.03_Accelerator Systems (AS),1.03.05_AS Beam Transfer Line (BTL),1.03.05.06_AS Beam Transfer Line Procurement and Fabrication,1.03.05.06.01_Dogleg and Spreader Area - Procurement & Fab,AS_SPD_MANF_2260_RCV: Goods/Services - 1.38S3.00 Sextupoles -BTL - SPD,Material,,SLAC,M&S
98213,1.03,1.03.05,1.03.05.06,1.03.05.06.01,1.03.05.06.01,Dogleg and Spreader Area - Procurement & Fab,AS_SPD_MANF_3200,Prepare Requisition (Specs/SOW/ETC) - ACMs - BTL - SPD,10.0,16.0,16.0,16.0,10-04-22,10-17-22,"AS_BTL_DE_1060: FS, MS_FY_2023_Q1: FS",AS_SPD_MANF_3210: FS,SLAC,0%,52190.52190_METSTP Tech Planning - Reinstated FY16,52190_METSTP Tech Planning - Reinstated FY16,Labor,0.0d,10.0,10.0,At Completion Units,10/4/2022,10/17/2022,0,0,0,0,0,0,0,0,0,0,1.03_Accelerator Systems (AS),1.03.05_AS Beam Transfer Line (BTL),1.03.05.06_AS Beam Transfer Line Procurement and Fabrication,1.03.05.06.01_Dogleg and Spreader Area - Procurement & Fab,AS_SPD_MANF_3200_Prepare Requisition (Specs/SOW/ETC) - ACMs - BTL - SPD,METSTPT Tech Planning,Tech,SLAC,Labor
98214,1.03,1.03.05,1.03.05.06,1.03.05.06.01,1.03.05.06.01,Dogleg and Spreader Area - Procurement & Fab,AS_SPD_MANF_3200,Prepare Requisition (Specs/SOW/ETC) - ACMs - BTL - SPD,10.0,8.0,8.0,8.0,10-04-22,10-17-22,"AS_BTL_DE_1060: FS, MS_FY_2023_Q1: FS",AS_SPD_MANF_3210: FS,SLAC,0%,52169.52169_METS Mechanical Engineer,52169_METS Mechanical Engineer,Labor,0.0d,10.0,10.0,At Completion Units,10/4/2022,10/17/2022,0,0,0,0,0,0,0,0,0,0,1.03_Accelerator Systems (AS),1.03.05_AS Beam Transfer Line (BTL),1.03.05.06_AS Beam Transfer Line Procurement and Fabrication,1.03.05.06.01_Dogleg and Spreader Area - Procurement & Fab,AS_SPD_MANF_3200_Prepare Requisition (Specs/SOW/ETC) - ACMs - BTL - SPD,Mechanical,,SLAC,Labor
98215,1.03,1.03.05,1.03.05.06,1.03.05.06.01,1.03.05.06.01,Dogleg and Spreader Area - Procurement & Fab,AS_SPD_MANF_2800,Prepare Requisition (Specs/SOW/ETC) - 1.38S3.00 mag stand - BTL - SPD,20.0,4.0,4.0,4.0,10-04-22,10-31-22,"AS_BTL_DE_1060: FS, MS_FY_2023_Q1: FS",AS_SPD_MANF_2810: FS,SLAC,0%,52190.52190_METSTP Tech Planning - Reinstated FY16,52190_METSTP Tech Planning - Reinstated FY16,Labor,0.0d,20.0,20.0,At Completion Units,10/4/2022,10/31/2022,0,0,0,0,0,0,0,0,0,0,1.03_Accelerator Systems (AS),1.03.05_AS Beam Transfer Line (BTL),1.03.05.06_AS Beam Transfer Line Procurement and Fabrication,1.03.05.06.01_Dogleg and Spreader Area - Procurement & Fab,AS_SPD_MANF_2800_Prepare Requisition (Specs/SOW/ETC) - 1.38S3.00 mag stand - BTL - SPD,METSTPT Tech Planning,Tech,SLAC,Labor
98216,1.03,1.03.05,1.03.05.06,1.03.05.06.01,1.03.05.06.01,Dogleg and Spreader Area - Procurement & Fab,AS_SPD_MANF_2800,Prepare Requisition (Specs/SOW/ETC) - 1.38S3.00 mag stand - BTL - SPD,20.0,4.0,4.0,4.0,10-04-22,10-31-22,"AS_BTL_DE_1060: FS, MS_FY_2023_Q1: FS",AS_SPD_MANF_2810: FS,SLAC,0%,52169.52169_METS Mechanical Engineer,52169_METS Mechanical Engineer,Labor,0.0d,20.0,20.0,At Completion Units,10/4/2022,10/31/2022,0,0,0,0,0,0,0,0,0,0,1.03_Accelerator Systems (AS),1.03.05_AS Beam Transfer Line (BTL),1.03.05.06_AS Beam Transfer Line Procurement and Fabrication,1.03.05.06.01_Dogleg and Spreader Area - Procurement & Fab,AS_SPD_MANF_2800_Prepare Requisition (Specs/SOW/ETC) - 1.38S3.00 mag stand - BTL - SPD,Mechanical,,SLAC,Labor
98217,1.03,1.03.05,1.03.05.06,1.03.05.06.01,1.03.05.06.01,Dogleg and Spreader Area - Procurement & Fab,AS_SPD_MANF_2200,Prepare Requisition (Specs/SOW/ETC) - 1.38S3.00 Sextupoles - BTL - SPD,20.0,8.0,8.0,8.0,08-05-22,09-01-22,"AS_BTL_DE_1060: FS, MS_FY_2022_Q4: FS",AS_SPD_MANF_2210: FS,SLAC,0%,52198.52198_METSMANF (METSD Manufacturing),52198_METSMANF (METSD Manufacturing),Labor,0.0d,20.0,20.0,At Completion Units,7/5/2022,8/1/2022,0,0,0,0,0,0,0,0,0,0,1.03_Accelerator Systems (AS),1.03.05_AS Beam Transfer Line (BTL),1.03.05.06_AS Beam Transfer Line Procurement and Fabrication,1.03.05.06.01_Dogleg and Spreader Area - Procurement & Fab,AS_SPD_MANF_2200_Prepare Requisition (Specs/SOW/ETC) - 1.38S3.00 Sextupoles - BTL - SPD,Manufacturing,,SLAC,Labor
98218,1.03,1.03.05,1.03.05.06,1.03.05.06.01,1.03.05.06.01,Dogleg and Spreader Area - Procurement & Fab,AS_SPD_MANF_2200,Prepare Requisition (Specs/SOW/ETC) - 1.38S3.00 Sextupoles - BTL - SPD,20.0,8.0,8.0,8.0,08-05-22,09-01-22,"AS_BTL_DE_1060: FS, MS_FY_2022_Q4: FS",AS_SPD_MANF_2210: FS,SLAC,0%,52190.52190_METSTP Tech Planning - Reinstated FY16,52190_METSTP Tech Planning - Reinstated FY16,Labor,0.0d,20.0,20.0,At Completion Units,7/5/2022,8/1/2022,0,0,0,0,0,0,0,0,0,0,1.03_Accelerator Systems (AS),1.03.05_AS Beam Transfer Line (BTL),1.03.05.06_AS Beam Transfer Line Procurement and Fabrication,1.03.05.06.01_Dogleg and Spreader Area - Procurement & Fab,AS_SPD_MANF_2200_Prepare Requisition (Specs/SOW/ETC) - 1.38S3.00 Sextupoles - BTL - SPD,METSTPT Tech Planning,Tech,SLAC,Labor
98219,1.03,1.03.05,1.03.05.06,1.03.05.06.01,1.03.05.06.01,Dogleg and Spreader Area - Procurement & Fab,AS_SPD_MANF_2200,Prepare Requisition (Specs/SOW/ETC) - 1.38S3.00 Sextupoles - BTL - SPD,20.0,0.0,0.0,0.0,08-05-22,09-01-22,"AS_BTL_DE_1060: FS, MS_FY_2022_Q4: FS",AS_SPD_MANF_2210: FS,SLAC,0%,52169.52169_METS Mechanical Engineer,52169_METS Mechanical Engineer,Labor,0.0d,20.0,20.0,At Completion Units,7/5/2022,8/1/2022,0,0,0,0,0,0,0,0,0,0,1.03_Accelerator Systems (AS),1.03.05_AS Beam Transfer Line (BTL),1.03.05.06_AS Beam Transfer Line Procurement and Fabrication,1.03.05.06.01_Dogleg and Spreader Area - Procurement & Fab,AS_SPD_MANF_2200_Prepare Requisition (Specs/SOW/ETC) - 1.38S3.00 Sextupoles - BTL - SPD,Mechanical,,SLAC,Labor
98220,1.03,1.03.05,1.03.05.06,1.03.05.06.01,1.03.05.06.01,Dogleg and Spreader Area - Procurement & Fab,AS_SPD_MANF_1850,RCV: Goods/Services - Kicker Magnet Stands - BTL - SPD,1.0,57320.0,57320.0,57320.0,01-30-24,01-30-24,AS_SPD_MANF_1840: FS,AS_SPD_MANF_1860: FS,SLAC,0%,SL_MSSC.SLAC M&S (<$500K) (gets G&A) (gets ESC),SLAC M&S (<$500K) (gets G&A) (gets ESC),Nonlabor,0.0d,1.0,1.0,At Completion Units,3/1/2023,3/1/2023,0,0,0,0,0,0,0,0,0,0,1.03_Accelerator Systems (AS),1.03.05_AS Beam Transfer Line (BTL),1.03.05.06_AS Beam Transfer Line Procurement and Fabrication,1.03.05.06.01_Dogleg and Spreader Area - Procurement & Fab,AS_SPD_MANF_1850_RCV: Goods/Services - Kicker Magnet Stands - BTL - SPD,Material,,SLAC,M&S
98221,1.03,1.03.05,1.03.05.06,1.03.05.06.01,1.03.05.06.01,Dogleg and Spreader Area - Procurement & Fab,AS_SPD_MANF_1600,Prepare Requisition (Specs/SOW/ETC) - 1.378K35 Drift Tube - BTL - SPD,20.0,0.0,0.0,0.0,08-05-22,09-01-22,"AS_BTL_DE_1060: FS, MS_FY_2022_Q3: FS",AS_SPD_MANF_1610: FS,SLAC,0%,52198.52198_METSMANF (METSD Manufacturing),52198_METSMANF (METSD Manufacturing),Labor,0.0d,20.0,20.0,At Completion Units,4/4/2022,4/29/2022,0,0,0,0,0,0,0,0,0,0,1.03_Accelerator Systems (AS),1.03.05_AS Beam Transfer Line (BTL),1.03.05.06_AS Beam Transfer Line Procurement and Fabrication,1.03.05.06.01_Dogleg and Spreader Area - Procurement & Fab,AS_SPD_MANF_1600_Prepare Requisition (Specs/SOW/ETC) - 1.378K35 Drift Tube - BTL - SPD,Manufacturing,,SLAC,Labor
98222,1.03,1.03.05,1.03.05.06,1.03.05.06.01,1.03.05.06.01,Dogleg and Spreader Area - Procurement & Fab,AS_SPD_MANF_1600,Prepare Requisition (Specs/SOW/ETC) - 1.378K35 Drift Tube - BTL - SPD,20.0,0.0,0.0,0.0,08-05-22,09-01-22,"AS_BTL_DE_1060: FS, MS_FY_2022_Q3: FS",AS_SPD_MANF_1610: FS,SLAC,0%,52128.52128_Research Electrical & SW Technican,52128_Research Electrical & SW Technican,Labor,0.0d,20.0,20.0,At Completion Units,4/4/2022,4/29/2022,0,0,0,0,0,0,0,0,0,0,1.03_Accelerator Systems (AS),1.03.05_AS Beam Transfer Line (BTL),1.03.05.06_AS Beam Transfer Line Procurement and Fabrication,1.03.05.06.01_Dogleg and Spreader Area - Procurement & Fab,AS_SPD_MANF_1600_Prepare Requisition (Specs/SOW/ETC) - 1.378K35 Drift Tube - BTL - SPD,Electrical,Tech,SLAC,Labor
98223,1.03,1.03.05,1.03.05.06,1.03.05.06.01,1.03.05.06.01,Dogleg and Spreader Area - Procurement & Fab,AS_SPD_MANF_1660,RCV: 1.378K35 Drift Tube - BTL - SPD,1.0,57000.0,57000.0,57000.0,04-10-24,04-10-24,"AS_SPD_MANF_1640: FS, AS_SPD_MANF_1650: FS",AS_SPD_MANF_1670: FS,SLAC,0%,SL_MSSC.SLAC M&S (<$500K) (gets G&A) (gets ESC),SLAC M&S (<$500K) (gets G&A) (gets ESC),Nonlabor,0.0d,1.0,1.0,At Completion Units,3/13/2023,3/13/2023,0,0,0,0,0,0,0,0,0,0,1.03_Accelerator Systems (AS),1.03.05_AS Beam Transfer Line (BTL),1.03.05.06_AS Beam Transfer Line Procurement and Fabrication,1.03.05.06.01_Dogleg and Spreader Area - Procurement & Fab,AS_SPD_MANF_1660_RCV: 1.378K35 Drift Tube - BTL - SPD,Material,,SLAC,M&S
98224,1.03,1.03.05,1.03.05.06,1.03.05.06.01,1.03.05.06.01,Dogleg and Spreader Area - Procurement & Fab,AS_SPD_MANF_1260,RCV: 0.787K35 Drift Tube - BTL - SPD,1.0,21000.0,21000.0,21000.0,04-10-24,04-10-24,"AS_SPD_MANF_1240: FS, AS_SPD_MANF_1250: FS",AS_SPD_MANF_1270: FS,SLAC,0%,SL_MSSC.SLAC M&S (<$500K) (gets G&A) (gets ESC),SLAC M&S (<$500K) (gets G&A) (gets ESC),Nonlabor,0.0d,1.0,1.0,At Completion Units,3/13/2023,3/13/2023,0,0,0,0,0,0,0,0,0,0,1.03_Accelerator Systems (AS),1.03.05_AS Beam Transfer Line (BTL),1.03.05.06_AS Beam Transfer Line Procurement and Fabrication,1.03.05.06.01_Dogleg and Spreader Area - Procurement & Fab,AS_SPD_MANF_1260_RCV: 0.787K35 Drift Tube - BTL - SPD,Material,,SLAC,M&S
98225,1.03,1.03.05,1.03.05.06,1.03.05.06.01,1.03.05.06.01,Dogleg and Spreader Area - Procurement & Fab,AS_SPD_MANF_1460,RCV: Goods/Services - 1.378K35 Kicker Magnet - BTL - SPD,1.0,22930.0,22930.0,22930.0,05-22-24,05-22-24,"AS_SPD_MANF_1440: FS, AS_SPD_MANF_1450: FS",AS_SPD_MANF_1470: FS,SLAC,0%,SL_MSSC.SLAC M&S (<$500K) (gets G&A) (gets ESC),SLAC M&S (<$500K) (gets G&A) (gets ESC),Nonlabor,0.0d,1.0,1.0,At Completion Units,4/24/2023,4/24/2023,0,0,0,0,0,0,0,0,0,0,1.03_Accelerator Systems (AS),1.03.05_AS Beam Transfer Line (BTL),1.03.05.06_AS Beam Transfer Line Procurement and Fabrication,1.03.05.06.01_Dogleg and Spreader Area - Procurement & Fab,AS_SPD_MANF_1460_RCV: Goods/Services - 1.378K35 Kicker Magnet - BTL - SPD,Material,,SLAC,M&S
98226,1.03,1.03.05,1.03.05.06,1.03.05.06.01,1.03.05.06.01,Dogleg and Spreader Area - Procurement & Fab,AS_SPD_MANF_1400,Prepare Requisition (Specs/SOW/ETC) - 1.378K35 Kicker Magnet - BTL - SPD,20.0,0.0,0.0,0.0,08-05-22,09-01-22,"AS_BTL_DE_1060: FS, MS_FY_2022_Q3: FS",AS_SPD_MANF_1410: FS,SLAC,0%,52211.52211_EEDOPSE (Electronics & Engineering Div - Ops & PSE),52211_EEDOPSE (Electronics & Engineering Div - Ops & PSE),Labor,0.0d,20.0,20.0,At Completion Units,4/4/2022,4/29/2022,0,0,0,0,0,0,0,0,0,0,1.03_Accelerator Systems (AS),1.03.05_AS Beam Transfer Line (BTL),1.03.05.06_AS Beam Transfer Line Procurement and Fabrication,1.03.05.06.01_Dogleg and Spreader Area - Procurement & Fab,AS_SPD_MANF_1400_Prepare Requisition (Specs/SOW/ETC) - 1.378K35 Kicker Magnet - BTL - SPD,Electrical,,SLAC,Labor
98227,1.03,1.03.05,1.03.05.06,1.03.05.06.01,1.03.05.06.01,Dogleg and Spreader Area - Procurement & Fab,AS_SPD_MANF_1400,Prepare Requisition (Specs/SOW/ETC) - 1.378K35 Kicker Magnet - BTL - SPD,20.0,0.0,0.0,0.0,08-05-22,09-01-22,"AS_BTL_DE_1060: FS, MS_FY_2022_Q3: FS",AS_SPD_MANF_1410: FS,SLAC,0%,52198.52198_METSMANF (METSD Manufacturing),52198_METSMANF (METSD Manufacturing),Labor,0.0d,20.0,20.0,At Completion Units,4/4/2022,4/29/2022,0,0,0,0,0,0,0,0,0,0,1.03_Accelerator Systems (AS),1.03.05_AS Beam Transfer Line (BTL),1.03.05.06_AS Beam Transfer Line Procurement and Fabrication,1.03.05.06.01_Dogleg and Spreader Area - Procurement & Fab,AS_SPD_MANF_1400_Prepare Requisition (Specs/SOW/ETC) - 1.378K35 Kicker Magnet - BTL - SPD,Manufacturing,,SLAC,Labor
98228,1.03,1.03.05,1.03.05.06,1.03.05.06.01,1.03.05.06.01,Dogleg and Spreader Area - Procurement & Fab,AS_SPD_MANF_1200,Prepare Requisition (Specs/SOW/ETC) - 0.787K35 Drift Tube - BTL - SPD,20.0,0.0,0.0,0.0,08-05-22,09-01-22,"AS_BTL_DE_1060: FS, MS_FY_2022_Q3: FS",AS_SPD_MANF_1210: FS,SLAC,0%,52198.52198_METSMANF (METSD Manufacturing),52198_METSMANF (METSD Manufacturing),Labor,0.0d,20.0,20.0,At Completion Units,4/4/2022,4/29/2022,0,0,0,0,0,0,0,0,0,0,1.03_Accelerator Systems (AS),1.03.05_AS Beam Transfer Line (BTL),1.03.05.06_AS Beam Transfer Line Procurement and Fabrication,1.03.05.06.01_Dogleg and Spreader Area - Procurement & Fab,AS_SPD_MANF_1200_Prepare Requisition (Specs/SOW/ETC) - 0.787K35 Drift Tube - BTL - SPD,Manufacturing,,SLAC,Labor
98229,1.03,1.03.05,1.03.05.06,1.03.05.06.01,1.03.05.06.01,Dogleg and Spreader Area - Procurement & Fab,AS_SPD_MANF_1200,Prepare Requisition (Specs/SOW/ETC) - 0.787K35 Drift Tube - BTL - SPD,20.0,0.0,0.0,0.0,08-05-22,09-01-22,"AS_BTL_DE_1060: FS, MS_FY_2022_Q3: FS",AS_SPD_MANF_1210: FS,SLAC,0%,52128.52128_Research Electrical & SW Technican,52128_Research Electrical & SW Technican,Labor,0.0d,20.0,20.0,At Completion Units,4/4/2022,4/29/2022,0,0,0,0,0,0,0,0,0,0,1.03_Accelerator Systems (AS),1.03.05_AS Beam Transfer Line (BTL),1.03.05.06_AS Beam Transfer Line Procurement and Fabrication,1.03.05.06.01_Dogleg and Spreader Area - Procurement & Fab,AS_SPD_MANF_1200_Prepare Requisition (Specs/SOW/ETC) - 0.787K35 Drift Tube - BTL - SPD,Electrical,Tech,SLAC,Labor
98230,1.03,1.03.05,1.03.05.06,1.03.05.06.01,1.03.05.06.01,Dogleg and Spreader Area - Procurement & Fab,AS_SPD_MANF_1000,Prepare Requisition (Specs/SOW/ETC) - 0.787K35 Kicker Magnet - BTL - SPD,20.0,0.0,0.0,0.0,08-05-22,09-01-22,"AS_BTL_DE_1060: FS, MS_FY_2022_Q3: FS",AS_SPD_MANF_1010: FS,SLAC,0%,52211.52211_EEDOPSE (Electronics & Engineering Div - Ops & PSE),52211_EEDOPSE (Electronics & Engineering Div - Ops & PSE),Labor,0.0d,20.0,20.0,At Completion Units,4/4/2022,4/29/2022,0,0,0,0,0,0,0,0,0,0,1.03_Accelerator Systems (AS),1.03.05_AS Beam Transfer Line (BTL),1.03.05.06_AS Beam Transfer Line Procurement and Fabrication,1.03.05.06.01_Dogleg and Spreader Area - Procurement & Fab,AS_SPD_MANF_1000_Prepare Requisition (Specs/SOW/ETC) - 0.787K35 Kicker Magnet - BTL - SPD,Electrical,,SLAC,Labor
98231,1.03,1.03.05,1.03.05.06,1.03.05.06.01,1.03.05.06.01,Dogleg and Spreader Area - Procurement & Fab,AS_SPD_MANF_1000,Prepare Requisition (Specs/SOW/ETC) - 0.787K35 Kicker Magnet - BTL - SPD,20.0,0.0,0.0,0.0,08-05-22,09-01-22,"AS_BTL_DE_1060: FS, MS_FY_2022_Q3: FS",AS_SPD_MANF_1010: FS,SLAC,0%,52198.52198_METSMANF (METSD Manufacturing),52198_METSMANF (METSD Manufacturing),Labor,0.0d,20.0,20.0,At Completion Units,4/4/2022,4/29/2022,0,0,0,0,0,0,0,0,0,0,1.03_Accelerator Systems (AS),1.03.05_AS Beam Transfer Line (BTL),1.03.05.06_AS Beam Transfer Line Procurement and Fabrication,1.03.05.06.01_Dogleg and Spreader Area - Procurement & Fab,AS_SPD_MANF_1000_Prepare Requisition (Specs/SOW/ETC) - 0.787K35 Kicker Magnet - BTL - SPD,Manufacturing,,SLAC,Labor
98232,1.03,1.03.05,1.03.05.06,1.03.05.06.01,1.03.05.06.01,Dogleg and Spreader Area - Procurement & Fab,AS_SPD_MANF_1000,Prepare Requisition (Specs/SOW/ETC) - 0.787K35 Kicker Magnet - BTL - SPD,20.0,24.0,24.0,24.0,08-05-22,09-01-22,"AS_BTL_DE_1060: FS, MS_FY_2022_Q3: FS",AS_SPD_MANF_1010: FS,SLAC,0%,52190.52190_METSTP Tech Planning - Reinstated FY16,52190_METSTP Tech Planning - Reinstated FY16,Labor,0.0d,20.0,20.0,At Completion Units,4/4/2022,4/29/2022,0,0,0,0,0,0,0,0,0,0,1.03_Accelerator Systems (AS),1.03.05_AS Beam Transfer Line (BTL),1.03.05.06_AS Beam Transfer Line Procurement and Fabrication,1.03.05.06.01_Dogleg and Spreader Area - Procurement & Fab,AS_SPD_MANF_1000_Prepare Requisition (Specs/SOW/ETC) - 0.787K35 Kicker Magnet - BTL - SPD,METSTPT Tech Planning,Tech,SLAC,Labor
98233,1.03,1.03.05,1.03.05.06,1.03.05.06.01,1.03.05.06.01,Dogleg and Spreader Area - Procurement & Fab,AS_SPD_MANF_1000,Prepare Requisition (Specs/SOW/ETC) - 0.787K35 Kicker Magnet - BTL - SPD,20.0,32.0,32.0,32.0,08-05-22,09-01-22,"AS_BTL_DE_1060: FS, MS_FY_2022_Q3: FS",AS_SPD_MANF_1010: FS,SLAC,0%,52169.52169_METS Mechanical Engineer,52169_METS Mechanical Engineer,Labor,0.0d,20.0,20.0,At Completion Units,4/4/2022,4/29/2022,0,0,0,0,0,0,0,0,0,0,1.03_Accelerator Systems (AS),1.03.05_AS Beam Transfer Line (BTL),1.03.05.06_AS Beam Transfer Line Procurement and Fabrication,1.03.05.06.01_Dogleg and Spreader Area - Procurement & Fab,AS_SPD_MANF_1000_Prepare Requisition (Specs/SOW/ETC) - 0.787K35 Kicker Magnet - BTL - SPD,Mechanical,,SLAC,Labor
98234,1.03,1.03.05,1.03.05.06,1.03.05.06.01,1.03.05.06.01,Dogleg and Spreader Area - Procurement & Fab,AS_SPD_MANF_1060,RCV: 0.787K35 Kicker Magnet - BTL - SPD,1.0,45860.0,45860.0,45860.0,05-22-24,05-22-24,"AS_SPD_MANF_1040: FS, AS_SPD_MANF_1050: FS",AS_SPD_MANF_1070: FS,SLAC,0%,SL_MSSC.SLAC M&S (<$500K) (gets G&A) (gets ESC),SLAC M&S (<$500K) (gets G&A) (gets ESC),Nonlabor,0.0d,1.0,1.0,At Completion Units,4/24/2023,4/24/2023,0,0,0,0,0,0,0,0,0,0,1.03_Accelerator Systems (AS),1.03.05_AS Beam Transfer Line (BTL),1.03.05.06_AS Beam Transfer Line Procurement and Fabrication,1.03.05.06.01_Dogleg and Spreader Area - Procurement & Fab,AS_SPD_MANF_1060_RCV: 0.787K35 Kicker Magnet - BTL - SPD,Material,,SLAC,M&S
98235,1.03,1.03.05,1.03.05.06,1.03.05.06.01,1.03.05.06.01,Dogleg and Spreader Area - Procurement & Fab,AS_SPD_MANF_3230,AWARD: Procurement - ACMs - BTL - SPD,1.0,165000.0,165000.0,165000.0,10-17-23,10-17-23,AS_SPD_MANF_3220: FS,AS_SPD_MANF_3240: FS,SLAC,0%,AWARD_USE.AWARD - Use this AWARD,AWARD - Use this AWARD,Nonlabor,0.0d,1.0,1.0,At Completion Units,11/2/2022,11/2/2022,AWARD < $500K,0,0,0,0,0,0,0,0,0,1.03_Accelerator Systems (AS),1.03.05_AS Beam Transfer Line (BTL),1.03.05.06_AS Beam Transfer Line Procurement and Fabrication,1.03.05.06.01_Dogleg and Spreader Area - Procurement & Fab,AS_SPD_MANF_3230_AWARD: Procurement - ACMs - BTL - SPD,Material,,SLAC,M&S
98236,1.03,1.03.05,1.03.05.06,1.03.05.06.01,1.03.05.06.01,Dogleg and Spreader Area - Procurement & Fab,AS_SPD_MANF_3210,RQN: Approval of Requisition - ACMs - BTL - SPD,1.0,165000.0,165000.0,165000.0,10-02-23,10-02-23,"AS_SPD_MANF_3200: FS, AS_BTL_MANF_1000: FS",AS_SPD_MANF_3220: FS,SLAC,0%,REQ.Requisition,Requisition,Nonlabor,0.0d,1.0,1.0,At Completion Units,10/18/2022,10/18/2022,RQN,0,0,0,0,0,0,0,0,0,1.03_Accelerator Systems (AS),1.03.05_AS Beam Transfer Line (BTL),1.03.05.06_AS Beam Transfer Line Procurement and Fabrication,1.03.05.06.01_Dogleg and Spreader Area - Procurement & Fab,AS_SPD_MANF_3210_RQN: Approval of Requisition - ACMs - BTL - SPD,Material,,SLAC,M&S
98237,1.03,1.03.05,1.03.05.06,1.03.05.06.01,1.03.05.06.01,Dogleg and Spreader Area - Procurement & Fab,AS_SPD_MANF_2630,AWARD: Procurement - 1.38S3.00 Magnet Stage - BTL - SPD,1.0,12857.0,12857.0,12857.0,10-26-23,10-26-23,AS_SPD_MANF_2620: FS,AS_SPD_MANF_2640: FS,SLAC,0%,AWARD_USE.AWARD - Use this AWARD,AWARD - Use this AWARD,Nonlabor,0.0d,1.0,1.0,At Completion Units,11/29/2022,11/29/2022,AWARD < $500K,0,0,0,0,0,0,0,0,0,1.03_Accelerator Systems (AS),1.03.05_AS Beam Transfer Line (BTL),1.03.05.06_AS Beam Transfer Line Procurement and Fabrication,1.03.05.06.01_Dogleg and Spreader Area - Procurement & Fab,AS_SPD_MANF_2630_AWARD: Procurement - 1.38S3.00 Magnet Stage - BTL - SPD,Material,,SLAC,M&S
98238,1.03,1.03.05,1.03.05.06,1.03.05.06.01,1.03.05.06.01,Dogleg and Spreader Area - Procurement & Fab,AS_SPD_MANF_2610,RQN: Approval of Requisition - 1.38S3.00 Magnet Stage - BTL - SPD,1.0,12857.0,12857.0,12857.0,10-02-23,10-02-23,"AS_SPD_MANF_2600: FS, AS_BTL_MANF_1000: FS",AS_SPD_MANF_2620: FS,SLAC,0%,REQ.Requisition,Requisition,Nonlabor,0.0d,1.0,1.0,At Completion Units,11/1/2022,11/1/2022,RQN,0,0,0,0,0,0,0,0,0,1.03_Accelerator Systems (AS),1.03.05_AS Beam Transfer Line (BTL),1.03.05.06_AS Beam Transfer Line Procurement and Fabrication,1.03.05.06.01_Dogleg and Spreader Area - Procurement & Fab,AS_SPD_MANF_2610_RQN: Approval of Requisition - 1.38S3.00 Magnet Stage - BTL - SPD,Material,,SLAC,M&S
98239,1.03,1.03.05,1.03.05.06,1.03.05.06.01,1.03.05.06.01,Dogleg and Spreader Area - Procurement & Fab,AS_SPD_MANF_2830,AWARD: Procurement - 1.38S3.00 Magnet Stand - BTL - SPD,1.0,39545.0,39545.0,39545.0,10-26-23,10-26-23,AS_SPD_MANF_2820: FS,AS_SPD_MANF_2840: FS,SLAC,0%,AWARD_USE.AWARD - Use this AWARD,AWARD - Use this AWARD,Nonlabor,0.0d,1.0,1.0,At Completion Units,11/29/2022,11/29/2022,AWARD < $500K,0,0,0,0,0,0,0,0,0,1.03_Accelerator Systems (AS),1.03.05_AS Beam Transfer Line (BTL),1.03.05.06_AS Beam Transfer Line Procurement and Fabrication,1.03.05.06.01_Dogleg and Spreader Area - Procurement & Fab,AS_SPD_MANF_2830_AWARD: Procurement - 1.38S3.00 Magnet Stand - BTL - SPD,Material,,SLAC,M&S
98240,1.03,1.03.05,1.03.05.06,1.03.05.06.01,1.03.05.06.01,Dogleg and Spreader Area - Procurement & Fab,AS_SPD_MANF_2850,RCV: Goods/Services - 1.38S3.00 Magnet Stand BTL - SPD,1.0,39545.0,39545.0,39545.0,01-25-24,01-25-24,AS_SPD_MANF_2840: FS,AS_SPD_MANF_2860: FS,SLAC,0%,SL_MSSC1.SLAC M&S (<$500K) (gets G&A) (NO ESC),SLAC M&S (<$500K) (gets G&A) (NO ESC),Nonlabor,0.0d,1.0,1.0,At Completion Units,2/24/2023,2/24/2023,0,0,0,0,0,0,0,0,0,0,1.03_Accelerator Systems (AS),1.03.05_AS Beam Transfer Line (BTL),1.03.05.06_AS Beam Transfer Line Procurement and Fabrication,1.03.05.06.01_Dogleg and Spreader Area - Procurement & Fab,AS_SPD_MANF_2850_RCV: Goods/Services - 1.38S3.00 Magnet Stand BTL - SPD,Material,,SLAC,M&S
98241,1.03,1.03.05,1.03.05.06,1.03.05.06.01,1.03.05.06.01,Dogleg and Spreader Area - Procurement & Fab,AS_SPD_MANF_2810,RQN: Approval of Requisition - 1.38S3.00 Magnet Stand - BTL - SPD,1.0,39545.0,39545.0,39545.0,10-02-23,10-02-23,"AS_SPD_MANF_2800: FS, AS_BTL_MANF_1000: FS",AS_SPD_MANF_2820: FS,SLAC,0%,REQ.Requisition,Requisition,Nonlabor,0.0d,1.0,1.0,At Completion Units,11/1/2022,11/1/2022,RQN,0,0,0,0,0,0,0,0,0,1.03_Accelerator Systems (AS),1.03.05_AS Beam Transfer Line (BTL),1.03.05.06_AS Beam Transfer Line Procurement and Fabrication,1.03.05.06.01_Dogleg and Spreader Area - Procurement & Fab,AS_SPD_MANF_2810_RQN: Approval of Requisition - 1.38S3.00 Magnet Stand - BTL - SPD,Material,,SLAC,M&S
98242,1.03,1.03.05,1.03.05.06,1.03.05.06.01,1.03.05.06.01,Dogleg and Spreader Area - Procurement & Fab,AS_SPD_MANF_2230,AWARD: Procurement - 1.38S3.00 Sextupoles - BTL - SPD,1.0,125115.0,125115.0,125115.0,10-31-23,10-31-23,AS_SPD_MANF_2220: FS,AS_SPD_MANF_2240: FS,SLAC,0%,AWARD_USE.AWARD - Use this AWARD,AWARD - Use this AWARD,Nonlabor,0.0d,1.0,1.0,At Completion Units,10/3/2022,10/3/2022,AWARD < $500K,0,0,0,0,0,0,0,0,0,1.03_Accelerator Systems (AS),1.03.05_AS Beam Transfer Line (BTL),1.03.05.06_AS Beam Transfer Line Procurement and Fabrication,1.03.05.06.01_Dogleg and Spreader Area - Procurement & Fab,AS_SPD_MANF_2230_AWARD: Procurement - 1.38S3.00 Sextupoles - BTL - SPD,Material,,SLAC,M&S
98243,1.03,1.03.05,1.03.05.06,1.03.05.06.01,1.03.05.06.01,Dogleg and Spreader Area - Procurement & Fab,AS_SPD_MANF_2210,RQN: Approval of Requisition - 1.38S3.00 Sextupoles - BTL - SPD,1.0,125115.0,125115.0,125115.0,10-02-23,10-02-23,"AS_SPD_MANF_2200: FS, AS_BTL_MANF_1000: FS",AS_SPD_MANF_2220: FS,SLAC,0%,REQ.Requisition,Requisition,Nonlabor,0.0d,1.0,1.0,At Completion Units,9/1/2022,9/1/2022,RQN,0,0,0,0,0,0,0,0,0,1.03_Accelerator Systems (AS),1.03.05_AS Beam Transfer Line (BTL),1.03.05.06_AS Beam Transfer Line Procurement and Fabrication,1.03.05.06.01_Dogleg and Spreader Area - Procurement & Fab,AS_SPD_MANF_2210_RQN: Approval of Requisition - 1.38S3.00 Sextupoles - BTL - SPD,Material,,SLAC,M&S
98244,1.03,1.03.05,1.03.05.06,1.03.05.06.01,1.03.05.06.01,Dogleg and Spreader Area - Procurement & Fab,AS_SPD_MANF_1830,AWARD: Procurement - Kicker Magnet Stands - BTL - SPD,1.0,57320.0,57320.0,57320.0,10-17-23,10-17-23,AS_SPD_MANF_1820: FS,AS_SPD_MANF_1840: FS,SLAC,0%,AWARD_USE.AWARD - Use this AWARD,AWARD - Use this AWARD,Nonlabor,0.0d,1.0,1.0,At Completion Units,11/16/2022,11/16/2022,AWARD < $500K,0,0,0,0,0,0,0,0,0,1.03_Accelerator Systems (AS),1.03.05_AS Beam Transfer Line (BTL),1.03.05.06_AS Beam Transfer Line Procurement and Fabrication,1.03.05.06.01_Dogleg and Spreader Area - Procurement & Fab,AS_SPD_MANF_1830_AWARD: Procurement - Kicker Magnet Stands - BTL - SPD,Material,,SLAC,M&S
98245,1.03,1.03.05,1.03.05.06,1.03.05.06.01,1.03.05.06.01,Dogleg and Spreader Area - Procurement & Fab,AS_SPD_MANF_1810,RQN: Approval of Requisition - Kicker Magnet Stands - BTL - SPD,1.0,57320.0,57320.0,57320.0,10-02-23,10-02-23,"AS_SPD_MANF_1800: FS, AS_BTL_MANF_1000: FS",AS_SPD_MANF_1820: FS,SLAC,0%,REQ.Requisition,Requisition,Nonlabor,0.0d,1.0,1.0,At Completion Units,11/1/2022,11/1/2022,RQN,0,0,0,0,0,0,0,0,0,1.03_Accelerator Systems (AS),1.03.05_AS Beam Transfer Line (BTL),1.03.05.06_AS Beam Transfer Line Procurement and Fabrication,1.03.05.06.01_Dogleg and Spreader Area - Procurement & Fab,AS_SPD_MANF_1810_RQN: Approval of Requisition - Kicker Magnet Stands - BTL - SPD,Material,,SLAC,M&S
98246,1.03,1.03.05,1.03.05.06,1.03.05.06.01,1.03.05.06.01,Dogleg and Spreader Area - Procurement & Fab,AS_SPD_MANF_1630,AWARD: Procurement - 1.378K35 Drift Tube - BTL - SPD,1.0,57000.0,57000.0,57000.0,10-31-23,10-31-23,AS_SPD_MANF_1620: FS,AS_SPD_MANF_1640: FS,SLAC,0%,AWARD_USE.AWARD - Use this AWARD,AWARD - Use this AWARD,Nonlabor,0.0d,1.0,1.0,At Completion Units,10/3/2022,10/3/2022,AWARD < $500K,0,0,0,0,0,0,0,0,0,1.03_Accelerator Systems (AS),1.03.05_AS Beam Transfer Line (BTL),1.03.05.06_AS Beam Transfer Line Procurement and Fabrication,1.03.05.06.01_Dogleg and Spreader Area - Procurement & Fab,AS_SPD_MANF_1630_AWARD: Procurement - 1.378K35 Drift Tube - BTL - SPD,Material,,SLAC,M&S
98247,1.03,1.03.05,1.03.05.06,1.03.05.06.01,1.03.05.06.01,Dogleg and Spreader Area - Procurement & Fab,AS_SPD_MANF_1610,RQN: Approval of Requisition -1.378K35 Drift Tube - BTL - SPD,1.0,57000.0,57000.0,57000.0,10-02-23,10-02-23,"AS_SPD_MANF_1600: FS, AS_BTL_MANF_1000: FS",AS_SPD_MANF_1620: FS,SLAC,0%,REQ.Requisition,Requisition,Nonlabor,0.0d,1.0,1.0,At Completion Units,9/1/2022,9/1/2022,RQN,0,0,0,0,0,0,0,0,0,1.03_Accelerator Systems (AS),1.03.05_AS Beam Transfer Line (BTL),1.03.05.06_AS Beam Transfer Line Procurement and Fabrication,1.03.05.06.01_Dogleg and Spreader Area - Procurement & Fab,AS_SPD_MANF_1610_RQN: Approval of Requisition -1.378K35 Drift Tube - BTL - SPD,Material,,SLAC,M&S
98248,1.03,1.03.05,1.03.05.06,1.03.05.06.01,1.03.05.06.01,Dogleg and Spreader Area - Procurement & Fab,AS_SPD_MANF_1430,AWARD: Procurement - 1.378K35 Kicker Magnet - BTL - SPD,1.0,22930.0,22930.0,22930.0,10-31-23,10-31-23,AS_SPD_MANF_1420: FS,AS_SPD_MANF_1440: FS,SLAC,0%,AWARD_USE.AWARD - Use this AWARD,AWARD - Use this AWARD,Nonlabor,0.0d,1.0,1.0,At Completion Units,10/3/2022,10/3/2022,AWARD < $500K,0,0,0,0,0,0,0,0,0,1.03_Accelerator Systems (AS),1.03.05_AS Beam Transfer Line (BTL),1.03.05.06_AS Beam Transfer Line Procurement and Fabrication,1.03.05.06.01_Dogleg and Spreader Area - Procurement & Fab,AS_SPD_MANF_1430_AWARD: Procurement - 1.378K35 Kicker Magnet - BTL - SPD,Material,,SLAC,M&S
98249,1.03,1.03.05,1.03.05.06,1.03.05.06.01,1.03.05.06.01,Dogleg and Spreader Area - Procurement & Fab,AS_SPD_MANF_1410,RQN: Approval of Requisition - 1.378K35 Kicker Magnet - BTL - SPD,1.0,22930.0,22930.0,22930.0,10-02-23,10-02-23,"AS_SPD_MANF_1400: FS, AS_BTL_MANF_1000: FS",AS_SPD_MANF_1420: FS,SLAC,0%,REQ.Requisition,Requisition,Nonlabor,0.0d,1.0,1.0,At Completion Units,9/1/2022,9/1/2022,RQN,0,0,0,0,0,0,0,0,0,1.03_Accelerator Systems (AS),1.03.05_AS Beam Transfer Line (BTL),1.03.05.06_AS Beam Transfer Line Procurement and Fabrication,1.03.05.06.01_Dogleg and Spreader Area - Procurement & Fab,AS_SPD_MANF_1410_RQN: Approval of Requisition - 1.378K35 Kicker Magnet - BTL - SPD,Material,,SLAC,M&S
98250,1.03,1.03.05,1.03.05.06,1.03.05.06.01,1.03.05.06.01,Dogleg and Spreader Area - Procurement & Fab,AS_SPD_MANF_1230,AWARD: Procurement - 0.787K35 Drift Tube - BTL - SPD,1.0,21000.0,21000.0,21000.0,10-31-23,10-31-23,AS_SPD_MANF_1220: FS,AS_SPD_MANF_1240: FS,SLAC,0%,AWARD_USE.AWARD - Use this AWARD,AWARD - Use this AWARD,Nonlabor,0.0d,1.0,1.0,At Completion Units,10/3/2022,10/3/2022,AWARD < $500K,0,0,0,0,0,0,0,0,0,1.03_Accelerator Systems (AS),1.03.05_AS Beam Transfer Line (BTL),1.03.05.06_AS Beam Transfer Line Procurement and Fabrication,1.03.05.06.01_Dogleg and Spreader Area - Procurement & Fab,AS_SPD_MANF_1230_AWARD: Procurement - 0.787K35 Drift Tube - BTL - SPD,Material,,SLAC,M&S
98251,1.03,1.03.05,1.03.05.06,1.03.05.06.01,1.03.05.06.01,Dogleg and Spreader Area - Procurement & Fab,AS_SPD_MANF_1210,RQN: Approval of Requisition - 0.787K35 Drift Tube - BTL - SPD,1.0,21000.0,21000.0,21000.0,10-02-23,10-02-23,"AS_SPD_MANF_1200: FS, AS_BTL_MANF_1000: FS",AS_SPD_MANF_1220: FS,SLAC,0%,REQ.Requisition,Requisition,Nonlabor,0.0d,1.0,1.0,At Completion Units,9/1/2022,9/1/2022,RQN,0,0,0,0,0,0,0,0,0,1.03_Accelerator Systems (AS),1.03.05_AS Beam Transfer Line (BTL),1.03.05.06_AS Beam Transfer Line Procurement and Fabrication,1.03.05.06.01_Dogleg and Spreader Area - Procurement & Fab,AS_SPD_MANF_1210_RQN: Approval of Requisition - 0.787K35 Drift Tube - BTL - SPD,Material,,SLAC,M&S
98252,1.03,1.03.05,1.03.05.06,1.03.05.06.01,1.03.05.06.01,Dogleg and Spreader Area - Procurement & Fab,AS_SPD_MANF_1030,AWARD: Procurement - 0.787K35 Kicker Magnet - BTL - SPD,1.0,45860.0,45860.0,45860.0,10-31-23,10-31-23,AS_SPD_MANF_1020: FS,AS_SPD_MANF_1040: FS,SLAC,0%,AWARD_USE.AWARD - Use this AWARD,AWARD - Use this AWARD,Nonlabor,0.0d,1.0,1.0,At Completion Units,10/3/2022,10/3/2022,AWARD < $500K,0,0,0,0,0,0,0,0,0,1.03_Accelerator Systems (AS),1.03.05_AS Beam Transfer Line (BTL),1.03.05.06_AS Beam Transfer Line Procurement and Fabrication,1.03.05.06.01_Dogleg and Spreader Area - Procurement & Fab,AS_SPD_MANF_1030_AWARD: Procurement - 0.787K35 Kicker Magnet - BTL - SPD,Material,,SLAC,M&S
98253,1.03,1.03.05,1.03.05.06,1.03.05.06.01,1.03.05.06.01,Dogleg and Spreader Area - Procurement & Fab,AS_SPD_MANF_1010,RQN: Approval of Requisition - 0.787K35 Kicker Magnet - BTL - SPD,1.0,45860.0,45860.0,45860.0,10-02-23,10-02-23,"AS_SPD_MANF_1000: FS, AS_BTL_MANF_1000: FS",AS_SPD_MANF_1020: FS,SLAC,0%,REQ.Requisition,Requisition,Nonlabor,0.0d,1.0,1.0,At Completion Units,9/1/2022,9/1/2022,RQN,0,0,0,0,0,0,0,0,0,1.03_Accelerator Systems (AS),1.03.05_AS Beam Transfer Line (BTL),1.03.05.06_AS Beam Transfer Line Procurement and Fabrication,1.03.05.06.01_Dogleg and Spreader Area - Procurement & Fab,AS_SPD_MANF_1010_RQN: Approval of Requisition - 0.787K35 Kicker Magnet - BTL - SPD,Material,,SLAC,M&S
98573,1.03,1.03.05,1.03.05.06,1.03.05.06.02,1.03.05.06.02,BSY and EBD Area - Procurement & Fab,AS_EBD_MANF_1000,Prepare Requisition (Specs/SOW/ETC) - Rastering Magnet - BTL - RAS,20.0,8.0,8.0,8.0,12-13-21,01-24-22,"AS_RAS_DE_1010: FS, AS_RAS_DE_1020: FS",AS_EBD_MANF_1010: FS,SLAC,0%,52211.52211_EEDOPSE (Electronics & Engineering Div - Ops & PSE),52211_EEDOPSE (Electronics & Engineering Div - Ops & PSE),Labor,0.0d,20.0,20.0,At Completion Units,4/4/2022,4/29/2022,0,0,0,0,0,0,0,0,0,0,1.03_Accelerator Systems (AS),1.03.05_AS Beam Transfer Line (BTL),1.03.05.06_AS Beam Transfer Line Procurement and Fabrication,1.03.05.06.02_BSY and EBD Area - Procurement & Fab,AS_EBD_MANF_1000_Prepare Requisition (Specs/SOW/ETC) - Rastering Magnet - BTL - RAS,Electrical,,SLAC,Labor
98574,1.03,1.03.05,1.03.05.06,1.03.05.06.02,1.03.05.06.02,BSY and EBD Area - Procurement & Fab,AS_EBD_MANF_1000,Prepare Requisition (Specs/SOW/ETC) - Rastering Magnet - BTL - RAS,20.0,8.0,8.0,8.0,12-13-21,01-24-22,"AS_RAS_DE_1010: FS, AS_RAS_DE_1020: FS",AS_EBD_MANF_1010: FS,SLAC,0%,52190.52190_METSTP Tech Planning - Reinstated FY16,52190_METSTP Tech Planning - Reinstated FY16,Labor,0.0d,20.0,20.0,At Completion Units,4/4/2022,4/29/2022,0,0,0,0,0,0,0,0,0,0,1.03_Accelerator Systems (AS),1.03.05_AS Beam Transfer Line (BTL),1.03.05.06_AS Beam Transfer Line Procurement and Fabrication,1.03.05.06.02_BSY and EBD Area - Procurement & Fab,AS_EBD_MANF_1000_Prepare Requisition (Specs/SOW/ETC) - Rastering Magnet - BTL - RAS,METSTPT Tech Planning,Tech,SLAC,Labor
98575,1.03,1.03.05,1.03.05.06,1.03.05.06.02,1.03.05.06.02,BSY and EBD Area - Procurement & Fab,AS_EBD_MANF_1000,Prepare Requisition (Specs/SOW/ETC) - Rastering Magnet - BTL - RAS,20.0,8.0,8.0,8.0,12-13-21,01-24-22,"AS_RAS_DE_1010: FS, AS_RAS_DE_1020: FS",AS_EBD_MANF_1010: FS,SLAC,0%,52169.52169_METS Mechanical Engineer,52169_METS Mechanical Engineer,Labor,0.0d,20.0,20.0,At Completion Units,4/4/2022,4/29/2022,0,0,0,0,0,0,0,0,0,0,1.03_Accelerator Systems (AS),1.03.05_AS Beam Transfer Line (BTL),1.03.05.06_AS Beam Transfer Line Procurement and Fabrication,1.03.05.06.02_BSY and EBD Area - Procurement & Fab,AS_EBD_MANF_1000_Prepare Requisition (Specs/SOW/ETC) - Rastering Magnet - BTL - RAS,Mechanical,,SLAC,Labor
98576,1.03,1.03.05,1.03.05.06,1.03.05.06.02,1.03.05.06.02,BSY and EBD Area - Procurement & Fab,AS_EBD_MANF_1150,RCV: Rastering Magnet - BTL - RAS,1.0,119000.0,119000.0,119000.0,04-23-24,04-23-24,AS_EBD_MANF_1140: FS,AS_EBD_MANF_1160: FS,SLAC,0%,SL_MSSC.SLAC M&S (<$500K) (gets G&A) (gets ESC),SLAC M&S (<$500K) (gets G&A) (gets ESC),Nonlabor,0.0d,1.0,1.0,At Completion Units,nn,,0,0,0,0,0,0,0,0,0,0,1.03_Accelerator Systems (AS),1.03.05_AS Beam Transfer Line (BTL),1.03.05.06_AS Beam Transfer Line Procurement and Fabrication,1.03.05.06.02_BSY and EBD Area - Procurement & Fab,AS_EBD_MANF_1150_RCV: Rastering Magnet - BTL - RAS,Material,,SLAC,M&S
98577,1.03,1.03.05,1.03.05.06,1.03.05.06.02,1.03.05.06.02,BSY and EBD Area - Procurement & Fab,AS_EBD_MANF_1130,AWARD: Release production option - Rastering Magnets - BTL - RAS,1.0,119000.0,119000.0,119000.0,10-02-23,10-02-23,"AS_EBD_MANF_1110: FS, AS_BTL_MANF_1000: FS",AS_EBD_MANF_1140: FS,SLAC,0%,AWARD_USE.AWARD - Use this AWARD,AWARD - Use this AWARD,Nonlabor,0.0d,1.0,1.0,At Completion Units,nn,,0,0,0,0,0,0,0,0,0,0,1.03_Accelerator Systems (AS),1.03.05_AS Beam Transfer Line (BTL),1.03.05.06_AS Beam Transfer Line Procurement and Fabrication,1.03.05.06.02_BSY and EBD Area - Procurement & Fab,AS_EBD_MANF_1130_AWARD: Release production option - Rastering Magnets - BTL - RAS,Material,,SLAC,M&S
98578,1.03,1.03.05,1.03.05.06,1.03.05.06.02,1.03.05.06.02,BSY and EBD Area - Procurement & Fab,AS_BTL_MANF_2100,Procurement & storage support - BSY / EBD,90.0,40.0,40.0,40.0,10-19-22,03-13-23,"AS_BSY_DE_1080: FS, AS_EBD_DE_1140: FS, MS_FY_2023_Q1: FS",AS_M4_DTS1_1030: FS,SLAC,0%,52198.52198_METSMANF (METSD Manufacturing),52198_METSMANF (METSD Manufacturing),Labor,0.0d,90.0,90.0,At Completion Units,nn,,0,0,0,0,0,0,0,0,0,0,1.03_Accelerator Systems (AS),1.03.05_AS Beam Transfer Line (BTL),1.03.05.06_AS Beam Transfer Line Procurement and Fabrication,1.03.05.06.02_BSY and EBD Area - Procurement & Fab,AS_BTL_MANF_2100_Procurement & storage support - BSY / EBD,Manufacturing,,SLAC,Labor
98579,1.03,1.03.05,1.03.05.06,1.03.05.06.02,1.03.05.06.02,BSY and EBD Area - Procurement & Fab,AS_BTL_MANF_2100,Procurement & storage support - BSY / EBD,90.0,40.0,40.0,40.0,10-19-22,03-13-23,"AS_BSY_DE_1080: FS, AS_EBD_DE_1140: FS, MS_FY_2023_Q1: FS",AS_M4_DTS1_1030: FS,SLAC,0%,52190.52190_METSTP Tech Planning - Reinstated FY16,52190_METSTP Tech Planning - Reinstated FY16,Labor,0.0d,90.0,90.0,At Completion Units,nn,,0,0,0,0,0,0,0,0,0,0,1.03_Accelerator Systems (AS),1.03.05_AS Beam Transfer Line (BTL),1.03.05.06_AS Beam Transfer Line Procurement and Fabrication,1.03.05.06.02_BSY and EBD Area - Procurement & Fab,AS_BTL_MANF_2100_Procurement & storage support - BSY / EBD,METSTPT Tech Planning,Tech,SLAC,Labor
98580,1.03,1.03.05,1.03.05.06,1.03.05.06.02,1.03.05.06.02,BSY and EBD Area - Procurement & Fab,AS_BTL_MANF_2100,Procurement & storage support - BSY / EBD,90.0,40.0,40.0,40.0,10-19-22,03-13-23,"AS_BSY_DE_1080: FS, AS_EBD_DE_1140: FS, MS_FY_2023_Q1: FS",AS_M4_DTS1_1030: FS,SLAC,0%,52169.52169_METS Mechanical Engineer,52169_METS Mechanical Engineer,Labor,0.0d,90.0,90.0,At Completion Units,nn,,0,0,0,0,0,0,0,0,0,0,1.03_Accelerator Systems (AS),1.03.05_AS Beam Transfer Line (BTL),1.03.05.06_AS Beam Transfer Line Procurement and Fabrication,1.03.05.06.02_BSY and EBD Area - Procurement & Fab,AS_BTL_MANF_2100_Procurement & storage support - BSY / EBD,Mechanical,,SLAC,Labor
98581,1.03,1.03.05,1.03.05.06,1.03.05.06.02,1.03.05.06.02,BSY and EBD Area - Procurement & Fab,AS_EBD_MANF_1460,Qualification Testing - Class 5 Magnet - BTL - EBD,20.0,88.0,88.0,88.0,02-14-24,03-13-24,AS_EBD_MANF_1450: FS,AS_EBD_MANF_1470: FS,SLAC,0%,52198.52198_METSMANF (METSD Manufacturing),52198_METSMANF (METSD Manufacturing),Labor,0.0d,20.0,20.0,At Completion Units,3/2/2023,3/29/2023,0,0,0,0,0,0,0,0,0,0,1.03_Accelerator Systems (AS),1.03.05_AS Beam Transfer Line (BTL),1.03.05.06_AS Beam Transfer Line Procurement and Fabrication,1.03.05.06.02_BSY and EBD Area - Procurement & Fab,AS_EBD_MANF_1460_Qualification Testing - Class 5 Magnet - BTL - EBD,Manufacturing,,SLAC,Labor
98582,1.03,1.03.05,1.03.05.06,1.03.05.06.02,1.03.05.06.02,BSY and EBD Area - Procurement & Fab,AS_EBD_MANF_1460,Qualification Testing - Class 5 Magnet - BTL - EBD,20.0,4.0,4.0,4.0,02-14-24,03-13-24,AS_EBD_MANF_1450: FS,AS_EBD_MANF_1470: FS,SLAC,0%,52190.52190_METSTP Tech Planning - Reinstated FY16,52190_METSTP Tech Planning - Reinstated FY16,Labor,0.0d,20.0,20.0,At Completion Units,3/2/2023,3/29/2023,0,0,0,0,0,0,0,0,0,0,1.03_Accelerator Systems (AS),1.03.05_AS Beam Transfer Line (BTL),1.03.05.06_AS Beam Transfer Line Procurement and Fabrication,1.03.05.06.02_BSY and EBD Area - Procurement & Fab,AS_EBD_MANF_1460_Qualification Testing - Class 5 Magnet - BTL - EBD,METSTPT Tech Planning,Tech,SLAC,Labor
98583,1.03,1.03.05,1.03.05.06,1.03.05.06.02,1.03.05.06.02,BSY and EBD Area - Procurement & Fab,AS_EBD_MANF_1460,Qualification Testing - Class 5 Magnet - BTL - EBD,20.0,4.0,4.0,4.0,02-14-24,03-13-24,AS_EBD_MANF_1450: FS,AS_EBD_MANF_1470: FS,SLAC,0%,52169.52169_METS Mechanical Engineer,52169_METS Mechanical Engineer,Labor,0.0d,20.0,20.0,At Completion Units,3/2/2023,3/29/2023,0,0,0,0,0,0,0,0,0,0,1.03_Accelerator Systems (AS),1.03.05_AS Beam Transfer Line (BTL),1.03.05.06_AS Beam Transfer Line Procurement and Fabrication,1.03.05.06.02_BSY and EBD Area - Procurement & Fab,AS_EBD_MANF_1460_Qualification Testing - Class 5 Magnet - BTL - EBD,Mechanical,,SLAC,Labor
98584,1.03,1.03.05,1.03.05.06,1.03.05.06.02,1.03.05.06.02,BSY and EBD Area - Procurement & Fab,AS_EBD_MANF_1400,Prepare Requisition (Specs/SOW/ETC) - Class 5 Magnet - BTL - EBD,10.0,8.0,8.0,8.0,10-19-22,11-01-22,"MS_FY_2023_Q1: FS, AS_DMP_DE_1070: FS, AS_EBD_DE_1140: FS",AS_EBD_MANF_1410: FS,SLAC,0%,52190.52190_METSTP Tech Planning - Reinstated FY16,52190_METSTP Tech Planning - Reinstated FY16,Labor,0.0d,10.0,10.0,At Completion Units,10/4/2022,10/17/2022,0,0,0,0,0,0,0,0,0,0,1.03_Accelerator Systems (AS),1.03.05_AS Beam Transfer Line (BTL),1.03.05.06_AS Beam Transfer Line Procurement and Fabrication,1.03.05.06.02_BSY and EBD Area - Procurement & Fab,AS_EBD_MANF_1400_Prepare Requisition (Specs/SOW/ETC) - Class 5 Magnet - BTL - EBD,METSTPT Tech Planning,Tech,SLAC,Labor
98585,1.03,1.03.05,1.03.05.06,1.03.05.06.02,1.03.05.06.02,BSY and EBD Area - Procurement & Fab,AS_EBD_MANF_2060,Inspection and processing - Misc Vacuum Hardware - BTL - EBD,10.0,24.0,24.0,24.0,01-02-24,01-16-24,AS_EBD_MANF_2050: FS,AS_EBD_MANF_2070: FS,SLAC,0%,52198.52198_METSMANF (METSD Manufacturing),52198_METSMANF (METSD Manufacturing),Labor,0.0d,10.0,10.0,At Completion Units,4/4/2023,4/17/2023,0,0,0,0,0,0,0,0,0,0,1.03_Accelerator Systems (AS),1.03.05_AS Beam Transfer Line (BTL),1.03.05.06_AS Beam Transfer Line Procurement and Fabrication,1.03.05.06.02_BSY and EBD Area - Procurement & Fab,AS_EBD_MANF_2060_Inspection and processing - Misc Vacuum Hardware - BTL - EBD,Manufacturing,,SLAC,Labor
98586,1.03,1.03.05,1.03.05.06,1.03.05.06.02,1.03.05.06.02,BSY and EBD Area - Procurement & Fab,AS_EBD_MANF_2060,Inspection and processing - Misc Vacuum Hardware - BTL - EBD,10.0,0.0,0.0,0.0,01-02-24,01-16-24,AS_EBD_MANF_2050: FS,AS_EBD_MANF_2070: FS,SLAC,0%,52190.52190_METSTP Tech Planning - Reinstated FY16,52190_METSTP Tech Planning - Reinstated FY16,Labor,0.0d,10.0,10.0,At Completion Units,4/4/2023,4/17/2023,0,0,0,0,0,0,0,0,0,0,1.03_Accelerator Systems (AS),1.03.05_AS Beam Transfer Line (BTL),1.03.05.06_AS Beam Transfer Line Procurement and Fabrication,1.03.05.06.02_BSY and EBD Area - Procurement & Fab,AS_EBD_MANF_2060_Inspection and processing - Misc Vacuum Hardware - BTL - EBD,METSTPT Tech Planning,Tech,SLAC,Labor
98587,1.03,1.03.05,1.03.05.06,1.03.05.06.02,1.03.05.06.02,BSY and EBD Area - Procurement & Fab,AS_EBD_MANF_2060,Inspection and processing - Misc Vacuum Hardware - BTL - EBD,10.0,0.0,0.0,0.0,01-02-24,01-16-24,AS_EBD_MANF_2050: FS,AS_EBD_MANF_2070: FS,SLAC,0%,52169.52169_METS Mechanical Engineer,52169_METS Mechanical Engineer,Labor,0.0d,10.0,10.0,At Completion Units,4/4/2023,4/17/2023,0,0,0,0,0,0,0,0,0,0,1.03_Accelerator Systems (AS),1.03.05_AS Beam Transfer Line (BTL),1.03.05.06_AS Beam Transfer Line Procurement and Fabrication,1.03.05.06.02_BSY and EBD Area - Procurement & Fab,AS_EBD_MANF_2060_Inspection and processing - Misc Vacuum Hardware - BTL - EBD,Mechanical,,SLAC,Labor
98588,1.03,1.03.05,1.03.05.06,1.03.05.06.02,1.03.05.06.02,BSY and EBD Area - Procurement & Fab,AS_EBD_MANF_1860,Inspection and processing - Interface Vacuum Drift Tubes & Bellows - BTL - EBD,10.0,96.0,96.0,96.0,02-29-24,03-13-24,"AS_EBD_MANF_1850: FS, AS_EBD_MANF_2070: FS",AS_EBD_MANF_1870: FS,SLAC,0%,52198.52198_METSMANF (METSD Manufacturing),52198_METSMANF (METSD Manufacturing),Labor,0.0d,10.0,10.0,At Completion Units,4/18/2023,5/1/2023,0,0,0,0,0,0,0,0,0,0,1.03_Accelerator Systems (AS),1.03.05_AS Beam Transfer Line (BTL),1.03.05.06_AS Beam Transfer Line Procurement and Fabrication,1.03.05.06.02_BSY and EBD Area - Procurement & Fab,AS_EBD_MANF_1860_Inspection and processing - Interface Vacuum Drift Tubes & Bellows - BTL - EBD,Manufacturing,,SLAC,Labor
98589,1.03,1.03.05,1.03.05.06,1.03.05.06.02,1.03.05.06.02,BSY and EBD Area - Procurement & Fab,AS_EBD_MANF_1860,Inspection and processing - Interface Vacuum Drift Tubes & Bellows - BTL - EBD,10.0,0.0,0.0,0.0,02-29-24,03-13-24,"AS_EBD_MANF_1850: FS, AS_EBD_MANF_2070: FS",AS_EBD_MANF_1870: FS,SLAC,0%,52190.52190_METSTP Tech Planning - Reinstated FY16,52190_METSTP Tech Planning - Reinstated FY16,Labor,0.0d,10.0,10.0,At Completion Units,4/18/2023,5/1/2023,0,0,0,0,0,0,0,0,0,0,1.03_Accelerator Systems (AS),1.03.05_AS Beam Transfer Line (BTL),1.03.05.06_AS Beam Transfer Line Procurement and Fabrication,1.03.05.06.02_BSY and EBD Area - Procurement & Fab,AS_EBD_MANF_1860_Inspection and processing - Interface Vacuum Drift Tubes & Bellows - BTL - EBD,METSTPT Tech Planning,Tech,SLAC,Labor
98590,1.03,1.03.05,1.03.05.06,1.03.05.06.02,1.03.05.06.02,BSY and EBD Area - Procurement & Fab,AS_EBD_MANF_1860,Inspection and processing - Interface Vacuum Drift Tubes & Bellows - BTL - EBD,10.0,0.0,0.0,0.0,02-29-24,03-13-24,"AS_EBD_MANF_1850: FS, AS_EBD_MANF_2070: FS",AS_EBD_MANF_1870: FS,SLAC,0%,52169.52169_METS Mechanical Engineer,52169_METS Mechanical Engineer,Labor,0.0d,10.0,10.0,At Completion Units,4/18/2023,5/1/2023,0,0,0,0,0,0,0,0,0,0,1.03_Accelerator Systems (AS),1.03.05_AS Beam Transfer Line (BTL),1.03.05.06_AS Beam Transfer Line Procurement and Fabrication,1.03.05.06.02_BSY and EBD Area - Procurement & Fab,AS_EBD_MANF_1860_Inspection and processing - Interface Vacuum Drift Tubes & Bellows - BTL - EBD,Mechanical,,SLAC,Labor
98591,1.03,1.03.05,1.03.05.06,1.03.05.06.02,1.03.05.06.02,BSY and EBD Area - Procurement & Fab,AS_EBD_MANF_1660,Receiving Inspection - Magnet Stands - BTL - EBD,10.0,16.0,16.0,16.0,01-31-24,02-13-24,AS_EBD_MANF_1650: FS,AS_EBD_MANF_1670: FS,SLAC,0%,52198.52198_METSMANF (METSD Manufacturing),52198_METSMANF (METSD Manufacturing),Labor,0.0d,10.0,10.0,At Completion Units,2/15/2023,3/1/2023,0,0,0,0,0,0,0,0,0,0,1.03_Accelerator Systems (AS),1.03.05_AS Beam Transfer Line (BTL),1.03.05.06_AS Beam Transfer Line Procurement and Fabrication,1.03.05.06.02_BSY and EBD Area - Procurement & Fab,AS_EBD_MANF_1660_Receiving Inspection - Magnet Stands - BTL - EBD,Manufacturing,,SLAC,Labor
98592,1.03,1.03.05,1.03.05.06,1.03.05.06.02,1.03.05.06.02,BSY and EBD Area - Procurement & Fab,AS_EBD_MANF_1660,Receiving Inspection - Magnet Stands - BTL - EBD,10.0,0.0,0.0,0.0,01-31-24,02-13-24,AS_EBD_MANF_1650: FS,AS_EBD_MANF_1670: FS,SLAC,0%,52190.52190_METSTP Tech Planning - Reinstated FY16,52190_METSTP Tech Planning - Reinstated FY16,Labor,0.0d,10.0,10.0,At Completion Units,2/15/2023,3/1/2023,0,0,0,0,0,0,0,0,0,0,1.03_Accelerator Systems (AS),1.03.05_AS Beam Transfer Line (BTL),1.03.05.06_AS Beam Transfer Line Procurement and Fabrication,1.03.05.06.02_BSY and EBD Area - Procurement & Fab,AS_EBD_MANF_1660_Receiving Inspection - Magnet Stands - BTL - EBD,METSTPT Tech Planning,Tech,SLAC,Labor
98593,1.03,1.03.05,1.03.05.06,1.03.05.06.02,1.03.05.06.02,BSY and EBD Area - Procurement & Fab,AS_EBD_MANF_1660,Receiving Inspection - Magnet Stands - BTL - EBD,10.0,8.0,8.0,8.0,01-31-24,02-13-24,AS_EBD_MANF_1650: FS,AS_EBD_MANF_1670: FS,SLAC,0%,52169.52169_METS Mechanical Engineer,52169_METS Mechanical Engineer,Labor,0.0d,10.0,10.0,At Completion Units,2/15/2023,3/1/2023,0,0,0,0,0,0,0,0,0,0,1.03_Accelerator Systems (AS),1.03.05_AS Beam Transfer Line (BTL),1.03.05.06_AS Beam Transfer Line Procurement and Fabrication,1.03.05.06.02_BSY and EBD Area - Procurement & Fab,AS_EBD_MANF_1660_Receiving Inspection - Magnet Stands - BTL - EBD,Mechanical,,SLAC,Labor
98594,1.03,1.03.05,1.03.05.06,1.03.05.06.02,1.03.05.06.02,BSY and EBD Area - Procurement & Fab,AS_BSY_MANF_1200,Prepare Requisition (Specs/SOW/ETC) - Mtls for testing Rastering Magnets - BTL - BSY,10.0,8.0,8.0,8.0,10-19-22,11-01-22,"MS_FY_2023_Q1: FS, AS_DMP_DE_1070: FS",AS_BSY_MANF_1210: FS,SLAC,0%,52211.52211_EEDOPSE (Electronics & Engineering Div - Ops & PSE),52211_EEDOPSE (Electronics & Engineering Div - Ops & PSE),Labor,0.0d,10.0,10.0,At Completion Units,10/4/2022,10/17/2022,0,0,0,0,0,0,0,0,0,0,1.03_Accelerator Systems (AS),1.03.05_AS Beam Transfer Line (BTL),1.03.05.06_AS Beam Transfer Line Procurement and Fabrication,1.03.05.06.02_BSY and EBD Area - Procurement & Fab,AS_BSY_MANF_1200_Prepare Requisition (Specs/SOW/ETC) - Mtls for testing Rastering Magnets - BTL - BSY,Electrical,,SLAC,Labor
98595,1.03,1.03.05,1.03.05.06,1.03.05.06.02,1.03.05.06.02,BSY and EBD Area - Procurement & Fab,AS_BSY_MANF_1200,Prepare Requisition (Specs/SOW/ETC) - Mtls for testing Rastering Magnets - BTL - BSY,10.0,8.0,8.0,8.0,10-19-22,11-01-22,"MS_FY_2023_Q1: FS, AS_DMP_DE_1070: FS",AS_BSY_MANF_1210: FS,SLAC,0%,52190.52190_METSTP Tech Planning - Reinstated FY16,52190_METSTP Tech Planning - Reinstated FY16,Labor,0.0d,10.0,10.0,At Completion Units,10/4/2022,10/17/2022,0,0,0,0,0,0,0,0,0,0,1.03_Accelerator Systems (AS),1.03.05_AS Beam Transfer Line (BTL),1.03.05.06_AS Beam Transfer Line Procurement and Fabrication,1.03.05.06.02_BSY and EBD Area - Procurement & Fab,AS_BSY_MANF_1200_Prepare Requisition (Specs/SOW/ETC) - Mtls for testing Rastering Magnets - BTL - BSY,METSTPT Tech Planning,Tech,SLAC,Labor
98596,1.03,1.03.05,1.03.05.06,1.03.05.06.02,1.03.05.06.02,BSY and EBD Area - Procurement & Fab,AS_BSY_MANF_1200,Prepare Requisition (Specs/SOW/ETC) - Mtls for testing Rastering Magnets - BTL - BSY,10.0,8.0,8.0,8.0,10-19-22,11-01-22,"MS_FY_2023_Q1: FS, AS_DMP_DE_1070: FS",AS_BSY_MANF_1210: FS,SLAC,0%,52169.52169_METS Mechanical Engineer,52169_METS Mechanical Engineer,Labor,0.0d,10.0,10.0,At Completion Units,10/4/2022,10/17/2022,0,0,0,0,0,0,0,0,0,0,1.03_Accelerator Systems (AS),1.03.05_AS Beam Transfer Line (BTL),1.03.05.06_AS Beam Transfer Line Procurement and Fabrication,1.03.05.06.02_BSY and EBD Area - Procurement & Fab,AS_BSY_MANF_1200_Prepare Requisition (Specs/SOW/ETC) - Mtls for testing Rastering Magnets - BTL - BSY,Mechanical,,SLAC,Labor
98597,1.03,1.03.05,1.03.05.06,1.03.05.06.02,1.03.05.06.02,BSY and EBD Area - Procurement & Fab,AS_BSY_MANF_1250,RCV: Goods/Services - Mtls for testing Rastering Magnets - BTL - BSY,1.0,2500.0,2500.0,2500.0,03-13-24,03-13-24,AS_BSY_MANF_1240: FS,AS_BSY_MANF_1260: FS,SLAC,0%,SL_MSSC.SLAC M&S (<$500K) (gets G&A) (gets ESC),SLAC M&S (<$500K) (gets G&A) (gets ESC),Nonlabor,0.0d,1.0,1.0,At Completion Units,3/29/2023,3/29/2023,0,0,0,0,0,0,0,0,0,0,1.03_Accelerator Systems (AS),1.03.05_AS Beam Transfer Line (BTL),1.03.05.06_AS Beam Transfer Line Procurement and Fabrication,1.03.05.06.02_BSY and EBD Area - Procurement & Fab,AS_BSY_MANF_1250_RCV: Goods/Services - Mtls for testing Rastering Magnets - BTL - BSY,Material,,SLAC,M&S
98598,1.03,1.03.05,1.03.05.06,1.03.05.06.02,1.03.05.06.02,BSY and EBD Area - Procurement & Fab,AS_BSY_MANF_1230,AWARD: Procurement - Mtls for testing Rastering Magnets - BTL - BSY,1.0,2500.0,2500.0,2500.0,10-31-23,10-31-23,AS_BSY_MANF_1220: FS,AS_BSY_MANF_1240: FS,SLAC,0%,AWARD_USE.AWARD - Use this AWARD,AWARD - Use this AWARD,Nonlabor,0.0d,1.0,1.0,At Completion Units,11/16/2022,11/16/2022,AWARD < $500K,0,0,0,0,0,0,0,0,0,1.03_Accelerator Systems (AS),1.03.05_AS Beam Transfer Line (BTL),1.03.05.06_AS Beam Transfer Line Procurement and Fabrication,1.03.05.06.02_BSY and EBD Area - Procurement & Fab,AS_BSY_MANF_1230_AWARD: Procurement - Mtls for testing Rastering Magnets - BTL - BSY,Material,,SLAC,M&S
98599,1.03,1.03.05,1.03.05.06,1.03.05.06.02,1.03.05.06.02,BSY and EBD Area - Procurement & Fab,AS_BSY_MANF_1210,RQN: Approval of Requisition - Mtls for testing Rastering Magnets - BTL - BSY,1.0,2500.0,2500.0,2500.0,10-02-23,10-02-23,"AS_BSY_MANF_1200: FS, AS_BTL_MANF_1000: FS",AS_BSY_MANF_1220: FS,SLAC,0%,REQ.Requisition,Requisition,Nonlabor,0.0d,1.0,1.0,At Completion Units,10/18/2022,10/18/2022,RQN,0,0,0,0,0,0,0,0,0,1.03_Accelerator Systems (AS),1.03.05_AS Beam Transfer Line (BTL),1.03.05.06_AS Beam Transfer Line Procurement and Fabrication,1.03.05.06.02_BSY and EBD Area - Procurement & Fab,AS_BSY_MANF_1210_RQN: Approval of Requisition - Mtls for testing Rastering Magnets - BTL - BSY,Material,,SLAC,M&S
98600,1.03,1.03.05,1.03.05.06,1.03.05.06.02,1.03.05.06.02,BSY and EBD Area - Procurement & Fab,AS_BSY_MANF_1000,Prepare Requisition (Specs/SOW/ETC) - Rastering Magnets - BTL - BSY,20.0,0.0,0.0,0.0,01-26-22,02-23-22,AS_RAS_DE_2130: FS,AS_BSY_MANF_1010: FS,SLAC,0%,52211.52211_EEDOPSE (Electronics & Engineering Div - Ops & PSE),52211_EEDOPSE (Electronics & Engineering Div - Ops & PSE),Labor,0.0d,20.0,20.0,At Completion Units,4/4/2022,4/29/2022,0,0,0,0,0,0,0,0,0,0,1.03_Accelerator Systems (AS),1.03.05_AS Beam Transfer Line (BTL),1.03.05.06_AS Beam Transfer Line Procurement and Fabrication,1.03.05.06.02_BSY and EBD Area - Procurement & Fab,AS_BSY_MANF_1000_Prepare Requisition (Specs/SOW/ETC) - Rastering Magnets - BTL - BSY,Electrical,,SLAC,Labor
98601,1.03,1.03.05,1.03.05.06,1.03.05.06.02,1.03.05.06.02,BSY and EBD Area - Procurement & Fab,AS_BSY_MANF_1000,Prepare Requisition (Specs/SOW/ETC) - Rastering Magnets - BTL - BSY,20.0,0.0,0.0,0.0,01-26-22,02-23-22,AS_RAS_DE_2130: FS,AS_BSY_MANF_1010: FS,SLAC,0%,52190.52190_METSTP Tech Planning - Reinstated FY16,52190_METSTP Tech Planning - Reinstated FY16,Labor,0.0d,20.0,20.0,At Completion Units,4/4/2022,4/29/2022,0,0,0,0,0,0,0,0,0,0,1.03_Accelerator Systems (AS),1.03.05_AS Beam Transfer Line (BTL),1.03.05.06_AS Beam Transfer Line Procurement and Fabrication,1.03.05.06.02_BSY and EBD Area - Procurement & Fab,AS_BSY_MANF_1000_Prepare Requisition (Specs/SOW/ETC) - Rastering Magnets - BTL - BSY,METSTPT Tech Planning,Tech,SLAC,Labor
98602,1.03,1.03.05,1.03.05.06,1.03.05.06.02,1.03.05.06.02,BSY and EBD Area - Procurement & Fab,AS_BSY_MANF_1000,Prepare Requisition (Specs/SOW/ETC) - Rastering Magnets - BTL - BSY,20.0,0.0,0.0,0.0,01-26-22,02-23-22,AS_RAS_DE_2130: FS,AS_BSY_MANF_1010: FS,SLAC,0%,52169.52169_METS Mechanical Engineer,52169_METS Mechanical Engineer,Labor,0.0d,20.0,20.0,At Completion Units,4/4/2022,4/29/2022,0,0,0,0,0,0,0,0,0,0,1.03_Accelerator Systems (AS),1.03.05_AS Beam Transfer Line (BTL),1.03.05.06_AS Beam Transfer Line Procurement and Fabrication,1.03.05.06.02_BSY and EBD Area - Procurement & Fab,AS_BSY_MANF_1000_Prepare Requisition (Specs/SOW/ETC) - Rastering Magnets - BTL - BSY,Mechanical,,SLAC,Labor
98603,1.03,1.03.05,1.03.05.06,1.03.05.06.02,1.03.05.06.02,BSY and EBD Area - Procurement & Fab,AS_BSY_MANF_1050,RCV: Goods/Services - Rastering Magnets - BTL - BSY,1.0,22500.0,22500.0,22500.0,05-22-24,05-22-24,AS_BSY_MANF_1040: FS,AS_BSY_MANF_1060: FS,SLAC,0%,SL_MSSC.SLAC M&S (<$500K) (gets G&A) (gets ESC),SLAC M&S (<$500K) (gets G&A) (gets ESC),Nonlabor,0.0d,1.0,1.0,At Completion Units,4/24/2023,4/24/2023,0,0,0,0,0,0,0,0,0,0,1.03_Accelerator Systems (AS),1.03.05_AS Beam Transfer Line (BTL),1.03.05.06_AS Beam Transfer Line Procurement and Fabrication,1.03.05.06.02_BSY and EBD Area - Procurement & Fab,AS_BSY_MANF_1050_RCV: Goods/Services - Rastering Magnets - BTL - BSY,Material,,SLAC,M&S
98604,1.03,1.03.05,1.03.05.06,1.03.05.06.02,1.03.05.06.02,BSY and EBD Area - Procurement & Fab,AS_BSY_MANF_1060,Accept Rastering Magnets - BTL - BSY,10.0,4.0,4.0,4.0,05-23-24,06-06-24,AS_BSY_MANF_1050: FS,AS_BSY_MANF_1070: FS,SLAC,0%,52190.52190_METSTP Tech Planning - Reinstated FY16,52190_METSTP Tech Planning - Reinstated FY16,Labor,0.0d,10.0,10.0,At Completion Units,4/25/2023,5/8/2023,0,0,0,0,0,0,0,0,0,0,1.03_Accelerator Systems (AS),1.03.05_AS Beam Transfer Line (BTL),1.03.05.06_AS Beam Transfer Line Procurement and Fabrication,1.03.05.06.02_BSY and EBD Area - Procurement & Fab,AS_BSY_MANF_1060_Accept Rastering Magnets - BTL - BSY,METSTPT Tech Planning,Tech,SLAC,Labor
98605,1.03,1.03.05,1.03.05.06,1.03.05.06.02,1.03.05.06.02,BSY and EBD Area - Procurement & Fab,AS_BSY_MANF_1060,Accept Rastering Magnets - BTL - BSY,10.0,8.0,8.0,8.0,05-23-24,06-06-24,AS_BSY_MANF_1050: FS,AS_BSY_MANF_1070: FS,SLAC,0%,52211.52211_EEDOPSE (Electronics & Engineering Div - Ops & PSE),52211_EEDOPSE (Electronics & Engineering Div - Ops & PSE),Labor,0.0d,10.0,10.0,At Completion Units,4/25/2023,5/8/2023,0,0,0,0,0,0,0,0,0,0,1.03_Accelerator Systems (AS),1.03.05_AS Beam Transfer Line (BTL),1.03.05.06_AS Beam Transfer Line Procurement and Fabrication,1.03.05.06.02_BSY and EBD Area - Procurement & Fab,AS_BSY_MANF_1060_Accept Rastering Magnets - BTL - BSY,Electrical,,SLAC,Labor
98606,1.03,1.03.05,1.03.05.06,1.03.05.06.02,1.03.05.06.02,BSY and EBD Area - Procurement & Fab,AS_BSY_MANF_1060,Accept Rastering Magnets - BTL - BSY,10.0,4.0,4.0,4.0,05-23-24,06-06-24,AS_BSY_MANF_1050: FS,AS_BSY_MANF_1070: FS,SLAC,0%,52169.52169_METS Mechanical Engineer,52169_METS Mechanical Engineer,Labor,0.0d,10.0,10.0,At Completion Units,4/25/2023,5/8/2023,0,0,0,0,0,0,0,0,0,0,1.03_Accelerator Systems (AS),1.03.05_AS Beam Transfer Line (BTL),1.03.05.06_AS Beam Transfer Line Procurement and Fabrication,1.03.05.06.02_BSY and EBD Area - Procurement & Fab,AS_BSY_MANF_1060_Accept Rastering Magnets - BTL - BSY,Mechanical,,SLAC,Labor
98607,1.03,1.03.05,1.03.05.06,1.03.05.06.02,1.03.05.06.02,BSY and EBD Area - Procurement & Fab,AS_BSY_MANF_1030,AWARD: Procurement - Rastering Magnets - BTL - BSY,1.0,22500.0,22500.0,22500.0,10-31-23,10-31-23,AS_BSY_MANF_1020: FS,AS_BSY_MANF_1040: FS,SLAC,0%,AWARD_USE.AWARD - Use this AWARD,AWARD - Use this AWARD,Nonlabor,0.0d,1.0,1.0,At Completion Units,10/3/2022,10/3/2022,AWARD < $500K,0,0,0,0,0,0,0,0,0,1.03_Accelerator Systems (AS),1.03.05_AS Beam Transfer Line (BTL),1.03.05.06_AS Beam Transfer Line Procurement and Fabrication,1.03.05.06.02_BSY and EBD Area - Procurement & Fab,AS_BSY_MANF_1030_AWARD: Procurement - Rastering Magnets - BTL - BSY,Material,,SLAC,M&S
98608,1.03,1.03.05,1.03.05.06,1.03.05.06.02,1.03.05.06.02,BSY and EBD Area - Procurement & Fab,AS_BSY_MANF_1010,RQN: Approval of Requisition - Rastering Magnets - BTL - BSY,1.0,22500.0,22500.0,22500.0,10-02-23,10-02-23,"AS_BSY_MANF_1000: FS, AS_BTL_MANF_1000: FS",AS_BSY_MANF_1020: FS,SLAC,0%,REQ.Requisition,Requisition,Nonlabor,0.0d,1.0,1.0,At Completion Units,9/1/2022,9/1/2022,RQN,0,0,0,0,0,0,0,0,0,1.03_Accelerator Systems (AS),1.03.05_AS Beam Transfer Line (BTL),1.03.05.06_AS Beam Transfer Line Procurement and Fabrication,1.03.05.06.02_BSY and EBD Area - Procurement & Fab,AS_BSY_MANF_1010_RQN: Approval of Requisition - Rastering Magnets - BTL - BSY,Material,,SLAC,M&S
98609,1.03,1.03.05,1.03.05.06,1.03.05.06.02,1.03.05.06.02,BSY and EBD Area - Procurement & Fab,AS_BSY_MANF_1860,Inspection and processing - Misc Vacuum Hardware - BTL - BSY,15.0,24.0,24.0,24.0,01-02-24,01-23-24,AS_BSY_MANF_1850: FS,AS_BSY_MANF_1870: FS,SLAC,0%,52198.52198_METSMANF (METSD Manufacturing),52198_METSMANF (METSD Manufacturing),Labor,0.0d,15.0,15.0,At Completion Units,4/4/2023,4/24/2023,0,0,0,0,0,0,0,0,0,0,1.03_Accelerator Systems (AS),1.03.05_AS Beam Transfer Line (BTL),1.03.05.06_AS Beam Transfer Line Procurement and Fabrication,1.03.05.06.02_BSY and EBD Area - Procurement & Fab,AS_BSY_MANF_1860_Inspection and processing - Misc Vacuum Hardware - BTL - BSY,Manufacturing,,SLAC,Labor
98610,1.03,1.03.05,1.03.05.06,1.03.05.06.02,1.03.05.06.02,BSY and EBD Area - Procurement & Fab,AS_BSY_MANF_1860,Inspection and processing - Misc Vacuum Hardware - BTL - BSY,15.0,0.0,0.0,0.0,01-02-24,01-23-24,AS_BSY_MANF_1850: FS,AS_BSY_MANF_1870: FS,SLAC,0%,52190.52190_METSTP Tech Planning - Reinstated FY16,52190_METSTP Tech Planning - Reinstated FY16,Labor,0.0d,15.0,15.0,At Completion Units,4/4/2023,4/24/2023,0,0,0,0,0,0,0,0,0,0,1.03_Accelerator Systems (AS),1.03.05_AS Beam Transfer Line (BTL),1.03.05.06_AS Beam Transfer Line Procurement and Fabrication,1.03.05.06.02_BSY and EBD Area - Procurement & Fab,AS_BSY_MANF_1860_Inspection and processing - Misc Vacuum Hardware - BTL - BSY,METSTPT Tech Planning,Tech,SLAC,Labor
98611,1.03,1.03.05,1.03.05.06,1.03.05.06.02,1.03.05.06.02,BSY and EBD Area - Procurement & Fab,AS_BSY_MANF_1860,Inspection and processing - Misc Vacuum Hardware - BTL - BSY,15.0,0.0,0.0,0.0,01-02-24,01-23-24,AS_BSY_MANF_1850: FS,AS_BSY_MANF_1870: FS,SLAC,0%,52169.52169_METS Mechanical Engineer,52169_METS Mechanical Engineer,Labor,0.0d,15.0,15.0,At Completion Units,4/4/2023,4/24/2023,0,0,0,0,0,0,0,0,0,0,1.03_Accelerator Systems (AS),1.03.05_AS Beam Transfer Line (BTL),1.03.05.06_AS Beam Transfer Line Procurement and Fabrication,1.03.05.06.02_BSY and EBD Area - Procurement & Fab,AS_BSY_MANF_1860_Inspection and processing - Misc Vacuum Hardware - BTL - BSY,Mechanical,,SLAC,Labor
98612,1.03,1.03.05,1.03.05.06,1.03.05.06.02,1.03.05.06.02,BSY and EBD Area - Procurement & Fab,AS_BSY_MANF_1650,Inspection and processing - Interface Vacuum Drift Tubes & Bellows - BTL - BSY,10.0,32.0,32.0,32.0,02-28-24,03-12-24,AS_BSY_MANF_1640: FS,AS_BSY_MANF_1660: FS,SLAC,0%,52198.52198_METSMANF (METSD Manufacturing),52198_METSMANF (METSD Manufacturing),Labor,0.0d,10.0,10.0,At Completion Units,3/15/2023,3/28/2023,0,0,0,0,0,0,0,0,0,0,1.03_Accelerator Systems (AS),1.03.05_AS Beam Transfer Line (BTL),1.03.05.06_AS Beam Transfer Line Procurement and Fabrication,1.03.05.06.02_BSY and EBD Area - Procurement & Fab,AS_BSY_MANF_1650_Inspection and processing - Interface Vacuum Drift Tubes & Bellows - BTL - BSY,Manufacturing,,SLAC,Labor
98613,1.03,1.03.05,1.03.05.06,1.03.05.06.02,1.03.05.06.02,BSY and EBD Area - Procurement & Fab,AS_BSY_MANF_1650,Inspection and processing - Interface Vacuum Drift Tubes & Bellows - BTL - BSY,10.0,0.0,0.0,0.0,02-28-24,03-12-24,AS_BSY_MANF_1640: FS,AS_BSY_MANF_1660: FS,SLAC,0%,52190.52190_METSTP Tech Planning - Reinstated FY16,52190_METSTP Tech Planning - Reinstated FY16,Labor,0.0d,10.0,10.0,At Completion Units,3/15/2023,3/28/2023,0,0,0,0,0,0,0,0,0,0,1.03_Accelerator Systems (AS),1.03.05_AS Beam Transfer Line (BTL),1.03.05.06_AS Beam Transfer Line Procurement and Fabrication,1.03.05.06.02_BSY and EBD Area - Procurement & Fab,AS_BSY_MANF_1650_Inspection and processing - Interface Vacuum Drift Tubes & Bellows - BTL - BSY,METSTPT Tech Planning,Tech,SLAC,Labor
98614,1.03,1.03.05,1.03.05.06,1.03.05.06.02,1.03.05.06.02,BSY and EBD Area - Procurement & Fab,AS_BSY_MANF_1650,Inspection and processing - Interface Vacuum Drift Tubes & Bellows - BTL - BSY,10.0,0.0,0.0,0.0,02-28-24,03-12-24,AS_BSY_MANF_1640: FS,AS_BSY_MANF_1660: FS,SLAC,0%,52169.52169_METS Mechanical Engineer,52169_METS Mechanical Engineer,Labor,0.0d,10.0,10.0,At Completion Units,3/15/2023,3/28/2023,0,0,0,0,0,0,0,0,0,0,1.03_Accelerator Systems (AS),1.03.05_AS Beam Transfer Line (BTL),1.03.05.06_AS Beam Transfer Line Procurement and Fabrication,1.03.05.06.02_BSY and EBD Area - Procurement & Fab,AS_BSY_MANF_1650_Inspection and processing - Interface Vacuum Drift Tubes & Bellows - BTL - BSY,Mechanical,,SLAC,Labor
98615,1.03,1.03.05,1.03.05.06,1.03.05.06.02,1.03.05.06.02,BSY and EBD Area - Procurement & Fab,AS_BSY_MANF_1450,Receiving Inspection - Magnet Stands - BTL - BSY,10.0,16.0,16.0,16.0,01-30-24,02-12-24,AS_BSY_MANF_1440: FS,AS_BSY_MANF_1460: FS,SLAC,0%,52198.52198_METSMANF (METSD Manufacturing),52198_METSMANF (METSD Manufacturing),Labor,0.0d,10.0,10.0,At Completion Units,2/14/2023,2/28/2023,0,0,0,0,0,0,0,0,0,0,1.03_Accelerator Systems (AS),1.03.05_AS Beam Transfer Line (BTL),1.03.05.06_AS Beam Transfer Line Procurement and Fabrication,1.03.05.06.02_BSY and EBD Area - Procurement & Fab,AS_BSY_MANF_1450_Receiving Inspection - Magnet Stands - BTL - BSY,Manufacturing,,SLAC,Labor
98616,1.03,1.03.05,1.03.05.06,1.03.05.06.02,1.03.05.06.02,BSY and EBD Area - Procurement & Fab,AS_BSY_MANF_1450,Receiving Inspection - Magnet Stands - BTL - BSY,10.0,0.0,0.0,0.0,01-30-24,02-12-24,AS_BSY_MANF_1440: FS,AS_BSY_MANF_1460: FS,SLAC,0%,52190.52190_METSTP Tech Planning - Reinstated FY16,52190_METSTP Tech Planning - Reinstated FY16,Labor,0.0d,10.0,10.0,At Completion Units,2/14/2023,2/28/2023,0,0,0,0,0,0,0,0,0,0,1.03_Accelerator Systems (AS),1.03.05_AS Beam Transfer Line (BTL),1.03.05.06_AS Beam Transfer Line Procurement and Fabrication,1.03.05.06.02_BSY and EBD Area - Procurement & Fab,AS_BSY_MANF_1450_Receiving Inspection - Magnet Stands - BTL - BSY,METSTPT Tech Planning,Tech,SLAC,Labor
98617,1.03,1.03.05,1.03.05.06,1.03.05.06.02,1.03.05.06.02,BSY and EBD Area - Procurement & Fab,AS_BSY_MANF_1450,Receiving Inspection - Magnet Stands - BTL - BSY,10.0,8.0,8.0,8.0,01-30-24,02-12-24,AS_BSY_MANF_1440: FS,AS_BSY_MANF_1460: FS,SLAC,0%,52169.52169_METS Mechanical Engineer,52169_METS Mechanical Engineer,Labor,0.0d,10.0,10.0,At Completion Units,2/14/2023,2/28/2023,0,0,0,0,0,0,0,0,0,0,1.03_Accelerator Systems (AS),1.03.05_AS Beam Transfer Line (BTL),1.03.05.06_AS Beam Transfer Line Procurement and Fabrication,1.03.05.06.02_BSY and EBD Area - Procurement & Fab,AS_BSY_MANF_1450_Receiving Inspection - Magnet Stands - BTL - BSY,Mechanical,,SLAC,Labor
98618,1.03,1.03.05,1.03.05.06,1.03.05.06.02,1.03.05.06.02,BSY and EBD Area - Procurement & Fab,AS_EBD_MANF_2250,RCV: Goods/Services - Misc Mech Hardware - BTL - EBD,1.0,800.0,800.0,800.0,12-15-23,12-15-23,AS_EBD_MANF_2240: FS,AS_EBD_MANF_2260: FS,SLAC,0%,SL_MSSC.SLAC M&S (<$500K) (gets G&A) (gets ESC),SLAC M&S (<$500K) (gets G&A) (gets ESC),Nonlabor,0.0d,1.0,1.0,At Completion Units,4/3/2023,4/3/2023,0,0,0,0,0,0,0,0,0,0,1.03_Accelerator Systems (AS),1.03.05_AS Beam Transfer Line (BTL),1.03.05.06_AS Beam Transfer Line Procurement and Fabrication,1.03.05.06.02_BSY and EBD Area - Procurement & Fab,AS_EBD_MANF_2250_RCV: Goods/Services - Misc Mech Hardware - BTL - EBD,Material,,SLAC,M&S
98619,1.03,1.03.05,1.03.05.06,1.03.05.06.02,1.03.05.06.02,BSY and EBD Area - Procurement & Fab,AS_EBD_MANF_2200,Prepare Requisition (Specs/SOW/ETC) - Misc Mech Hardware - BTL - EBD,10.0,2.4,2.4,2.4,01-03-23,01-17-23,"MS_FY_2023_Q2: FS, AS_DMP_DE_1070: FS",AS_EBD_MANF_2210: FS,SLAC,0%,52198.52198_METSMANF (METSD Manufacturing),52198_METSMANF (METSD Manufacturing),Labor,0.0d,10.0,10.0,At Completion Units,1/3/2023,1/17/2023,0,0,0,0,0,0,0,0,0,0,1.03_Accelerator Systems (AS),1.03.05_AS Beam Transfer Line (BTL),1.03.05.06_AS Beam Transfer Line Procurement and Fabrication,1.03.05.06.02_BSY and EBD Area - Procurement & Fab,AS_EBD_MANF_2200_Prepare Requisition (Specs/SOW/ETC) - Misc Mech Hardware - BTL - EBD,Manufacturing,,SLAC,Labor
98620,1.03,1.03.05,1.03.05.06,1.03.05.06.02,1.03.05.06.02,BSY and EBD Area - Procurement & Fab,AS_EBD_MANF_2200,Prepare Requisition (Specs/SOW/ETC) - Misc Mech Hardware - BTL - EBD,10.0,0.9,0.9,0.9,01-03-23,01-17-23,"MS_FY_2023_Q2: FS, AS_DMP_DE_1070: FS",AS_EBD_MANF_2210: FS,SLAC,0%,52190.52190_METSTP Tech Planning - Reinstated FY16,52190_METSTP Tech Planning - Reinstated FY16,Labor,0.0d,10.0,10.0,At Completion Units,1/3/2023,1/17/2023,0,0,0,0,0,0,0,0,0,0,1.03_Accelerator Systems (AS),1.03.05_AS Beam Transfer Line (BTL),1.03.05.06_AS Beam Transfer Line Procurement and Fabrication,1.03.05.06.02_BSY and EBD Area - Procurement & Fab,AS_EBD_MANF_2200_Prepare Requisition (Specs/SOW/ETC) - Misc Mech Hardware - BTL - EBD,METSTPT Tech Planning,Tech,SLAC,Labor
98621,1.03,1.03.05,1.03.05.06,1.03.05.06.02,1.03.05.06.02,BSY and EBD Area - Procurement & Fab,AS_EBD_MANF_2200,Prepare Requisition (Specs/SOW/ETC) - Misc Mech Hardware - BTL - EBD,10.0,0.7,0.7,0.7,01-03-23,01-17-23,"MS_FY_2023_Q2: FS, AS_DMP_DE_1070: FS",AS_EBD_MANF_2210: FS,SLAC,0%,52169.52169_METS Mechanical Engineer,52169_METS Mechanical Engineer,Labor,0.0d,10.0,10.0,At Completion Units,1/3/2023,1/17/2023,0,0,0,0,0,0,0,0,0,0,1.03_Accelerator Systems (AS),1.03.05_AS Beam Transfer Line (BTL),1.03.05.06_AS Beam Transfer Line Procurement and Fabrication,1.03.05.06.02_BSY and EBD Area - Procurement & Fab,AS_EBD_MANF_2200_Prepare Requisition (Specs/SOW/ETC) - Misc Mech Hardware - BTL - EBD,Mechanical,,SLAC,Labor
98622,1.03,1.03.05,1.03.05.06,1.03.05.06.02,1.03.05.06.02,BSY and EBD Area - Procurement & Fab,AS_EBD_MANF_2230,AWARD: Procurement - Misc Mech Hardware - BTL - EBD,1.0,800.0,800.0,800.0,10-17-23,10-17-23,AS_EBD_MANF_2220: FS,AS_EBD_MANF_2240: FS,SLAC,0%,AWARD_USE.AWARD - Use this AWARD,AWARD - Use this AWARD,Nonlabor,0.0d,1.0,1.0,At Completion Units,2/2/2023,2/2/2023,AWARD < $500K,0,0,0,0,0,0,0,0,0,1.03_Accelerator Systems (AS),1.03.05_AS Beam Transfer Line (BTL),1.03.05.06_AS Beam Transfer Line Procurement and Fabrication,1.03.05.06.02_BSY and EBD Area - Procurement & Fab,AS_EBD_MANF_2230_AWARD: Procurement - Misc Mech Hardware - BTL - EBD,Material,,SLAC,M&S
98623,1.03,1.03.05,1.03.05.06,1.03.05.06.02,1.03.05.06.02,BSY and EBD Area - Procurement & Fab,AS_EBD_MANF_2210,RQN: Approval of Requisition - Misc Mech Hardware - BTL - EBD,1.0,800.0,800.0,800.0,10-02-23,10-02-23,"AS_EBD_MANF_2200: FS, AS_BTL_MANF_1000: FS",AS_EBD_MANF_2220: FS,SLAC,0%,REQ.Requisition,Requisition,Nonlabor,0.0d,1.0,1.0,At Completion Units,1/18/2023,1/18/2023,RQN,0,0,0,0,0,0,0,0,0,1.03_Accelerator Systems (AS),1.03.05_AS Beam Transfer Line (BTL),1.03.05.06_AS Beam Transfer Line Procurement and Fabrication,1.03.05.06.02_BSY and EBD Area - Procurement & Fab,AS_EBD_MANF_2210_RQN: Approval of Requisition - Misc Mech Hardware - BTL - EBD,Material,,SLAC,M&S
98624,1.03,1.03.05,1.03.05.06,1.03.05.06.02,1.03.05.06.02,BSY and EBD Area - Procurement & Fab,AS_EBD_MANF_2050,RCV: Goods/Services - Misc Vacuum Hardware - BTL - EBD,1.0,1200.0,1200.0,1200.0,12-15-23,12-15-23,AS_EBD_MANF_2040: FS,AS_EBD_MANF_2060: FS,SLAC,0%,SL_MSSC.SLAC M&S (<$500K) (gets G&A) (gets ESC),SLAC M&S (<$500K) (gets G&A) (gets ESC),Nonlabor,0.0d,1.0,1.0,At Completion Units,4/3/2023,4/3/2023,0,0,0,0,0,0,0,0,0,0,1.03_Accelerator Systems (AS),1.03.05_AS Beam Transfer Line (BTL),1.03.05.06_AS Beam Transfer Line Procurement and Fabrication,1.03.05.06.02_BSY and EBD Area - Procurement & Fab,AS_EBD_MANF_2050_RCV: Goods/Services - Misc Vacuum Hardware - BTL - EBD,Material,,SLAC,M&S
98625,1.03,1.03.05,1.03.05.06,1.03.05.06.02,1.03.05.06.02,BSY and EBD Area - Procurement & Fab,AS_EBD_MANF_2000,Prepare Requisition (Specs/SOW/ETC) - Misc Vacuum Hardware - BTL - EBD,10.0,0.0,0.0,0.0,01-03-23,01-17-23,"MS_FY_2023_Q2: FS, AS_DMP_DE_1070: FS",AS_EBD_MANF_2010: FS,SLAC,0%,52198.52198_METSMANF (METSD Manufacturing),52198_METSMANF (METSD Manufacturing),Labor,0.0d,10.0,10.0,At Completion Units,1/3/2023,1/17/2023,0,0,0,0,0,0,0,0,0,0,1.03_Accelerator Systems (AS),1.03.05_AS Beam Transfer Line (BTL),1.03.05.06_AS Beam Transfer Line Procurement and Fabrication,1.03.05.06.02_BSY and EBD Area - Procurement & Fab,AS_EBD_MANF_2000_Prepare Requisition (Specs/SOW/ETC) - Misc Vacuum Hardware - BTL - EBD,Manufacturing,,SLAC,Labor
98626,1.03,1.03.05,1.03.05.06,1.03.05.06.02,1.03.05.06.02,BSY and EBD Area - Procurement & Fab,AS_EBD_MANF_2000,Prepare Requisition (Specs/SOW/ETC) - Misc Vacuum Hardware - BTL - EBD,10.0,8.0,8.0,8.0,01-03-23,01-17-23,"MS_FY_2023_Q2: FS, AS_DMP_DE_1070: FS",AS_EBD_MANF_2010: FS,SLAC,0%,52190.52190_METSTP Tech Planning - Reinstated FY16,52190_METSTP Tech Planning - Reinstated FY16,Labor,0.0d,10.0,10.0,At Completion Units,1/3/2023,1/17/2023,0,0,0,0,0,0,0,0,0,0,1.03_Accelerator Systems (AS),1.03.05_AS Beam Transfer Line (BTL),1.03.05.06_AS Beam Transfer Line Procurement and Fabrication,1.03.05.06.02_BSY and EBD Area - Procurement & Fab,AS_EBD_MANF_2000_Prepare Requisition (Specs/SOW/ETC) - Misc Vacuum Hardware - BTL - EBD,METSTPT Tech Planning,Tech,SLAC,Labor
98627,1.03,1.03.05,1.03.05.06,1.03.05.06.02,1.03.05.06.02,BSY and EBD Area - Procurement & Fab,AS_EBD_MANF_2000,Prepare Requisition (Specs/SOW/ETC) - Misc Vacuum Hardware - BTL - EBD,10.0,0.0,0.0,0.0,01-03-23,01-17-23,"MS_FY_2023_Q2: FS, AS_DMP_DE_1070: FS",AS_EBD_MANF_2010: FS,SLAC,0%,52169.52169_METS Mechanical Engineer,52169_METS Mechanical Engineer,Labor,0.0d,10.0,10.0,At Completion Units,1/3/2023,1/17/2023,0,0,0,0,0,0,0,0,0,0,1.03_Accelerator Systems (AS),1.03.05_AS Beam Transfer Line (BTL),1.03.05.06_AS Beam Transfer Line Procurement and Fabrication,1.03.05.06.02_BSY and EBD Area - Procurement & Fab,AS_EBD_MANF_2000_Prepare Requisition (Specs/SOW/ETC) - Misc Vacuum Hardware - BTL - EBD,Mechanical,,SLAC,Labor
98628,1.03,1.03.05,1.03.05.06,1.03.05.06.02,1.03.05.06.02,BSY and EBD Area - Procurement & Fab,AS_EBD_MANF_2030,AWARD: Procurement - Misc Vacuum Hardware - BTL - EBD,1.0,1200.0,1200.0,1200.0,10-17-23,10-17-23,AS_EBD_MANF_2020: FS,AS_EBD_MANF_2040: FS,SLAC,0%,AWARD_USE.AWARD - Use this AWARD,AWARD - Use this AWARD,Nonlabor,0.0d,1.0,1.0,At Completion Units,2/2/2023,2/2/2023,AWARD < $500K,0,0,0,0,0,0,0,0,0,1.03_Accelerator Systems (AS),1.03.05_AS Beam Transfer Line (BTL),1.03.05.06_AS Beam Transfer Line Procurement and Fabrication,1.03.05.06.02_BSY and EBD Area - Procurement & Fab,AS_EBD_MANF_2030_AWARD: Procurement - Misc Vacuum Hardware - BTL - EBD,Material,,SLAC,M&S
98629,1.03,1.03.05,1.03.05.06,1.03.05.06.02,1.03.05.06.02,BSY and EBD Area - Procurement & Fab,AS_EBD_MANF_2010,RQN: Approval of Requisition - Misc Vacuum Hardware - BTL - EBD,1.0,1200.0,1200.0,1200.0,10-02-23,10-02-23,"AS_EBD_MANF_2000: FS, AS_BTL_MANF_1000: FS",AS_EBD_MANF_2020: FS,SLAC,0%,REQ.Requisition,Requisition,Nonlabor,0.0d,1.0,1.0,At Completion Units,1/18/2023,1/18/2023,RQN,0,0,0,0,0,0,0,0,0,1.03_Accelerator Systems (AS),1.03.05_AS Beam Transfer Line (BTL),1.03.05.06_AS Beam Transfer Line Procurement and Fabrication,1.03.05.06.02_BSY and EBD Area - Procurement & Fab,AS_EBD_MANF_2010_RQN: Approval of Requisition - Misc Vacuum Hardware - BTL - EBD,Material,,SLAC,M&S
98630,1.03,1.03.05,1.03.05.06,1.03.05.06.02,1.03.05.06.02,BSY and EBD Area - Procurement & Fab,AS_EBD_MANF_1850,RCV: Goods/Services - Interface Vacuum Drift Tubes & Bellows - BTL - EBD,1.0,6000.0,6000.0,6000.0,02-28-24,02-28-24,AS_EBD_MANF_1840: FS,AS_EBD_MANF_1860: FS,SLAC,0%,SL_MSSC.SLAC M&S (<$500K) (gets G&A) (gets ESC),SLAC M&S (<$500K) (gets G&A) (gets ESC),Nonlabor,0.0d,1.0,1.0,At Completion Units,3/15/2023,3/15/2023,0,0,0,0,0,0,0,0,0,0,1.03_Accelerator Systems (AS),1.03.05_AS Beam Transfer Line (BTL),1.03.05.06_AS Beam Transfer Line Procurement and Fabrication,1.03.05.06.02_BSY and EBD Area - Procurement & Fab,AS_EBD_MANF_1850_RCV: Goods/Services - Interface Vacuum Drift Tubes & Bellows - BTL - EBD,Material,,SLAC,M&S
98631,1.03,1.03.05,1.03.05.06,1.03.05.06.02,1.03.05.06.02,BSY and EBD Area - Procurement & Fab,AS_EBD_MANF_1800,Prepare Requisition (Specs/SOW/ETC) - Interface Vacuum Drift Tubes & Bellows - BTL - EBD,10.0,0.0,0.0,0.0,10-19-22,11-01-22,"MS_FY_2023_Q1: FS, AS_DMP_DE_1070: FS",AS_EBD_MANF_1810: FS,SLAC,0%,52198.52198_METSMANF (METSD Manufacturing),52198_METSMANF (METSD Manufacturing),Labor,0.0d,10.0,10.0,At Completion Units,10/4/2022,10/17/2022,0,0,0,0,0,0,0,0,0,0,1.03_Accelerator Systems (AS),1.03.05_AS Beam Transfer Line (BTL),1.03.05.06_AS Beam Transfer Line Procurement and Fabrication,1.03.05.06.02_BSY and EBD Area - Procurement & Fab,AS_EBD_MANF_1800_Prepare Requisition (Specs/SOW/ETC) - Interface Vacuum Drift Tubes & Bellows - BTL - EBD,Manufacturing,,SLAC,Labor
98632,1.03,1.03.05,1.03.05.06,1.03.05.06.02,1.03.05.06.02,BSY and EBD Area - Procurement & Fab,AS_EBD_MANF_1800,Prepare Requisition (Specs/SOW/ETC) - Interface Vacuum Drift Tubes & Bellows - BTL - EBD,10.0,8.0,8.0,8.0,10-19-22,11-01-22,"MS_FY_2023_Q1: FS, AS_DMP_DE_1070: FS",AS_EBD_MANF_1810: FS,SLAC,0%,52190.52190_METSTP Tech Planning - Reinstated FY16,52190_METSTP Tech Planning - Reinstated FY16,Labor,0.0d,10.0,10.0,At Completion Units,10/4/2022,10/17/2022,0,0,0,0,0,0,0,0,0,0,1.03_Accelerator Systems (AS),1.03.05_AS Beam Transfer Line (BTL),1.03.05.06_AS Beam Transfer Line Procurement and Fabrication,1.03.05.06.02_BSY and EBD Area - Procurement & Fab,AS_EBD_MANF_1800_Prepare Requisition (Specs/SOW/ETC) - Interface Vacuum Drift Tubes & Bellows - BTL - EBD,METSTPT Tech Planning,Tech,SLAC,Labor
98633,1.03,1.03.05,1.03.05.06,1.03.05.06.02,1.03.05.06.02,BSY and EBD Area - Procurement & Fab,AS_EBD_MANF_1800,Prepare Requisition (Specs/SOW/ETC) - Interface Vacuum Drift Tubes & Bellows - BTL - EBD,10.0,0.0,0.0,0.0,10-19-22,11-01-22,"MS_FY_2023_Q1: FS, AS_DMP_DE_1070: FS",AS_EBD_MANF_1810: FS,SLAC,0%,52169.52169_METS Mechanical Engineer,52169_METS Mechanical Engineer,Labor,0.0d,10.0,10.0,At Completion Units,10/4/2022,10/17/2022,0,0,0,0,0,0,0,0,0,0,1.03_Accelerator Systems (AS),1.03.05_AS Beam Transfer Line (BTL),1.03.05.06_AS Beam Transfer Line Procurement and Fabrication,1.03.05.06.02_BSY and EBD Area - Procurement & Fab,AS_EBD_MANF_1800_Prepare Requisition (Specs/SOW/ETC) - Interface Vacuum Drift Tubes & Bellows - BTL - EBD,Mechanical,,SLAC,Labor
98634,1.03,1.03.05,1.03.05.06,1.03.05.06.02,1.03.05.06.02,BSY and EBD Area - Procurement & Fab,AS_EBD_MANF_1830,AWARD: Procurement - Interface Vacuum Drift Tubes & Bellows - BTL - EBD,1.0,6000.0,6000.0,6000.0,10-17-23,10-17-23,AS_EBD_MANF_1820: FS,AS_EBD_MANF_1840: FS,SLAC,0%,AWARD_USE.AWARD - Use this AWARD,AWARD - Use this AWARD,Nonlabor,0.0d,1.0,1.0,At Completion Units,11/2/2022,11/2/2022,AWARD < $500K,0,0,0,0,0,0,0,0,0,1.03_Accelerator Systems (AS),1.03.05_AS Beam Transfer Line (BTL),1.03.05.06_AS Beam Transfer Line Procurement and Fabrication,1.03.05.06.02_BSY and EBD Area - Procurement & Fab,AS_EBD_MANF_1830_AWARD: Procurement - Interface Vacuum Drift Tubes & Bellows - BTL - EBD,Material,,SLAC,M&S
98635,1.03,1.03.05,1.03.05.06,1.03.05.06.02,1.03.05.06.02,BSY and EBD Area - Procurement & Fab,AS_EBD_MANF_1810,RQN: Approval of Requisition - Interface Vacuum Drift Tubes & Bellows - BTL - EBD,1.0,6000.0,6000.0,6000.0,10-02-23,10-02-23,"AS_EBD_MANF_1800: FS, AS_BTL_MANF_1000: FS",AS_EBD_MANF_1820: FS,SLAC,0%,REQ.Requisition,Requisition,Nonlabor,0.0d,1.0,1.0,At Completion Units,10/18/2022,10/18/2022,RQN,0,0,0,0,0,0,0,0,0,1.03_Accelerator Systems (AS),1.03.05_AS Beam Transfer Line (BTL),1.03.05.06_AS Beam Transfer Line Procurement and Fabrication,1.03.05.06.02_BSY and EBD Area - Procurement & Fab,AS_EBD_MANF_1810_RQN: Approval of Requisition - Interface Vacuum Drift Tubes & Bellows - BTL - EBD,Material,,SLAC,M&S
98636,1.03,1.03.05,1.03.05.06,1.03.05.06.02,1.03.05.06.02,BSY and EBD Area - Procurement & Fab,AS_EBD_MANF_1650,RCV: Goods/Services - Magnet Stands - BTL - EBD,1.0,2884.0,2884.0,2884.0,01-30-24,01-30-24,AS_EBD_MANF_1640: FS,AS_EBD_MANF_1660: FS,SLAC,0%,SL_MSSC.SLAC M&S (<$500K) (gets G&A) (gets ESC),SLAC M&S (<$500K) (gets G&A) (gets ESC),Nonlabor,0.0d,1.0,1.0,At Completion Units,2/14/2023,2/14/2023,0,0,0,0,0,0,0,0,0,0,1.03_Accelerator Systems (AS),1.03.05_AS Beam Transfer Line (BTL),1.03.05.06_AS Beam Transfer Line Procurement and Fabrication,1.03.05.06.02_BSY and EBD Area - Procurement & Fab,AS_EBD_MANF_1650_RCV: Goods/Services - Magnet Stands - BTL - EBD,Material,,SLAC,M&S
98637,1.03,1.03.05,1.03.05.06,1.03.05.06.02,1.03.05.06.02,BSY and EBD Area - Procurement & Fab,AS_EBD_MANF_1600,Prepare Requisition (Specs/SOW/ETC) - Magnet Stands - BTL - EBD,10.0,0.0,0.0,0.0,10-19-22,11-01-22,"MS_FY_2023_Q1: FS, AS_DMP_DE_1070: FS",AS_EBD_MANF_1610: FS,SLAC,0%,52198.52198_METSMANF (METSD Manufacturing),52198_METSMANF (METSD Manufacturing),Labor,0.0d,10.0,10.0,At Completion Units,10/4/2022,10/17/2022,0,0,0,0,0,0,0,0,0,0,1.03_Accelerator Systems (AS),1.03.05_AS Beam Transfer Line (BTL),1.03.05.06_AS Beam Transfer Line Procurement and Fabrication,1.03.05.06.02_BSY and EBD Area - Procurement & Fab,AS_EBD_MANF_1600_Prepare Requisition (Specs/SOW/ETC) - Magnet Stands - BTL - EBD,Manufacturing,,SLAC,Labor
98638,1.03,1.03.05,1.03.05.06,1.03.05.06.02,1.03.05.06.02,BSY and EBD Area - Procurement & Fab,AS_EBD_MANF_1600,Prepare Requisition (Specs/SOW/ETC) - Magnet Stands - BTL - EBD,10.0,8.0,8.0,8.0,10-19-22,11-01-22,"MS_FY_2023_Q1: FS, AS_DMP_DE_1070: FS",AS_EBD_MANF_1610: FS,SLAC,0%,52190.52190_METSTP Tech Planning - Reinstated FY16,52190_METSTP Tech Planning - Reinstated FY16,Labor,0.0d,10.0,10.0,At Completion Units,10/4/2022,10/17/2022,0,0,0,0,0,0,0,0,0,0,1.03_Accelerator Systems (AS),1.03.05_AS Beam Transfer Line (BTL),1.03.05.06_AS Beam Transfer Line Procurement and Fabrication,1.03.05.06.02_BSY and EBD Area - Procurement & Fab,AS_EBD_MANF_1600_Prepare Requisition (Specs/SOW/ETC) - Magnet Stands - BTL - EBD,METSTPT Tech Planning,Tech,SLAC,Labor
98639,1.03,1.03.05,1.03.05.06,1.03.05.06.02,1.03.05.06.02,BSY and EBD Area - Procurement & Fab,AS_EBD_MANF_1600,Prepare Requisition (Specs/SOW/ETC) - Magnet Stands - BTL - EBD,10.0,8.0,8.0,8.0,10-19-22,11-01-22,"MS_FY_2023_Q1: FS, AS_DMP_DE_1070: FS",AS_EBD_MANF_1610: FS,SLAC,0%,52169.52169_METS Mechanical Engineer,52169_METS Mechanical Engineer,Labor,0.0d,10.0,10.0,At Completion Units,10/4/2022,10/17/2022,0,0,0,0,0,0,0,0,0,0,1.03_Accelerator Systems (AS),1.03.05_AS Beam Transfer Line (BTL),1.03.05.06_AS Beam Transfer Line Procurement and Fabrication,1.03.05.06.02_BSY and EBD Area - Procurement & Fab,AS_EBD_MANF_1600_Prepare Requisition (Specs/SOW/ETC) - Magnet Stands - BTL - EBD,Mechanical,,SLAC,Labor
98640,1.03,1.03.05,1.03.05.06,1.03.05.06.02,1.03.05.06.02,BSY and EBD Area - Procurement & Fab,AS_EBD_MANF_1630,AWARD: Procurement - Magnet Stands - BTL - EBD,1.0,2884.0,2884.0,2884.0,10-17-23,10-17-23,AS_EBD_MANF_1620: FS,AS_EBD_MANF_1640: FS,SLAC,0%,AWARD_USE.AWARD - Use this AWARD,AWARD - Use this AWARD,Nonlabor,0.0d,1.0,1.0,At Completion Units,11/2/2022,11/2/2022,AWARD < $500K,0,0,0,0,0,0,0,0,0,1.03_Accelerator Systems (AS),1.03.05_AS Beam Transfer Line (BTL),1.03.05.06_AS Beam Transfer Line Procurement and Fabrication,1.03.05.06.02_BSY and EBD Area - Procurement & Fab,AS_EBD_MANF_1630_AWARD: Procurement - Magnet Stands - BTL - EBD,Material,,SLAC,M&S
98641,1.03,1.03.05,1.03.05.06,1.03.05.06.02,1.03.05.06.02,BSY and EBD Area - Procurement & Fab,AS_EBD_MANF_1610,RQN: Approval of Requisition - Magnet Stands - BTL - EBD,1.0,2884.0,2884.0,2884.0,10-02-23,10-02-23,"AS_EBD_MANF_1600: FS, AS_BTL_MANF_1000: FS",AS_EBD_MANF_1620: FS,SLAC,0%,REQ.Requisition,Requisition,Nonlabor,0.0d,1.0,1.0,At Completion Units,10/18/2022,10/18/2022,RQN,0,0,0,0,0,0,0,0,0,1.03_Accelerator Systems (AS),1.03.05_AS Beam Transfer Line (BTL),1.03.05.06_AS Beam Transfer Line Procurement and Fabrication,1.03.05.06.02_BSY and EBD Area - Procurement & Fab,AS_EBD_MANF_1610_RQN: Approval of Requisition - Magnet Stands - BTL - EBD,Material,,SLAC,M&S
98642,1.03,1.03.05,1.03.05.06,1.03.05.06.02,1.03.05.06.02,BSY and EBD Area - Procurement & Fab,AS_EBD_MANF_4000,M&S to support SLAC Effort - Class 4 Mag Bracket - BTL - EBD,10.0,89.0,89.0,89.0,10-02-23,10-13-23,AS_BTL_MANF_1000: FS,"AS_EBD_MANF_4020: FS, AS_BTL_MANF_1010: FF",SLAC,0%,SL_MSSC.SLAC M&S (<$500K) (gets G&A) (gets ESC),SLAC M&S (<$500K) (gets G&A) (gets ESC),Nonlabor,0.0d,10.0,10.0,At Completion Units,9/1/2022,9/15/2022,0,0,0,0,0,0,0,0,0,0,1.03_Accelerator Systems (AS),1.03.05_AS Beam Transfer Line (BTL),1.03.05.06_AS Beam Transfer Line Procurement and Fabrication,1.03.05.06.02_BSY and EBD Area - Procurement & Fab,AS_EBD_MANF_4000_M&S to support SLAC Effort - Class 4 Mag Bracket - BTL - EBD,Material,,SLAC,M&S
98643,1.03,1.03.05,1.03.05.06,1.03.05.06.02,1.03.05.06.02,BSY and EBD Area - Procurement & Fab,AS_EBD_MANF_4010,SLAC Effort - Class 4 Mag Bracket - BTL - EBD,10.0,16.0,16.0,16.0,01-03-23,01-17-23,"MS_FY_2023_Q2: FS, AS_DMP_DE_1070: FS","AS_EBD_MANF_4020: FS, AS_BTL_MANF_1010: FS",SLAC,0%,52198.52198_METSMANF (METSD Manufacturing),52198_METSMANF (METSD Manufacturing),Labor,0.0d,10.0,10.0,At Completion Units,1/3/2023,1/17/2023,0,0,0,0,0,0,0,0,0,0,1.03_Accelerator Systems (AS),1.03.05_AS Beam Transfer Line (BTL),1.03.05.06_AS Beam Transfer Line Procurement and Fabrication,1.03.05.06.02_BSY and EBD Area - Procurement & Fab,AS_EBD_MANF_4010_SLAC Effort - Class 4 Mag Bracket - BTL - EBD,Manufacturing,,SLAC,Labor
98644,1.03,1.03.05,1.03.05.06,1.03.05.06.02,1.03.05.06.02,BSY and EBD Area - Procurement & Fab,AS_EBD_MANF_4010,SLAC Effort - Class 4 Mag Bracket - BTL - EBD,10.0,4.0,4.0,4.0,01-03-23,01-17-23,"MS_FY_2023_Q2: FS, AS_DMP_DE_1070: FS","AS_EBD_MANF_4020: FS, AS_BTL_MANF_1010: FS",SLAC,0%,52190.52190_METSTP Tech Planning - Reinstated FY16,52190_METSTP Tech Planning - Reinstated FY16,Labor,0.0d,10.0,10.0,At Completion Units,1/3/2023,1/17/2023,0,0,0,0,0,0,0,0,0,0,1.03_Accelerator Systems (AS),1.03.05_AS Beam Transfer Line (BTL),1.03.05.06_AS Beam Transfer Line Procurement and Fabrication,1.03.05.06.02_BSY and EBD Area - Procurement & Fab,AS_EBD_MANF_4010_SLAC Effort - Class 4 Mag Bracket - BTL - EBD,METSTPT Tech Planning,Tech,SLAC,Labor
98645,1.03,1.03.05,1.03.05.06,1.03.05.06.02,1.03.05.06.02,BSY and EBD Area - Procurement & Fab,AS_EBD_MANF_4010,SLAC Effort - Class 4 Mag Bracket - BTL - EBD,10.0,9.0,9.0,9.0,01-03-23,01-17-23,"MS_FY_2023_Q2: FS, AS_DMP_DE_1070: FS","AS_EBD_MANF_4020: FS, AS_BTL_MANF_1010: FS",SLAC,0%,52169.52169_METS Mechanical Engineer,52169_METS Mechanical Engineer,Labor,0.0d,10.0,10.0,At Completion Units,1/3/2023,1/17/2023,0,0,0,0,0,0,0,0,0,0,1.03_Accelerator Systems (AS),1.03.05_AS Beam Transfer Line (BTL),1.03.05.06_AS Beam Transfer Line Procurement and Fabrication,1.03.05.06.02_BSY and EBD Area - Procurement & Fab,AS_EBD_MANF_4010_SLAC Effort - Class 4 Mag Bracket - BTL - EBD,Mechanical,,SLAC,Labor
98646,1.03,1.03.05,1.03.05.06,1.03.05.06.02,1.03.05.06.02,BSY and EBD Area - Procurement & Fab,AS_BSY_MANF_2050,RCV: Misc Mech Hardware - BTL - BSY,1.0,1000.0,1000.0,1000.0,12-15-23,12-15-23,AS_BSY_MANF_2040: FS,AS_BSY_MANF_2060: FS,SLAC,0%,SL_MSSC.SLAC M&S (<$500K) (gets G&A) (gets ESC),SLAC M&S (<$500K) (gets G&A) (gets ESC),Nonlabor,0.0d,1.0,1.0,At Completion Units,4/3/2023,4/3/2023,0,0,0,0,0,0,0,0,0,0,1.03_Accelerator Systems (AS),1.03.05_AS Beam Transfer Line (BTL),1.03.05.06_AS Beam Transfer Line Procurement and Fabrication,1.03.05.06.02_BSY and EBD Area - Procurement & Fab,AS_BSY_MANF_2050_RCV: Misc Mech Hardware - BTL - BSY,Material,,SLAC,M&S
98647,1.03,1.03.05,1.03.05.06,1.03.05.06.02,1.03.05.06.02,BSY and EBD Area - Procurement & Fab,AS_BSY_MANF_2000,Prepare Requisition (Specs/SOW/ETC) - Misc Mech Hardware - BTL - BSY,10.0,0.0,0.0,0.0,01-03-23,01-17-23,"MS_FY_2023_Q2: FS, AS_DMP_DE_1070: FS",AS_BSY_MANF_2010: FS,SLAC,0%,52198.52198_METSMANF (METSD Manufacturing),52198_METSMANF (METSD Manufacturing),Labor,0.0d,10.0,10.0,At Completion Units,1/3/2023,1/17/2023,0,0,0,0,0,0,0,0,0,0,1.03_Accelerator Systems (AS),1.03.05_AS Beam Transfer Line (BTL),1.03.05.06_AS Beam Transfer Line Procurement and Fabrication,1.03.05.06.02_BSY and EBD Area - Procurement & Fab,AS_BSY_MANF_2000_Prepare Requisition (Specs/SOW/ETC) - Misc Mech Hardware - BTL - BSY,Manufacturing,,SLAC,Labor
98648,1.03,1.03.05,1.03.05.06,1.03.05.06.02,1.03.05.06.02,BSY and EBD Area - Procurement & Fab,AS_BSY_MANF_2000,Prepare Requisition (Specs/SOW/ETC) - Misc Mech Hardware - BTL - BSY,10.0,4.0,4.0,4.0,01-03-23,01-17-23,"MS_FY_2023_Q2: FS, AS_DMP_DE_1070: FS",AS_BSY_MANF_2010: FS,SLAC,0%,52190.52190_METSTP Tech Planning - Reinstated FY16,52190_METSTP Tech Planning - Reinstated FY16,Labor,0.0d,10.0,10.0,At Completion Units,1/3/2023,1/17/2023,0,0,0,0,0,0,0,0,0,0,1.03_Accelerator Systems (AS),1.03.05_AS Beam Transfer Line (BTL),1.03.05.06_AS Beam Transfer Line Procurement and Fabrication,1.03.05.06.02_BSY and EBD Area - Procurement & Fab,AS_BSY_MANF_2000_Prepare Requisition (Specs/SOW/ETC) - Misc Mech Hardware - BTL - BSY,METSTPT Tech Planning,Tech,SLAC,Labor
98649,1.03,1.03.05,1.03.05.06,1.03.05.06.02,1.03.05.06.02,BSY and EBD Area - Procurement & Fab,AS_BSY_MANF_2000,Prepare Requisition (Specs/SOW/ETC) - Misc Mech Hardware - BTL - BSY,10.0,0.0,0.0,0.0,01-03-23,01-17-23,"MS_FY_2023_Q2: FS, AS_DMP_DE_1070: FS",AS_BSY_MANF_2010: FS,SLAC,0%,52169.52169_METS Mechanical Engineer,52169_METS Mechanical Engineer,Labor,0.0d,10.0,10.0,At Completion Units,1/3/2023,1/17/2023,0,0,0,0,0,0,0,0,0,0,1.03_Accelerator Systems (AS),1.03.05_AS Beam Transfer Line (BTL),1.03.05.06_AS Beam Transfer Line Procurement and Fabrication,1.03.05.06.02_BSY and EBD Area - Procurement & Fab,AS_BSY_MANF_2000_Prepare Requisition (Specs/SOW/ETC) - Misc Mech Hardware - BTL - BSY,Mechanical,,SLAC,Labor
98650,1.03,1.03.05,1.03.05.06,1.03.05.06.02,1.03.05.06.02,BSY and EBD Area - Procurement & Fab,AS_BSY_MANF_2030,AWARD: Procurement - Misc Mech Hardware - BTL - BSY,1.0,1000.0,1000.0,1000.0,10-17-23,10-17-23,AS_BSY_MANF_2020: FS,AS_BSY_MANF_2040: FS,SLAC,0%,AWARD_USE.AWARD - Use this AWARD,AWARD - Use this AWARD,Nonlabor,0.0d,1.0,1.0,At Completion Units,2/2/2023,2/2/2023,AWARD < $500K,0,0,0,0,0,0,0,0,0,1.03_Accelerator Systems (AS),1.03.05_AS Beam Transfer Line (BTL),1.03.05.06_AS Beam Transfer Line Procurement and Fabrication,1.03.05.06.02_BSY and EBD Area - Procurement & Fab,AS_BSY_MANF_2030_AWARD: Procurement - Misc Mech Hardware - BTL - BSY,Material,,SLAC,M&S
98651,1.03,1.03.05,1.03.05.06,1.03.05.06.02,1.03.05.06.02,BSY and EBD Area - Procurement & Fab,AS_BSY_MANF_2010,RQN: Approval of Requisition - Misc Mech Hardware - BTL - BSY,1.0,1000.0,1000.0,1000.0,10-02-23,10-02-23,"AS_BSY_MANF_2000: FS, AS_BTL_MANF_1000: FS",AS_BSY_MANF_2020: FS,SLAC,0%,REQ.Requisition,Requisition,Nonlabor,0.0d,1.0,1.0,At Completion Units,1/18/2023,1/18/2023,RQN,0,0,0,0,0,0,0,0,0,1.03_Accelerator Systems (AS),1.03.05_AS Beam Transfer Line (BTL),1.03.05.06_AS Beam Transfer Line Procurement and Fabrication,1.03.05.06.02_BSY and EBD Area - Procurement & Fab,AS_BSY_MANF_2010_RQN: Approval of Requisition - Misc Mech Hardware - BTL - BSY,Material,,SLAC,M&S
98652,1.03,1.03.05,1.03.05.06,1.03.05.06.02,1.03.05.06.02,BSY and EBD Area - Procurement & Fab,AS_BSY_MANF_1850,RCV: Goods/Services - Misc Vacuum Hardware - BTL - BSY,1.0,800.0,800.0,800.0,12-15-23,12-15-23,AS_BSY_MANF_1840: FS,AS_BSY_MANF_1860: FS,SLAC,0%,SL_MSSC.SLAC M&S (<$500K) (gets G&A) (gets ESC),SLAC M&S (<$500K) (gets G&A) (gets ESC),Nonlabor,0.0d,1.0,1.0,At Completion Units,4/3/2023,4/3/2023,0,0,0,0,0,0,0,0,0,0,1.03_Accelerator Systems (AS),1.03.05_AS Beam Transfer Line (BTL),1.03.05.06_AS Beam Transfer Line Procurement and Fabrication,1.03.05.06.02_BSY and EBD Area - Procurement & Fab,AS_BSY_MANF_1850_RCV: Goods/Services - Misc Vacuum Hardware - BTL - BSY,Material,,SLAC,M&S
98653,1.03,1.03.05,1.03.05.06,1.03.05.06.02,1.03.05.06.02,BSY and EBD Area - Procurement & Fab,AS_BSY_MANF_1800,Prepare Requisition (Specs/SOW/ETC) - Misc Vacuum Hardware - BTL - BSY,10.0,0.0,0.0,0.0,01-03-23,01-17-23,"MS_FY_2023_Q2: FS, AS_DMP_DE_1070: FS",AS_BSY_MANF_1810: FS,SLAC,0%,52198.52198_METSMANF (METSD Manufacturing),52198_METSMANF (METSD Manufacturing),Labor,0.0d,10.0,10.0,At Completion Units,1/3/2023,1/17/2023,0,0,0,0,0,0,0,0,0,0,1.03_Accelerator Systems (AS),1.03.05_AS Beam Transfer Line (BTL),1.03.05.06_AS Beam Transfer Line Procurement and Fabrication,1.03.05.06.02_BSY and EBD Area - Procurement & Fab,AS_BSY_MANF_1800_Prepare Requisition (Specs/SOW/ETC) - Misc Vacuum Hardware - BTL - BSY,Manufacturing,,SLAC,Labor
98654,1.03,1.03.05,1.03.05.06,1.03.05.06.02,1.03.05.06.02,BSY and EBD Area - Procurement & Fab,AS_BSY_MANF_1800,Prepare Requisition (Specs/SOW/ETC) - Misc Vacuum Hardware - BTL - BSY,10.0,8.0,8.0,8.0,01-03-23,01-17-23,"MS_FY_2023_Q2: FS, AS_DMP_DE_1070: FS",AS_BSY_MANF_1810: FS,SLAC,0%,52190.52190_METSTP Tech Planning - Reinstated FY16,52190_METSTP Tech Planning - Reinstated FY16,Labor,0.0d,10.0,10.0,At Completion Units,1/3/2023,1/17/2023,0,0,0,0,0,0,0,0,0,0,1.03_Accelerator Systems (AS),1.03.05_AS Beam Transfer Line (BTL),1.03.05.06_AS Beam Transfer Line Procurement and Fabrication,1.03.05.06.02_BSY and EBD Area - Procurement & Fab,AS_BSY_MANF_1800_Prepare Requisition (Specs/SOW/ETC) - Misc Vacuum Hardware - BTL - BSY,METSTPT Tech Planning,Tech,SLAC,Labor
98655,1.03,1.03.05,1.03.05.06,1.03.05.06.02,1.03.05.06.02,BSY and EBD Area - Procurement & Fab,AS_BSY_MANF_1800,Prepare Requisition (Specs/SOW/ETC) - Misc Vacuum Hardware - BTL - BSY,10.0,0.0,0.0,0.0,01-03-23,01-17-23,"MS_FY_2023_Q2: FS, AS_DMP_DE_1070: FS",AS_BSY_MANF_1810: FS,SLAC,0%,52169.52169_METS Mechanical Engineer,52169_METS Mechanical Engineer,Labor,0.0d,10.0,10.0,At Completion Units,1/3/2023,1/17/2023,0,0,0,0,0,0,0,0,0,0,1.03_Accelerator Systems (AS),1.03.05_AS Beam Transfer Line (BTL),1.03.05.06_AS Beam Transfer Line Procurement and Fabrication,1.03.05.06.02_BSY and EBD Area - Procurement & Fab,AS_BSY_MANF_1800_Prepare Requisition (Specs/SOW/ETC) - Misc Vacuum Hardware - BTL - BSY,Mechanical,,SLAC,Labor
98656,1.03,1.03.05,1.03.05.06,1.03.05.06.02,1.03.05.06.02,BSY and EBD Area - Procurement & Fab,AS_BSY_MANF_1830,AWARD: Procurement - Misc Vacuum Hardware - BTL - BSY,1.0,800.0,800.0,800.0,10-17-23,10-17-23,AS_BSY_MANF_1820: FS,AS_BSY_MANF_1840: FS,SLAC,0%,AWARD_USE.AWARD - Use this AWARD,AWARD - Use this AWARD,Nonlabor,0.0d,1.0,1.0,At Completion Units,2/2/2023,2/2/2023,AWARD < $500K,0,0,0,0,0,0,0,0,0,1.03_Accelerator Systems (AS),1.03.05_AS Beam Transfer Line (BTL),1.03.05.06_AS Beam Transfer Line Procurement and Fabrication,1.03.05.06.02_BSY and EBD Area - Procurement & Fab,AS_BSY_MANF_1830_AWARD: Procurement - Misc Vacuum Hardware - BTL - BSY,Material,,SLAC,M&S
98657,1.03,1.03.05,1.03.05.06,1.03.05.06.02,1.03.05.06.02,BSY and EBD Area - Procurement & Fab,AS_BSY_MANF_1810,RQN: Approval of Requisition - Misc Vacuum Hardware - BTL - BSY,1.0,800.0,800.0,800.0,10-02-23,10-02-23,"AS_BSY_MANF_1800: FS, AS_BTL_MANF_1000: FS",AS_BSY_MANF_1820: FS,SLAC,0%,REQ.Requisition,Requisition,Nonlabor,0.0d,1.0,1.0,At Completion Units,1/18/2023,1/18/2023,RQN,0,0,0,0,0,0,0,0,0,1.03_Accelerator Systems (AS),1.03.05_AS Beam Transfer Line (BTL),1.03.05.06_AS Beam Transfer Line Procurement and Fabrication,1.03.05.06.02_BSY and EBD Area - Procurement & Fab,AS_BSY_MANF_1810_RQN: Approval of Requisition - Misc Vacuum Hardware - BTL - BSY,Material,,SLAC,M&S
98658,1.03,1.03.05,1.03.05.06,1.03.05.06.02,1.03.05.06.02,BSY and EBD Area - Procurement & Fab,AS_BSY_MANF_1660,RCV: Interface Vacuum Drift Tubes & Bellows - BTL - BSY,1.0,2000.0,2000.0,2000.0,03-13-24,03-13-24,AS_BSY_MANF_1650: FS,AS_BSY_MANF_1670: FS,SLAC,0%,SL_MSSC.SLAC M&S (<$500K) (gets G&A) (gets ESC),SLAC M&S (<$500K) (gets G&A) (gets ESC),Nonlabor,0.0d,1.0,1.0,At Completion Units,3/29/2023,3/29/2023,0,0,0,0,0,0,0,0,0,0,1.03_Accelerator Systems (AS),1.03.05_AS Beam Transfer Line (BTL),1.03.05.06_AS Beam Transfer Line Procurement and Fabrication,1.03.05.06.02_BSY and EBD Area - Procurement & Fab,AS_BSY_MANF_1660_RCV: Interface Vacuum Drift Tubes & Bellows - BTL - BSY,Material,,SLAC,M&S
98659,1.03,1.03.05,1.03.05.06,1.03.05.06.02,1.03.05.06.02,BSY and EBD Area - Procurement & Fab,AS_BSY_MANF_1600,Prepare Requisition (Specs/SOW/ETC) - Interface Vacuum Drift Tubes & Bellows - BTL - BSY,10.0,0.0,0.0,0.0,10-19-22,11-01-22,"MS_FY_2023_Q1: FS, AS_DMP_DE_1070: FS",AS_BSY_MANF_1610: FS,SLAC,0%,52198.52198_METSMANF (METSD Manufacturing),52198_METSMANF (METSD Manufacturing),Labor,0.0d,10.0,10.0,At Completion Units,10/4/2022,10/17/2022,0,0,0,0,0,0,0,0,0,0,1.03_Accelerator Systems (AS),1.03.05_AS Beam Transfer Line (BTL),1.03.05.06_AS Beam Transfer Line Procurement and Fabrication,1.03.05.06.02_BSY and EBD Area - Procurement & Fab,AS_BSY_MANF_1600_Prepare Requisition (Specs/SOW/ETC) - Interface Vacuum Drift Tubes & Bellows - BTL - BSY,Manufacturing,,SLAC,Labor
98660,1.03,1.03.05,1.03.05.06,1.03.05.06.02,1.03.05.06.02,BSY and EBD Area - Procurement & Fab,AS_BSY_MANF_1600,Prepare Requisition (Specs/SOW/ETC) - Interface Vacuum Drift Tubes & Bellows - BTL - BSY,10.0,8.0,8.0,8.0,10-19-22,11-01-22,"MS_FY_2023_Q1: FS, AS_DMP_DE_1070: FS",AS_BSY_MANF_1610: FS,SLAC,0%,52190.52190_METSTP Tech Planning - Reinstated FY16,52190_METSTP Tech Planning - Reinstated FY16,Labor,0.0d,10.0,10.0,At Completion Units,10/4/2022,10/17/2022,0,0,0,0,0,0,0,0,0,0,1.03_Accelerator Systems (AS),1.03.05_AS Beam Transfer Line (BTL),1.03.05.06_AS Beam Transfer Line Procurement and Fabrication,1.03.05.06.02_BSY and EBD Area - Procurement & Fab,AS_BSY_MANF_1600_Prepare Requisition (Specs/SOW/ETC) - Interface Vacuum Drift Tubes & Bellows - BTL - BSY,METSTPT Tech Planning,Tech,SLAC,Labor
98661,1.03,1.03.05,1.03.05.06,1.03.05.06.02,1.03.05.06.02,BSY and EBD Area - Procurement & Fab,AS_BSY_MANF_1600,Prepare Requisition (Specs/SOW/ETC) - Interface Vacuum Drift Tubes & Bellows - BTL - BSY,10.0,0.0,0.0,0.0,10-19-22,11-01-22,"MS_FY_2023_Q1: FS, AS_DMP_DE_1070: FS",AS_BSY_MANF_1610: FS,SLAC,0%,52169.52169_METS Mechanical Engineer,52169_METS Mechanical Engineer,Labor,0.0d,10.0,10.0,At Completion Units,10/4/2022,10/17/2022,0,0,0,0,0,0,0,0,0,0,1.03_Accelerator Systems (AS),1.03.05_AS Beam Transfer Line (BTL),1.03.05.06_AS Beam Transfer Line Procurement and Fabrication,1.03.05.06.02_BSY and EBD Area - Procurement & Fab,AS_BSY_MANF_1600_Prepare Requisition (Specs/SOW/ETC) - Interface Vacuum Drift Tubes & Bellows - BTL - BSY,Mechanical,,SLAC,Labor
98662,1.03,1.03.05,1.03.05.06,1.03.05.06.02,1.03.05.06.02,BSY and EBD Area - Procurement & Fab,AS_BSY_MANF_1630,AWARD: Procurement - Interface Vacuum Drift Tubes & Bellows - BTL - BSY,1.0,2000.0,2000.0,2000.0,10-17-23,10-17-23,AS_BSY_MANF_1620: FS,AS_BSY_MANF_1640: FS,SLAC,0%,AWARD_USE.AWARD - Use this AWARD,AWARD - Use this AWARD,Nonlabor,0.0d,1.0,1.0,At Completion Units,11/2/2022,11/2/2022,AWARD < $500K,0,0,0,0,0,0,0,0,0,1.03_Accelerator Systems (AS),1.03.05_AS Beam Transfer Line (BTL),1.03.05.06_AS Beam Transfer Line Procurement and Fabrication,1.03.05.06.02_BSY and EBD Area - Procurement & Fab,AS_BSY_MANF_1630_AWARD: Procurement - Interface Vacuum Drift Tubes & Bellows - BTL - BSY,Material,,SLAC,M&S
98663,1.03,1.03.05,1.03.05.06,1.03.05.06.02,1.03.05.06.02,BSY and EBD Area - Procurement & Fab,AS_BSY_MANF_1610,RQN: Approval of Requisition - Interface Vacuum Drift Tubes & Bellows - BTL - BSY,1.0,2000.0,2000.0,2000.0,10-02-23,10-02-23,"AS_BSY_MANF_1600: FS, AS_BTL_MANF_1000: FS",AS_BSY_MANF_1620: FS,SLAC,0%,REQ.Requisition,Requisition,Nonlabor,0.0d,1.0,1.0,At Completion Units,10/18/2022,10/18/2022,RQN,0,0,0,0,0,0,0,0,0,1.03_Accelerator Systems (AS),1.03.05_AS Beam Transfer Line (BTL),1.03.05.06_AS Beam Transfer Line Procurement and Fabrication,1.03.05.06.02_BSY and EBD Area - Procurement & Fab,AS_BSY_MANF_1610_RQN: Approval of Requisition - Interface Vacuum Drift Tubes & Bellows - BTL - BSY,Material,,SLAC,M&S
98664,1.03,1.03.05,1.03.05.06,1.03.05.06.02,1.03.05.06.02,BSY and EBD Area - Procurement & Fab,AS_BSY_MANF_1460,RCV: Magnet Stands - BTL - BSY,1.0,1442.0,1442.0,1442.0,02-13-24,02-13-24,AS_BSY_MANF_1450: FS,AS_BSY_MANF_1470: FS,SLAC,0%,SL_MSSC.SLAC M&S (<$500K) (gets G&A) (gets ESC),SLAC M&S (<$500K) (gets G&A) (gets ESC),Nonlabor,0.0d,1.0,1.0,At Completion Units,3/1/2023,3/1/2023,0,0,0,0,0,0,0,0,0,0,1.03_Accelerator Systems (AS),1.03.05_AS Beam Transfer Line (BTL),1.03.05.06_AS Beam Transfer Line Procurement and Fabrication,1.03.05.06.02_BSY and EBD Area - Procurement & Fab,AS_BSY_MANF_1460_RCV: Magnet Stands - BTL - BSY,Material,,SLAC,M&S
98665,1.03,1.03.05,1.03.05.06,1.03.05.06.02,1.03.05.06.02,BSY and EBD Area - Procurement & Fab,AS_BSY_MANF_1400,Prepare Requisition (Specs/SOW/ETC) - Magnet Stands - BTL - BSY,10.0,0.0,0.0,0.0,10-19-22,11-01-22,"MS_FY_2023_Q1: FS, AS_DMP_DE_1070: FS",AS_BSY_MANF_1410: FS,SLAC,0%,52198.52198_METSMANF (METSD Manufacturing),52198_METSMANF (METSD Manufacturing),Labor,0.0d,10.0,10.0,At Completion Units,10/4/2022,10/17/2022,0,0,0,0,0,0,0,0,0,0,1.03_Accelerator Systems (AS),1.03.05_AS Beam Transfer Line (BTL),1.03.05.06_AS Beam Transfer Line Procurement and Fabrication,1.03.05.06.02_BSY and EBD Area - Procurement & Fab,AS_BSY_MANF_1400_Prepare Requisition (Specs/SOW/ETC) - Magnet Stands - BTL - BSY,Manufacturing,,SLAC,Labor
98666,1.03,1.03.05,1.03.05.06,1.03.05.06.02,1.03.05.06.02,BSY and EBD Area - Procurement & Fab,AS_BSY_MANF_1400,Prepare Requisition (Specs/SOW/ETC) - Magnet Stands - BTL - BSY,10.0,8.0,8.0,8.0,10-19-22,11-01-22,"MS_FY_2023_Q1: FS, AS_DMP_DE_1070: FS",AS_BSY_MANF_1410: FS,SLAC,0%,52190.52190_METSTP Tech Planning - Reinstated FY16,52190_METSTP Tech Planning - Reinstated FY16,Labor,0.0d,10.0,10.0,At Completion Units,10/4/2022,10/17/2022,0,0,0,0,0,0,0,0,0,0,1.03_Accelerator Systems (AS),1.03.05_AS Beam Transfer Line (BTL),1.03.05.06_AS Beam Transfer Line Procurement and Fabrication,1.03.05.06.02_BSY and EBD Area - Procurement & Fab,AS_BSY_MANF_1400_Prepare Requisition (Specs/SOW/ETC) - Magnet Stands - BTL - BSY,METSTPT Tech Planning,Tech,SLAC,Labor
98667,1.03,1.03.05,1.03.05.06,1.03.05.06.02,1.03.05.06.02,BSY and EBD Area - Procurement & Fab,AS_BSY_MANF_1400,Prepare Requisition (Specs/SOW/ETC) - Magnet Stands - BTL - BSY,10.0,8.0,8.0,8.0,10-19-22,11-01-22,"MS_FY_2023_Q1: FS, AS_DMP_DE_1070: FS",AS_BSY_MANF_1410: FS,SLAC,0%,52169.52169_METS Mechanical Engineer,52169_METS Mechanical Engineer,Labor,0.0d,10.0,10.0,At Completion Units,10/4/2022,10/17/2022,0,0,0,0,0,0,0,0,0,0,1.03_Accelerator Systems (AS),1.03.05_AS Beam Transfer Line (BTL),1.03.05.06_AS Beam Transfer Line Procurement and Fabrication,1.03.05.06.02_BSY and EBD Area - Procurement & Fab,AS_BSY_MANF_1400_Prepare Requisition (Specs/SOW/ETC) - Magnet Stands - BTL - BSY,Mechanical,,SLAC,Labor
98668,1.03,1.03.05,1.03.05.06,1.03.05.06.02,1.03.05.06.02,BSY and EBD Area - Procurement & Fab,AS_BSY_MANF_1430,AWARD: Procurement - Magnet Stands - BTL - BSY,1.0,1442.0,1442.0,1442.0,10-17-23,10-17-23,AS_BSY_MANF_1420: FS,AS_BSY_MANF_1440: FS,SLAC,0%,AWARD_USE.AWARD - Use this AWARD,AWARD - Use this AWARD,Nonlabor,0.0d,1.0,1.0,At Completion Units,11/2/2022,11/2/2022,AWARD < $500K,0,0,0,0,0,0,0,0,0,1.03_Accelerator Systems (AS),1.03.05_AS Beam Transfer Line (BTL),1.03.05.06_AS Beam Transfer Line Procurement and Fabrication,1.03.05.06.02_BSY and EBD Area - Procurement & Fab,AS_BSY_MANF_1430_AWARD: Procurement - Magnet Stands - BTL - BSY,Material,,SLAC,M&S
98669,1.03,1.03.05,1.03.05.06,1.03.05.06.02,1.03.05.06.02,BSY and EBD Area - Procurement & Fab,AS_BSY_MANF_1410,RQN: Approval of Requisition - Magnet Stands - BTL - BSY,1.0,1442.0,1442.0,1442.0,10-02-23,10-02-23,"AS_BSY_MANF_1400: FS, AS_BTL_MANF_1000: FS",AS_BSY_MANF_1420: FS,SLAC,0%,REQ.Requisition,Requisition,Nonlabor,0.0d,1.0,1.0,At Completion Units,10/18/2022,10/18/2022,RQN,0,0,0,0,0,0,0,0,0,1.03_Accelerator Systems (AS),1.03.05_AS Beam Transfer Line (BTL),1.03.05.06_AS Beam Transfer Line Procurement and Fabrication,1.03.05.06.02_BSY and EBD Area - Procurement & Fab,AS_BSY_MANF_1410_RQN: Approval of Requisition - Magnet Stands - BTL - BSY,Material,,SLAC,M&S
98670,1.03,1.03.05,1.03.05.06,1.03.05.06.02,1.03.05.06.02,BSY and EBD Area - Procurement & Fab,AS_BSY_MANF_4000,M&S to support SLAC Effort - Class 4 Mag Bracket - BTL - BSY,10.0,89.0,89.0,89.0,10-02-23,10-13-23,AS_BTL_MANF_1000: FS,"AS_BTL_MANF_1010: FF, AS_BSY_MANF_4020: FS",SLAC,0%,SL_MSSC.SLAC M&S (<$500K) (gets G&A) (gets ESC),SLAC M&S (<$500K) (gets G&A) (gets ESC),Nonlabor,0.0d,10.0,10.0,At Completion Units,9/1/2022,9/15/2022,0,0,0,0,0,0,0,0,0,0,1.03_Accelerator Systems (AS),1.03.05_AS Beam Transfer Line (BTL),1.03.05.06_AS Beam Transfer Line Procurement and Fabrication,1.03.05.06.02_BSY and EBD Area - Procurement & Fab,AS_BSY_MANF_4000_M&S to support SLAC Effort - Class 4 Mag Bracket - BTL - BSY,Material,,SLAC,M&S
98671,1.03,1.03.05,1.03.05.06,1.03.05.06.02,1.03.05.06.02,BSY and EBD Area - Procurement & Fab,AS_BSY_MANF_4010,SLAC Effort - Class 4 Mag Bracket - BTL - BSY,10.0,9.0,9.0,9.0,01-03-23,01-17-23,"MS_FY_2023_Q2: FS, AS_DMP_DE_1070: FS","AS_BTL_MANF_1010: FS, AS_BSY_MANF_4020: FS",SLAC,0%,52198.52198_METSMANF (METSD Manufacturing),52198_METSMANF (METSD Manufacturing),Labor,0.0d,10.0,10.0,At Completion Units,1/3/2023,1/17/2023,0,0,0,0,0,0,0,0,0,0,1.03_Accelerator Systems (AS),1.03.05_AS Beam Transfer Line (BTL),1.03.05.06_AS Beam Transfer Line Procurement and Fabrication,1.03.05.06.02_BSY and EBD Area - Procurement & Fab,AS_BSY_MANF_4010_SLAC Effort - Class 4 Mag Bracket - BTL - BSY,Manufacturing,,SLAC,Labor
98672,1.03,1.03.05,1.03.05.06,1.03.05.06.02,1.03.05.06.02,BSY and EBD Area - Procurement & Fab,AS_BSY_MANF_4010,SLAC Effort - Class 4 Mag Bracket - BTL - BSY,10.0,4.0,4.0,4.0,01-03-23,01-17-23,"MS_FY_2023_Q2: FS, AS_DMP_DE_1070: FS","AS_BTL_MANF_1010: FS, AS_BSY_MANF_4020: FS",SLAC,0%,52190.52190_METSTP Tech Planning - Reinstated FY16,52190_METSTP Tech Planning - Reinstated FY16,Labor,0.0d,10.0,10.0,At Completion Units,1/3/2023,1/17/2023,0,0,0,0,0,0,0,0,0,0,1.03_Accelerator Systems (AS),1.03.05_AS Beam Transfer Line (BTL),1.03.05.06_AS Beam Transfer Line Procurement and Fabrication,1.03.05.06.02_BSY and EBD Area - Procurement & Fab,AS_BSY_MANF_4010_SLAC Effort - Class 4 Mag Bracket - BTL - BSY,METSTPT Tech Planning,Tech,SLAC,Labor
98673,1.03,1.03.05,1.03.05.06,1.03.05.06.02,1.03.05.06.02,BSY and EBD Area - Procurement & Fab,AS_BSY_MANF_4010,SLAC Effort - Class 4 Mag Bracket - BTL - BSY,10.0,16.0,16.0,16.0,01-03-23,01-17-23,"MS_FY_2023_Q2: FS, AS_DMP_DE_1070: FS","AS_BTL_MANF_1010: FS, AS_BSY_MANF_4020: FS",SLAC,0%,52169.52169_METS Mechanical Engineer,52169_METS Mechanical Engineer,Labor,0.0d,10.0,10.0,At Completion Units,1/3/2023,1/17/2023,0,0,0,0,0,0,0,0,0,0,1.03_Accelerator Systems (AS),1.03.05_AS Beam Transfer Line (BTL),1.03.05.06_AS Beam Transfer Line Procurement and Fabrication,1.03.05.06.02_BSY and EBD Area - Procurement & Fab,AS_BSY_MANF_4010_SLAC Effort - Class 4 Mag Bracket - BTL - BSY,Mechanical,,SLAC,Labor
98674,1.03,1.03.05,1.03.05.06,1.03.05.06.02,1.03.05.06.02,BSY and EBD Area - Procurement & Fab,AS_BSY_MANF_5000,M&S to support SLAC Effort - Class 5 Mag Bracket - BTL - BSY,10.0,89.0,89.0,89.0,10-02-23,10-13-23,AS_BTL_MANF_1000: FS,"AS_BTL_MANF_1010: FF, AS_BSY_MANF_5020: FS",SLAC,0%,SL_MSSC.SLAC M&S (<$500K) (gets G&A) (gets ESC),SLAC M&S (<$500K) (gets G&A) (gets ESC),Nonlabor,0.0d,10.0,10.0,At Completion Units,9/1/2022,9/15/2022,0,0,0,0,0,0,0,0,0,0,1.03_Accelerator Systems (AS),1.03.05_AS Beam Transfer Line (BTL),1.03.05.06_AS Beam Transfer Line Procurement and Fabrication,1.03.05.06.02_BSY and EBD Area - Procurement & Fab,AS_BSY_MANF_5000_M&S to support SLAC Effort - Class 5 Mag Bracket - BTL - BSY,Material,,SLAC,M&S
98675,1.03,1.03.05,1.03.05.06,1.03.05.06.02,1.03.05.06.02,BSY and EBD Area - Procurement & Fab,AS_BSY_MANF_5010,SLAC Effort - Class 5 Mag Bracket - BTL - BSY,10.0,9.0,9.0,9.0,01-03-23,01-17-23,"MS_FY_2023_Q2: FS, AS_DMP_DE_1070: FS","AS_BTL_MANF_1010: FS, AS_BSY_MANF_5020: FS",SLAC,0%,52198.52198_METSMANF (METSD Manufacturing),52198_METSMANF (METSD Manufacturing),Labor,0.0d,10.0,10.0,At Completion Units,1/3/2023,1/17/2023,0,0,0,0,0,0,0,0,0,0,1.03_Accelerator Systems (AS),1.03.05_AS Beam Transfer Line (BTL),1.03.05.06_AS Beam Transfer Line Procurement and Fabrication,1.03.05.06.02_BSY and EBD Area - Procurement & Fab,AS_BSY_MANF_5010_SLAC Effort - Class 5 Mag Bracket - BTL - BSY,Manufacturing,,SLAC,Labor
98676,1.03,1.03.05,1.03.05.06,1.03.05.06.02,1.03.05.06.02,BSY and EBD Area - Procurement & Fab,AS_BSY_MANF_5010,SLAC Effort - Class 5 Mag Bracket - BTL - BSY,10.0,4.0,4.0,4.0,01-03-23,01-17-23,"MS_FY_2023_Q2: FS, AS_DMP_DE_1070: FS","AS_BTL_MANF_1010: FS, AS_BSY_MANF_5020: FS",SLAC,0%,52190.52190_METSTP Tech Planning - Reinstated FY16,52190_METSTP Tech Planning - Reinstated FY16,Labor,0.0d,10.0,10.0,At Completion Units,1/3/2023,1/17/2023,0,0,0,0,0,0,0,0,0,0,1.03_Accelerator Systems (AS),1.03.05_AS Beam Transfer Line (BTL),1.03.05.06_AS Beam Transfer Line Procurement and Fabrication,1.03.05.06.02_BSY and EBD Area - Procurement & Fab,AS_BSY_MANF_5010_SLAC Effort - Class 5 Mag Bracket - BTL - BSY,METSTPT Tech Planning,Tech,SLAC,Labor
98677,1.03,1.03.05,1.03.05.06,1.03.05.06.02,1.03.05.06.02,BSY and EBD Area - Procurement & Fab,AS_BSY_MANF_5010,SLAC Effort - Class 5 Mag Bracket - BTL - BSY,10.0,16.0,16.0,16.0,01-03-23,01-17-23,"MS_FY_2023_Q2: FS, AS_DMP_DE_1070: FS","AS_BTL_MANF_1010: FS, AS_BSY_MANF_5020: FS",SLAC,0%,52169.52169_METS Mechanical Engineer,52169_METS Mechanical Engineer,Labor,0.0d,10.0,10.0,At Completion Units,1/3/2023,1/17/2023,0,0,0,0,0,0,0,0,0,0,1.03_Accelerator Systems (AS),1.03.05_AS Beam Transfer Line (BTL),1.03.05.06_AS Beam Transfer Line Procurement and Fabrication,1.03.05.06.02_BSY and EBD Area - Procurement & Fab,AS_BSY_MANF_5010_SLAC Effort - Class 5 Mag Bracket - BTL - BSY,Mechanical,,SLAC,Labor
98678,1.03,1.03.05,1.03.05.06,1.03.05.06.02,1.03.05.06.02,BSY and EBD Area - Procurement & Fab,AS_EBD_MANF_4020,Reburbish Class 4 magnets - BTL - EBD,40.0,28.0,28.0,28.0,10-16-23,12-12-23,"AS_EBD_MANF_4010: FS, AS_EBD_MANF_4000: FS",AS_EBD_INST_1020: FS,SLAC,0%,52198.52198_METSMANF (METSD Manufacturing),52198_METSMANF (METSD Manufacturing),Labor,0.0d,40.0,40.0,At Completion Units,1/18/2023,3/15/2023,0,0,0,0,0,0,0,0,0,0,1.03_Accelerator Systems (AS),1.03.05_AS Beam Transfer Line (BTL),1.03.05.06_AS Beam Transfer Line Procurement and Fabrication,1.03.05.06.02_BSY and EBD Area - Procurement & Fab,AS_EBD_MANF_4020_Reburbish Class 4 magnets - BTL - EBD,Manufacturing,,SLAC,Labor
98679,1.03,1.03.05,1.03.05.06,1.03.05.06.02,1.03.05.06.02,BSY and EBD Area - Procurement & Fab,AS_BSY_MANF_6000,Testing - Rastering Systems - BTL - BSY,40.0,24.0,24.0,24.0,03-14-24,05-08-24,AS_BSY_MANF_1260: FS,AS_BSY_MANF_6020: FS,SLAC,0%,52213.52213_EEDHW (Electronics & Engineering Div - HW Engr),52213_EEDHW (Electronics & Engineering Div - HW Engr),Labor,0.0d,40.0,40.0,At Completion Units,3/30/2023,5/24/2023,0,0,0,0,0,0,0,0,0,0,1.03_Accelerator Systems (AS),1.03.05_AS Beam Transfer Line (BTL),1.03.05.06_AS Beam Transfer Line Procurement and Fabrication,1.03.05.06.02_BSY and EBD Area - Procurement & Fab,AS_BSY_MANF_6000_Testing - Rastering Systems - BTL - BSY,Electrical,,SLAC,Labor
98680,1.03,1.03.05,1.03.05.06,1.03.05.06.02,1.03.05.06.02,BSY and EBD Area - Procurement & Fab,AS_BSY_MANF_4020,Refurbish Class 4 Magnet - BTL - BSY,20.0,16.0,16.0,16.0,01-02-24,01-30-24,"AS_BSY_MANF_2060: FS, AS_BSY_MANF_4010: FS, AS_BSY_MANF_4000: FS",AS_BSY_INST_1040: FS,SLAC,0%,52190.52190_METSTP Tech Planning - Reinstated FY16,52190_METSTP Tech Planning - Reinstated FY16,Labor,0.0d,20.0,20.0,At Completion Units,4/4/2023,5/1/2023,0,0,0,0,0,0,0,0,0,0,1.03_Accelerator Systems (AS),1.03.05_AS Beam Transfer Line (BTL),1.03.05.06_AS Beam Transfer Line Procurement and Fabrication,1.03.05.06.02_BSY and EBD Area - Procurement & Fab,AS_BSY_MANF_4020_Refurbish Class 4 Magnet - BTL - BSY,METSTPT Tech Planning,Tech,SLAC,Labor
98681,1.03,1.03.05,1.03.05.06,1.03.05.06.02,1.03.05.06.02,BSY and EBD Area - Procurement & Fab,AS_BSY_MANF_4020,Refurbish Class 4 Magnet - BTL - BSY,20.0,28.0,28.0,28.0,01-02-24,01-30-24,"AS_BSY_MANF_2060: FS, AS_BSY_MANF_4010: FS, AS_BSY_MANF_4000: FS",AS_BSY_INST_1040: FS,SLAC,0%,52198.52198_METSMANF (METSD Manufacturing),52198_METSMANF (METSD Manufacturing),Labor,0.0d,20.0,20.0,At Completion Units,4/4/2023,5/1/2023,0,0,0,0,0,0,0,0,0,0,1.03_Accelerator Systems (AS),1.03.05_AS Beam Transfer Line (BTL),1.03.05.06_AS Beam Transfer Line Procurement and Fabrication,1.03.05.06.02_BSY and EBD Area - Procurement & Fab,AS_BSY_MANF_4020_Refurbish Class 4 Magnet - BTL - BSY,Manufacturing,,SLAC,Labor
98682,1.03,1.03.05,1.03.05.06,1.03.05.06.02,1.03.05.06.02,BSY and EBD Area - Procurement & Fab,AS_BSY_MANF_5020,Refurbish Class 5 Magnet - BTL - BSY,20.0,16.0,16.0,16.0,01-02-24,01-30-24,"AS_BSY_MANF_2060: FS, AS_BSY_MANF_5010: FS, AS_BSY_MANF_5000: FS",AS_BSY_INST_1020: FS,SLAC,0%,52190.52190_METSTP Tech Planning - Reinstated FY16,52190_METSTP Tech Planning - Reinstated FY16,Labor,0.0d,20.0,20.0,At Completion Units,4/4/2023,5/1/2023,0,0,0,0,0,0,0,0,0,0,1.03_Accelerator Systems (AS),1.03.05_AS Beam Transfer Line (BTL),1.03.05.06_AS Beam Transfer Line Procurement and Fabrication,1.03.05.06.02_BSY and EBD Area - Procurement & Fab,AS_BSY_MANF_5020_Refurbish Class 5 Magnet - BTL - BSY,METSTPT Tech Planning,Tech,SLAC,Labor
98683,1.03,1.03.05,1.03.05.06,1.03.05.06.02,1.03.05.06.02,BSY and EBD Area - Procurement & Fab,AS_BSY_MANF_5020,Refurbish Class 5 Magnet - BTL - BSY,20.0,28.0,28.0,28.0,01-02-24,01-30-24,"AS_BSY_MANF_2060: FS, AS_BSY_MANF_5010: FS, AS_BSY_MANF_5000: FS",AS_BSY_INST_1020: FS,SLAC,0%,52198.52198_METSMANF (METSD Manufacturing),52198_METSMANF (METSD Manufacturing),Labor,0.0d,20.0,20.0,At Completion Units,4/4/2023,5/1/2023,0,0,0,0,0,0,0,0,0,0,1.03_Accelerator Systems (AS),1.03.05_AS Beam Transfer Line (BTL),1.03.05.06_AS Beam Transfer Line Procurement and Fabrication,1.03.05.06.02_BSY and EBD Area - Procurement & Fab,AS_BSY_MANF_5020_Refurbish Class 5 Magnet - BTL - BSY,Manufacturing,,SLAC,Labor
98684,1.03,1.03.05,1.03.05.06,1.03.05.06.02,1.03.05.06.02,BSY and EBD Area - Procurement & Fab,AS_EBD_MANF_1450,RCV: Class 5 Magnet - BTL - EBD,1.0,26226.0,26226.0,26226.0,02-13-24,02-13-24,AS_EBD_MANF_1440: FS,AS_EBD_MANF_1460: FS,SLAC,0%,SL_MSSC.SLAC M&S (<$500K) (gets G&A) (gets ESC),SLAC M&S (<$500K) (gets G&A) (gets ESC),Nonlabor,0.0d,1.0,1.0,At Completion Units,3/1/2023,3/1/2023,0,0,0,0,0,0,0,0,0,0,1.03_Accelerator Systems (AS),1.03.05_AS Beam Transfer Line (BTL),1.03.05.06_AS Beam Transfer Line Procurement and Fabrication,1.03.05.06.02_BSY and EBD Area - Procurement & Fab,AS_EBD_MANF_1450_RCV: Class 5 Magnet - BTL - EBD,Material,,SLAC,M&S
98685,1.03,1.03.05,1.03.05.06,1.03.05.06.02,1.03.05.06.02,BSY and EBD Area - Procurement & Fab,AS_EBD_MANF_1100,RCV: Vendor design - Rastering Magnets - BTL - RAS,1.0,21000.0,21000.0,21000.0,05-24-22,05-24-22,AS_EBD_MANF_1090: FS,AS_EBD_MANF_1110: FS,SLAC,0%,SL_MSSC.SLAC M&S (<$500K) (gets G&A) (gets ESC),SLAC M&S (<$500K) (gets G&A) (gets ESC),Nonlabor,0.0d,1.0,1.0,At Completion Units,6/1/2023,6/1/2023,0,0,0,0,0,0,0,0,0,0,1.03_Accelerator Systems (AS),1.03.05_AS Beam Transfer Line (BTL),1.03.05.06_AS Beam Transfer Line Procurement and Fabrication,1.03.05.06.02_BSY and EBD Area - Procurement & Fab,AS_EBD_MANF_1100_RCV: Vendor design - Rastering Magnets - BTL - RAS,Material,,SLAC,M&S
98686,1.03,1.03.05,1.03.05.06,1.03.05.06.02,1.03.05.06.02,BSY and EBD Area - Procurement & Fab,AS_EBD_MANF_1400,Prepare Requisition (Specs/SOW/ETC) - Class 5 Magnet - BTL - EBD,10.0,8.0,8.0,8.0,10-19-22,11-01-22,"MS_FY_2023_Q1: FS, AS_DMP_DE_1070: FS, AS_EBD_DE_1140: FS",AS_EBD_MANF_1410: FS,SLAC,0%,52169.52169_METS Mechanical Engineer,52169_METS Mechanical Engineer,Labor,0.0d,10.0,10.0,At Completion Units,10/4/2022,10/17/2022,0,0,0,0,0,0,0,0,0,0,1.03_Accelerator Systems (AS),1.03.05_AS Beam Transfer Line (BTL),1.03.05.06_AS Beam Transfer Line Procurement and Fabrication,1.03.05.06.02_BSY and EBD Area - Procurement & Fab,AS_EBD_MANF_1400_Prepare Requisition (Specs/SOW/ETC) - Class 5 Magnet - BTL - EBD,Mechanical,,SLAC,Labor
98687,1.03,1.03.05,1.03.05.06,1.03.05.06.02,1.03.05.06.02,BSY and EBD Area - Procurement & Fab,AS_EBD_MANF_1430,AWARD: Procurement - Class 5 Magnet - BTL - EBD,1.0,26226.0,26226.0,26226.0,10-17-23,10-17-23,AS_EBD_MANF_1420: FS,AS_EBD_MANF_1440: FS,SLAC,0%,AWARD_USE.AWARD - Use this AWARD,AWARD - Use this AWARD,Nonlabor,0.0d,1.0,1.0,At Completion Units,11/2/2022,11/2/2022,AWARD < $500K,0,0,0,0,0,0,0,0,0,1.03_Accelerator Systems (AS),1.03.05_AS Beam Transfer Line (BTL),1.03.05.06_AS Beam Transfer Line Procurement and Fabrication,1.03.05.06.02_BSY and EBD Area - Procurement & Fab,AS_EBD_MANF_1430_AWARD: Procurement - Class 5 Magnet - BTL - EBD,Material,,SLAC,M&S
98688,1.03,1.03.05,1.03.05.06,1.03.05.06.02,1.03.05.06.02,BSY and EBD Area - Procurement & Fab,AS_EBD_MANF_1410,RQN: Approval of Requisition - Class 5 Magnet - BTL - EBD,1.0,26226.0,26226.0,26226.0,10-02-23,10-02-23,"AS_EBD_MANF_1400: FS, AS_BTL_MANF_1000: FS",AS_EBD_MANF_1420: FS,SLAC,0%,REQ.Requisition,Requisition,Nonlabor,0.0d,1.0,1.0,At Completion Units,10/18/2022,10/18/2022,RQN,0,0,0,0,0,0,0,0,0,1.03_Accelerator Systems (AS),1.03.05_AS Beam Transfer Line (BTL),1.03.05.06_AS Beam Transfer Line Procurement and Fabrication,1.03.05.06.02_BSY and EBD Area - Procurement & Fab,AS_EBD_MANF_1410_RQN: Approval of Requisition - Class 5 Magnet - BTL - EBD,Material,,SLAC,M&S
98689,1.03,1.03.05,1.03.05.06,1.03.05.06.02,1.03.05.06.02,BSY and EBD Area - Procurement & Fab,AS_BSY_MANF_6000,Testing - Rastering Systems - BTL - BSY,40.0,120.0,120.0,120.0,03-14-24,05-08-24,AS_BSY_MANF_1260: FS,AS_BSY_MANF_6020: FS,SLAC,0%,52211.52211_EEDOPSE (Electronics & Engineering Div - Ops & PSE),52211_EEDOPSE (Electronics & Engineering Div - Ops & PSE),Labor,0.0d,40.0,40.0,At Completion Units,3/30/2023,5/24/2023,0,0,0,0,0,0,0,0,0,0,1.03_Accelerator Systems (AS),1.03.05_AS Beam Transfer Line (BTL),1.03.05.06_AS Beam Transfer Line Procurement and Fabrication,1.03.05.06.02_BSY and EBD Area - Procurement & Fab,AS_BSY_MANF_6000_Testing - Rastering Systems - BTL - BSY,Electrical,,SLAC,Labor
98690,1.03,1.03.05,1.03.05.06,1.03.05.06.02,1.03.05.06.02,BSY and EBD Area - Procurement & Fab,AS_BSY_MANF_6000,Testing - Rastering Systems - BTL - BSY,40.0,0.0,0.0,0.0,03-14-24,05-08-24,AS_BSY_MANF_1260: FS,AS_BSY_MANF_6020: FS,SLAC,0%,52198.52198_METSMANF (METSD Manufacturing),52198_METSMANF (METSD Manufacturing),Labor,0.0d,40.0,40.0,At Completion Units,3/30/2023,5/24/2023,0,0,0,0,0,0,0,0,0,0,1.03_Accelerator Systems (AS),1.03.05_AS Beam Transfer Line (BTL),1.03.05.06_AS Beam Transfer Line Procurement and Fabrication,1.03.05.06.02_BSY and EBD Area - Procurement & Fab,AS_BSY_MANF_6000_Testing - Rastering Systems - BTL - BSY,Manufacturing,,SLAC,Labor
98691,1.03,1.03.05,1.03.05.06,1.03.05.06.02,1.03.05.06.02,BSY and EBD Area - Procurement & Fab,AS_BSY_MANF_6000,Testing - Rastering Systems - BTL - BSY,40.0,32.0,32.0,32.0,03-14-24,05-08-24,AS_BSY_MANF_1260: FS,AS_BSY_MANF_6020: FS,SLAC,0%,52169.52169_METS Mechanical Engineer,52169_METS Mechanical Engineer,Labor,0.0d,40.0,40.0,At Completion Units,3/30/2023,5/24/2023,0,0,0,0,0,0,0,0,0,0,1.03_Accelerator Systems (AS),1.03.05_AS Beam Transfer Line (BTL),1.03.05.06_AS Beam Transfer Line Procurement and Fabrication,1.03.05.06.02_BSY and EBD Area - Procurement & Fab,AS_BSY_MANF_6000_Testing - Rastering Systems - BTL - BSY,Mechanical,,SLAC,Labor
98692,1.03,1.03.05,1.03.05.06,1.03.05.06.02,1.03.05.06.02,BSY and EBD Area - Procurement & Fab,AS_EBD_MANF_1080,AWARD: Release design option - Rastering Magnets - BTL – RAS,1.0,21000.0,21000.0,21000.0,03-28-22,03-28-22,AS_EBD_MANF_1070: FS,AS_EBD_MANF_1090: FS,SLAC,0%,AWARD_USE.AWARD - Use this AWARD,AWARD - Use this AWARD,Nonlabor,0.0d,1.0,1.0,At Completion Units,11/9/2022,11/9/2022,AWARD < $500K,0,0,0,0,0,0,0,0,0,1.03_Accelerator Systems (AS),1.03.05_AS Beam Transfer Line (BTL),1.03.05.06_AS Beam Transfer Line Procurement and Fabrication,1.03.05.06.02_BSY and EBD Area - Procurement & Fab,AS_EBD_MANF_1080_AWARD: Release design option - Rastering Magnets - BTL – RAS,Material,,SLAC,M&S
98693,1.03,1.03.05,1.03.05.06,1.03.05.06.02,1.03.05.06.02,BSY and EBD Area - Procurement & Fab,AS_EBD_MANF_1010,RQN: Approval of Requisition - Rastering Magnet - BTL - RAS,1.0,140000.0,140000.0,140000.0,01-25-22,01-25-22,AS_EBD_MANF_1000: FS,AS_EBD_MANF_1020: FS,SLAC,0%,REQ.Requisition,Requisition,Nonlabor,0.0d,1.0,1.0,At Completion Units,9/1/2022,9/1/2022,RQN,0,0,0,0,0,0,0,0,0,1.03_Accelerator Systems (AS),1.03.05_AS Beam Transfer Line (BTL),1.03.05.06_AS Beam Transfer Line Procurement and Fabrication,1.03.05.06.02_BSY and EBD Area - Procurement & Fab,AS_EBD_MANF_1010_RQN: Approval of Requisition - Rastering Magnet - BTL - RAS,Material,,SLAC,M&S
99332,1.03,1.03.05,1.03.05.20,1.03.05.20.01,1.03.05.20.01,Dogleg and Spreader Area Installation,AS_SPD_INST_1020,Install magnet and component stands - BTL - SPD,10.0,116.0,116.0,116.0,08-08-24,08-21-24,"AS_SPD_INST_1010: FS, AS_SPD_INST_1000: FS, AS_SPD_MANF_3660: FS, AS_SPD_MANF_2860: FS, AS_SPD_MANF_1860: FS, AS_SPD_INST_2040: SS","AS_SPD_INST_1030: FS, AS_SPD_INST_1060: FS 5.0d, AS_SPD_INST_1040: FS, AS_SPD_INST_1070: FS",SLAC,0%,52198.52198_METSMANF (METSD Manufacturing),52198_METSMANF (METSD Manufacturing),Labor,0.0d,10.0,10.0,At Completion Units,8/8/2024,8/21/2024,0,0,0,0,0,0,0,0,0,0,1.03_Accelerator Systems (AS),1.03.05_AS Beam Transfer Line (BTL),1.03.05.20_AS Beam Transfer Line Installation,1.03.05.20.01_Dogleg and Spreader Area Installation,AS_SPD_INST_1020_Install magnet and component stands - BTL - SPD,Manufacturing,,SLAC,Labor
99333,1.03,1.03.05,1.03.05.20,1.03.05.20.01,1.03.05.20.01,Dogleg and Spreader Area Installation,AS_SPD_INST_1020,Install magnet and component stands - BTL - SPD,10.0,20.0,20.0,20.0,08-08-24,08-21-24,"AS_SPD_INST_1010: FS, AS_SPD_INST_1000: FS, AS_SPD_MANF_3660: FS, AS_SPD_MANF_2860: FS, AS_SPD_MANF_1860: FS, AS_SPD_INST_2040: SS","AS_SPD_INST_1030: FS, AS_SPD_INST_1060: FS 5.0d, AS_SPD_INST_1040: FS, AS_SPD_INST_1070: FS",SLAC,0%,52169.52169_METS Mechanical Engineer,52169_METS Mechanical Engineer,Labor,0.0d,10.0,10.0,At Completion Units,8/8/2024,8/21/2024,0,0,0,0,0,0,0,0,0,0,1.03_Accelerator Systems (AS),1.03.05_AS Beam Transfer Line (BTL),1.03.05.20_AS Beam Transfer Line Installation,1.03.05.20.01_Dogleg and Spreader Area Installation,AS_SPD_INST_1020_Install magnet and component stands - BTL - SPD,Mechanical,,SLAC,Labor
99334,1.03,1.03.05,1.03.05.20,1.03.05.20.01,1.03.05.20.01,Dogleg and Spreader Area Installation,AS_DOG_INST_1110,Stage removed comp for storage - BTL - DOG,20.0,0.0,0.0,0.0,08-22-24,09-19-24,"AS_DOG_INST_1010: FS, AS_DOG_INST_1030: FS","AS_DOG_INST_1120: FS, AS_M4_3050: FS",SLAC,0%,52155.52155_Health Physics Technician III,52155_Health Physics Technician III,Labor,0.0d,20.0,20.0,At Completion Units,8/22/2024,9/19/2024,0,0,0,0,0,0,0,0,0,0,1.03_Accelerator Systems (AS),1.03.05_AS Beam Transfer Line (BTL),1.03.05.20_AS Beam Transfer Line Installation,1.03.05.20.01_Dogleg and Spreader Area Installation,AS_DOG_INST_1110_Stage removed comp for storage - BTL - DOG,Support System,Tech,SLAC,Labor
99335,1.03,1.03.05,1.03.05.20,1.03.05.20.01,1.03.05.20.01,Dogleg and Spreader Area Installation,AS_DOG_INST_1110,Stage removed comp for storage - BTL - DOG,20.0,0.0,0.0,0.0,08-22-24,09-19-24,"AS_DOG_INST_1010: FS, AS_DOG_INST_1030: FS","AS_DOG_INST_1120: FS, AS_M4_3050: FS",SLAC,0%,52169.52169_METS Mechanical Engineer,52169_METS Mechanical Engineer,Labor,0.0d,20.0,20.0,At Completion Units,8/22/2024,9/19/2024,0,0,0,0,0,0,0,0,0,0,1.03_Accelerator Systems (AS),1.03.05_AS Beam Transfer Line (BTL),1.03.05.20_AS Beam Transfer Line Installation,1.03.05.20.01_Dogleg and Spreader Area Installation,AS_DOG_INST_1110_Stage removed comp for storage - BTL - DOG,Mechanical,,SLAC,Labor
99336,1.03,1.03.05,1.03.05.20,1.03.05.20.01,1.03.05.20.01,Dogleg and Spreader Area Installation,AS_SPD_INST_2050,RCV: Install kicker magnet stands - BTL - SPD,1.0,86866.0,86866.0,86866.0,07-03-23,07-03-23,AS_SPD_INST_2040: FS,AS_SPD_INST_2060: FS,SLAC,0%,SL_MSSC.SLAC M&S (<$500K) (gets G&A) (gets ESC),SLAC M&S (<$500K) (gets G&A) (gets ESC),Nonlabor,0.0d,1.0,1.0,At Completion Units,7/3/2023,7/3/2023,0,0,0,0,0,0,0,0,0,0,1.03_Accelerator Systems (AS),1.03.05_AS Beam Transfer Line (BTL),1.03.05.20_AS Beam Transfer Line Installation,1.03.05.20.01_Dogleg and Spreader Area Installation,AS_SPD_INST_2050_RCV: Install kicker magnet stands - BTL - SPD,Material,,SLAC,M&S
99337,1.03,1.03.05,1.03.05.20,1.03.05.20.01,1.03.05.20.01,Dogleg and Spreader Area Installation,AS_SPD_INST_2000,Prepare Requisition (Specs/SOW/ETC) - Install kicker magnet stands - BTL - SPD,10.0,0.0,0.0,0.0,05-24-23,06-07-23,AS_BTL_INST_1030: FS,AS_SPD_INST_2010: FS,SLAC,0%,52213.52213_EEDHW (Electronics & Engineering Div - HW Engr),52213_EEDHW (Electronics & Engineering Div - HW Engr),Labor,0.0d,10.0,10.0,At Completion Units,5/24/2023,6/7/2023,0,0,0,0,0,0,0,0,0,0,1.03_Accelerator Systems (AS),1.03.05_AS Beam Transfer Line (BTL),1.03.05.20_AS Beam Transfer Line Installation,1.03.05.20.01_Dogleg and Spreader Area Installation,AS_SPD_INST_2000_Prepare Requisition (Specs/SOW/ETC) - Install kicker magnet stands - BTL - SPD,Electrical,,SLAC,Labor
99338,1.03,1.03.05,1.03.05.20,1.03.05.20.01,1.03.05.20.01,Dogleg and Spreader Area Installation,AS_SPD_INST_2000,Prepare Requisition (Specs/SOW/ETC) - Install kicker magnet stands - BTL - SPD,10.0,0.0,0.0,0.0,05-24-23,06-07-23,AS_BTL_INST_1030: FS,AS_SPD_INST_2010: FS,SLAC,0%,52169.52169_METS Mechanical Engineer,52169_METS Mechanical Engineer,Labor,0.0d,10.0,10.0,At Completion Units,5/24/2023,6/7/2023,0,0,0,0,0,0,0,0,0,0,1.03_Accelerator Systems (AS),1.03.05_AS Beam Transfer Line (BTL),1.03.05.20_AS Beam Transfer Line Installation,1.03.05.20.01_Dogleg and Spreader Area Installation,AS_SPD_INST_2000_Prepare Requisition (Specs/SOW/ETC) - Install kicker magnet stands - BTL - SPD,Mechanical,,SLAC,Labor
99339,1.03,1.03.05,1.03.05.20,1.03.05.20.01,1.03.05.20.01,Dogleg and Spreader Area Installation,AS_SPD_INST_2030,AWARD: Procurement - Install kicker magnet stands - BTL - SPD,1.0,86866.0,86866.0,86866.0,06-16-23,06-16-23,AS_SPD_INST_2020: FS,AS_SPD_INST_2040: FS,SLAC,0%,AWARD_USE.AWARD - Use this AWARD,AWARD - Use this AWARD,Nonlabor,0.0d,1.0,1.0,At Completion Units,6/16/2023,6/16/2023,AWARD < $500K,0,0,0,0,0,0,0,0,0,1.03_Accelerator Systems (AS),1.03.05_AS Beam Transfer Line (BTL),1.03.05.20_AS Beam Transfer Line Installation,1.03.05.20.01_Dogleg and Spreader Area Installation,AS_SPD_INST_2030_AWARD: Procurement - Install kicker magnet stands - BTL - SPD,Material,,SLAC,M&S
99340,1.03,1.03.05,1.03.05.20,1.03.05.20.01,1.03.05.20.01,Dogleg and Spreader Area Installation,AS_SPD_INST_2010,RQN: Approval of Requisition - Install kicker magnet stands - BTL - SPD,1.0,86866.0,86866.0,86866.0,06-08-23,06-08-23,AS_SPD_INST_2000: FS,AS_SPD_INST_2020: FS,SLAC,0%,REQ.Requisition,Requisition,Nonlabor,0.0d,1.0,1.0,At Completion Units,6/8/2023,6/8/2023,RQN,0,0,0,0,0,0,0,0,0,1.03_Accelerator Systems (AS),1.03.05_AS Beam Transfer Line (BTL),1.03.05.20_AS Beam Transfer Line Installation,1.03.05.20.01_Dogleg and Spreader Area Installation,AS_SPD_INST_2010_RQN: Approval of Requisition - Install kicker magnet stands - BTL - SPD,Material,,SLAC,M&S
99341,1.03,1.03.05,1.03.05.20,1.03.05.20.01,1.03.05.20.01,Dogleg and Spreader Area Installation,AS_DOG_INST_3100,RCV: Install new stands - BTL - DOG,1.0,103003.0,103003.0,103003.0,09-20-24,09-20-24,"AS_DOG_INST_1080: FS, AS_DOG_INST_3090: FS",AS_DOG_INST_3110: FS,SLAC,0%,SL_MSSC.SLAC M&S (<$500K) (gets G&A) (gets ESC),SLAC M&S (<$500K) (gets G&A) (gets ESC),Nonlabor,0.0d,1.0,1.0,At Completion Units,9/20/2024,9/20/2024,0,0,0,0,0,0,0,0,0,0,1.03_Accelerator Systems (AS),1.03.05_AS Beam Transfer Line (BTL),1.03.05.20_AS Beam Transfer Line Installation,1.03.05.20.01_Dogleg and Spreader Area Installation,AS_DOG_INST_3100_RCV: Install new stands - BTL - DOG,Material,,SLAC,M&S
99342,1.03,1.03.05,1.03.05.20,1.03.05.20.01,1.03.05.20.01,Dogleg and Spreader Area Installation,AS_DOG_INST_3080,AWARD: Procurement - Install new stands - BTL - DOG,1.0,103003.0,103003.0,103003.0,08-16-23,08-16-23,AS_DOG_INST_3070: FS,AS_DOG_INST_3090: FS,SLAC,0%,AWARD_USE.AWARD - Use this AWARD,AWARD - Use this AWARD,Nonlabor,0.0d,1.0,1.0,At Completion Units,8/16/2023,8/16/2023,AWARD < $500K,0,0,0,0,0,0,0,0,0,1.03_Accelerator Systems (AS),1.03.05_AS Beam Transfer Line (BTL),1.03.05.20_AS Beam Transfer Line Installation,1.03.05.20.01_Dogleg and Spreader Area Installation,AS_DOG_INST_3080_AWARD: Procurement - Install new stands - BTL - DOG,Material,,SLAC,M&S
99343,1.03,1.03.05,1.03.05.20,1.03.05.20.01,1.03.05.20.01,Dogleg and Spreader Area Installation,AS_DOG_INST_3010,RQN: Approval of Requisition - Install new stands - BTL - DOG,1.0,103003.0,103003.0,103003.0,06-08-23,06-08-23,AS_DOG_INST_3000: FS,AS_DOG_INST_3020: FS,SLAC,0%,REQ.Requisition,Requisition,Nonlabor,0.0d,1.0,1.0,At Completion Units,6/8/2023,6/8/2023,RQN,0,0,0,0,0,0,0,0,0,1.03_Accelerator Systems (AS),1.03.05_AS Beam Transfer Line (BTL),1.03.05.20_AS Beam Transfer Line Installation,1.03.05.20.01_Dogleg and Spreader Area Installation,AS_DOG_INST_3010_RQN: Approval of Requisition - Install new stands - BTL - DOG,Material,,SLAC,M&S
99344,1.03,1.03.05,1.03.05.20,1.03.05.20.01,1.03.05.20.01,Dogleg and Spreader Area Installation,AS_DOG_INST_2060,RCV: Vacuum hardware removal - BTL - DOG,1.0,1600.0,1600.0,1600.0,07-11-23,07-11-23,AS_DOG_INST_2050: FS,"AS_DOG_INST_2070: FS, AS_M4_3050: FS",SLAC,0%,SL_MSSC.SLAC M&S (<$500K) (gets G&A) (gets ESC),SLAC M&S (<$500K) (gets G&A) (gets ESC),Nonlabor,0.0d,1.0,1.0,At Completion Units,7/11/2023,7/11/2023,0,0,0,0,0,0,0,0,0,0,1.03_Accelerator Systems (AS),1.03.05_AS Beam Transfer Line (BTL),1.03.05.20_AS Beam Transfer Line Installation,1.03.05.20.01_Dogleg and Spreader Area Installation,AS_DOG_INST_2060_RCV: Vacuum hardware removal - BTL - DOG,Material,,SLAC,M&S
99345,1.03,1.03.05,1.03.05.20,1.03.05.20.01,1.03.05.20.01,Dogleg and Spreader Area Installation,AS_DOG_INST_2010,Prepare Requisition (Specs/SOW/ETC) - Vacuum hardware removal - BTL - DOG,10.0,0.0,0.0,0.0,05-24-23,06-07-23,AS_BTL_INST_1030: FS,AS_DOG_INST_2020: FS,SLAC,0%,52213.52213_EEDHW (Electronics & Engineering Div - HW Engr),52213_EEDHW (Electronics & Engineering Div - HW Engr),Labor,0.0d,10.0,10.0,At Completion Units,5/24/2023,6/7/2023,0,0,0,0,0,0,0,0,0,0,1.03_Accelerator Systems (AS),1.03.05_AS Beam Transfer Line (BTL),1.03.05.20_AS Beam Transfer Line Installation,1.03.05.20.01_Dogleg and Spreader Area Installation,AS_DOG_INST_2010_Prepare Requisition (Specs/SOW/ETC) - Vacuum hardware removal - BTL - DOG,Electrical,,SLAC,Labor
99346,1.03,1.03.05,1.03.05.20,1.03.05.20.01,1.03.05.20.01,Dogleg and Spreader Area Installation,AS_DOG_INST_2010,Prepare Requisition (Specs/SOW/ETC) - Vacuum hardware removal - BTL - DOG,10.0,0.0,0.0,0.0,05-24-23,06-07-23,AS_BTL_INST_1030: FS,AS_DOG_INST_2020: FS,SLAC,0%,52169.52169_METS Mechanical Engineer,52169_METS Mechanical Engineer,Labor,0.0d,10.0,10.0,At Completion Units,5/24/2023,6/7/2023,0,0,0,0,0,0,0,0,0,0,1.03_Accelerator Systems (AS),1.03.05_AS Beam Transfer Line (BTL),1.03.05.20_AS Beam Transfer Line Installation,1.03.05.20.01_Dogleg and Spreader Area Installation,AS_DOG_INST_2010_Prepare Requisition (Specs/SOW/ETC) - Vacuum hardware removal - BTL - DOG,Mechanical,,SLAC,Labor
99347,1.03,1.03.05,1.03.05.20,1.03.05.20.01,1.03.05.20.01,Dogleg and Spreader Area Installation,AS_DOG_INST_2040,AWARD: Procurement - Vacuum hardware removal - BTL - DOG,1.0,1600.0,1600.0,1600.0,06-16-23,06-16-23,AS_DOG_INST_2030: FS,AS_DOG_INST_2050: FS,SLAC,0%,AWARD_USE.AWARD - Use this AWARD,AWARD - Use this AWARD,Nonlabor,0.0d,1.0,1.0,At Completion Units,6/16/2023,6/16/2023,AWARD < $500K,0,0,0,0,0,0,0,0,0,1.03_Accelerator Systems (AS),1.03.05_AS Beam Transfer Line (BTL),1.03.05.20_AS Beam Transfer Line Installation,1.03.05.20.01_Dogleg and Spreader Area Installation,AS_DOG_INST_2040_AWARD: Procurement - Vacuum hardware removal - BTL - DOG,Material,,SLAC,M&S
99348,1.03,1.03.05,1.03.05.20,1.03.05.20.01,1.03.05.20.01,Dogleg and Spreader Area Installation,AS_DOG_INST_2020,RQN: Approval of Requisition - Vacuum hardware removal - BTL - DOG,1.0,1600.0,1600.0,1600.0,06-08-23,06-08-23,AS_DOG_INST_2010: FS,AS_DOG_INST_2030: FS,SLAC,0%,REQ.Requisition,Requisition,Nonlabor,0.0d,1.0,1.0,At Completion Units,6/8/2023,6/8/2023,RQN,0,0,0,0,0,0,0,0,0,1.03_Accelerator Systems (AS),1.03.05_AS Beam Transfer Line (BTL),1.03.05.20_AS Beam Transfer Line Installation,1.03.05.20.01_Dogleg and Spreader Area Installation,AS_DOG_INST_2020_RQN: Approval of Requisition - Vacuum hardware removal - BTL - DOG,Material,,SLAC,M&S
99349,1.03,1.03.05,1.03.05.20,1.03.05.20.01,1.03.05.20.01,Dogleg and Spreader Area Installation,AS_SPD_INST_1050,Install kicker load cooling hoses - BTL - SPD,10.0,16.0,16.0,16.0,09-06-24,09-19-24,"AS_SPD_INST_1030: FS, AS_SPD_INST_1040: FS, AS_SPD_MANF_2070: FS",AS_SPD_INST_1110: FS,SLAC,0%,52169.52169_METS Mechanical Engineer,52169_METS Mechanical Engineer,Labor,0.0d,10.0,10.0,At Completion Units,9/6/2024,9/19/2024,0,0,0,0,0,0,0,0,0,0,1.03_Accelerator Systems (AS),1.03.05_AS Beam Transfer Line (BTL),1.03.05.20_AS Beam Transfer Line Installation,1.03.05.20.01_Dogleg and Spreader Area Installation,AS_SPD_INST_1050_Install kicker load cooling hoses - BTL - SPD,Mechanical,,SLAC,Labor
99350,1.03,1.03.05,1.03.05.20,1.03.05.20.01,1.03.05.20.01,Dogleg and Spreader Area Installation,AS_SPD_INST_1050,Install kicker load cooling hoses - BTL - SPD,10.0,72.0,72.0,72.0,09-06-24,09-19-24,"AS_SPD_INST_1030: FS, AS_SPD_INST_1040: FS, AS_SPD_MANF_2070: FS",AS_SPD_INST_1110: FS,SLAC,0%,52198.52198_METSMANF (METSD Manufacturing),52198_METSMANF (METSD Manufacturing),Labor,0.0d,10.0,10.0,At Completion Units,9/6/2024,9/19/2024,0,0,0,0,0,0,0,0,0,0,1.03_Accelerator Systems (AS),1.03.05_AS Beam Transfer Line (BTL),1.03.05.20_AS Beam Transfer Line Installation,1.03.05.20.01_Dogleg and Spreader Area Installation,AS_SPD_INST_1050_Install kicker load cooling hoses - BTL - SPD,Manufacturing,,SLAC,Labor
99351,1.03,1.03.05,1.03.05.20,1.03.05.20.01,1.03.05.20.01,Dogleg and Spreader Area Installation,AS_SPD_INST_1110,Kicker magnet checkout w/ beam - BTL - SPD,6.0,96.0,96.0,96.0,09-26-24,10-03-24,"AS_SPD_INST_1030: FS, AS_SPD_INST_1040: FS, AS_SPD_INST_1050: FS, AS_SPD_INST_1090: FS",AS_SPD_INST_1120: FS,SLAC,0%,52211.52211_EEDOPSE (Electronics & Engineering Div - Ops & PSE),52211_EEDOPSE (Electronics & Engineering Div - Ops & PSE),Labor,0.0d,6.0,6.0,At Completion Units,9/20/2024,9/27/2024,0,0,0,0,0,0,0,0,0,0,1.03_Accelerator Systems (AS),1.03.05_AS Beam Transfer Line (BTL),1.03.05.20_AS Beam Transfer Line Installation,1.03.05.20.01_Dogleg and Spreader Area Installation,AS_SPD_INST_1110_Kicker magnet checkout w/ beam - BTL - SPD,Electrical,,SLAC,Labor
99352,1.03,1.03.05,1.03.05.20,1.03.05.20.01,1.03.05.20.01,Dogleg and Spreader Area Installation,AS_SPD_INST_1100,Installation Coordination - BTL - SPD,41.0,28.0,28.0,28.0,08-01-24,09-27-24,AS_M4_1030: FS,AS_M4_DTS2_1030: FS,SLAC,0%,52155.52155_Health Physics Technician III,52155_Health Physics Technician III,Labor,0.0d,41.0,41.0,At Completion Units,8/1/2024,9/27/2024,0,0,0,0,0,0,0,0,0,0,1.03_Accelerator Systems (AS),1.03.05_AS Beam Transfer Line (BTL),1.03.05.20_AS Beam Transfer Line Installation,1.03.05.20.01_Dogleg and Spreader Area Installation,AS_SPD_INST_1100_Installation Coordination - BTL - SPD,Support System,Tech,SLAC,Labor
99353,1.03,1.03.05,1.03.05.20,1.03.05.20.01,1.03.05.20.01,Dogleg and Spreader Area Installation,AS_SPD_INST_1100,Installation Coordination - BTL - SPD,41.0,140.0,140.0,140.0,08-01-24,09-27-24,AS_M4_1030: FS,AS_M4_DTS2_1030: FS,SLAC,0%,52169.52169_METS Mechanical Engineer,52169_METS Mechanical Engineer,Labor,0.0d,41.0,41.0,At Completion Units,8/1/2024,9/27/2024,0,0,0,0,0,0,0,0,0,0,1.03_Accelerator Systems (AS),1.03.05_AS Beam Transfer Line (BTL),1.03.05.20_AS Beam Transfer Line Installation,1.03.05.20.01_Dogleg and Spreader Area Installation,AS_SPD_INST_1100_Installation Coordination - BTL - SPD,Mechanical,,SLAC,Labor
99354,1.03,1.03.05,1.03.05.20,1.03.05.20.01,1.03.05.20.01,Dogleg and Spreader Area Installation,AS_SPD_INST_1090,Install new vacuum system - BTL - SPD,9.0,24.0,24.0,24.0,09-13-24,09-25-24,"AS_SPD_INST_1070: FS, AS_SPD_INST_1030: FS, AS_SPD_INST_1040: FS, AS_SPD_INST_1060: FS, AS_SPD_MANF_3060: FS, AS_SPD_MANF_3470: FS, AS_SPD_MANF_4070: FS",AS_SPD_INST_1110: FS,SLAC,0%,52190.52190_METSTP Tech Planning - Reinstated FY16,52190_METSTP Tech Planning - Reinstated FY16,Labor,0.0d,9.0,9.0,At Completion Units,9/6/2024,9/18/2024,0,0,0,0,0,0,0,0,0,0,1.03_Accelerator Systems (AS),1.03.05_AS Beam Transfer Line (BTL),1.03.05.20_AS Beam Transfer Line Installation,1.03.05.20.01_Dogleg and Spreader Area Installation,AS_SPD_INST_1090_Install new vacuum system - BTL - SPD,METSTPT Tech Planning,Tech,SLAC,Labor
99355,1.03,1.03.05,1.03.05.20,1.03.05.20.01,1.03.05.20.01,Dogleg and Spreader Area Installation,AS_SPD_INST_1090,Install new vacuum system - BTL - SPD,9.0,20.0,20.0,20.0,09-13-24,09-25-24,"AS_SPD_INST_1070: FS, AS_SPD_INST_1030: FS, AS_SPD_INST_1040: FS, AS_SPD_INST_1060: FS, AS_SPD_MANF_3060: FS, AS_SPD_MANF_3470: FS, AS_SPD_MANF_4070: FS",AS_SPD_INST_1110: FS,SLAC,0%,52213.52213_EEDHW (Electronics & Engineering Div - HW Engr),52213_EEDHW (Electronics & Engineering Div - HW Engr),Labor,0.0d,9.0,9.0,At Completion Units,9/6/2024,9/18/2024,0,0,0,0,0,0,0,0,0,0,1.03_Accelerator Systems (AS),1.03.05_AS Beam Transfer Line (BTL),1.03.05.20_AS Beam Transfer Line Installation,1.03.05.20.01_Dogleg and Spreader Area Installation,AS_SPD_INST_1090_Install new vacuum system - BTL - SPD,Electrical,,SLAC,Labor
99356,1.03,1.03.05,1.03.05.20,1.03.05.20.01,1.03.05.20.01,Dogleg and Spreader Area Installation,AS_SPD_INST_1090,Install new vacuum system - BTL - SPD,9.0,24.0,24.0,24.0,09-13-24,09-25-24,"AS_SPD_INST_1070: FS, AS_SPD_INST_1030: FS, AS_SPD_INST_1040: FS, AS_SPD_INST_1060: FS, AS_SPD_MANF_3060: FS, AS_SPD_MANF_3470: FS, AS_SPD_MANF_4070: FS",AS_SPD_INST_1110: FS,SLAC,0%,52169.52169_METS Mechanical Engineer,52169_METS Mechanical Engineer,Labor,0.0d,9.0,9.0,At Completion Units,9/6/2024,9/18/2024,0,0,0,0,0,0,0,0,0,0,1.03_Accelerator Systems (AS),1.03.05_AS Beam Transfer Line (BTL),1.03.05.20_AS Beam Transfer Line Installation,1.03.05.20.01_Dogleg and Spreader Area Installation,AS_SPD_INST_1090_Install new vacuum system - BTL - SPD,Mechanical,,SLAC,Labor
99357,1.03,1.03.05,1.03.05.20,1.03.05.20.01,1.03.05.20.01,Dogleg and Spreader Area Installation,AS_SPD_INST_1090,Install new vacuum system - BTL - SPD,9.0,160.0,160.0,160.0,09-13-24,09-25-24,"AS_SPD_INST_1070: FS, AS_SPD_INST_1030: FS, AS_SPD_INST_1040: FS, AS_SPD_INST_1060: FS, AS_SPD_MANF_3060: FS, AS_SPD_MANF_3470: FS, AS_SPD_MANF_4070: FS",AS_SPD_INST_1110: FS,SLAC,0%,52198.52198_METSMANF (METSD Manufacturing),52198_METSMANF (METSD Manufacturing),Labor,0.0d,9.0,9.0,At Completion Units,9/6/2024,9/18/2024,0,0,0,0,0,0,0,0,0,0,1.03_Accelerator Systems (AS),1.03.05_AS Beam Transfer Line (BTL),1.03.05.20_AS Beam Transfer Line Installation,1.03.05.20.01_Dogleg and Spreader Area Installation,AS_SPD_INST_1090_Install new vacuum system - BTL - SPD,Manufacturing,,SLAC,Labor
99358,1.03,1.03.05,1.03.05.20,1.03.05.20.01,1.03.05.20.01,Dogleg and Spreader Area Installation,AS_SPD_INST_1070,Install ACMs - BTL - SPD,10.0,16.0,16.0,16.0,08-22-24,09-05-24,"AS_SPD_MANF_3860: FS, AS_SPD_MANF_4260: FS, AS_SPD_MANF_3270: FS, AS_SPD_INST_1020: FS, AS_SPD_MANF_3660: FS",AS_SPD_INST_1090: FS,SLAC,0%,52169.52169_METS Mechanical Engineer,52169_METS Mechanical Engineer,Labor,0.0d,10.0,10.0,At Completion Units,8/22/2024,9/5/2024,0,0,0,0,0,0,0,0,0,0,1.03_Accelerator Systems (AS),1.03.05_AS Beam Transfer Line (BTL),1.03.05.20_AS Beam Transfer Line Installation,1.03.05.20.01_Dogleg and Spreader Area Installation,AS_SPD_INST_1070_Install ACMs - BTL - SPD,Mechanical,,SLAC,Labor
99359,1.03,1.03.05,1.03.05.20,1.03.05.20.01,1.03.05.20.01,Dogleg and Spreader Area Installation,AS_SPD_INST_1070,Install ACMs - BTL - SPD,10.0,12.0,12.0,12.0,08-22-24,09-05-24,"AS_SPD_MANF_3860: FS, AS_SPD_MANF_4260: FS, AS_SPD_MANF_3270: FS, AS_SPD_INST_1020: FS, AS_SPD_MANF_3660: FS",AS_SPD_INST_1090: FS,SLAC,0%,52191.52191_METSMET Metrology,52191_METSMET Metrology,Labor,0.0d,10.0,10.0,At Completion Units,8/22/2024,9/5/2024,0,0,0,0,0,0,0,0,0,0,1.03_Accelerator Systems (AS),1.03.05_AS Beam Transfer Line (BTL),1.03.05.20_AS Beam Transfer Line Installation,1.03.05.20.01_Dogleg and Spreader Area Installation,AS_SPD_INST_1070_Install ACMs - BTL - SPD,Metrology,,SLAC,Labor
99360,1.03,1.03.05,1.03.05.20,1.03.05.20.01,1.03.05.20.01,Dogleg and Spreader Area Installation,AS_SPD_INST_1070,Install ACMs - BTL - SPD,10.0,24.0,24.0,24.0,08-22-24,09-05-24,"AS_SPD_MANF_3860: FS, AS_SPD_MANF_4260: FS, AS_SPD_MANF_3270: FS, AS_SPD_INST_1020: FS, AS_SPD_MANF_3660: FS",AS_SPD_INST_1090: FS,SLAC,0%,52198.52198_METSMANF (METSD Manufacturing),52198_METSMANF (METSD Manufacturing),Labor,0.0d,10.0,10.0,At Completion Units,8/22/2024,9/5/2024,0,0,0,0,0,0,0,0,0,0,1.03_Accelerator Systems (AS),1.03.05_AS Beam Transfer Line (BTL),1.03.05.20_AS Beam Transfer Line Installation,1.03.05.20.01_Dogleg and Spreader Area Installation,AS_SPD_INST_1070_Install ACMs - BTL - SPD,Manufacturing,,SLAC,Labor
99361,1.03,1.03.05,1.03.05.20,1.03.05.20.01,1.03.05.20.01,Dogleg and Spreader Area Installation,AS_SPD_INST_1060,Install sextupole magnets - BTL - SPD,10.0,48.0,48.0,48.0,08-29-24,09-12-24,"AS_SPD_INST_1020: FS 5.0d, AS_SPD_MANF_4260: FS, AS_SPD_MANF_2280: FS",AS_SPD_INST_1090: FS,SLAC,0%,52152.52152_FAC Fleet,52152_FAC Fleet,Labor,0.0d,10.0,10.0,At Completion Units,8/22/2024,9/5/2024,0,0,0,0,0,0,0,0,0,0,1.03_Accelerator Systems (AS),1.03.05_AS Beam Transfer Line (BTL),1.03.05.20_AS Beam Transfer Line Installation,1.03.05.20.01_Dogleg and Spreader Area Installation,AS_SPD_INST_1060_Install sextupole magnets - BTL - SPD,Support System,,SLAC,Labor
99362,1.03,1.03.05,1.03.05.20,1.03.05.20.01,1.03.05.20.01,Dogleg and Spreader Area Installation,AS_SPD_INST_1060,Install sextupole magnets - BTL - SPD,10.0,16.0,16.0,16.0,08-29-24,09-12-24,"AS_SPD_INST_1020: FS 5.0d, AS_SPD_MANF_4260: FS, AS_SPD_MANF_2280: FS",AS_SPD_INST_1090: FS,SLAC,0%,52169.52169_METS Mechanical Engineer,52169_METS Mechanical Engineer,Labor,0.0d,10.0,10.0,At Completion Units,8/22/2024,9/5/2024,0,0,0,0,0,0,0,0,0,0,1.03_Accelerator Systems (AS),1.03.05_AS Beam Transfer Line (BTL),1.03.05.20_AS Beam Transfer Line Installation,1.03.05.20.01_Dogleg and Spreader Area Installation,AS_SPD_INST_1060_Install sextupole magnets - BTL - SPD,Mechanical,,SLAC,Labor
99363,1.03,1.03.05,1.03.05.20,1.03.05.20.01,1.03.05.20.01,Dogleg and Spreader Area Installation,AS_SPD_INST_1060,Install sextupole magnets - BTL - SPD,10.0,16.0,16.0,16.0,08-29-24,09-12-24,"AS_SPD_INST_1020: FS 5.0d, AS_SPD_MANF_4260: FS, AS_SPD_MANF_2280: FS",AS_SPD_INST_1090: FS,SLAC,0%,52191.52191_METSMET Metrology,52191_METSMET Metrology,Labor,0.0d,10.0,10.0,At Completion Units,8/22/2024,9/5/2024,0,0,0,0,0,0,0,0,0,0,1.03_Accelerator Systems (AS),1.03.05_AS Beam Transfer Line (BTL),1.03.05.20_AS Beam Transfer Line Installation,1.03.05.20.01_Dogleg and Spreader Area Installation,AS_SPD_INST_1060_Install sextupole magnets - BTL - SPD,Metrology,,SLAC,Labor
99364,1.03,1.03.05,1.03.05.20,1.03.05.20.01,1.03.05.20.01,Dogleg and Spreader Area Installation,AS_SPD_INST_1060,Install sextupole magnets - BTL - SPD,10.0,48.0,48.0,48.0,08-29-24,09-12-24,"AS_SPD_INST_1020: FS 5.0d, AS_SPD_MANF_4260: FS, AS_SPD_MANF_2280: FS",AS_SPD_INST_1090: FS,SLAC,0%,52198.52198_METSMANF (METSD Manufacturing),52198_METSMANF (METSD Manufacturing),Labor,0.0d,10.0,10.0,At Completion Units,8/22/2024,9/5/2024,0,0,0,0,0,0,0,0,0,0,1.03_Accelerator Systems (AS),1.03.05_AS Beam Transfer Line (BTL),1.03.05.20_AS Beam Transfer Line Installation,1.03.05.20.01_Dogleg and Spreader Area Installation,AS_SPD_INST_1060_Install sextupole magnets - BTL - SPD,Manufacturing,,SLAC,Labor
99365,1.03,1.03.05,1.03.05.20,1.03.05.20.01,1.03.05.20.01,Dogleg and Spreader Area Installation,AS_SPD_INST_1040,Install 1.378K35 kicker magnet - BTL - SPD,10.0,16.0,16.0,16.0,08-22-24,09-05-24,"AS_SPD_INST_1020: FS, AS_SPD_MANF_4260: FS","AS_SPD_INST_1050: FS, AS_SPD_INST_1090: FS, AS_SPD_INST_1110: FS",SLAC,0%,52152.52152_FAC Fleet,52152_FAC Fleet,Labor,0.0d,10.0,10.0,At Completion Units,8/22/2024,9/5/2024,0,0,0,0,0,0,0,0,0,0,1.03_Accelerator Systems (AS),1.03.05_AS Beam Transfer Line (BTL),1.03.05.20_AS Beam Transfer Line Installation,1.03.05.20.01_Dogleg and Spreader Area Installation,AS_SPD_INST_1040_Install 1.378K35 kicker magnet - BTL - SPD,Support System,,SLAC,Labor
99366,1.03,1.03.05,1.03.05.20,1.03.05.20.01,1.03.05.20.01,Dogleg and Spreader Area Installation,AS_SPD_INST_1040,Install 1.378K35 kicker magnet - BTL - SPD,10.0,16.0,16.0,16.0,08-22-24,09-05-24,"AS_SPD_INST_1020: FS, AS_SPD_MANF_4260: FS","AS_SPD_INST_1050: FS, AS_SPD_INST_1090: FS, AS_SPD_INST_1110: FS",SLAC,0%,52169.52169_METS Mechanical Engineer,52169_METS Mechanical Engineer,Labor,0.0d,10.0,10.0,At Completion Units,8/22/2024,9/5/2024,0,0,0,0,0,0,0,0,0,0,1.03_Accelerator Systems (AS),1.03.05_AS Beam Transfer Line (BTL),1.03.05.20_AS Beam Transfer Line Installation,1.03.05.20.01_Dogleg and Spreader Area Installation,AS_SPD_INST_1040_Install 1.378K35 kicker magnet - BTL - SPD,Mechanical,,SLAC,Labor
99367,1.03,1.03.05,1.03.05.20,1.03.05.20.01,1.03.05.20.01,Dogleg and Spreader Area Installation,AS_SPD_INST_1040,Install 1.378K35 kicker magnet - BTL - SPD,10.0,8.0,8.0,8.0,08-22-24,09-05-24,"AS_SPD_INST_1020: FS, AS_SPD_MANF_4260: FS","AS_SPD_INST_1050: FS, AS_SPD_INST_1090: FS, AS_SPD_INST_1110: FS",SLAC,0%,52191.52191_METSMET Metrology,52191_METSMET Metrology,Labor,0.0d,10.0,10.0,At Completion Units,8/22/2024,9/5/2024,0,0,0,0,0,0,0,0,0,0,1.03_Accelerator Systems (AS),1.03.05_AS Beam Transfer Line (BTL),1.03.05.20_AS Beam Transfer Line Installation,1.03.05.20.01_Dogleg and Spreader Area Installation,AS_SPD_INST_1040_Install 1.378K35 kicker magnet - BTL - SPD,Metrology,,SLAC,Labor
99368,1.03,1.03.05,1.03.05.20,1.03.05.20.01,1.03.05.20.01,Dogleg and Spreader Area Installation,AS_SPD_INST_1040,Install 1.378K35 kicker magnet - BTL - SPD,10.0,16.0,16.0,16.0,08-22-24,09-05-24,"AS_SPD_INST_1020: FS, AS_SPD_MANF_4260: FS","AS_SPD_INST_1050: FS, AS_SPD_INST_1090: FS, AS_SPD_INST_1110: FS",SLAC,0%,52198.52198_METSMANF (METSD Manufacturing),52198_METSMANF (METSD Manufacturing),Labor,0.0d,10.0,10.0,At Completion Units,8/22/2024,9/5/2024,0,0,0,0,0,0,0,0,0,0,1.03_Accelerator Systems (AS),1.03.05_AS Beam Transfer Line (BTL),1.03.05.20_AS Beam Transfer Line Installation,1.03.05.20.01_Dogleg and Spreader Area Installation,AS_SPD_INST_1040_Install 1.378K35 kicker magnet - BTL - SPD,Manufacturing,,SLAC,Labor
99369,1.03,1.03.05,1.03.05.20,1.03.05.20.01,1.03.05.20.01,Dogleg and Spreader Area Installation,AS_SPD_INST_1030,Install 0.787K35 kicker magnet - BTL - SPD,10.0,32.0,32.0,32.0,08-22-24,09-05-24,"AS_SPD_INST_1020: FS, AS_SPD_MANF_4260: FS, AS_SPD_MANF_1080: FS","AS_SPD_INST_1050: FS, AS_SPD_INST_1090: FS, AS_SPD_INST_1110: FS",SLAC,0%,52152.52152_FAC Fleet,52152_FAC Fleet,Labor,0.0d,10.0,10.0,At Completion Units,8/22/2024,9/5/2024,0,0,0,0,0,0,0,0,0,0,1.03_Accelerator Systems (AS),1.03.05_AS Beam Transfer Line (BTL),1.03.05.20_AS Beam Transfer Line Installation,1.03.05.20.01_Dogleg and Spreader Area Installation,AS_SPD_INST_1030_Install 0.787K35 kicker magnet - BTL - SPD,Support System,,SLAC,Labor
99370,1.03,1.03.05,1.03.05.20,1.03.05.20.01,1.03.05.20.01,Dogleg and Spreader Area Installation,AS_SPD_INST_1030,Install 0.787K35 kicker magnet - BTL - SPD,10.0,16.0,16.0,16.0,08-22-24,09-05-24,"AS_SPD_INST_1020: FS, AS_SPD_MANF_4260: FS, AS_SPD_MANF_1080: FS","AS_SPD_INST_1050: FS, AS_SPD_INST_1090: FS, AS_SPD_INST_1110: FS",SLAC,0%,52169.52169_METS Mechanical Engineer,52169_METS Mechanical Engineer,Labor,0.0d,10.0,10.0,At Completion Units,8/22/2024,9/5/2024,0,0,0,0,0,0,0,0,0,0,1.03_Accelerator Systems (AS),1.03.05_AS Beam Transfer Line (BTL),1.03.05.20_AS Beam Transfer Line Installation,1.03.05.20.01_Dogleg and Spreader Area Installation,AS_SPD_INST_1030_Install 0.787K35 kicker magnet - BTL - SPD,Mechanical,,SLAC,Labor
99371,1.03,1.03.05,1.03.05.20,1.03.05.20.01,1.03.05.20.01,Dogleg and Spreader Area Installation,AS_SPD_INST_1030,Install 0.787K35 kicker magnet - BTL - SPD,10.0,16.0,16.0,16.0,08-22-24,09-05-24,"AS_SPD_INST_1020: FS, AS_SPD_MANF_4260: FS, AS_SPD_MANF_1080: FS","AS_SPD_INST_1050: FS, AS_SPD_INST_1090: FS, AS_SPD_INST_1110: FS",SLAC,0%,52191.52191_METSMET Metrology,52191_METSMET Metrology,Labor,0.0d,10.0,10.0,At Completion Units,8/22/2024,9/5/2024,0,0,0,0,0,0,0,0,0,0,1.03_Accelerator Systems (AS),1.03.05_AS Beam Transfer Line (BTL),1.03.05.20_AS Beam Transfer Line Installation,1.03.05.20.01_Dogleg and Spreader Area Installation,AS_SPD_INST_1030_Install 0.787K35 kicker magnet - BTL - SPD,Metrology,,SLAC,Labor
99372,1.03,1.03.05,1.03.05.20,1.03.05.20.01,1.03.05.20.01,Dogleg and Spreader Area Installation,AS_SPD_INST_1030,Install 0.787K35 kicker magnet - BTL - SPD,10.0,32.0,32.0,32.0,08-22-24,09-05-24,"AS_SPD_INST_1020: FS, AS_SPD_MANF_4260: FS, AS_SPD_MANF_1080: FS","AS_SPD_INST_1050: FS, AS_SPD_INST_1090: FS, AS_SPD_INST_1110: FS",SLAC,0%,52198.52198_METSMANF (METSD Manufacturing),52198_METSMANF (METSD Manufacturing),Labor,0.0d,10.0,10.0,At Completion Units,8/22/2024,9/5/2024,0,0,0,0,0,0,0,0,0,0,1.03_Accelerator Systems (AS),1.03.05_AS Beam Transfer Line (BTL),1.03.05.20_AS Beam Transfer Line Installation,1.03.05.20.01_Dogleg and Spreader Area Installation,AS_SPD_INST_1030_Install 0.787K35 kicker magnet - BTL - SPD,Manufacturing,,SLAC,Labor
99373,1.03,1.03.05,1.03.05.20,1.03.05.20.01,1.03.05.20.01,Dogleg and Spreader Area Installation,AS_SPD_INST_1010,Remove existing vacuum - BTL - SPD,5.0,24.0,24.0,24.0,08-01-24,08-07-24,"AS_BTL_INST_1030: FS, AS_M4_1030: FS","AS_SPD_INST_1020: FS, AS_SPD_INST_1105: FS",SLAC,0%,52169.52169_METS Mechanical Engineer,52169_METS Mechanical Engineer,Labor,0.0d,5.0,5.0,At Completion Units,8/1/2024,8/7/2024,0,0,0,0,0,0,0,0,0,0,1.03_Accelerator Systems (AS),1.03.05_AS Beam Transfer Line (BTL),1.03.05.20_AS Beam Transfer Line Installation,1.03.05.20.01_Dogleg and Spreader Area Installation,AS_SPD_INST_1010_Remove existing vacuum - BTL - SPD,Mechanical,,SLAC,Labor
99374,1.03,1.03.05,1.03.05.20,1.03.05.20.01,1.03.05.20.01,Dogleg and Spreader Area Installation,AS_SPD_INST_1010,Remove existing vacuum - BTL - SPD,5.0,120.0,120.0,120.0,08-01-24,08-07-24,"AS_BTL_INST_1030: FS, AS_M4_1030: FS","AS_SPD_INST_1020: FS, AS_SPD_INST_1105: FS",SLAC,0%,52198.52198_METSMANF (METSD Manufacturing),52198_METSMANF (METSD Manufacturing),Labor,0.0d,5.0,5.0,At Completion Units,8/1/2024,8/7/2024,0,0,0,0,0,0,0,0,0,0,1.03_Accelerator Systems (AS),1.03.05_AS Beam Transfer Line (BTL),1.03.05.20_AS Beam Transfer Line Installation,1.03.05.20.01_Dogleg and Spreader Area Installation,AS_SPD_INST_1010_Remove existing vacuum - BTL - SPD,Manufacturing,,SLAC,Labor
99375,1.03,1.03.05,1.03.05.20,1.03.05.20.01,1.03.05.20.01,Dogleg and Spreader Area Installation,AS_SPD_INST_1000,Remove existing components - BTL - SPD,5.0,16.0,16.0,16.0,08-01-24,08-07-24,"AS_BTL_INST_1030: FS, AS_M4_1030: FS","AS_SPD_INST_1020: FS, AS_SPD_INST_1105: FS",SLAC,0%,52169.52169_METS Mechanical Engineer,52169_METS Mechanical Engineer,Labor,0.0d,5.0,5.0,At Completion Units,8/1/2024,8/7/2024,0,0,0,0,0,0,0,0,0,0,1.03_Accelerator Systems (AS),1.03.05_AS Beam Transfer Line (BTL),1.03.05.20_AS Beam Transfer Line Installation,1.03.05.20.01_Dogleg and Spreader Area Installation,AS_SPD_INST_1000_Remove existing components - BTL - SPD,Mechanical,,SLAC,Labor
99376,1.03,1.03.05,1.03.05.20,1.03.05.20.01,1.03.05.20.01,Dogleg and Spreader Area Installation,AS_SPD_INST_1000,Remove existing components - BTL - SPD,5.0,100.0,100.0,100.0,08-01-24,08-07-24,"AS_BTL_INST_1030: FS, AS_M4_1030: FS","AS_SPD_INST_1020: FS, AS_SPD_INST_1105: FS",SLAC,0%,52198.52198_METSMANF (METSD Manufacturing),52198_METSMANF (METSD Manufacturing),Labor,0.0d,5.0,5.0,At Completion Units,8/1/2024,8/7/2024,0,0,0,0,0,0,0,0,0,0,1.03_Accelerator Systems (AS),1.03.05_AS Beam Transfer Line (BTL),1.03.05.20_AS Beam Transfer Line Installation,1.03.05.20.01_Dogleg and Spreader Area Installation,AS_SPD_INST_1000_Remove existing components - BTL - SPD,Manufacturing,,SLAC,Labor
99377,1.03,1.03.05,1.03.05.20,1.03.05.20.01,1.03.05.20.01,Dogleg and Spreader Area Installation,AS_BTL_INST_1020,Respond to recommendations from IRR - BTL,10.0,16.0,16.0,16.0,05-10-23,05-23-23,AS_BTL_INST_1010: FS,AS_BTL_INST_1030: FF,SLAC,0%,52169.52169_METS Mechanical Engineer,52169_METS Mechanical Engineer,Labor,0.0d,10.0,10.0,At Completion Units,5/10/2023,5/23/2023,0,0,0,0,0,0,0,0,0,0,1.03_Accelerator Systems (AS),1.03.05_AS Beam Transfer Line (BTL),1.03.05.20_AS Beam Transfer Line Installation,1.03.05.20.01_Dogleg and Spreader Area Installation,AS_BTL_INST_1020_Respond to recommendations from IRR - BTL,Mechanical,,SLAC,Labor
99378,1.03,1.03.05,1.03.05.20,1.03.05.20.01,1.03.05.20.01,Dogleg and Spreader Area Installation,AS_BTL_INST_1000,Prepare for Installation Readiness Review (IRR) - BTL,25.0,4.0,4.0,4.0,04-04-23,05-08-23,MS_FY_2023_Q3: FS,AS_BTL_INST_1010: FS,SLAC,0%,52190.52190_METSTP Tech Planning - Reinstated FY16,52190_METSTP Tech Planning - Reinstated FY16,Labor,0.0d,25.0,25.0,At Completion Units,4/4/2023,5/8/2023,0,0,0,0,0,0,0,0,0,0,1.03_Accelerator Systems (AS),1.03.05_AS Beam Transfer Line (BTL),1.03.05.20_AS Beam Transfer Line Installation,1.03.05.20.01_Dogleg and Spreader Area Installation,AS_BTL_INST_1000_Prepare for Installation Readiness Review (IRR) - BTL,METSTPT Tech Planning,Tech,SLAC,Labor
99379,1.03,1.03.05,1.03.05.20,1.03.05.20.01,1.03.05.20.01,Dogleg and Spreader Area Installation,AS_BTL_INST_1000,Prepare for Installation Readiness Review (IRR) - BTL,25.0,4.0,4.0,4.0,04-04-23,05-08-23,MS_FY_2023_Q3: FS,AS_BTL_INST_1010: FS,SLAC,0%,52211.52211_EEDOPSE (Electronics & Engineering Div - Ops & PSE),52211_EEDOPSE (Electronics & Engineering Div - Ops & PSE),Labor,0.0d,25.0,25.0,At Completion Units,4/4/2023,5/8/2023,0,0,0,0,0,0,0,0,0,0,1.03_Accelerator Systems (AS),1.03.05_AS Beam Transfer Line (BTL),1.03.05.20_AS Beam Transfer Line Installation,1.03.05.20.01_Dogleg and Spreader Area Installation,AS_BTL_INST_1000_Prepare for Installation Readiness Review (IRR) - BTL,Electrical,,SLAC,Labor
99380,1.03,1.03.05,1.03.05.20,1.03.05.20.01,1.03.05.20.01,Dogleg and Spreader Area Installation,AS_BTL_INST_1000,Prepare for Installation Readiness Review (IRR) - BTL,25.0,4.0,4.0,4.0,04-04-23,05-08-23,MS_FY_2023_Q3: FS,AS_BTL_INST_1010: FS,SLAC,0%,52127.52127_Research Electrical & SW Engineer,52127_Research Electrical & SW Engineer,Labor,0.0d,25.0,25.0,At Completion Units,4/4/2023,5/8/2023,0,0,0,0,0,0,0,0,0,0,1.03_Accelerator Systems (AS),1.03.05_AS Beam Transfer Line (BTL),1.03.05.20_AS Beam Transfer Line Installation,1.03.05.20.01_Dogleg and Spreader Area Installation,AS_BTL_INST_1000_Prepare for Installation Readiness Review (IRR) - BTL,Electrical,,SLAC,Labor
99381,1.03,1.03.05,1.03.05.20,1.03.05.20.01,1.03.05.20.01,Dogleg and Spreader Area Installation,AS_BTL_INST_1000,Prepare for Installation Readiness Review (IRR) - BTL,25.0,12.0,12.0,12.0,04-04-23,05-08-23,MS_FY_2023_Q3: FS,AS_BTL_INST_1010: FS,SLAC,0%,52213.52213_EEDHW (Electronics & Engineering Div - HW Engr),52213_EEDHW (Electronics & Engineering Div - HW Engr),Labor,0.0d,25.0,25.0,At Completion Units,4/4/2023,5/8/2023,0,0,0,0,0,0,0,0,0,0,1.03_Accelerator Systems (AS),1.03.05_AS Beam Transfer Line (BTL),1.03.05.20_AS Beam Transfer Line Installation,1.03.05.20.01_Dogleg and Spreader Area Installation,AS_BTL_INST_1000_Prepare for Installation Readiness Review (IRR) - BTL,Electrical,,SLAC,Labor
99382,1.03,1.03.05,1.03.05.20,1.03.05.20.01,1.03.05.20.01,Dogleg and Spreader Area Installation,AS_BTL_INST_1000,Prepare for Installation Readiness Review (IRR) - BTL,25.0,40.0,40.0,40.0,04-04-23,05-08-23,MS_FY_2023_Q3: FS,AS_BTL_INST_1010: FS,SLAC,0%,52168.52168_METS - Mechanical Design,52168_METS - Mechanical Design,Labor,0.0d,25.0,25.0,At Completion Units,4/4/2023,5/8/2023,0,0,0,0,0,0,0,0,0,0,1.03_Accelerator Systems (AS),1.03.05_AS Beam Transfer Line (BTL),1.03.05.20_AS Beam Transfer Line Installation,1.03.05.20.01_Dogleg and Spreader Area Installation,AS_BTL_INST_1000_Prepare for Installation Readiness Review (IRR) - BTL,Mechanical,,SLAC,Labor
99383,1.03,1.03.05,1.03.05.20,1.03.05.20.01,1.03.05.20.01,Dogleg and Spreader Area Installation,AS_BTL_INST_1000,Prepare for Installation Readiness Review (IRR) - BTL,25.0,60.0,60.0,60.0,04-04-23,05-08-23,MS_FY_2023_Q3: FS,AS_BTL_INST_1010: FS,SLAC,0%,52169.52169_METS Mechanical Engineer,52169_METS Mechanical Engineer,Labor,0.0d,25.0,25.0,At Completion Units,4/4/2023,5/8/2023,0,0,0,0,0,0,0,0,0,0,1.03_Accelerator Systems (AS),1.03.05_AS Beam Transfer Line (BTL),1.03.05.20_AS Beam Transfer Line Installation,1.03.05.20.01_Dogleg and Spreader Area Installation,AS_BTL_INST_1000_Prepare for Installation Readiness Review (IRR) - BTL,Mechanical,,SLAC,Labor
99384,1.03,1.03.05,1.03.05.20,1.03.05.20.01,1.03.05.20.01,Dogleg and Spreader Area Installation,AS_BTL_INST_1000,Prepare for Installation Readiness Review (IRR) - BTL,25.0,8.0,8.0,8.0,04-04-23,05-08-23,MS_FY_2023_Q3: FS,AS_BTL_INST_1010: FS,SLAC,0%,52191.52191_METSMET Metrology,52191_METSMET Metrology,Labor,0.0d,25.0,25.0,At Completion Units,4/4/2023,5/8/2023,0,0,0,0,0,0,0,0,0,0,1.03_Accelerator Systems (AS),1.03.05_AS Beam Transfer Line (BTL),1.03.05.20_AS Beam Transfer Line Installation,1.03.05.20.01_Dogleg and Spreader Area Installation,AS_BTL_INST_1000_Prepare for Installation Readiness Review (IRR) - BTL,Metrology,,SLAC,Labor
99385,1.03,1.03.05,1.03.05.20,1.03.05.20.01,1.03.05.20.01,Dogleg and Spreader Area Installation,AS_BTL_INST_1000,Prepare for Installation Readiness Review (IRR) - BTL,25.0,8.0,8.0,8.0,04-04-23,05-08-23,MS_FY_2023_Q3: FS,AS_BTL_INST_1010: FS,SLAC,0%,52198.52198_METSMANF (METSD Manufacturing),52198_METSMANF (METSD Manufacturing),Labor,0.0d,25.0,25.0,At Completion Units,4/4/2023,5/8/2023,0,0,0,0,0,0,0,0,0,0,1.03_Accelerator Systems (AS),1.03.05_AS Beam Transfer Line (BTL),1.03.05.20_AS Beam Transfer Line Installation,1.03.05.20.01_Dogleg and Spreader Area Installation,AS_BTL_INST_1000_Prepare for Installation Readiness Review (IRR) - BTL,Manufacturing,,SLAC,Labor
99386,1.03,1.03.05,1.03.05.20,1.03.05.20.01,1.03.05.20.01,Dogleg and Spreader Area Installation,AS_BTL_INST_1010,Installation Readiness Review (IRR) - BTL,1.0,4.3,4.3,4.3,05-09-23,05-09-23,AS_BTL_INST_1000: FS,AS_BTL_INST_1020: FS,SLAC,0%,52190.52190_METSTP Tech Planning - Reinstated FY16,52190_METSTP Tech Planning - Reinstated FY16,Labor,0.0d,1.0,1.0,At Completion Units,5/9/2023,5/9/2023,0,0,0,0,0,0,0,0,0,0,1.03_Accelerator Systems (AS),1.03.05_AS Beam Transfer Line (BTL),1.03.05.20_AS Beam Transfer Line Installation,1.03.05.20.01_Dogleg and Spreader Area Installation,AS_BTL_INST_1010_Installation Readiness Review (IRR) - BTL,METSTPT Tech Planning,Tech,SLAC,Labor
99387,1.03,1.03.05,1.03.05.20,1.03.05.20.01,1.03.05.20.01,Dogleg and Spreader Area Installation,AS_BTL_INST_1010,Installation Readiness Review (IRR) - BTL,1.0,4.3,4.3,4.3,05-09-23,05-09-23,AS_BTL_INST_1000: FS,AS_BTL_INST_1020: FS,SLAC,0%,52152.52152_FAC Fleet,52152_FAC Fleet,Labor,0.0d,1.0,1.0,At Completion Units,5/9/2023,5/9/2023,0,0,0,0,0,0,0,0,0,0,1.03_Accelerator Systems (AS),1.03.05_AS Beam Transfer Line (BTL),1.03.05.20_AS Beam Transfer Line Installation,1.03.05.20.01_Dogleg and Spreader Area Installation,AS_BTL_INST_1010_Installation Readiness Review (IRR) - BTL,Support System,,SLAC,Labor
99388,1.03,1.03.05,1.03.05.20,1.03.05.20.01,1.03.05.20.01,Dogleg and Spreader Area Installation,AS_BTL_INST_1010,Installation Readiness Review (IRR) - BTL,1.0,4.3,4.3,4.3,05-09-23,05-09-23,AS_BTL_INST_1000: FS,AS_BTL_INST_1020: FS,SLAC,0%,52211.52211_EEDOPSE (Electronics & Engineering Div - Ops & PSE),52211_EEDOPSE (Electronics & Engineering Div - Ops & PSE),Labor,0.0d,1.0,1.0,At Completion Units,5/9/2023,5/9/2023,0,0,0,0,0,0,0,0,0,0,1.03_Accelerator Systems (AS),1.03.05_AS Beam Transfer Line (BTL),1.03.05.20_AS Beam Transfer Line Installation,1.03.05.20.01_Dogleg and Spreader Area Installation,AS_BTL_INST_1010_Installation Readiness Review (IRR) - BTL,Electrical,,SLAC,Labor
99389,1.03,1.03.05,1.03.05.20,1.03.05.20.01,1.03.05.20.01,Dogleg and Spreader Area Installation,AS_BTL_INST_1010,Installation Readiness Review (IRR) - BTL,1.0,4.3,4.3,4.3,05-09-23,05-09-23,AS_BTL_INST_1000: FS,AS_BTL_INST_1020: FS,SLAC,0%,52127.52127_Research Electrical & SW Engineer,52127_Research Electrical & SW Engineer,Labor,0.0d,1.0,1.0,At Completion Units,5/9/2023,5/9/2023,0,0,0,0,0,0,0,0,0,0,1.03_Accelerator Systems (AS),1.03.05_AS Beam Transfer Line (BTL),1.03.05.20_AS Beam Transfer Line Installation,1.03.05.20.01_Dogleg and Spreader Area Installation,AS_BTL_INST_1010_Installation Readiness Review (IRR) - BTL,Electrical,,SLAC,Labor
99390,1.03,1.03.05,1.03.05.20,1.03.05.20.01,1.03.05.20.01,Dogleg and Spreader Area Installation,AS_BTL_INST_1010,Installation Readiness Review (IRR) - BTL,1.0,8.6,8.6,8.6,05-09-23,05-09-23,AS_BTL_INST_1000: FS,AS_BTL_INST_1020: FS,SLAC,0%,52213.52213_EEDHW (Electronics & Engineering Div - HW Engr),52213_EEDHW (Electronics & Engineering Div - HW Engr),Labor,0.0d,1.0,1.0,At Completion Units,5/9/2023,5/9/2023,0,0,0,0,0,0,0,0,0,0,1.03_Accelerator Systems (AS),1.03.05_AS Beam Transfer Line (BTL),1.03.05.20_AS Beam Transfer Line Installation,1.03.05.20.01_Dogleg and Spreader Area Installation,AS_BTL_INST_1010_Installation Readiness Review (IRR) - BTL,Electrical,,SLAC,Labor
99391,1.03,1.03.05,1.03.05.20,1.03.05.20.01,1.03.05.20.01,Dogleg and Spreader Area Installation,AS_BTL_INST_1010,Installation Readiness Review (IRR) - BTL,1.0,4.3,4.3,4.3,05-09-23,05-09-23,AS_BTL_INST_1000: FS,AS_BTL_INST_1020: FS,SLAC,0%,52168.52168_METS - Mechanical Design,52168_METS - Mechanical Design,Labor,0.0d,1.0,1.0,At Completion Units,5/9/2023,5/9/2023,0,0,0,0,0,0,0,0,0,0,1.03_Accelerator Systems (AS),1.03.05_AS Beam Transfer Line (BTL),1.03.05.20_AS Beam Transfer Line Installation,1.03.05.20.01_Dogleg and Spreader Area Installation,AS_BTL_INST_1010_Installation Readiness Review (IRR) - BTL,Mechanical,,SLAC,Labor
99392,1.03,1.03.05,1.03.05.20,1.03.05.20.01,1.03.05.20.01,Dogleg and Spreader Area Installation,AS_BTL_INST_1010,Installation Readiness Review (IRR) - BTL,1.0,8.6,8.6,8.6,05-09-23,05-09-23,AS_BTL_INST_1000: FS,AS_BTL_INST_1020: FS,SLAC,0%,52169.52169_METS Mechanical Engineer,52169_METS Mechanical Engineer,Labor,0.0d,1.0,1.0,At Completion Units,5/9/2023,5/9/2023,0,0,0,0,0,0,0,0,0,0,1.03_Accelerator Systems (AS),1.03.05_AS Beam Transfer Line (BTL),1.03.05.20_AS Beam Transfer Line Installation,1.03.05.20.01_Dogleg and Spreader Area Installation,AS_BTL_INST_1010_Installation Readiness Review (IRR) - BTL,Mechanical,,SLAC,Labor
99393,1.03,1.03.05,1.03.05.20,1.03.05.20.01,1.03.05.20.01,Dogleg and Spreader Area Installation,AS_BTL_INST_1010,Installation Readiness Review (IRR) - BTL,1.0,4.3,4.3,4.3,05-09-23,05-09-23,AS_BTL_INST_1000: FS,AS_BTL_INST_1020: FS,SLAC,0%,0106.0106_Staff Scientist,0106_Staff Scientist,Labor,0.0d,1.0,1.0,At Completion Units,5/9/2023,5/9/2023,0,0,0,0,0,0,0,0,0,0,1.03_Accelerator Systems (AS),1.03.05_AS Beam Transfer Line (BTL),1.03.05.20_AS Beam Transfer Line Installation,1.03.05.20.01_Dogleg and Spreader Area Installation,AS_BTL_INST_1010_Installation Readiness Review (IRR) - BTL,Scientist,,SLAC,Labor
99394,1.03,1.03.05,1.03.05.20,1.03.05.20.01,1.03.05.20.01,Dogleg and Spreader Area Installation,AS_BTL_INST_1010,Installation Readiness Review (IRR) - BTL,1.0,4.3,4.3,4.3,05-09-23,05-09-23,AS_BTL_INST_1000: FS,AS_BTL_INST_1020: FS,SLAC,0%,52191.52191_METSMET Metrology,52191_METSMET Metrology,Labor,0.0d,1.0,1.0,At Completion Units,5/9/2023,5/9/2023,0,0,0,0,0,0,0,0,0,0,1.03_Accelerator Systems (AS),1.03.05_AS Beam Transfer Line (BTL),1.03.05.20_AS Beam Transfer Line Installation,1.03.05.20.01_Dogleg and Spreader Area Installation,AS_BTL_INST_1010_Installation Readiness Review (IRR) - BTL,Metrology,,SLAC,Labor
99395,1.03,1.03.05,1.03.05.20,1.03.05.20.01,1.03.05.20.01,Dogleg and Spreader Area Installation,AS_BTL_INST_1010,Installation Readiness Review (IRR) - BTL,1.0,12.9,12.9,12.9,05-09-23,05-09-23,AS_BTL_INST_1000: FS,AS_BTL_INST_1020: FS,SLAC,0%,52198.52198_METSMANF (METSD Manufacturing),52198_METSMANF (METSD Manufacturing),Labor,0.0d,1.0,1.0,At Completion Units,5/9/2023,5/9/2023,0,0,0,0,0,0,0,0,0,0,1.03_Accelerator Systems (AS),1.03.05_AS Beam Transfer Line (BTL),1.03.05.20_AS Beam Transfer Line Installation,1.03.05.20.01_Dogleg and Spreader Area Installation,AS_BTL_INST_1010_Installation Readiness Review (IRR) - BTL,Manufacturing,,SLAC,Labor
99396,1.03,1.03.05,1.03.05.20,1.03.05.20.01,1.03.05.20.01,Dogleg and Spreader Area Installation,AS_DOG_INST_1080,Install new stands - SLAC Effort - BTL - DOG,20.0,0.0,0.0,0.0,08-22-24,09-19-24,"AS_DOG_INST_1030: SS 2.0d, AS_DOG_MANF_1470: FS, AS_DOG_MANF_2460: FS, AS_DOG_INST_1010: FS","AS_DOG_INST_1070: FS, AS_DOG_INST_3100: FS, AS_DOG_INST_3090: SS",SLAC,0%,SL_MSSC1.SLAC M&S (<$500K) (gets G&A) (NO ESC),SLAC M&S (<$500K) (gets G&A) (NO ESC),Nonlabor,0.0d,20.0,20.0,At Completion Units,8/22/2024,9/19/2024,0,0,0,0,0,0,0,0,0,0,1.03_Accelerator Systems (AS),1.03.05_AS Beam Transfer Line (BTL),1.03.05.20_AS Beam Transfer Line Installation,1.03.05.20.01_Dogleg and Spreader Area Installation,AS_DOG_INST_1080_Install new stands - SLAC Effort - BTL - DOG,Material,,SLAC,M&S
99397,1.03,1.03.05,1.03.05.20,1.03.05.20.01,1.03.05.20.01,Dogleg and Spreader Area Installation,AS_DOG_INST_1030,Remove existing Bypass vacuum system - BTL - DOG,15.0,0.0,0.0,0.0,08-01-24,08-21-24,"AS_DOG_INST_2070: FS, AS_M4_1030: FS","AS_DOG_INST_1080: SS 2.0d, AS_DOG_INST_1110: FS",SLAC,0%,SL_MSSC1.SLAC M&S (<$500K) (gets G&A) (NO ESC),SLAC M&S (<$500K) (gets G&A) (NO ESC),Nonlabor,0.0d,15.0,15.0,At Completion Units,8/1/2024,8/21/2024,0,0,0,0,0,0,0,0,0,0,1.03_Accelerator Systems (AS),1.03.05_AS Beam Transfer Line (BTL),1.03.05.20_AS Beam Transfer Line Installation,1.03.05.20.01_Dogleg and Spreader Area Installation,AS_DOG_INST_1030_Remove existing Bypass vacuum system - BTL - DOG,Material,,SLAC,M&S
99398,1.03,1.03.05,1.03.05.20,1.03.05.20.01,1.03.05.20.01,Dogleg and Spreader Area Installation,AS_DOG_INST_1020,Remove existing vacuum system - BTL - DOG,15.0,0.0,0.0,0.0,08-01-24,08-21-24,"AS_DOG_INST_2070: FS, AS_M4_1030: FS",AS_DOG_INST_1060: FS,SLAC,0%,SL_MSSC1.SLAC M&S (<$500K) (gets G&A) (NO ESC),SLAC M&S (<$500K) (gets G&A) (NO ESC),Nonlabor,0.0d,15.0,15.0,At Completion Units,8/1/2024,8/21/2024,0,0,0,0,0,0,0,0,0,0,1.03_Accelerator Systems (AS),1.03.05_AS Beam Transfer Line (BTL),1.03.05.20_AS Beam Transfer Line Installation,1.03.05.20.01_Dogleg and Spreader Area Installation,AS_DOG_INST_1020_Remove existing vacuum system - BTL - DOG,Material,,SLAC,M&S
99399,1.03,1.03.05,1.03.05.20,1.03.05.20.01,1.03.05.20.01,Dogleg and Spreader Area Installation,AS_DOG_INST_1100,Installation Coordination - BTL - DOG,42.0,51.0,51.0,51.0,08-01-24,09-30-24,AS_M4_1030: FS,AS_M4_3050: FS,SLAC,0%,52155.52155_Health Physics Technician III,52155_Health Physics Technician III,Labor,0.0d,42.0,42.0,At Completion Units,8/1/2024,9/30/2024,0,0,0,0,0,0,0,0,0,0,1.03_Accelerator Systems (AS),1.03.05_AS Beam Transfer Line (BTL),1.03.05.20_AS Beam Transfer Line Installation,1.03.05.20.01_Dogleg and Spreader Area Installation,AS_DOG_INST_1100_Installation Coordination - BTL - DOG,Support System,Tech,SLAC,Labor
99400,1.03,1.03.05,1.03.05.20,1.03.05.20.01,1.03.05.20.01,Dogleg and Spreader Area Installation,AS_DOG_INST_1100,Installation Coordination - BTL - DOG,42.0,153.0,153.0,153.0,08-01-24,09-30-24,AS_M4_1030: FS,AS_M4_3050: FS,SLAC,0%,52169.52169_METS Mechanical Engineer,52169_METS Mechanical Engineer,Labor,0.0d,42.0,42.0,At Completion Units,8/1/2024,9/30/2024,0,0,0,0,0,0,0,0,0,0,1.03_Accelerator Systems (AS),1.03.05_AS Beam Transfer Line (BTL),1.03.05.20_AS Beam Transfer Line Installation,1.03.05.20.01_Dogleg and Spreader Area Installation,AS_DOG_INST_1100_Installation Coordination - BTL - DOG,Mechanical,,SLAC,Labor
99401,1.03,1.03.05,1.03.05.20,1.03.05.20.01,1.03.05.20.01,Dogleg and Spreader Area Installation,AS_DOG_INST_1090,Install new vacuum - BTL - DOG,20.0,20.0,20.0,20.0,10-25-24,11-21-24,"AS_DOG_MANF_2080: FS, AS_DOG_MANF_2270: FS, AS_DOG_INST_1070: FS",AS_DOG_INST_1120: FS,SLAC,0%,52190.52190_METSTP Tech Planning - Reinstated FY16,52190_METSTP Tech Planning - Reinstated FY16,Labor,0.0d,20.0,20.0,At Completion Units,10/25/2024,11/21/2024,0,0,0,0,0,0,0,0,0,0,1.03_Accelerator Systems (AS),1.03.05_AS Beam Transfer Line (BTL),1.03.05.20_AS Beam Transfer Line Installation,1.03.05.20.01_Dogleg and Spreader Area Installation,AS_DOG_INST_1090_Install new vacuum - BTL - DOG,METSTPT Tech Planning,Tech,SLAC,Labor
99402,1.03,1.03.05,1.03.05.20,1.03.05.20.01,1.03.05.20.01,Dogleg and Spreader Area Installation,AS_DOG_INST_1090,Install new vacuum - BTL - DOG,20.0,20.0,20.0,20.0,10-25-24,11-21-24,"AS_DOG_MANF_2080: FS, AS_DOG_MANF_2270: FS, AS_DOG_INST_1070: FS",AS_DOG_INST_1120: FS,SLAC,0%,52169.52169_METS Mechanical Engineer,52169_METS Mechanical Engineer,Labor,0.0d,20.0,20.0,At Completion Units,10/25/2024,11/21/2024,0,0,0,0,0,0,0,0,0,0,1.03_Accelerator Systems (AS),1.03.05_AS Beam Transfer Line (BTL),1.03.05.20_AS Beam Transfer Line Installation,1.03.05.20.01_Dogleg and Spreader Area Installation,AS_DOG_INST_1090_Install new vacuum - BTL - DOG,Mechanical,,SLAC,Labor
99403,1.03,1.03.05,1.03.05.20,1.03.05.20.01,1.03.05.20.01,Dogleg and Spreader Area Installation,AS_DOG_INST_1090,Install new vacuum - BTL - DOG,20.0,72.0,72.0,72.0,10-25-24,11-21-24,"AS_DOG_MANF_2080: FS, AS_DOG_MANF_2270: FS, AS_DOG_INST_1070: FS",AS_DOG_INST_1120: FS,SLAC,0%,52198.52198_METSMANF (METSD Manufacturing),52198_METSMANF (METSD Manufacturing),Labor,0.0d,20.0,20.0,At Completion Units,10/25/2024,11/21/2024,0,0,0,0,0,0,0,0,0,0,1.03_Accelerator Systems (AS),1.03.05_AS Beam Transfer Line (BTL),1.03.05.20_AS Beam Transfer Line Installation,1.03.05.20.01_Dogleg and Spreader Area Installation,AS_DOG_INST_1090_Install new vacuum - BTL - DOG,Manufacturing,,SLAC,Labor
99404,1.03,1.03.05,1.03.05.20,1.03.05.20.01,1.03.05.20.01,Dogleg and Spreader Area Installation,AS_DOG_INST_1080,Install new stands - SLAC Effort - BTL - DOG,20.0,20.0,20.0,20.0,08-22-24,09-19-24,"AS_DOG_INST_1030: SS 2.0d, AS_DOG_MANF_1470: FS, AS_DOG_MANF_2460: FS, AS_DOG_INST_1010: FS","AS_DOG_INST_1070: FS, AS_DOG_INST_3100: FS, AS_DOG_INST_3090: SS",SLAC,0%,52190.52190_METSTP Tech Planning - Reinstated FY16,52190_METSTP Tech Planning - Reinstated FY16,Labor,0.0d,20.0,20.0,At Completion Units,8/22/2024,9/19/2024,0,0,0,0,0,0,0,0,0,0,1.03_Accelerator Systems (AS),1.03.05_AS Beam Transfer Line (BTL),1.03.05.20_AS Beam Transfer Line Installation,1.03.05.20.01_Dogleg and Spreader Area Installation,AS_DOG_INST_1080_Install new stands - SLAC Effort - BTL - DOG,METSTPT Tech Planning,Tech,SLAC,Labor
99405,1.03,1.03.05,1.03.05.20,1.03.05.20.01,1.03.05.20.01,Dogleg and Spreader Area Installation,AS_DOG_INST_1080,Install new stands - SLAC Effort - BTL - DOG,20.0,20.0,20.0,20.0,08-22-24,09-19-24,"AS_DOG_INST_1030: SS 2.0d, AS_DOG_MANF_1470: FS, AS_DOG_MANF_2460: FS, AS_DOG_INST_1010: FS","AS_DOG_INST_1070: FS, AS_DOG_INST_3100: FS, AS_DOG_INST_3090: SS",SLAC,0%,52169.52169_METS Mechanical Engineer,52169_METS Mechanical Engineer,Labor,0.0d,20.0,20.0,At Completion Units,8/22/2024,9/19/2024,0,0,0,0,0,0,0,0,0,0,1.03_Accelerator Systems (AS),1.03.05_AS Beam Transfer Line (BTL),1.03.05.20_AS Beam Transfer Line Installation,1.03.05.20.01_Dogleg and Spreader Area Installation,AS_DOG_INST_1080_Install new stands - SLAC Effort - BTL - DOG,Mechanical,,SLAC,Labor
99406,1.03,1.03.05,1.03.05.20,1.03.05.20.01,1.03.05.20.01,Dogleg and Spreader Area Installation,AS_DOG_INST_1080,Install new stands - SLAC Effort - BTL - DOG,20.0,75.0,75.0,75.0,08-22-24,09-19-24,"AS_DOG_INST_1030: SS 2.0d, AS_DOG_MANF_1470: FS, AS_DOG_MANF_2460: FS, AS_DOG_INST_1010: FS","AS_DOG_INST_1070: FS, AS_DOG_INST_3100: FS, AS_DOG_INST_3090: SS",SLAC,0%,52198.52198_METSMANF (METSD Manufacturing),52198_METSMANF (METSD Manufacturing),Labor,0.0d,20.0,20.0,At Completion Units,8/22/2024,9/19/2024,0,0,0,0,0,0,0,0,0,0,1.03_Accelerator Systems (AS),1.03.05_AS Beam Transfer Line (BTL),1.03.05.20_AS Beam Transfer Line Installation,1.03.05.20.01_Dogleg and Spreader Area Installation,AS_DOG_INST_1080_Install new stands - SLAC Effort - BTL - DOG,Manufacturing,,SLAC,Labor
99407,1.03,1.03.05,1.03.05.20,1.03.05.20.01,1.03.05.20.01,Dogleg and Spreader Area Installation,AS_DOG_INST_1070,Install new magnets - BTL - DOG,25.0,24.0,24.0,24.0,09-20-24,10-24-24,"AS_DOG_INST_1080: FS, AS_DOG_MANF_1080: FS","AS_DOG_INST_1120: FS, AS_DOG_INST_1090: FS",SLAC,0%,52190.52190_METSTP Tech Planning - Reinstated FY16,52190_METSTP Tech Planning - Reinstated FY16,Labor,0.0d,25.0,25.0,At Completion Units,9/20/2024,10/24/2024,0,0,0,0,0,0,0,0,0,0,1.03_Accelerator Systems (AS),1.03.05_AS Beam Transfer Line (BTL),1.03.05.20_AS Beam Transfer Line Installation,1.03.05.20.01_Dogleg and Spreader Area Installation,AS_DOG_INST_1070_Install new magnets - BTL - DOG,METSTPT Tech Planning,Tech,SLAC,Labor
99408,1.03,1.03.05,1.03.05.20,1.03.05.20.01,1.03.05.20.01,Dogleg and Spreader Area Installation,AS_DOG_INST_1070,Install new magnets - BTL - DOG,25.0,108.0,108.0,108.0,09-20-24,10-24-24,"AS_DOG_INST_1080: FS, AS_DOG_MANF_1080: FS","AS_DOG_INST_1120: FS, AS_DOG_INST_1090: FS",SLAC,0%,52152.52152_FAC Fleet,52152_FAC Fleet,Labor,0.0d,25.0,25.0,At Completion Units,9/20/2024,10/24/2024,0,0,0,0,0,0,0,0,0,0,1.03_Accelerator Systems (AS),1.03.05_AS Beam Transfer Line (BTL),1.03.05.20_AS Beam Transfer Line Installation,1.03.05.20.01_Dogleg and Spreader Area Installation,AS_DOG_INST_1070_Install new magnets - BTL - DOG,Support System,,SLAC,Labor
99409,1.03,1.03.05,1.03.05.20,1.03.05.20.01,1.03.05.20.01,Dogleg and Spreader Area Installation,AS_DOG_INST_1070,Install new magnets - BTL - DOG,25.0,32.0,32.0,32.0,09-20-24,10-24-24,"AS_DOG_INST_1080: FS, AS_DOG_MANF_1080: FS","AS_DOG_INST_1120: FS, AS_DOG_INST_1090: FS",SLAC,0%,52169.52169_METS Mechanical Engineer,52169_METS Mechanical Engineer,Labor,0.0d,25.0,25.0,At Completion Units,9/20/2024,10/24/2024,0,0,0,0,0,0,0,0,0,0,1.03_Accelerator Systems (AS),1.03.05_AS Beam Transfer Line (BTL),1.03.05.20_AS Beam Transfer Line Installation,1.03.05.20.01_Dogleg and Spreader Area Installation,AS_DOG_INST_1070_Install new magnets - BTL - DOG,Mechanical,,SLAC,Labor
99410,1.03,1.03.05,1.03.05.20,1.03.05.20.01,1.03.05.20.01,Dogleg and Spreader Area Installation,AS_DOG_INST_1070,Install new magnets - BTL - DOG,25.0,8.0,8.0,8.0,09-20-24,10-24-24,"AS_DOG_INST_1080: FS, AS_DOG_MANF_1080: FS","AS_DOG_INST_1120: FS, AS_DOG_INST_1090: FS",SLAC,0%,52191.52191_METSMET Metrology,52191_METSMET Metrology,Labor,0.0d,25.0,25.0,At Completion Units,9/20/2024,10/24/2024,0,0,0,0,0,0,0,0,0,0,1.03_Accelerator Systems (AS),1.03.05_AS Beam Transfer Line (BTL),1.03.05.20_AS Beam Transfer Line Installation,1.03.05.20.01_Dogleg and Spreader Area Installation,AS_DOG_INST_1070_Install new magnets - BTL - DOG,Metrology,,SLAC,Labor
99411,1.03,1.03.05,1.03.05.20,1.03.05.20.01,1.03.05.20.01,Dogleg and Spreader Area Installation,AS_DOG_INST_1070,Install new magnets - BTL - DOG,25.0,16.0,16.0,16.0,09-20-24,10-24-24,"AS_DOG_INST_1080: FS, AS_DOG_MANF_1080: FS","AS_DOG_INST_1120: FS, AS_DOG_INST_1090: FS",SLAC,0%,52198.52198_METSMANF (METSD Manufacturing),52198_METSMANF (METSD Manufacturing),Labor,0.0d,25.0,25.0,At Completion Units,9/20/2024,10/24/2024,0,0,0,0,0,0,0,0,0,0,1.03_Accelerator Systems (AS),1.03.05_AS Beam Transfer Line (BTL),1.03.05.20_AS Beam Transfer Line Installation,1.03.05.20.01_Dogleg and Spreader Area Installation,AS_DOG_INST_1070_Install new magnets - BTL - DOG,Manufacturing,,SLAC,Labor
99412,1.03,1.03.05,1.03.05.20,1.03.05.20.01,1.03.05.20.01,Dogleg and Spreader Area Installation,AS_DOG_INST_1060,Inspect and relocate vacuum - BTL - DOG,35.0,20.0,20.0,20.0,08-22-24,10-10-24,AS_DOG_INST_1020: FS,AS_DOG_INST_1120: FS,SLAC,0%,52190.52190_METSTP Tech Planning - Reinstated FY16,52190_METSTP Tech Planning - Reinstated FY16,Labor,0.0d,35.0,35.0,At Completion Units,8/22/2024,10/10/2024,0,0,0,0,0,0,0,0,0,0,1.03_Accelerator Systems (AS),1.03.05_AS Beam Transfer Line (BTL),1.03.05.20_AS Beam Transfer Line Installation,1.03.05.20.01_Dogleg and Spreader Area Installation,AS_DOG_INST_1060_Inspect and relocate vacuum - BTL - DOG,METSTPT Tech Planning,Tech,SLAC,Labor
99413,1.03,1.03.05,1.03.05.20,1.03.05.20.01,1.03.05.20.01,Dogleg and Spreader Area Installation,AS_DOG_INST_1060,Inspect and relocate vacuum - BTL - DOG,35.0,12.0,12.0,12.0,08-22-24,10-10-24,AS_DOG_INST_1020: FS,AS_DOG_INST_1120: FS,SLAC,0%,52169.52169_METS Mechanical Engineer,52169_METS Mechanical Engineer,Labor,0.0d,35.0,35.0,At Completion Units,8/22/2024,10/10/2024,0,0,0,0,0,0,0,0,0,0,1.03_Accelerator Systems (AS),1.03.05_AS Beam Transfer Line (BTL),1.03.05.20_AS Beam Transfer Line Installation,1.03.05.20.01_Dogleg and Spreader Area Installation,AS_DOG_INST_1060_Inspect and relocate vacuum - BTL - DOG,Mechanical,,SLAC,Labor
99414,1.03,1.03.05,1.03.05.20,1.03.05.20.01,1.03.05.20.01,Dogleg and Spreader Area Installation,AS_DOG_INST_1060,Inspect and relocate vacuum - BTL - DOG,35.0,67.0,67.0,67.0,08-22-24,10-10-24,AS_DOG_INST_1020: FS,AS_DOG_INST_1120: FS,SLAC,0%,52198.52198_METSMANF (METSD Manufacturing),52198_METSMANF (METSD Manufacturing),Labor,0.0d,35.0,35.0,At Completion Units,8/22/2024,10/10/2024,0,0,0,0,0,0,0,0,0,0,1.03_Accelerator Systems (AS),1.03.05_AS Beam Transfer Line (BTL),1.03.05.20_AS Beam Transfer Line Installation,1.03.05.20.01_Dogleg and Spreader Area Installation,AS_DOG_INST_1060_Inspect and relocate vacuum - BTL - DOG,Manufacturing,,SLAC,Labor
99415,1.03,1.03.05,1.03.05.20,1.03.05.20.01,1.03.05.20.01,Dogleg and Spreader Area Installation,AS_DOG_INST_1050,Inspect and relocate stands - BTL - DOG,25.0,20.0,20.0,20.0,08-22-24,09-26-24,AS_DOG_INST_1000: FS,AS_DOG_INST_1120: FS,SLAC,0%,52190.52190_METSTP Tech Planning - Reinstated FY16,52190_METSTP Tech Planning - Reinstated FY16,Labor,0.0d,25.0,25.0,At Completion Units,8/22/2024,9/26/2024,0,0,0,0,0,0,0,0,0,0,1.03_Accelerator Systems (AS),1.03.05_AS Beam Transfer Line (BTL),1.03.05.20_AS Beam Transfer Line Installation,1.03.05.20.01_Dogleg and Spreader Area Installation,AS_DOG_INST_1050_Inspect and relocate stands - BTL - DOG,METSTPT Tech Planning,Tech,SLAC,Labor
99416,1.03,1.03.05,1.03.05.20,1.03.05.20.01,1.03.05.20.01,Dogleg and Spreader Area Installation,AS_DOG_INST_1050,Inspect and relocate stands - BTL - DOG,25.0,422.0,422.0,422.0,08-22-24,09-26-24,AS_DOG_INST_1000: FS,AS_DOG_INST_1120: FS,SLAC,0%,52152.52152_FAC Fleet,52152_FAC Fleet,Labor,0.0d,25.0,25.0,At Completion Units,8/22/2024,9/26/2024,0,0,0,0,0,0,0,0,0,0,1.03_Accelerator Systems (AS),1.03.05_AS Beam Transfer Line (BTL),1.03.05.20_AS Beam Transfer Line Installation,1.03.05.20.01_Dogleg and Spreader Area Installation,AS_DOG_INST_1050_Inspect and relocate stands - BTL - DOG,Support System,,SLAC,Labor
99417,1.03,1.03.05,1.03.05.20,1.03.05.20.01,1.03.05.20.01,Dogleg and Spreader Area Installation,AS_DOG_INST_1050,Inspect and relocate stands - BTL - DOG,25.0,32.0,32.0,32.0,08-22-24,09-26-24,AS_DOG_INST_1000: FS,AS_DOG_INST_1120: FS,SLAC,0%,52169.52169_METS Mechanical Engineer,52169_METS Mechanical Engineer,Labor,0.0d,25.0,25.0,At Completion Units,8/22/2024,9/26/2024,0,0,0,0,0,0,0,0,0,0,1.03_Accelerator Systems (AS),1.03.05_AS Beam Transfer Line (BTL),1.03.05.20_AS Beam Transfer Line Installation,1.03.05.20.01_Dogleg and Spreader Area Installation,AS_DOG_INST_1050_Inspect and relocate stands - BTL - DOG,Mechanical,,SLAC,Labor
99418,1.03,1.03.05,1.03.05.20,1.03.05.20.01,1.03.05.20.01,Dogleg and Spreader Area Installation,AS_DOG_INST_1050,Inspect and relocate stands - BTL - DOG,25.0,129.0,129.0,129.0,08-22-24,09-26-24,AS_DOG_INST_1000: FS,AS_DOG_INST_1120: FS,SLAC,0%,52198.52198_METSMANF (METSD Manufacturing),52198_METSMANF (METSD Manufacturing),Labor,0.0d,25.0,25.0,At Completion Units,8/22/2024,9/26/2024,0,0,0,0,0,0,0,0,0,0,1.03_Accelerator Systems (AS),1.03.05_AS Beam Transfer Line (BTL),1.03.05.20_AS Beam Transfer Line Installation,1.03.05.20.01_Dogleg and Spreader Area Installation,AS_DOG_INST_1050_Inspect and relocate stands - BTL - DOG,Manufacturing,,SLAC,Labor
99419,1.03,1.03.05,1.03.05.20,1.03.05.20.01,1.03.05.20.01,Dogleg and Spreader Area Installation,AS_DOG_INST_1040,Refurb and relocate magnets - BTL - DOG,40.0,20.0,20.0,20.0,08-22-24,10-17-24,AS_DOG_INST_1000: FS,AS_DOG_INST_1120: FS,SLAC,0%,52190.52190_METSTP Tech Planning - Reinstated FY16,52190_METSTP Tech Planning - Reinstated FY16,Labor,0.0d,40.0,40.0,At Completion Units,8/22/2024,10/17/2024,0,0,0,0,0,0,0,0,0,0,1.03_Accelerator Systems (AS),1.03.05_AS Beam Transfer Line (BTL),1.03.05.20_AS Beam Transfer Line Installation,1.03.05.20.01_Dogleg and Spreader Area Installation,AS_DOG_INST_1040_Refurb and relocate magnets - BTL - DOG,METSTPT Tech Planning,Tech,SLAC,Labor
99420,1.03,1.03.05,1.03.05.20,1.03.05.20.01,1.03.05.20.01,Dogleg and Spreader Area Installation,AS_DOG_INST_1040,Refurb and relocate magnets - BTL - DOG,40.0,12.0,12.0,12.0,08-22-24,10-17-24,AS_DOG_INST_1000: FS,AS_DOG_INST_1120: FS,SLAC,0%,52169.52169_METS Mechanical Engineer,52169_METS Mechanical Engineer,Labor,0.0d,40.0,40.0,At Completion Units,8/22/2024,10/17/2024,0,0,0,0,0,0,0,0,0,0,1.03_Accelerator Systems (AS),1.03.05_AS Beam Transfer Line (BTL),1.03.05.20_AS Beam Transfer Line Installation,1.03.05.20.01_Dogleg and Spreader Area Installation,AS_DOG_INST_1040_Refurb and relocate magnets - BTL - DOG,Mechanical,,SLAC,Labor
99421,1.03,1.03.05,1.03.05.20,1.03.05.20.01,1.03.05.20.01,Dogleg and Spreader Area Installation,AS_DOG_INST_1040,Refurb and relocate magnets - BTL - DOG,40.0,72.0,72.0,72.0,08-22-24,10-17-24,AS_DOG_INST_1000: FS,AS_DOG_INST_1120: FS,SLAC,0%,52191.52191_METSMET Metrology,52191_METSMET Metrology,Labor,0.0d,40.0,40.0,At Completion Units,8/22/2024,10/17/2024,0,0,0,0,0,0,0,0,0,0,1.03_Accelerator Systems (AS),1.03.05_AS Beam Transfer Line (BTL),1.03.05.20_AS Beam Transfer Line Installation,1.03.05.20.01_Dogleg and Spreader Area Installation,AS_DOG_INST_1040_Refurb and relocate magnets - BTL - DOG,Metrology,,SLAC,Labor
99422,1.03,1.03.05,1.03.05.20,1.03.05.20.01,1.03.05.20.01,Dogleg and Spreader Area Installation,AS_DOG_INST_1040,Refurb and relocate magnets - BTL - DOG,40.0,497.0,497.0,497.0,08-22-24,10-17-24,AS_DOG_INST_1000: FS,AS_DOG_INST_1120: FS,SLAC,0%,52198.52198_METSMANF (METSD Manufacturing),52198_METSMANF (METSD Manufacturing),Labor,0.0d,40.0,40.0,At Completion Units,8/22/2024,10/17/2024,0,0,0,0,0,0,0,0,0,0,1.03_Accelerator Systems (AS),1.03.05_AS Beam Transfer Line (BTL),1.03.05.20_AS Beam Transfer Line Installation,1.03.05.20.01_Dogleg and Spreader Area Installation,AS_DOG_INST_1040_Refurb and relocate magnets - BTL - DOG,Manufacturing,,SLAC,Labor
99423,1.03,1.03.05,1.03.05.20,1.03.05.20.01,1.03.05.20.01,Dogleg and Spreader Area Installation,AS_DOG_INST_1030,Remove existing Bypass vacuum system - BTL - DOG,15.0,8.0,8.0,8.0,08-01-24,08-21-24,"AS_DOG_INST_2070: FS, AS_M4_1030: FS","AS_DOG_INST_1080: SS 2.0d, AS_DOG_INST_1110: FS",SLAC,0%,52169.52169_METS Mechanical Engineer,52169_METS Mechanical Engineer,Labor,0.0d,15.0,15.0,At Completion Units,8/1/2024,8/21/2024,0,0,0,0,0,0,0,0,0,0,1.03_Accelerator Systems (AS),1.03.05_AS Beam Transfer Line (BTL),1.03.05.20_AS Beam Transfer Line Installation,1.03.05.20.01_Dogleg and Spreader Area Installation,AS_DOG_INST_1030_Remove existing Bypass vacuum system - BTL - DOG,Mechanical,,SLAC,Labor
99424,1.03,1.03.05,1.03.05.20,1.03.05.20.01,1.03.05.20.01,Dogleg and Spreader Area Installation,AS_DOG_INST_1030,Remove existing Bypass vacuum system - BTL - DOG,15.0,110.0,110.0,110.0,08-01-24,08-21-24,"AS_DOG_INST_2070: FS, AS_M4_1030: FS","AS_DOG_INST_1080: SS 2.0d, AS_DOG_INST_1110: FS",SLAC,0%,52198.52198_METSMANF (METSD Manufacturing),52198_METSMANF (METSD Manufacturing),Labor,0.0d,15.0,15.0,At Completion Units,8/1/2024,8/21/2024,0,0,0,0,0,0,0,0,0,0,1.03_Accelerator Systems (AS),1.03.05_AS Beam Transfer Line (BTL),1.03.05.20_AS Beam Transfer Line Installation,1.03.05.20.01_Dogleg and Spreader Area Installation,AS_DOG_INST_1030_Remove existing Bypass vacuum system - BTL - DOG,Manufacturing,,SLAC,Labor
99425,1.03,1.03.05,1.03.05.20,1.03.05.20.01,1.03.05.20.01,Dogleg and Spreader Area Installation,AS_DOG_INST_1020,Remove existing vacuum system - BTL - DOG,15.0,24.0,24.0,24.0,08-01-24,08-21-24,"AS_DOG_INST_2070: FS, AS_M4_1030: FS",AS_DOG_INST_1060: FS,SLAC,0%,52169.52169_METS Mechanical Engineer,52169_METS Mechanical Engineer,Labor,0.0d,15.0,15.0,At Completion Units,8/1/2024,8/21/2024,0,0,0,0,0,0,0,0,0,0,1.03_Accelerator Systems (AS),1.03.05_AS Beam Transfer Line (BTL),1.03.05.20_AS Beam Transfer Line Installation,1.03.05.20.01_Dogleg and Spreader Area Installation,AS_DOG_INST_1020_Remove existing vacuum system - BTL - DOG,Mechanical,,SLAC,Labor
99426,1.03,1.03.05,1.03.05.20,1.03.05.20.01,1.03.05.20.01,Dogleg and Spreader Area Installation,AS_DOG_INST_1020,Remove existing vacuum system - BTL - DOG,15.0,440.0,440.0,440.0,08-01-24,08-21-24,"AS_DOG_INST_2070: FS, AS_M4_1030: FS",AS_DOG_INST_1060: FS,SLAC,0%,52198.52198_METSMANF (METSD Manufacturing),52198_METSMANF (METSD Manufacturing),Labor,0.0d,15.0,15.0,At Completion Units,8/1/2024,8/21/2024,0,0,0,0,0,0,0,0,0,0,1.03_Accelerator Systems (AS),1.03.05_AS Beam Transfer Line (BTL),1.03.05.20_AS Beam Transfer Line Installation,1.03.05.20.01_Dogleg and Spreader Area Installation,AS_DOG_INST_1020_Remove existing vacuum system - BTL - DOG,Manufacturing,,SLAC,Labor
99427,1.03,1.03.05,1.03.05.20,1.03.05.20.01,1.03.05.20.01,Dogleg and Spreader Area Installation,AS_DOG_INST_1010,Remove existing Bypass components - BTL - DOG,15.0,8.0,8.0,8.0,08-01-24,08-21-24,"AS_BTL_INST_1030: FS, AS_M4_1030: FS","AS_DOG_INST_1110: FS, AS_DOG_INST_1080: FS",SLAC,0%,52169.52169_METS Mechanical Engineer,52169_METS Mechanical Engineer,Labor,0.0d,15.0,15.0,At Completion Units,8/1/2024,8/21/2024,0,0,0,0,0,0,0,0,0,0,1.03_Accelerator Systems (AS),1.03.05_AS Beam Transfer Line (BTL),1.03.05.20_AS Beam Transfer Line Installation,1.03.05.20.01_Dogleg and Spreader Area Installation,AS_DOG_INST_1010_Remove existing Bypass components - BTL - DOG,Mechanical,,SLAC,Labor
99428,1.03,1.03.05,1.03.05.20,1.03.05.20.01,1.03.05.20.01,Dogleg and Spreader Area Installation,AS_DOG_INST_1010,Remove existing Bypass components - BTL - DOG,15.0,157.0,157.0,157.0,08-01-24,08-21-24,"AS_BTL_INST_1030: FS, AS_M4_1030: FS","AS_DOG_INST_1110: FS, AS_DOG_INST_1080: FS",SLAC,0%,52198.52198_METSMANF (METSD Manufacturing),52198_METSMANF (METSD Manufacturing),Labor,0.0d,15.0,15.0,At Completion Units,8/1/2024,8/21/2024,0,0,0,0,0,0,0,0,0,0,1.03_Accelerator Systems (AS),1.03.05_AS Beam Transfer Line (BTL),1.03.05.20_AS Beam Transfer Line Installation,1.03.05.20.01_Dogleg and Spreader Area Installation,AS_DOG_INST_1010_Remove existing Bypass components - BTL - DOG,Manufacturing,,SLAC,Labor
99429,1.03,1.03.05,1.03.05.20,1.03.05.20.01,1.03.05.20.01,Dogleg and Spreader Area Installation,AS_DOG_INST_1000,Remove existing components - BTL - DOG,15.0,16.0,16.0,16.0,08-01-24,08-21-24,"AS_BTL_INST_1030: FS, AS_M4_1030: FS","AS_DOG_INST_1040: FS, AS_DOG_INST_1050: FS",SLAC,0%,52169.52169_METS Mechanical Engineer,52169_METS Mechanical Engineer,Labor,0.0d,15.0,15.0,At Completion Units,8/1/2024,8/21/2024,0,0,0,0,0,0,0,0,0,0,1.03_Accelerator Systems (AS),1.03.05_AS Beam Transfer Line (BTL),1.03.05.20_AS Beam Transfer Line Installation,1.03.05.20.01_Dogleg and Spreader Area Installation,AS_DOG_INST_1000_Remove existing components - BTL - DOG,Mechanical,,SLAC,Labor
99430,1.03,1.03.05,1.03.05.20,1.03.05.20.01,1.03.05.20.01,Dogleg and Spreader Area Installation,AS_DOG_INST_1000,Remove existing components - BTL - DOG,15.0,628.0,628.0,628.0,08-01-24,08-21-24,"AS_BTL_INST_1030: FS, AS_M4_1030: FS","AS_DOG_INST_1040: FS, AS_DOG_INST_1050: FS",SLAC,0%,52198.52198_METSMANF (METSD Manufacturing),52198_METSMANF (METSD Manufacturing),Labor,0.0d,15.0,15.0,At Completion Units,8/1/2024,8/21/2024,0,0,0,0,0,0,0,0,0,0,1.03_Accelerator Systems (AS),1.03.05_AS Beam Transfer Line (BTL),1.03.05.20_AS Beam Transfer Line Installation,1.03.05.20.01_Dogleg and Spreader Area Installation,AS_DOG_INST_1000_Remove existing components - BTL - DOG,Manufacturing,,SLAC,Labor
99750,1.03,1.03.05,1.03.05.20,1.03.05.20.02,1.03.05.20.02,BSY and EBD Area Installation,AS_EBD_INST_2050,RCV: Installation - BTL - EBD,1.0,20046.0,20046.0,20046.0,07-18-23,07-18-23,AS_EBD_INST_2040: FS,AS_EBD_INST_2060: FS,SLAC,0%,SL_MSSC.SLAC M&S (<$500K) (gets G&A) (gets ESC),SLAC M&S (<$500K) (gets G&A) (gets ESC),Nonlabor,0.0d,1.0,1.0,At Completion Units,7/18/2023,7/18/2023,0,0,0,0,0,0,0,0,0,0,1.03_Accelerator Systems (AS),1.03.05_AS Beam Transfer Line (BTL),1.03.05.20_AS Beam Transfer Line Installation,1.03.05.20.02_BSY and EBD Area Installation,AS_EBD_INST_2050_RCV: Installation - BTL - EBD,Material,,SLAC,M&S
99751,1.03,1.03.05,1.03.05.20,1.03.05.20.02,1.03.05.20.02,BSY and EBD Area Installation,AS_EBD_INST_2000,Prepare Requisition (Specs/SOW/ETC) - Installation - BTL - EBD,10.0,0.0,0.0,0.0,05-24-23,06-07-23,AS_BTL_INST_1030: FS,AS_EBD_INST_2010: FS,SLAC,0%,52213.52213_EEDHW (Electronics & Engineering Div - HW Engr),52213_EEDHW (Electronics & Engineering Div - HW Engr),Labor,0.0d,10.0,10.0,At Completion Units,5/24/2023,6/7/2023,0,0,0,0,0,0,0,0,0,0,1.03_Accelerator Systems (AS),1.03.05_AS Beam Transfer Line (BTL),1.03.05.20_AS Beam Transfer Line Installation,1.03.05.20.02_BSY and EBD Area Installation,AS_EBD_INST_2000_Prepare Requisition (Specs/SOW/ETC) - Installation - BTL - EBD,Electrical,,SLAC,Labor
99752,1.03,1.03.05,1.03.05.20,1.03.05.20.02,1.03.05.20.02,BSY and EBD Area Installation,AS_EBD_INST_2000,Prepare Requisition (Specs/SOW/ETC) - Installation - BTL - EBD,10.0,0.0,0.0,0.0,05-24-23,06-07-23,AS_BTL_INST_1030: FS,AS_EBD_INST_2010: FS,SLAC,0%,52169.52169_METS Mechanical Engineer,52169_METS Mechanical Engineer,Labor,0.0d,10.0,10.0,At Completion Units,5/24/2023,6/7/2023,0,0,0,0,0,0,0,0,0,0,1.03_Accelerator Systems (AS),1.03.05_AS Beam Transfer Line (BTL),1.03.05.20_AS Beam Transfer Line Installation,1.03.05.20.02_BSY and EBD Area Installation,AS_EBD_INST_2000_Prepare Requisition (Specs/SOW/ETC) - Installation - BTL - EBD,Mechanical,,SLAC,Labor
99753,1.03,1.03.05,1.03.05.20,1.03.05.20.02,1.03.05.20.02,BSY and EBD Area Installation,AS_EBD_INST_2030,AWARD: Procurement - Installation - BTL - EBD,1.0,20046.0,20046.0,20046.0,06-23-23,06-23-23,AS_EBD_INST_2020: FS,AS_EBD_INST_2040: FS,SLAC,0%,AWARD_USE.AWARD - Use this AWARD,AWARD - Use this AWARD,Nonlabor,0.0d,1.0,1.0,At Completion Units,6/23/2023,6/23/2023,AWARD < $500K,0,0,0,0,0,0,0,0,0,1.03_Accelerator Systems (AS),1.03.05_AS Beam Transfer Line (BTL),1.03.05.20_AS Beam Transfer Line Installation,1.03.05.20.02_BSY and EBD Area Installation,AS_EBD_INST_2030_AWARD: Procurement - Installation - BTL - EBD,Material,,SLAC,M&S
99754,1.03,1.03.05,1.03.05.20,1.03.05.20.02,1.03.05.20.02,BSY and EBD Area Installation,AS_EBD_INST_2010,RQN: Approval of Requisition - Installation - BTL - EBD,1.0,20046.0,20046.0,20046.0,06-08-23,06-08-23,AS_EBD_INST_2000: FS,AS_EBD_INST_2020: FS,SLAC,0%,REQ.Requisition,Requisition,Nonlabor,0.0d,1.0,1.0,At Completion Units,6/8/2023,6/8/2023,RQN,0,0,0,0,0,0,0,0,0,1.03_Accelerator Systems (AS),1.03.05_AS Beam Transfer Line (BTL),1.03.05.20_AS Beam Transfer Line Installation,1.03.05.20.02_BSY and EBD Area Installation,AS_EBD_INST_2010_RQN: Approval of Requisition - Installation - BTL - EBD,Material,,SLAC,M&S
99755,1.03,1.03.05,1.03.05.20,1.03.05.20.02,1.03.05.20.02,BSY and EBD Area Installation,AS_EBD_INST_1060,Installation Coordination - BTL - EBD,41.0,24.0,24.0,24.0,08-01-24,09-27-24,AS_M4_1030: FS,AS_M4_DTS2_1030: FS,SLAC,0%,52155.52155_Health Physics Technician III,52155_Health Physics Technician III,Labor,0.0d,41.0,41.0,At Completion Units,8/1/2024,9/27/2024,0,0,0,0,0,0,0,0,0,0,1.03_Accelerator Systems (AS),1.03.05_AS Beam Transfer Line (BTL),1.03.05.20_AS Beam Transfer Line Installation,1.03.05.20.02_BSY and EBD Area Installation,AS_EBD_INST_1060_Installation Coordination - BTL - EBD,Support System,Tech,SLAC,Labor
99756,1.03,1.03.05,1.03.05.20,1.03.05.20.02,1.03.05.20.02,BSY and EBD Area Installation,AS_EBD_INST_1060,Installation Coordination - BTL - EBD,41.0,120.0,120.0,120.0,08-01-24,09-27-24,AS_M4_1030: FS,AS_M4_DTS2_1030: FS,SLAC,0%,52169.52169_METS Mechanical Engineer,52169_METS Mechanical Engineer,Labor,0.0d,41.0,41.0,At Completion Units,8/1/2024,9/27/2024,0,0,0,0,0,0,0,0,0,0,1.03_Accelerator Systems (AS),1.03.05_AS Beam Transfer Line (BTL),1.03.05.20_AS Beam Transfer Line Installation,1.03.05.20.02_BSY and EBD Area Installation,AS_EBD_INST_1060_Installation Coordination - BTL - EBD,Mechanical,,SLAC,Labor
99757,1.03,1.03.05,1.03.05.20,1.03.05.20.02,1.03.05.20.02,BSY and EBD Area Installation,AS_EBD_INST_1050,Install new vacuum - BTL - EBD,11.0,8.0,8.0,8.0,09-13-24,09-27-24,"AS_EBD_INST_1040: FS, AS_EBD_MANF_1870: FS, AS_EBD_INST_1030: FS, AS_EBD_INST_1020: FS",AS_EBD_INST_1070: FS,SLAC,0%,52190.52190_METSTP Tech Planning - Reinstated FY16,52190_METSTP Tech Planning - Reinstated FY16,Labor,0.0d,11.0,11.0,At Completion Units,9/13/2024,9/27/2024,0,0,0,0,0,0,0,0,0,0,1.03_Accelerator Systems (AS),1.03.05_AS Beam Transfer Line (BTL),1.03.05.20_AS Beam Transfer Line Installation,1.03.05.20.02_BSY and EBD Area Installation,AS_EBD_INST_1050_Install new vacuum - BTL - EBD,METSTPT Tech Planning,Tech,SLAC,Labor
99758,1.03,1.03.05,1.03.05.20,1.03.05.20.02,1.03.05.20.02,BSY and EBD Area Installation,AS_EBD_INST_1050,Install new vacuum - BTL - EBD,11.0,16.0,16.0,16.0,09-13-24,09-27-24,"AS_EBD_INST_1040: FS, AS_EBD_MANF_1870: FS, AS_EBD_INST_1030: FS, AS_EBD_INST_1020: FS",AS_EBD_INST_1070: FS,SLAC,0%,52213.52213_EEDHW (Electronics & Engineering Div - HW Engr),52213_EEDHW (Electronics & Engineering Div - HW Engr),Labor,0.0d,11.0,11.0,At Completion Units,9/13/2024,9/27/2024,0,0,0,0,0,0,0,0,0,0,1.03_Accelerator Systems (AS),1.03.05_AS Beam Transfer Line (BTL),1.03.05.20_AS Beam Transfer Line Installation,1.03.05.20.02_BSY and EBD Area Installation,AS_EBD_INST_1050_Install new vacuum - BTL - EBD,Electrical,,SLAC,Labor
99759,1.03,1.03.05,1.03.05.20,1.03.05.20.02,1.03.05.20.02,BSY and EBD Area Installation,AS_EBD_INST_1050,Install new vacuum - BTL - EBD,11.0,60.0,60.0,60.0,09-13-24,09-27-24,"AS_EBD_INST_1040: FS, AS_EBD_MANF_1870: FS, AS_EBD_INST_1030: FS, AS_EBD_INST_1020: FS",AS_EBD_INST_1070: FS,SLAC,0%,52198.52198_METSMANF (METSD Manufacturing),52198_METSMANF (METSD Manufacturing),Labor,0.0d,11.0,11.0,At Completion Units,9/13/2024,9/27/2024,0,0,0,0,0,0,0,0,0,0,1.03_Accelerator Systems (AS),1.03.05_AS Beam Transfer Line (BTL),1.03.05.20_AS Beam Transfer Line Installation,1.03.05.20.02_BSY and EBD Area Installation,AS_EBD_INST_1050_Install new vacuum - BTL - EBD,Manufacturing,,SLAC,Labor
99760,1.03,1.03.05,1.03.05.20,1.03.05.20.02,1.03.05.20.02,BSY and EBD Area Installation,AS_EBD_INST_1040,Install Rastering magnets - BTL - EBD,10.0,8.0,8.0,8.0,08-29-24,09-12-24,"AS_EBD_INST_1010: FS, AS_EBD_MANF_2260: FS, AS_EBD_MANF_1160: FS",AS_EBD_INST_1050: FS,SLAC,0%,52190.52190_METSTP Tech Planning - Reinstated FY16,52190_METSTP Tech Planning - Reinstated FY16,Labor,0.0d,10.0,10.0,At Completion Units,8/29/2024,9/12/2024,0,0,0,0,0,0,0,0,0,0,1.03_Accelerator Systems (AS),1.03.05_AS Beam Transfer Line (BTL),1.03.05.20_AS Beam Transfer Line Installation,1.03.05.20.02_BSY and EBD Area Installation,AS_EBD_INST_1040_Install Rastering magnets - BTL - EBD,METSTPT Tech Planning,Tech,SLAC,Labor
99761,1.03,1.03.05,1.03.05.20,1.03.05.20.02,1.03.05.20.02,BSY and EBD Area Installation,AS_EBD_INST_1040,Install Rastering magnets - BTL - EBD,10.0,16.0,16.0,16.0,08-29-24,09-12-24,"AS_EBD_INST_1010: FS, AS_EBD_MANF_2260: FS, AS_EBD_MANF_1160: FS",AS_EBD_INST_1050: FS,SLAC,0%,52191.52191_METSMET Metrology,52191_METSMET Metrology,Labor,0.0d,10.0,10.0,At Completion Units,8/29/2024,9/12/2024,0,0,0,0,0,0,0,0,0,0,1.03_Accelerator Systems (AS),1.03.05_AS Beam Transfer Line (BTL),1.03.05.20_AS Beam Transfer Line Installation,1.03.05.20.02_BSY and EBD Area Installation,AS_EBD_INST_1040_Install Rastering magnets - BTL - EBD,Metrology,,SLAC,Labor
99762,1.03,1.03.05,1.03.05.20,1.03.05.20.02,1.03.05.20.02,BSY and EBD Area Installation,AS_EBD_INST_1040,Install Rastering magnets - BTL - EBD,10.0,64.0,64.0,64.0,08-29-24,09-12-24,"AS_EBD_INST_1010: FS, AS_EBD_MANF_2260: FS, AS_EBD_MANF_1160: FS",AS_EBD_INST_1050: FS,SLAC,0%,52198.52198_METSMANF (METSD Manufacturing),52198_METSMANF (METSD Manufacturing),Labor,0.0d,10.0,10.0,At Completion Units,8/29/2024,9/12/2024,0,0,0,0,0,0,0,0,0,0,1.03_Accelerator Systems (AS),1.03.05_AS Beam Transfer Line (BTL),1.03.05.20_AS Beam Transfer Line Installation,1.03.05.20.02_BSY and EBD Area Installation,AS_EBD_INST_1040_Install Rastering magnets - BTL - EBD,Manufacturing,,SLAC,Labor
99763,1.03,1.03.05,1.03.05.20,1.03.05.20.02,1.03.05.20.02,BSY and EBD Area Installation,AS_EBD_INST_1030,Install new Class 5 magnets - BTL - EBD,5.0,8.0,8.0,8.0,08-29-24,09-05-24,"AS_EBD_INST_1010: FS, AS_EBD_MANF_1470: FS, AS_EBD_MANF_2260: FS",AS_EBD_INST_1050: FS,SLAC,0%,52190.52190_METSTP Tech Planning - Reinstated FY16,52190_METSTP Tech Planning - Reinstated FY16,Labor,0.0d,5.0,5.0,At Completion Units,8/29/2024,9/5/2024,0,0,0,0,0,0,0,0,0,0,1.03_Accelerator Systems (AS),1.03.05_AS Beam Transfer Line (BTL),1.03.05.20_AS Beam Transfer Line Installation,1.03.05.20.02_BSY and EBD Area Installation,AS_EBD_INST_1030_Install new Class 5 magnets - BTL - EBD,METSTPT Tech Planning,Tech,SLAC,Labor
99764,1.03,1.03.05,1.03.05.20,1.03.05.20.02,1.03.05.20.02,BSY and EBD Area Installation,AS_EBD_INST_1030,Install new Class 5 magnets - BTL - EBD,5.0,8.0,8.0,8.0,08-29-24,09-05-24,"AS_EBD_INST_1010: FS, AS_EBD_MANF_1470: FS, AS_EBD_MANF_2260: FS",AS_EBD_INST_1050: FS,SLAC,0%,52191.52191_METSMET Metrology,52191_METSMET Metrology,Labor,0.0d,5.0,5.0,At Completion Units,8/29/2024,9/5/2024,0,0,0,0,0,0,0,0,0,0,1.03_Accelerator Systems (AS),1.03.05_AS Beam Transfer Line (BTL),1.03.05.20_AS Beam Transfer Line Installation,1.03.05.20.02_BSY and EBD Area Installation,AS_EBD_INST_1030_Install new Class 5 magnets - BTL - EBD,Metrology,,SLAC,Labor
99765,1.03,1.03.05,1.03.05.20,1.03.05.20.02,1.03.05.20.02,BSY and EBD Area Installation,AS_EBD_INST_1030,Install new Class 5 magnets - BTL - EBD,5.0,24.0,24.0,24.0,08-29-24,09-05-24,"AS_EBD_INST_1010: FS, AS_EBD_MANF_1470: FS, AS_EBD_MANF_2260: FS",AS_EBD_INST_1050: FS,SLAC,0%,52198.52198_METSMANF (METSD Manufacturing),52198_METSMANF (METSD Manufacturing),Labor,0.0d,5.0,5.0,At Completion Units,8/29/2024,9/5/2024,0,0,0,0,0,0,0,0,0,0,1.03_Accelerator Systems (AS),1.03.05_AS Beam Transfer Line (BTL),1.03.05.20_AS Beam Transfer Line Installation,1.03.05.20.02_BSY and EBD Area Installation,AS_EBD_INST_1030_Install new Class 5 magnets - BTL - EBD,Manufacturing,,SLAC,Labor
99766,1.03,1.03.05,1.03.05.20,1.03.05.20.02,1.03.05.20.02,BSY and EBD Area Installation,AS_EBD_INST_1020,Install new Class 4 magnets - BTL - EBD,5.0,8.0,8.0,8.0,08-29-24,09-05-24,"AS_EBD_INST_1010: FS, AS_EBD_MANF_4020: FS, AS_EBD_MANF_2260: FS",AS_EBD_INST_1050: FS,SLAC,0%,52190.52190_METSTP Tech Planning - Reinstated FY16,52190_METSTP Tech Planning - Reinstated FY16,Labor,0.0d,5.0,5.0,At Completion Units,8/29/2024,9/5/2024,0,0,0,0,0,0,0,0,0,0,1.03_Accelerator Systems (AS),1.03.05_AS Beam Transfer Line (BTL),1.03.05.20_AS Beam Transfer Line Installation,1.03.05.20.02_BSY and EBD Area Installation,AS_EBD_INST_1020_Install new Class 4 magnets - BTL - EBD,METSTPT Tech Planning,Tech,SLAC,Labor
99767,1.03,1.03.05,1.03.05.20,1.03.05.20.02,1.03.05.20.02,BSY and EBD Area Installation,AS_EBD_INST_1020,Install new Class 4 magnets - BTL - EBD,5.0,16.0,16.0,16.0,08-29-24,09-05-24,"AS_EBD_INST_1010: FS, AS_EBD_MANF_4020: FS, AS_EBD_MANF_2260: FS",AS_EBD_INST_1050: FS,SLAC,0%,52191.52191_METSMET Metrology,52191_METSMET Metrology,Labor,0.0d,5.0,5.0,At Completion Units,8/29/2024,9/5/2024,0,0,0,0,0,0,0,0,0,0,1.03_Accelerator Systems (AS),1.03.05_AS Beam Transfer Line (BTL),1.03.05.20_AS Beam Transfer Line Installation,1.03.05.20.02_BSY and EBD Area Installation,AS_EBD_INST_1020_Install new Class 4 magnets - BTL - EBD,Metrology,,SLAC,Labor
99768,1.03,1.03.05,1.03.05.20,1.03.05.20.02,1.03.05.20.02,BSY and EBD Area Installation,AS_EBD_INST_1020,Install new Class 4 magnets - BTL - EBD,5.0,48.0,48.0,48.0,08-29-24,09-05-24,"AS_EBD_INST_1010: FS, AS_EBD_MANF_4020: FS, AS_EBD_MANF_2260: FS",AS_EBD_INST_1050: FS,SLAC,0%,52198.52198_METSMANF (METSD Manufacturing),52198_METSMANF (METSD Manufacturing),Labor,0.0d,5.0,5.0,At Completion Units,8/29/2024,9/5/2024,0,0,0,0,0,0,0,0,0,0,1.03_Accelerator Systems (AS),1.03.05_AS Beam Transfer Line (BTL),1.03.05.20_AS Beam Transfer Line Installation,1.03.05.20.02_BSY and EBD Area Installation,AS_EBD_INST_1020_Install new Class 4 magnets - BTL - EBD,Manufacturing,,SLAC,Labor
99769,1.03,1.03.05,1.03.05.20,1.03.05.20.02,1.03.05.20.02,BSY and EBD Area Installation,AS_EBD_INST_1010,Install new magnet stands - BTL - EBD,15.0,4.0,4.0,4.0,08-08-24,08-28-24,"AS_EBD_INST_1000: FS, AS_EBD_MANF_1670: FS, AS_EBD_INST_2040: SS","AS_EBD_INST_1020: FS, AS_EBD_INST_1030: FS, AS_EBD_INST_1040: FS",SLAC,0%,52169.52169_METS Mechanical Engineer,52169_METS Mechanical Engineer,Labor,0.0d,15.0,15.0,At Completion Units,8/8/2024,8/28/2024,0,0,0,0,0,0,0,0,0,0,1.03_Accelerator Systems (AS),1.03.05_AS Beam Transfer Line (BTL),1.03.05.20_AS Beam Transfer Line Installation,1.03.05.20.02_BSY and EBD Area Installation,AS_EBD_INST_1010_Install new magnet stands - BTL - EBD,Mechanical,,SLAC,Labor
99770,1.03,1.03.05,1.03.05.20,1.03.05.20.02,1.03.05.20.02,BSY and EBD Area Installation,AS_EBD_INST_1010,Install new magnet stands - BTL - EBD,15.0,4.0,4.0,4.0,08-08-24,08-28-24,"AS_EBD_INST_1000: FS, AS_EBD_MANF_1670: FS, AS_EBD_INST_2040: SS","AS_EBD_INST_1020: FS, AS_EBD_INST_1030: FS, AS_EBD_INST_1040: FS",SLAC,0%,52191.52191_METSMET Metrology,52191_METSMET Metrology,Labor,0.0d,15.0,15.0,At Completion Units,8/8/2024,8/28/2024,0,0,0,0,0,0,0,0,0,0,1.03_Accelerator Systems (AS),1.03.05_AS Beam Transfer Line (BTL),1.03.05.20_AS Beam Transfer Line Installation,1.03.05.20.02_BSY and EBD Area Installation,AS_EBD_INST_1010_Install new magnet stands - BTL - EBD,Metrology,,SLAC,Labor
99771,1.03,1.03.05,1.03.05.20,1.03.05.20.02,1.03.05.20.02,BSY and EBD Area Installation,AS_EBD_INST_1000,Remove existing components - BTL - EBD,5.0,16.0,16.0,16.0,08-01-24,08-07-24,"AS_BTL_INST_1030: FS, AS_M4_1030: FS",AS_EBD_INST_1010: FS,SLAC,0%,52169.52169_METS Mechanical Engineer,52169_METS Mechanical Engineer,Labor,0.0d,5.0,5.0,At Completion Units,8/1/2024,8/7/2024,0,0,0,0,0,0,0,0,0,0,1.03_Accelerator Systems (AS),1.03.05_AS Beam Transfer Line (BTL),1.03.05.20_AS Beam Transfer Line Installation,1.03.05.20.02_BSY and EBD Area Installation,AS_EBD_INST_1000_Remove existing components - BTL - EBD,Mechanical,,SLAC,Labor
99772,1.03,1.03.05,1.03.05.20,1.03.05.20.02,1.03.05.20.02,BSY and EBD Area Installation,AS_EBD_INST_1000,Remove existing components - BTL - EBD,5.0,120.0,120.0,120.0,08-01-24,08-07-24,"AS_BTL_INST_1030: FS, AS_M4_1030: FS",AS_EBD_INST_1010: FS,SLAC,0%,52198.52198_METSMANF (METSD Manufacturing),52198_METSMANF (METSD Manufacturing),Labor,0.0d,5.0,5.0,At Completion Units,8/1/2024,8/7/2024,0,0,0,0,0,0,0,0,0,0,1.03_Accelerator Systems (AS),1.03.05_AS Beam Transfer Line (BTL),1.03.05.20_AS Beam Transfer Line Installation,1.03.05.20.02_BSY and EBD Area Installation,AS_EBD_INST_1000_Remove existing components - BTL - EBD,Manufacturing,,SLAC,Labor
99773,1.03,1.03.05,1.03.05.20,1.03.05.20.02,1.03.05.20.02,BSY and EBD Area Installation,AS_BSY_INST_1060,Installation Coordination - BTL - BSY,41.0,20.0,20.0,20.0,08-01-24,09-27-24,AS_M4_1030: FS,AS_M4_DTS2_1030: FS,SLAC,0%,52155.52155_Health Physics Technician III,52155_Health Physics Technician III,Labor,0.0d,41.0,41.0,At Completion Units,8/1/2024,9/27/2024,0,0,0,0,0,0,0,0,0,0,1.03_Accelerator Systems (AS),1.03.05_AS Beam Transfer Line (BTL),1.03.05.20_AS Beam Transfer Line Installation,1.03.05.20.02_BSY and EBD Area Installation,AS_BSY_INST_1060_Installation Coordination - BTL - BSY,Support System,Tech,SLAC,Labor
99774,1.03,1.03.05,1.03.05.20,1.03.05.20.02,1.03.05.20.02,BSY and EBD Area Installation,AS_BSY_INST_1060,Installation Coordination - BTL - BSY,41.0,100.0,100.0,100.0,08-01-24,09-27-24,AS_M4_1030: FS,AS_M4_DTS2_1030: FS,SLAC,0%,52169.52169_METS Mechanical Engineer,52169_METS Mechanical Engineer,Labor,0.0d,41.0,41.0,At Completion Units,8/1/2024,9/27/2024,0,0,0,0,0,0,0,0,0,0,1.03_Accelerator Systems (AS),1.03.05_AS Beam Transfer Line (BTL),1.03.05.20_AS Beam Transfer Line Installation,1.03.05.20.02_BSY and EBD Area Installation,AS_BSY_INST_1060_Installation Coordination - BTL - BSY,Mechanical,,SLAC,Labor
99775,1.03,1.03.05,1.03.05.20,1.03.05.20.02,1.03.05.20.02,BSY and EBD Area Installation,AS_BSY_INST_1050,Install new vacuum - BTL - BSY,5.0,20.0,20.0,20.0,08-22-24,08-28-24,"AS_BSY_INST_1020: FS, AS_BSY_MANF_1670: FS, AS_BSY_MANF_1870: FS, AS_BSY_INST_1040: FS",AS_BSY_INST_1070: FS,SLAC,0%,52213.52213_EEDHW (Electronics & Engineering Div - HW Engr),52213_EEDHW (Electronics & Engineering Div - HW Engr),Labor,0.0d,5.0,5.0,At Completion Units,8/22/2024,8/28/2024,0,0,0,0,0,0,0,0,0,0,1.03_Accelerator Systems (AS),1.03.05_AS Beam Transfer Line (BTL),1.03.05.20_AS Beam Transfer Line Installation,1.03.05.20.02_BSY and EBD Area Installation,AS_BSY_INST_1050_Install new vacuum - BTL - BSY,Electrical,,SLAC,Labor
99776,1.03,1.03.05,1.03.05.20,1.03.05.20.02,1.03.05.20.02,BSY and EBD Area Installation,AS_BSY_INST_1050,Install new vacuum - BTL - BSY,5.0,40.0,40.0,40.0,08-22-24,08-28-24,"AS_BSY_INST_1020: FS, AS_BSY_MANF_1670: FS, AS_BSY_MANF_1870: FS, AS_BSY_INST_1040: FS",AS_BSY_INST_1070: FS,SLAC,0%,52198.52198_METSMANF (METSD Manufacturing),52198_METSMANF (METSD Manufacturing),Labor,0.0d,5.0,5.0,At Completion Units,8/22/2024,8/28/2024,0,0,0,0,0,0,0,0,0,0,1.03_Accelerator Systems (AS),1.03.05_AS Beam Transfer Line (BTL),1.03.05.20_AS Beam Transfer Line Installation,1.03.05.20.02_BSY and EBD Area Installation,AS_BSY_INST_1050_Install new vacuum - BTL - BSY,Manufacturing,,SLAC,Labor
99777,1.03,1.03.05,1.03.05.20,1.03.05.20.02,1.03.05.20.02,BSY and EBD Area Installation,AS_BSY_INST_1040,Replace Class 4 magnets - BTL - BSY,5.0,8.0,8.0,8.0,08-08-24,08-14-24,"AS_BSY_INST_1000: FS, AS_BSY_MANF_4020: FS, AS_BSY_MANF_2060: FS",AS_BSY_INST_1050: FS,SLAC,0%,52190.52190_METSTP Tech Planning - Reinstated FY16,52190_METSTP Tech Planning - Reinstated FY16,Labor,0.0d,5.0,5.0,At Completion Units,8/8/2024,8/14/2024,0,0,0,0,0,0,0,0,0,0,1.03_Accelerator Systems (AS),1.03.05_AS Beam Transfer Line (BTL),1.03.05.20_AS Beam Transfer Line Installation,1.03.05.20.02_BSY and EBD Area Installation,AS_BSY_INST_1040_Replace Class 4 magnets - BTL - BSY,METSTPT Tech Planning,Tech,SLAC,Labor
99778,1.03,1.03.05,1.03.05.20,1.03.05.20.02,1.03.05.20.02,BSY and EBD Area Installation,AS_BSY_INST_1040,Replace Class 4 magnets - BTL - BSY,5.0,8.0,8.0,8.0,08-08-24,08-14-24,"AS_BSY_INST_1000: FS, AS_BSY_MANF_4020: FS, AS_BSY_MANF_2060: FS",AS_BSY_INST_1050: FS,SLAC,0%,52169.52169_METS Mechanical Engineer,52169_METS Mechanical Engineer,Labor,0.0d,5.0,5.0,At Completion Units,8/8/2024,8/14/2024,0,0,0,0,0,0,0,0,0,0,1.03_Accelerator Systems (AS),1.03.05_AS Beam Transfer Line (BTL),1.03.05.20_AS Beam Transfer Line Installation,1.03.05.20.02_BSY and EBD Area Installation,AS_BSY_INST_1040_Replace Class 4 magnets - BTL - BSY,Mechanical,,SLAC,Labor
99779,1.03,1.03.05,1.03.05.20,1.03.05.20.02,1.03.05.20.02,BSY and EBD Area Installation,AS_BSY_INST_1040,Replace Class 4 magnets - BTL - BSY,5.0,8.0,8.0,8.0,08-08-24,08-14-24,"AS_BSY_INST_1000: FS, AS_BSY_MANF_4020: FS, AS_BSY_MANF_2060: FS",AS_BSY_INST_1050: FS,SLAC,0%,52191.52191_METSMET Metrology,52191_METSMET Metrology,Labor,0.0d,5.0,5.0,At Completion Units,8/8/2024,8/14/2024,0,0,0,0,0,0,0,0,0,0,1.03_Accelerator Systems (AS),1.03.05_AS Beam Transfer Line (BTL),1.03.05.20_AS Beam Transfer Line Installation,1.03.05.20.02_BSY and EBD Area Installation,AS_BSY_INST_1040_Replace Class 4 magnets - BTL - BSY,Metrology,,SLAC,Labor
99780,1.03,1.03.05,1.03.05.20,1.03.05.20.02,1.03.05.20.02,BSY and EBD Area Installation,AS_BSY_INST_1040,Replace Class 4 magnets - BTL - BSY,5.0,16.0,16.0,16.0,08-08-24,08-14-24,"AS_BSY_INST_1000: FS, AS_BSY_MANF_4020: FS, AS_BSY_MANF_2060: FS",AS_BSY_INST_1050: FS,SLAC,0%,52198.52198_METSMANF (METSD Manufacturing),52198_METSMANF (METSD Manufacturing),Labor,0.0d,5.0,5.0,At Completion Units,8/8/2024,8/14/2024,0,0,0,0,0,0,0,0,0,0,1.03_Accelerator Systems (AS),1.03.05_AS Beam Transfer Line (BTL),1.03.05.20_AS Beam Transfer Line Installation,1.03.05.20.02_BSY and EBD Area Installation,AS_BSY_INST_1040_Replace Class 4 magnets - BTL - BSY,Manufacturing,,SLAC,Labor
99781,1.03,1.03.05,1.03.05.20,1.03.05.20.02,1.03.05.20.02,BSY and EBD Area Installation,AS_BSY_INST_1030,Install new magnet stands - BTL - BSY,5.0,4.0,4.0,4.0,08-08-24,08-14-24,"AS_BSY_INST_1000: FS, AS_BSY_INST_1010: FS, AS_BSY_MANF_1470: FS",AS_BSY_INST_1020: FS,SLAC,0%,52169.52169_METS Mechanical Engineer,52169_METS Mechanical Engineer,Labor,0.0d,5.0,5.0,At Completion Units,8/8/2024,8/14/2024,0,0,0,0,0,0,0,0,0,0,1.03_Accelerator Systems (AS),1.03.05_AS Beam Transfer Line (BTL),1.03.05.20_AS Beam Transfer Line Installation,1.03.05.20.02_BSY and EBD Area Installation,AS_BSY_INST_1030_Install new magnet stands - BTL - BSY,Mechanical,,SLAC,Labor
99782,1.03,1.03.05,1.03.05.20,1.03.05.20.02,1.03.05.20.02,BSY and EBD Area Installation,AS_BSY_INST_1030,Install new magnet stands - BTL - BSY,5.0,4.0,4.0,4.0,08-08-24,08-14-24,"AS_BSY_INST_1000: FS, AS_BSY_INST_1010: FS, AS_BSY_MANF_1470: FS",AS_BSY_INST_1020: FS,SLAC,0%,52191.52191_METSMET Metrology,52191_METSMET Metrology,Labor,0.0d,5.0,5.0,At Completion Units,8/8/2024,8/14/2024,0,0,0,0,0,0,0,0,0,0,1.03_Accelerator Systems (AS),1.03.05_AS Beam Transfer Line (BTL),1.03.05.20_AS Beam Transfer Line Installation,1.03.05.20.02_BSY and EBD Area Installation,AS_BSY_INST_1030_Install new magnet stands - BTL - BSY,Metrology,,SLAC,Labor
99783,1.03,1.03.05,1.03.05.20,1.03.05.20.02,1.03.05.20.02,BSY and EBD Area Installation,AS_BSY_INST_1020,Install new Class 5 magnets - BTL - BSY,5.0,8.0,8.0,8.0,08-15-24,08-21-24,"AS_BSY_INST_1030: FS, AS_BSY_MANF_5020: FS, AS_BSY_MANF_2060: FS",AS_BSY_INST_1050: FS,SLAC,0%,52190.52190_METSTP Tech Planning - Reinstated FY16,52190_METSTP Tech Planning - Reinstated FY16,Labor,0.0d,5.0,5.0,At Completion Units,8/15/2024,8/21/2024,0,0,0,0,0,0,0,0,0,0,1.03_Accelerator Systems (AS),1.03.05_AS Beam Transfer Line (BTL),1.03.05.20_AS Beam Transfer Line Installation,1.03.05.20.02_BSY and EBD Area Installation,AS_BSY_INST_1020_Install new Class 5 magnets - BTL - BSY,METSTPT Tech Planning,Tech,SLAC,Labor
99784,1.03,1.03.05,1.03.05.20,1.03.05.20.02,1.03.05.20.02,BSY and EBD Area Installation,AS_BSY_INST_1020,Install new Class 5 magnets - BTL - BSY,5.0,8.0,8.0,8.0,08-15-24,08-21-24,"AS_BSY_INST_1030: FS, AS_BSY_MANF_5020: FS, AS_BSY_MANF_2060: FS",AS_BSY_INST_1050: FS,SLAC,0%,52169.52169_METS Mechanical Engineer,52169_METS Mechanical Engineer,Labor,0.0d,5.0,5.0,At Completion Units,8/15/2024,8/21/2024,0,0,0,0,0,0,0,0,0,0,1.03_Accelerator Systems (AS),1.03.05_AS Beam Transfer Line (BTL),1.03.05.20_AS Beam Transfer Line Installation,1.03.05.20.02_BSY and EBD Area Installation,AS_BSY_INST_1020_Install new Class 5 magnets - BTL - BSY,Mechanical,,SLAC,Labor
99785,1.03,1.03.05,1.03.05.20,1.03.05.20.02,1.03.05.20.02,BSY and EBD Area Installation,AS_BSY_INST_1020,Install new Class 5 magnets - BTL - BSY,5.0,8.0,8.0,8.0,08-15-24,08-21-24,"AS_BSY_INST_1030: FS, AS_BSY_MANF_5020: FS, AS_BSY_MANF_2060: FS",AS_BSY_INST_1050: FS,SLAC,0%,52191.52191_METSMET Metrology,52191_METSMET Metrology,Labor,0.0d,5.0,5.0,At Completion Units,8/15/2024,8/21/2024,0,0,0,0,0,0,0,0,0,0,1.03_Accelerator Systems (AS),1.03.05_AS Beam Transfer Line (BTL),1.03.05.20_AS Beam Transfer Line Installation,1.03.05.20.02_BSY and EBD Area Installation,AS_BSY_INST_1020_Install new Class 5 magnets - BTL - BSY,Metrology,,SLAC,Labor
99786,1.03,1.03.05,1.03.05.20,1.03.05.20.02,1.03.05.20.02,BSY and EBD Area Installation,AS_BSY_INST_1020,Install new Class 5 magnets - BTL - BSY,5.0,16.0,16.0,16.0,08-15-24,08-21-24,"AS_BSY_INST_1030: FS, AS_BSY_MANF_5020: FS, AS_BSY_MANF_2060: FS",AS_BSY_INST_1050: FS,SLAC,0%,52198.52198_METSMANF (METSD Manufacturing),52198_METSMANF (METSD Manufacturing),Labor,0.0d,5.0,5.0,At Completion Units,8/15/2024,8/21/2024,0,0,0,0,0,0,0,0,0,0,1.03_Accelerator Systems (AS),1.03.05_AS Beam Transfer Line (BTL),1.03.05.20_AS Beam Transfer Line Installation,1.03.05.20.02_BSY and EBD Area Installation,AS_BSY_INST_1020_Install new Class 5 magnets - BTL - BSY,Manufacturing,,SLAC,Labor
99787,1.03,1.03.05,1.03.05.20,1.03.05.20.02,1.03.05.20.02,BSY and EBD Area Installation,AS_BSY_INST_1010,Remove existing vacuum - BTL - BSY,5.0,60.0,60.0,60.0,08-01-24,08-07-24,"AS_BTL_INST_1030: FS, AS_M4_1030: FS",AS_BSY_INST_1030: FS,SLAC,0%,52198.52198_METSMANF (METSD Manufacturing),52198_METSMANF (METSD Manufacturing),Labor,0.0d,5.0,5.0,At Completion Units,8/1/2024,8/7/2024,0,0,0,0,0,0,0,0,0,0,1.03_Accelerator Systems (AS),1.03.05_AS Beam Transfer Line (BTL),1.03.05.20_AS Beam Transfer Line Installation,1.03.05.20.02_BSY and EBD Area Installation,AS_BSY_INST_1010_Remove existing vacuum - BTL - BSY,Manufacturing,,SLAC,Labor
99788,1.03,1.03.05,1.03.05.20,1.03.05.20.02,1.03.05.20.02,BSY and EBD Area Installation,AS_BSY_INST_1000,Remove existing components - BTL - BSY,5.0,16.0,16.0,16.0,08-01-24,08-07-24,"AS_BTL_INST_1030: FS, AS_M4_1030: FS","AS_BSY_INST_1030: FS, AS_BSY_INST_1040: FS, CS_M4_1435: FS",SLAC,0%,52169.52169_METS Mechanical Engineer,52169_METS Mechanical Engineer,Labor,0.0d,5.0,5.0,At Completion Units,8/1/2024,8/7/2024,0,0,0,0,0,0,0,0,0,0,1.03_Accelerator Systems (AS),1.03.05_AS Beam Transfer Line (BTL),1.03.05.20_AS Beam Transfer Line Installation,1.03.05.20.02_BSY and EBD Area Installation,AS_BSY_INST_1000_Remove existing components - BTL - BSY,Mechanical,,SLAC,Labor
99789,1.03,1.03.05,1.03.05.20,1.03.05.20.02,1.03.05.20.02,BSY and EBD Area Installation,AS_BSY_INST_1000,Remove existing components - BTL - BSY,5.0,60.0,60.0,60.0,08-01-24,08-07-24,"AS_BTL_INST_1030: FS, AS_M4_1030: FS","AS_BSY_INST_1030: FS, AS_BSY_INST_1040: FS, CS_M4_1435: FS",SLAC,0%,52198.52198_METSMANF (METSD Manufacturing),52198_METSMANF (METSD Manufacturing),Labor,0.0d,5.0,5.0,At Completion Units,8/1/2024,8/7/2024,0,0,0,0,0,0,0,0,0,0,1.03_Accelerator Systems (AS),1.03.05_AS Beam Transfer Line (BTL),1.03.05.20_AS Beam Transfer Line Installation,1.03.05.20.02_BSY and EBD Area Installation,AS_BSY_INST_1000_Remove existing components - BTL - BSY,Manufacturing,,SLAC,Labor
100747,1.03,1.03.06,1.03.06.05,1.03.06.05.01,1.03.06.05.01,SXR Undulator System Design,AS_SXU_DE_0020,Develop Interface Requirements - SXR Undulator,111.0,16.0,1.8,34.0,03-10-2021,10-13-21,AS_SXU_DE_0010: FS,AS_SXU_DE_1040: FS,SLAC,94.85%,52127.52127_Research Electrical & SW Engineer,52127_Research Electrical & SW Engineer,Labor,144.0d,9.0,153.0,At Completion Units,3/10/2021,8/13/2021,0,0,0,0,0,0,0,0,0,0,1.03_Accelerator Systems (AS),1.03.06_AS Soft X-Ray Undulator (SXR) - SLAC,1.03.06.05_AS Soft X-Ray Undulator Engineering and Design - SLAC,1.03.06.05.01_SXR Undulator System Design,AS_SXU_DE_0020_Develop Interface Requirements - SXR Undulator,Electrical,,SLAC,Labor
100748,1.03,1.03.06,1.03.06.05,1.03.06.05.01,1.03.06.05.01,SXR Undulator System Design,AS_SXU_DE_0020,Develop Interface Requirements - SXR Undulator,111.0,16.0,1.8,34.0,03-10-2021,10-13-21,AS_SXU_DE_0010: FS,AS_SXU_DE_1040: FS,SLAC,94.85%,52213.52213_EEDHW (Electronics & Engineering Div - HW Engr),52213_EEDHW (Electronics & Engineering Div - HW Engr),Labor,144.0d,9.0,153.0,At Completion Units,3/10/2021,8/13/2021,0,0,0,0,0,0,0,0,0,0,1.03_Accelerator Systems (AS),1.03.06_AS Soft X-Ray Undulator (SXR) - SLAC,1.03.06.05_AS Soft X-Ray Undulator Engineering and Design - SLAC,1.03.06.05.01_SXR Undulator System Design,AS_SXU_DE_0020_Develop Interface Requirements - SXR Undulator,Electrical,,SLAC,Labor
100749,1.03,1.03.06,1.03.06.05,1.03.06.05.01,1.03.06.05.01,SXR Undulator System Design,AS_SXU_DE_0020,Develop Interface Requirements - SXR Undulator,111.0,24.0,1.8,34.0,03-10-2021,10-13-21,AS_SXU_DE_0010: FS,AS_SXU_DE_1040: FS,SLAC,94.85%,52213.52213_EEDHW (Electronics & Engineering Div - HW Engr),52213_EEDHW (Electronics & Engineering Div - HW Engr),Labor,144.0d,9.0,153.0,At Completion Units,3/10/2021,8/13/2021,0,0,0,0,0,0,0,0,0,0,1.03_Accelerator Systems (AS),1.03.06_AS Soft X-Ray Undulator (SXR) - SLAC,1.03.06.05_AS Soft X-Ray Undulator Engineering and Design - SLAC,1.03.06.05.01_SXR Undulator System Design,AS_SXU_DE_0020_Develop Interface Requirements - SXR Undulator,Electrical,,SLAC,Labor
100750,1.03,1.03.06,1.03.06.05,1.03.06.05.01,1.03.06.05.01,SXR Undulator System Design,AS_SXU_DE_0020,Develop Interface Requirements - SXR Undulator,111.0,80.0,1.8,34.0,03-10-2021,10-13-21,AS_SXU_DE_0010: FS,AS_SXU_DE_1040: FS,SLAC,94.85%,52169.52169_METS Mechanical Engineer,52169_METS Mechanical Engineer,Labor,144.0d,9.0,153.0,At Completion Units,3/10/2021,8/13/2021,0,0,0,0,0,0,0,0,0,0,1.03_Accelerator Systems (AS),1.03.06_AS Soft X-Ray Undulator (SXR) - SLAC,1.03.06.05_AS Soft X-Ray Undulator Engineering and Design - SLAC,1.03.06.05.01_SXR Undulator System Design,AS_SXU_DE_0020_Develop Interface Requirements - SXR Undulator,Mechanical,,SLAC,Labor
100751,1.03,1.03.06,1.03.06.05,1.03.06.05.01,1.03.06.05.01,SXR Undulator System Design,AS_SXU_DE_5020,LBNL Documentation Review Support - SXR Undulator,98.0,24.0,0.0,17.3,04-05-2021,08-31-2021,AS_SXU_DE_5010: FS,AS_SXU_DE_5030: FS,SLAC,100%,52191.52191_METSMET Metrology,52191_METSMET Metrology,Labor,104.0d,0.0,104.0,At Completion Units,4/5/2021,8/20/2021,0,0,0,0,0,0,0,0,0,0,1.03_Accelerator Systems (AS),1.03.06_AS Soft X-Ray Undulator (SXR) - SLAC,1.03.06.05_AS Soft X-Ray Undulator Engineering and Design - SLAC,1.03.06.05.01_SXR Undulator System Design,AS_SXU_DE_5020_LBNL Documentation Review Support - SXR Undulator,Metrology,,SLAC,Labor
100752,1.03,1.03.06,1.03.06.05,1.03.06.05.01,1.03.06.05.01,SXR Undulator System Design,AS_SXU_DE_5020,LBNL Documentation Review Support - SXR Undulator,98.0,12.0,0.0,17.3,04-05-2021,08-31-2021,AS_SXU_DE_5010: FS,AS_SXU_DE_5030: FS,SLAC,100%,52213.52213_EEDHW (Electronics & Engineering Div - HW Engr),52213_EEDHW (Electronics & Engineering Div - HW Engr),Labor,104.0d,0.0,104.0,At Completion Units,4/5/2021,8/20/2021,0,0,0,0,0,0,0,0,0,0,1.03_Accelerator Systems (AS),1.03.06_AS Soft X-Ray Undulator (SXR) - SLAC,1.03.06.05_AS Soft X-Ray Undulator Engineering and Design - SLAC,1.03.06.05.01_SXR Undulator System Design,AS_SXU_DE_5020_LBNL Documentation Review Support - SXR Undulator,Electrical,,SLAC,Labor
100753,1.03,1.03.06,1.03.06.05,1.03.06.05.01,1.03.06.05.01,SXR Undulator System Design,AS_SXU_DE_5020,LBNL Documentation Review Support - SXR Undulator,98.0,16.0,0.0,17.3,04-05-2021,08-31-2021,AS_SXU_DE_5010: FS,AS_SXU_DE_5030: FS,SLAC,100%,52169.52169_METS Mechanical Engineer,52169_METS Mechanical Engineer,Labor,104.0d,0.0,104.0,At Completion Units,4/5/2021,8/20/2021,0,0,0,0,0,0,0,0,0,0,1.03_Accelerator Systems (AS),1.03.06_AS Soft X-Ray Undulator (SXR) - SLAC,1.03.06.05_AS Soft X-Ray Undulator Engineering and Design - SLAC,1.03.06.05.01_SXR Undulator System Design,AS_SXU_DE_5020_LBNL Documentation Review Support - SXR Undulator,Mechanical,,SLAC,Labor
100754,1.03,1.03.06,1.03.06.05,1.03.06.05.01,1.03.06.05.01,SXR Undulator System Design,AS_SXU_DE_2400,Perform SXRSS Dipole Evaluation - SXR Undulator,60.0,20.0,22.0,54.7,05-17-2021,11-12-21,AS_SXU_DE_1030: FS,"AS_SXU_DE_2410: FS, AS_RAS_DE_1010: FS",SLAC,59.76%,52211.52211_EEDOPSE (Electronics & Engineering Div - Ops & PSE),52211_EEDOPSE (Electronics & Engineering Div - Ops & PSE),Labor,96.0d,31.0,127.0,At Completion Units,4/22/2021,5/26/2021,0,0,0,0,0,0,0,0,0,0,1.03_Accelerator Systems (AS),1.03.06_AS Soft X-Ray Undulator (SXR) - SLAC,1.03.06.05_AS Soft X-Ray Undulator Engineering and Design - SLAC,1.03.06.05.01_SXR Undulator System Design,AS_SXU_DE_2400_Perform SXRSS Dipole Evaluation - SXR Undulator,Electrical,,SLAC,Labor
100755,1.03,1.03.06,1.03.06.05,1.03.06.05.01,1.03.06.05.01,SXR Undulator System Design,AS_SXU_DE_2400,Perform SXRSS Dipole Evaluation - SXR Undulator,60.0,220.0,22.0,54.7,05-17-2021,11-12-21,AS_SXU_DE_1030: FS,"AS_SXU_DE_2410: FS, AS_RAS_DE_1010: FS",SLAC,59.76%,52191.52191_METSMET Metrology,52191_METSMET Metrology,Labor,96.0d,31.0,127.0,At Completion Units,4/22/2021,5/26/2021,0,0,0,0,0,0,0,0,0,0,1.03_Accelerator Systems (AS),1.03.06_AS Soft X-Ray Undulator (SXR) - SLAC,1.03.06.05_AS Soft X-Ray Undulator Engineering and Design - SLAC,1.03.06.05.01_SXR Undulator System Design,AS_SXU_DE_2400_Perform SXRSS Dipole Evaluation - SXR Undulator,Metrology,,SLAC,Labor
100756,1.03,1.03.06,1.03.06.05,1.03.06.05.01,1.03.06.05.01,SXR Undulator System Design,AS_SXU_DE_2400,Perform SXRSS Dipole Evaluation - SXR Undulator,60.0,40.0,22.0,54.7,05-17-2021,10-20-21,AS_SXU_DE_1030: FS,"AS_SXU_DE_2410: FS, AS_RAS_DE_1010: FS",SLAC,59.76%,52169.52169_METS Mechanical Engineer,52169_METS Mechanical Engineer,Labor,96.0d,13.8,109.8,At Completion Units,4/22/2021,5/26/2021,0,0,0,0,0,0,0,0,0,0,1.03_Accelerator Systems (AS),1.03.06_AS Soft X-Ray Undulator (SXR) - SLAC,1.03.06.05_AS Soft X-Ray Undulator Engineering and Design - SLAC,1.03.06.05.01_SXR Undulator System Design,AS_SXU_DE_2400_Perform SXRSS Dipole Evaluation - SXR Undulator,Mechanical,,SLAC,Labor
100757,1.03,1.03.06,1.03.06.05,1.03.06.05.01,1.03.06.05.01,SXR Undulator System Design,AS_SXU_DE_0010,Develop Functional Requirements - SXR Undulator,100.0,24.0,0.0,24.0,10-20-2020,03-09-2021,MS_FY_2021_Q1: FS,"AS_SXU_DE_0020: FS, AS_SXU_DE_1000: FF",SLAC,100%,52213.52213_EEDHW (Electronics & Engineering Div - HW Engr),52213_EEDHW (Electronics & Engineering Div - HW Engr),Labor,87.0d,0.0,87.0,At Completion Units,10/2/2020,3/9/2021,0,0,0,0,0,0,0,0,0,0,1.03_Accelerator Systems (AS),1.03.06_AS Soft X-Ray Undulator (SXR) - SLAC,1.03.06.05_AS Soft X-Ray Undulator Engineering and Design - SLAC,1.03.06.05.01_SXR Undulator System Design,AS_SXU_DE_0010_Develop Functional Requirements - SXR Undulator,Electrical,,SLAC,Labor
100758,1.03,1.03.06,1.03.06.05,1.03.06.05.01,1.03.06.05.01,SXR Undulator System Design,AS_SXU_DE_0010,Develop Functional Requirements - SXR Undulator,100.0,40.0,0.0,40.0,10-20-2020,03-09-2021,MS_FY_2021_Q1: FS,"AS_SXU_DE_0020: FS, AS_SXU_DE_1000: FF",SLAC,100%,52191.52191_METSMET Metrology,52191_METSMET Metrology,Labor,87.0d,0.0,87.0,At Completion Units,10/2/2020,3/9/2021,0,0,0,0,0,0,0,0,0,0,1.03_Accelerator Systems (AS),1.03.06_AS Soft X-Ray Undulator (SXR) - SLAC,1.03.06.05_AS Soft X-Ray Undulator Engineering and Design - SLAC,1.03.06.05.01_SXR Undulator System Design,AS_SXU_DE_0010_Develop Functional Requirements - SXR Undulator,Metrology,,SLAC,Labor
100759,1.03,1.03.06,1.03.06.05,1.03.06.05.01,1.03.06.05.01,SXR Undulator System Design,AS_SXU_DE_0010,Develop Functional Requirements - SXR Undulator,100.0,8.0,0.0,8.0,10-20-2020,03-09-2021,MS_FY_2021_Q1: FS,"AS_SXU_DE_0020: FS, AS_SXU_DE_1000: FF",SLAC,100%,0106.0106_Staff Scientist,0106_Staff Scientist,Labor,87.0d,0.0,87.0,At Completion Units,10/2/2020,3/9/2021,0,0,0,0,0,0,0,0,0,0,1.03_Accelerator Systems (AS),1.03.06_AS Soft X-Ray Undulator (SXR) - SLAC,1.03.06.05_AS Soft X-Ray Undulator Engineering and Design - SLAC,1.03.06.05.01_SXR Undulator System Design,AS_SXU_DE_0010_Develop Functional Requirements - SXR Undulator,Scientist,,SLAC,Labor
100760,1.03,1.03.06,1.03.06.05,1.03.06.05.01,1.03.06.05.01,SXR Undulator System Design,AS_SXU_DE_0010,Develop Functional Requirements - SXR Undulator,100.0,100.0,0.0,100.0,10-20-2020,03-09-2021,MS_FY_2021_Q1: FS,"AS_SXU_DE_0020: FS, AS_SXU_DE_1000: FF",SLAC,100%,52169.52169_METS Mechanical Engineer,52169_METS Mechanical Engineer,Labor,87.0d,0.0,87.0,At Completion Units,10/2/2020,3/9/2021,0,0,0,0,0,0,0,0,0,0,1.03_Accelerator Systems (AS),1.03.06_AS Soft X-Ray Undulator (SXR) - SLAC,1.03.06.05_AS Soft X-Ray Undulator Engineering and Design - SLAC,1.03.06.05.01_SXR Undulator System Design,AS_SXU_DE_0010_Develop Functional Requirements - SXR Undulator,Mechanical,,SLAC,Labor
100761,1.03,1.03.06,1.03.06.05,1.03.06.05.01,1.03.06.05.01,SXR Undulator System Design,AS_SXU_DE_5000,SLAC Support for Conceptual Redesign & Analysis (LBNL scope) - SXR Undulator,76.0,8.0,0.0,8.0,10-02-2020,02-02-2021,MS_FY_2021_Q1: FS,"AS_SXU_DE_5010: FS, AS_SXU_DE_4170: FS",SLAC,100%,52213.52213_EEDHW (Electronics & Engineering Div - HW Engr),52213_EEDHW (Electronics & Engineering Div - HW Engr),Labor,75.0d,0.0,75.0,At Completion Units,10/2/2020,2/2/2021,0,0,0,0,0,0,0,0,0,0,1.03_Accelerator Systems (AS),1.03.06_AS Soft X-Ray Undulator (SXR) - SLAC,1.03.06.05_AS Soft X-Ray Undulator Engineering and Design - SLAC,1.03.06.05.01_SXR Undulator System Design,AS_SXU_DE_5000_SLAC Support for Conceptual Redesign & Analysis (LBNL scope) - SXR Undulator,Electrical,,SLAC,Labor
100762,1.03,1.03.06,1.03.06.05,1.03.06.05.01,1.03.06.05.01,SXR Undulator System Design,AS_SXU_DE_5000,SLAC Support for Conceptual Redesign & Analysis (LBNL scope) - SXR Undulator,76.0,8.0,0.0,8.0,10-02-2020,02-02-2021,MS_FY_2021_Q1: FS,"AS_SXU_DE_5010: FS, AS_SXU_DE_4170: FS",SLAC,100%,52191.52191_METSMET Metrology,52191_METSMET Metrology,Labor,75.0d,0.0,75.0,At Completion Units,10/2/2020,2/2/2021,0,0,0,0,0,0,0,0,0,0,1.03_Accelerator Systems (AS),1.03.06_AS Soft X-Ray Undulator (SXR) - SLAC,1.03.06.05_AS Soft X-Ray Undulator Engineering and Design - SLAC,1.03.06.05.01_SXR Undulator System Design,AS_SXU_DE_5000_SLAC Support for Conceptual Redesign & Analysis (LBNL scope) - SXR Undulator,Metrology,,SLAC,Labor
100763,1.03,1.03.06,1.03.06.05,1.03.06.05.01,1.03.06.05.01,SXR Undulator System Design,AS_SXU_DE_5000,SLAC Support for Conceptual Redesign & Analysis (LBNL scope) - SXR Undulator,76.0,8.0,0.0,8.0,10-02-2020,02-02-2021,MS_FY_2021_Q1: FS,"AS_SXU_DE_5010: FS, AS_SXU_DE_4170: FS",SLAC,100%,0106.0106_Staff Scientist,0106_Staff Scientist,Labor,75.0d,0.0,75.0,At Completion Units,10/2/2020,2/2/2021,0,0,0,0,0,0,0,0,0,0,1.03_Accelerator Systems (AS),1.03.06_AS Soft X-Ray Undulator (SXR) - SLAC,1.03.06.05_AS Soft X-Ray Undulator Engineering and Design - SLAC,1.03.06.05.01_SXR Undulator System Design,AS_SXU_DE_5000_SLAC Support for Conceptual Redesign & Analysis (LBNL scope) - SXR Undulator,Scientist,,SLAC,Labor
100764,1.03,1.03.06,1.03.06.05,1.03.06.05.01,1.03.06.05.01,SXR Undulator System Design,AS_SXU_DE_5000,SLAC Support for Conceptual Redesign & Analysis (LBNL scope) - SXR Undulator,2.0,8.0,0.0,8.0,10-02-2020,02-02-2021,MS_FY_2021_Q1: FS,"AS_SXU_DE_5010: FS, AS_SXU_DE_4170: FS",SLAC,100%,52169.52169_METS Mechanical Engineer,52169_METS Mechanical Engineer,Labor,75.0d,0.0,75.0,At Completion Units,10/2/2020,2/2/2021,0,0,0,0,0,0,0,0,0,0,1.03_Accelerator Systems (AS),1.03.06_AS Soft X-Ray Undulator (SXR) - SLAC,1.03.06.05_AS Soft X-Ray Undulator Engineering and Design - SLAC,1.03.06.05.01_SXR Undulator System Design,AS_SXU_DE_5000_SLAC Support for Conceptual Redesign & Analysis (LBNL scope) - SXR Undulator,Mechanical,,SLAC,Labor
100765,1.03,1.03.06,1.03.06.05,1.03.06.05.01,1.03.06.05.01,SXR Undulator System Design,AS_SXU_DE_5010,Support PDR (LBNL scope) - SXR Undulator,27.0,8.0,0.0,8.0,02-25-2021,04-02-2021,"AS_SXU_DE_5000: FS, AS_LBL_DE_080: FF",AS_SXU_DE_5020: FS,SLAC,100%,52213.52213_EEDHW (Electronics & Engineering Div - HW Engr),52213_EEDHW (Electronics & Engineering Div - HW Engr),Labor,26.0d,0.0,26.0,At Completion Units,2/25/2021,4/2/2021,0,0,0,0,0,0,0,0,0,0,1.03_Accelerator Systems (AS),1.03.06_AS Soft X-Ray Undulator (SXR) - SLAC,1.03.06.05_AS Soft X-Ray Undulator Engineering and Design - SLAC,1.03.06.05.01_SXR Undulator System Design,AS_SXU_DE_5010_Support PDR (LBNL scope) - SXR Undulator,Electrical,,SLAC,Labor
100766,1.03,1.03.06,1.03.06.05,1.03.06.05.01,1.03.06.05.01,SXR Undulator System Design,AS_SXU_DE_5010,Support PDR (LBNL scope) - SXR Undulator,27.0,8.0,0.0,8.0,02-25-2021,04-02-2021,"AS_SXU_DE_5000: FS, AS_LBL_DE_080: FF",AS_SXU_DE_5020: FS,SLAC,100%,52191.52191_METSMET Metrology,52191_METSMET Metrology,Labor,26.0d,0.0,26.0,At Completion Units,2/25/2021,4/2/2021,0,0,0,0,0,0,0,0,0,0,1.03_Accelerator Systems (AS),1.03.06_AS Soft X-Ray Undulator (SXR) - SLAC,1.03.06.05_AS Soft X-Ray Undulator Engineering and Design - SLAC,1.03.06.05.01_SXR Undulator System Design,AS_SXU_DE_5010_Support PDR (LBNL scope) - SXR Undulator,Metrology,,SLAC,Labor
100767,1.03,1.03.06,1.03.06.05,1.03.06.05.01,1.03.06.05.01,SXR Undulator System Design,AS_SXU_DE_5010,Support PDR (LBNL scope) - SXR Undulator,27.0,8.0,0.0,8.0,02-25-2021,04-02-2021,"AS_SXU_DE_5000: FS, AS_LBL_DE_080: FF",AS_SXU_DE_5020: FS,SLAC,100%,0106.0106_Staff Scientist,0106_Staff Scientist,Labor,26.0d,0.0,26.0,At Completion Units,2/25/2021,4/2/2021,0,0,0,0,0,0,0,0,0,0,1.03_Accelerator Systems (AS),1.03.06_AS Soft X-Ray Undulator (SXR) - SLAC,1.03.06.05_AS Soft X-Ray Undulator Engineering and Design - SLAC,1.03.06.05.01_SXR Undulator System Design,AS_SXU_DE_5010_Support PDR (LBNL scope) - SXR Undulator,Scientist,,SLAC,Labor
100768,1.03,1.03.06,1.03.06.05,1.03.06.05.01,1.03.06.05.01,SXR Undulator System Design,AS_SXU_DE_5010,Support PDR (LBNL scope) - SXR Undulator,27.0,8.0,0.0,8.0,02-25-2021,04-02-2021,"AS_SXU_DE_5000: FS, AS_LBL_DE_080: FF",AS_SXU_DE_5020: FS,SLAC,100%,52169.52169_METS Mechanical Engineer,52169_METS Mechanical Engineer,Labor,26.0d,0.0,26.0,At Completion Units,2/25/2021,4/2/2021,0,0,0,0,0,0,0,0,0,0,1.03_Accelerator Systems (AS),1.03.06_AS Soft X-Ray Undulator (SXR) - SLAC,1.03.06.05_AS Soft X-Ray Undulator Engineering and Design - SLAC,1.03.06.05.01_SXR Undulator System Design,AS_SXU_DE_5010_Support PDR (LBNL scope) - SXR Undulator,Mechanical,,SLAC,Labor
100769,1.03,1.03.06,1.03.06.05,1.03.06.05.01,1.03.06.05.01,SXR Undulator System Design,AS_SXU_DE_1000,Prepare for Engineering Peer Review (EPR) - SLAC Mechanical Scope - SXR Undulator,23.0,172.0,0.0,172.0,03-05-2021,04-06-2021,"AS_SXU_DE_0010: FF, AS_SXU_DE_4000: FS, AS_SXU_DE_2200: FS",AS_SXU_DE_1010: FS,SLAC,100%,52169.52169_METS Mechanical Engineer,52169_METS Mechanical Engineer,Labor,23.0d,0.0,23.0,At Completion Units,3/5/2021,4/6/2021,0,0,0,0,0,0,0,0,0,0,1.03_Accelerator Systems (AS),1.03.06_AS Soft X-Ray Undulator (SXR) - SLAC,1.03.06.05_AS Soft X-Ray Undulator Engineering and Design - SLAC,1.03.06.05.01_SXR Undulator System Design,AS_SXU_DE_1000_Prepare for Engineering Peer Review (EPR) - SLAC Mechanical Scope - SXR Undulator,Mechanical,,SLAC,Labor
100770,1.03,1.03.06,1.03.06.05,1.03.06.05.01,1.03.06.05.01,SXR Undulator System Design,AS_SXU_DE_1000,Prepare for Engineering Peer Review (EPR) - SLAC Mechanical Scope - SXR Undulator,23.0,76.0,0.0,76.0,03-05-2021,04-06-2021,"AS_SXU_DE_0010: FF, AS_SXU_DE_4000: FS, AS_SXU_DE_2200: FS",AS_SXU_DE_1010: FS,SLAC,100%,52191.52191_METSMET Metrology,52191_METSMET Metrology,Labor,22.0d,0.0,22.0,At Completion Units,3/5/2021,4/6/2021,0,0,0,0,0,0,0,0,0,0,1.03_Accelerator Systems (AS),1.03.06_AS Soft X-Ray Undulator (SXR) - SLAC,1.03.06.05_AS Soft X-Ray Undulator Engineering and Design - SLAC,1.03.06.05.01_SXR Undulator System Design,AS_SXU_DE_1000_Prepare for Engineering Peer Review (EPR) - SLAC Mechanical Scope - SXR Undulator,Metrology,,SLAC,Labor
100771,1.03,1.03.06,1.03.06.05,1.03.06.05.01,1.03.06.05.01,SXR Undulator System Design,AS_SXU_DE_2030,Perform Vacuum Analysis - SXR Undulator,10.0,8.0,0.0,8.0,07-19-2021,08-02-2021,AS_SXU_DE_1030: FS,AS_SXU_DE_1040: FS,SLAC,100%,52213.52213_EEDHW (Electronics & Engineering Div - HW Engr),52213_EEDHW (Electronics & Engineering Div - HW Engr),Labor,11.0d,0.0,11.0,At Completion Units,5/27/2021,6/10/2021,0,0,0,0,0,0,0,0,0,0,1.03_Accelerator Systems (AS),1.03.06_AS Soft X-Ray Undulator (SXR) - SLAC,1.03.06.05_AS Soft X-Ray Undulator Engineering and Design - SLAC,1.03.06.05.01_SXR Undulator System Design,AS_SXU_DE_2030_Perform Vacuum Analysis - SXR Undulator,Electrical,,SLAC,Labor
100772,1.03,1.03.06,1.03.06.05,1.03.06.05.01,1.03.06.05.01,SXR Undulator System Design,AS_SXU_DE_2030,Perform Vacuum Analysis - SXR Undulator,10.0,4.0,0.0,4.0,07-19-2021,08-02-2021,AS_SXU_DE_1030: FS,AS_SXU_DE_1040: FS,SLAC,100%,0106.0106_Staff Scientist,0106_Staff Scientist,Labor,11.0d,0.0,11.0,At Completion Units,5/27/2021,6/10/2021,0,0,0,0,0,0,0,0,0,0,1.03_Accelerator Systems (AS),1.03.06_AS Soft X-Ray Undulator (SXR) - SLAC,1.03.06.05_AS Soft X-Ray Undulator Engineering and Design - SLAC,1.03.06.05.01_SXR Undulator System Design,AS_SXU_DE_2030_Perform Vacuum Analysis - SXR Undulator,Scientist,,SLAC,Labor
100773,1.03,1.03.06,1.03.06.05,1.03.06.05.01,1.03.06.05.01,SXR Undulator System Design,AS_SXU_DE_1020,Respond to Recommendations from Engineering Peer Review - SLAC Mechanical Scope - SXR Undulator,11.0,8.0,0.0,12.0,04-07-2021,04-21-2021,AS_SXU_DE_1010: SS,AS_SXU_DE_1030: FS,SLAC,100%,52191.52191_METSMET Metrology,52191_METSMET Metrology,Labor,10.0d,0.0,10.0,At Completion Units,4/7/2021,4/21/2021,0,0,0,0,0,0,0,0,0,0,1.03_Accelerator Systems (AS),1.03.06_AS Soft X-Ray Undulator (SXR) - SLAC,1.03.06.05_AS Soft X-Ray Undulator Engineering and Design - SLAC,1.03.06.05.01_SXR Undulator System Design,AS_SXU_DE_1020_Respond to Recommendations from Engineering Peer Review - SLAC Mechanical Scope - SXR Undulator,Metrology,,SLAC,Labor
100774,1.03,1.03.06,1.03.06.05,1.03.06.05.01,1.03.06.05.01,SXR Undulator System Design,AS_SXU_DE_1020,Respond to Recommendations from Engineering Peer Review - SLAC Mechanical Scope - SXR Undulator,11.0,16.0,0.0,12.0,04-07-2021,04-21-2021,AS_SXU_DE_1010: SS,AS_SXU_DE_1030: FS,SLAC,100%,52169.52169_METS Mechanical Engineer,52169_METS Mechanical Engineer,Labor,10.0d,0.0,10.0,At Completion Units,4/7/2021,4/21/2021,0,0,0,0,0,0,0,0,0,0,1.03_Accelerator Systems (AS),1.03.06_AS Soft X-Ray Undulator (SXR) - SLAC,1.03.06.05_AS Soft X-Ray Undulator Engineering and Design - SLAC,1.03.06.05.01_SXR Undulator System Design,AS_SXU_DE_1020_Respond to Recommendations from Engineering Peer Review - SLAC Mechanical Scope - SXR Undulator,Mechanical,,SLAC,Labor
100775,1.03,1.03.06,1.03.06.05,1.03.06.05.01,1.03.06.05.01,SXR Undulator System Design,AS_SXU_DE_2030,Perform Vacuum Analysis - SXR Undulator,10.0,40.0,0.0,40.0,07-19-2021,08-02-2021,AS_SXU_DE_1030: FS,AS_SXU_DE_1040: FS,SLAC,100%,52169.52169_METS Mechanical Engineer,52169_METS Mechanical Engineer,Labor,10.0d,0.0,10.0,At Completion Units,5/27/2021,6/10/2021,0,0,0,0,0,0,0,0,0,0,1.03_Accelerator Systems (AS),1.03.06_AS Soft X-Ray Undulator (SXR) - SLAC,1.03.06.05_AS Soft X-Ray Undulator Engineering and Design - SLAC,1.03.06.05.01_SXR Undulator System Design,AS_SXU_DE_2030_Perform Vacuum Analysis - SXR Undulator,Mechanical,,SLAC,Labor
100776,1.03,1.03.06,1.03.06.05,1.03.06.05.01,1.03.06.05.01,SXR Undulator System Design,AS_SXU_DE_5030,Support FDR (LBNL scope) - SXR Undulator,5.0,8.0,8.0,8.0,11-03-21,11-09-21,"AS_SXU_DE_5020: FS, AS_LBL_DE_270: FS",AS_LBL_DE_280: FS,SLAC,0%,52211.52211_EEDOPSE (Electronics & Engineering Div - Ops & PSE),52211_EEDOPSE (Electronics & Engineering Div - Ops & PSE),Labor,0.0d,5.0,5.0,At Completion Units,10/12/2021,10/18/2021,0,0,0,0,0,0,0,0,0,0,1.03_Accelerator Systems (AS),1.03.06_AS Soft X-Ray Undulator (SXR) - SLAC,1.03.06.05_AS Soft X-Ray Undulator Engineering and Design - SLAC,1.03.06.05.01_SXR Undulator System Design,AS_SXU_DE_5030_Support FDR (LBNL scope) - SXR Undulator,Electrical,,SLAC,Labor
100777,1.03,1.03.06,1.03.06.05,1.03.06.05.01,1.03.06.05.01,SXR Undulator System Design,AS_SXU_DE_1610,R_EPR: SXU Upgrade Tooling / Plan / Proc - SXR Undulator,1.0,4.0,4.0,4.0,11-05-21,11-05-21,AS_SXU_DE_1600: FS,AS_SXU_DE_1620: FS,SLAC,0%,52198.52198_METSMANF (METSD Manufacturing),52198_METSMANF (METSD Manufacturing),Labor,0.0d,1.0,1.0,At Completion Units,nn,,DM-A09-30%,0,0,0,0,0,0,0,0,0,1.03_Accelerator Systems (AS),1.03.06_AS Soft X-Ray Undulator (SXR) - SLAC,1.03.06.05_AS Soft X-Ray Undulator Engineering and Design - SLAC,1.03.06.05.01_SXR Undulator System Design,AS_SXU_DE_1610_R_EPR: SXU Upgrade Tooling / Plan / Proc - SXR Undulator,Manufacturing,,SLAC,Labor
100778,1.03,1.03.06,1.03.06.05,1.03.06.05.01,1.03.06.05.01,SXR Undulator System Design,AS_SXU_DE_1600,Prepare EPR - SXU Upgrade Tooling / Plan / Proc - SXR Undulator,25.0,20.0,20.0,20.0,10-01-21,11-04-21,AS_SXU_DE_4200: SS,AS_SXU_DE_1610: FS,SLAC,0%,52198.52198_METSMANF (METSD Manufacturing),52198_METSMANF (METSD Manufacturing),Labor,0.0d,25.0,25.0,At Completion Units,nn,,0,0,0,0,0,0,0,0,0,0,1.03_Accelerator Systems (AS),1.03.06_AS Soft X-Ray Undulator (SXR) - SLAC,1.03.06.05_AS Soft X-Ray Undulator Engineering and Design - SLAC,1.03.06.05.01_SXR Undulator System Design,AS_SXU_DE_1600_Prepare EPR - SXU Upgrade Tooling / Plan / Proc - SXR Undulator,Manufacturing,,SLAC,Labor
100779,1.03,1.03.06,1.03.06.05,1.03.06.05.01,1.03.06.05.01,SXR Undulator System Design,AS_SXU_DE_1620,Respond to recommendations from SXU Upgrade Tooling / Plan / Proc EPR - SXR Undulator,5.0,8.0,8.0,8.0,11-08-21,11-12-21,AS_SXU_DE_1610: FS,AS_SXU_DE_1630: FS,SLAC,0%,52169.52169_METS Mechanical Engineer,52169_METS Mechanical Engineer,Labor,0.0d,5.0,5.0,At Completion Units,nn,,0,0,0,0,0,0,0,0,0,0,1.03_Accelerator Systems (AS),1.03.06_AS Soft X-Ray Undulator (SXR) - SLAC,1.03.06.05_AS Soft X-Ray Undulator Engineering and Design - SLAC,1.03.06.05.01_SXR Undulator System Design,AS_SXU_DE_1620_Respond to recommendations from SXU Upgrade Tooling / Plan / Proc EPR - SXR Undulator,Mechanical,,SLAC,Labor
100780,1.03,1.03.06,1.03.06.05,1.03.06.05.01,1.03.06.05.01,SXR Undulator System Design,AS_SXU_DE_1600,Prepare EPR - SXU Upgrade Tooling / Plan / Proc - SXR Undulator,25.0,20.0,20.0,20.0,10-01-21,11-04-21,AS_SXU_DE_4200: SS,AS_SXU_DE_1610: FS,SLAC,0%,52191.52191_METSMET Metrology,52191_METSMET Metrology,Labor,0.0d,25.0,25.0,At Completion Units,nn,,0,0,0,0,0,0,0,0,0,0,1.03_Accelerator Systems (AS),1.03.06_AS Soft X-Ray Undulator (SXR) - SLAC,1.03.06.05_AS Soft X-Ray Undulator Engineering and Design - SLAC,1.03.06.05.01_SXR Undulator System Design,AS_SXU_DE_1600_Prepare EPR - SXU Upgrade Tooling / Plan / Proc - SXR Undulator,Metrology,,SLAC,Labor
100781,1.03,1.03.06,1.03.06.05,1.03.06.05.01,1.03.06.05.01,SXR Undulator System Design,AS_SXU_DE_1600,Prepare EPR - SXU Upgrade Tooling / Plan / Proc - SXR Undulator,25.0,60.0,60.0,60.0,10-01-21,11-04-21,AS_SXU_DE_4200: SS,AS_SXU_DE_1610: FS,SLAC,0%,52169.52169_METS Mechanical Engineer,52169_METS Mechanical Engineer,Labor,0.0d,25.0,25.0,At Completion Units,nn,,0,0,0,0,0,0,0,0,0,0,1.03_Accelerator Systems (AS),1.03.06_AS Soft X-Ray Undulator (SXR) - SLAC,1.03.06.05_AS Soft X-Ray Undulator Engineering and Design - SLAC,1.03.06.05.01_SXR Undulator System Design,AS_SXU_DE_1600_Prepare EPR - SXU Upgrade Tooling / Plan / Proc - SXR Undulator,Mechanical,,SLAC,Labor
100782,1.03,1.03.06,1.03.06.05,1.03.06.05.01,1.03.06.05.01,SXR Undulator System Design,AS_SXU_DE_1610,R_EPR: SXU Upgrade Tooling / Plan / Proc - SXR Undulator,1.0,4.0,4.0,4.0,11-05-21,11-05-21,AS_SXU_DE_1600: FS,AS_SXU_DE_1620: FS,SLAC,0%,52191.52191_METSMET Metrology,52191_METSMET Metrology,Labor,0.0d,1.0,1.0,At Completion Units,nn,,DM-A09-30%,0,0,0,0,0,0,0,0,0,1.03_Accelerator Systems (AS),1.03.06_AS Soft X-Ray Undulator (SXR) - SLAC,1.03.06.05_AS Soft X-Ray Undulator Engineering and Design - SLAC,1.03.06.05.01_SXR Undulator System Design,AS_SXU_DE_1610_R_EPR: SXU Upgrade Tooling / Plan / Proc - SXR Undulator,Metrology,,SLAC,Labor
100783,1.03,1.03.06,1.03.06.05,1.03.06.05.01,1.03.06.05.01,SXR Undulator System Design,AS_SXU_DE_1610,R_EPR: SXU Upgrade Tooling / Plan / Proc - SXR Undulator,1.0,4.0,4.0,4.0,11-05-21,11-05-21,AS_SXU_DE_1600: FS,AS_SXU_DE_1620: FS,SLAC,0%,52169.52169_METS Mechanical Engineer,52169_METS Mechanical Engineer,Labor,0.0d,1.0,1.0,At Completion Units,nn,,DM-A09-30%,0,0,0,0,0,0,0,0,0,1.03_Accelerator Systems (AS),1.03.06_AS Soft X-Ray Undulator (SXR) - SLAC,1.03.06.05_AS Soft X-Ray Undulator Engineering and Design - SLAC,1.03.06.05.01_SXR Undulator System Design,AS_SXU_DE_1610_R_EPR: SXU Upgrade Tooling / Plan / Proc - SXR Undulator,Mechanical,,SLAC,Labor
100784,1.03,1.03.06,1.03.06.05,1.03.06.05.01,1.03.06.05.01,SXR Undulator System Design,AS_SXU_DE_1100,Respond to recommendations from FDR - SLAC Mechanical Scope - SXR Undulator,5.0,8.0,8.0,8.0,08-03-22,08-09-22,AS_SXU_DE_1090: FS,AS_SXU_DE_1110: FS,SLAC,0%,52191.52191_METSMET Metrology,52191_METSMET Metrology,Labor,0.0d,5.0,5.0,At Completion Units,2/28/2022,3/4/2022,0,0,0,0,0,0,0,0,0,0,1.03_Accelerator Systems (AS),1.03.06_AS Soft X-Ray Undulator (SXR) - SLAC,1.03.06.05_AS Soft X-Ray Undulator Engineering and Design - SLAC,1.03.06.05.01_SXR Undulator System Design,AS_SXU_DE_1100_Respond to recommendations from FDR - SLAC Mechanical Scope - SXR Undulator,Metrology,,SLAC,Labor
100785,1.03,1.03.06,1.03.06.05,1.03.06.05.01,1.03.06.05.01,SXR Undulator System Design,AS_SXU_DE_1060,Respond to recommendations from PDR - SLAC Mechanical Scope - SXR Undulator,5.0,8.0,8.0,8.0,01-24-22,01-28-22,AS_SXU_DE_1050: FS,AS_SXU_DE_1070: FS,SLAC,0%,52191.52191_METSMET Metrology,52191_METSMET Metrology,Labor,0.0d,5.0,5.0,At Completion Units,9/15/2021,9/21/2021,0,0,0,0,0,0,0,0,0,0,1.03_Accelerator Systems (AS),1.03.06_AS Soft X-Ray Undulator (SXR) - SLAC,1.03.06.05_AS Soft X-Ray Undulator Engineering and Design - SLAC,1.03.06.05.01_SXR Undulator System Design,AS_SXU_DE_1060_Respond to recommendations from PDR - SLAC Mechanical Scope - SXR Undulator,Metrology,,SLAC,Labor
100786,1.03,1.03.06,1.03.06.05,1.03.06.05.01,1.03.06.05.01,SXR Undulator System Design,AS_SXU_DE_2430,Respond to recommendations from PDR - SXRSS,5.0,8.0,8.0,8.0,12-02-21,12-08-21,AS_SXU_DE_2420: FS,AS_SXU_DE_2440: FS,SLAC,0%,52191.52191_METSMET Metrology,52191_METSMET Metrology,Labor,0.0d,5.0,5.0,At Completion Units,6/28/2021,7/2/2021,0,0,0,0,0,0,0,0,0,0,1.03_Accelerator Systems (AS),1.03.06_AS Soft X-Ray Undulator (SXR) - SLAC,1.03.06.05_AS Soft X-Ray Undulator Engineering and Design - SLAC,1.03.06.05.01_SXR Undulator System Design,AS_SXU_DE_2430_Respond to recommendations from PDR - SXRSS,Metrology,,SLAC,Labor
100787,1.03,1.03.06,1.03.06.05,1.03.06.05.01,1.03.06.05.01,SXR Undulator System Design,AS_SXU_DE_2430,Respond to recommendations from PDR - SXRSS,5.0,8.0,8.0,8.0,12-02-21,12-08-21,AS_SXU_DE_2420: FS,AS_SXU_DE_2440: FS,SLAC,0%,52169.52169_METS Mechanical Engineer,52169_METS Mechanical Engineer,Labor,0.0d,5.0,5.0,At Completion Units,6/28/2021,7/2/2021,0,0,0,0,0,0,0,0,0,0,1.03_Accelerator Systems (AS),1.03.06_AS Soft X-Ray Undulator (SXR) - SLAC,1.03.06.05_AS Soft X-Ray Undulator Engineering and Design - SLAC,1.03.06.05.01_SXR Undulator System Design,AS_SXU_DE_2430_Respond to recommendations from PDR - SXRSS,Mechanical,,SLAC,Labor
100788,1.03,1.03.06,1.03.06.05,1.03.06.05.01,1.03.06.05.01,SXR Undulator System Design,AS_SXU_DE_2420,R_PDR: Prelim. Design Review - SXRSS,1.0,4.0,4.0,4.0,12-01-21,12-01-21,AS_SXU_DE_2410: FS,AS_SXU_DE_2430: FS,SLAC,0%,52169.52169_METS Mechanical Engineer,52169_METS Mechanical Engineer,Labor,0.0d,1.0,1.0,At Completion Units,6/25/2021,6/25/2021,Review,0,0,0,0,0,0,0,0,0,1.03_Accelerator Systems (AS),1.03.06_AS Soft X-Ray Undulator (SXR) - SLAC,1.03.06.05_AS Soft X-Ray Undulator Engineering and Design - SLAC,1.03.06.05.01_SXR Undulator System Design,AS_SXU_DE_2420_R_PDR: Prelim. Design Review - SXRSS,Mechanical,,SLAC,Labor
100789,1.03,1.03.06,1.03.06.05,1.03.06.05.01,1.03.06.05.01,SXR Undulator System Design,AS_SXU_DE_2420,R_PDR: Prelim. Design Review - SXRSS,1.0,4.0,4.0,4.0,12-01-21,12-01-21,AS_SXU_DE_2410: FS,AS_SXU_DE_2430: FS,SLAC,0%,52191.52191_METSMET Metrology,52191_METSMET Metrology,Labor,0.0d,1.0,1.0,At Completion Units,6/25/2021,6/25/2021,Review,0,0,0,0,0,0,0,0,0,1.03_Accelerator Systems (AS),1.03.06_AS Soft X-Ray Undulator (SXR) - SLAC,1.03.06.05_AS Soft X-Ray Undulator Engineering and Design - SLAC,1.03.06.05.01_SXR Undulator System Design,AS_SXU_DE_2420_R_PDR: Prelim. Design Review - SXRSS,Metrology,,SLAC,Labor
100790,1.03,1.03.06,1.03.06.05,1.03.06.05.01,1.03.06.05.01,SXR Undulator System Design,AS_SXU_DE_2410,Prepare Prelim. Design Review - SXRSS,10.0,40.0,40.0,40.0,11-15-21,11-30-21,AS_SXU_DE_2400: FS,AS_SXU_DE_2420: FS,SLAC,0%,52191.52191_METSMET Metrology,52191_METSMET Metrology,Labor,0.0d,10.0,10.0,At Completion Units,5/27/2021,6/24/2021,0,0,0,0,0,0,0,0,0,0,1.03_Accelerator Systems (AS),1.03.06_AS Soft X-Ray Undulator (SXR) - SLAC,1.03.06.05_AS Soft X-Ray Undulator Engineering and Design - SLAC,1.03.06.05.01_SXR Undulator System Design,AS_SXU_DE_2410_Prepare Prelim. Design Review - SXRSS,Metrology,,SLAC,Labor
100791,1.03,1.03.06,1.03.06.05,1.03.06.05.01,1.03.06.05.01,SXR Undulator System Design,AS_SXU_DE_2410,Prepare Prelim. Design Review - SXRSS,10.0,20.0,20.0,20.0,11-15-21,11-30-21,AS_SXU_DE_2400: FS,AS_SXU_DE_2420: FS,SLAC,0%,52169.52169_METS Mechanical Engineer,52169_METS Mechanical Engineer,Labor,0.0d,10.0,10.0,At Completion Units,5/27/2021,6/24/2021,0,0,0,0,0,0,0,0,0,0,1.03_Accelerator Systems (AS),1.03.06_AS Soft X-Ray Undulator (SXR) - SLAC,1.03.06.05_AS Soft X-Ray Undulator Engineering and Design - SLAC,1.03.06.05.01_SXR Undulator System Design,AS_SXU_DE_2410_Prepare Prelim. Design Review - SXRSS,Mechanical,,SLAC,Labor
100792,1.03,1.03.06,1.03.06.05,1.03.06.05.01,1.03.06.05.01,SXR Undulator System Design,AS_SXU_DE_1050,R_PDR: Prelim. Design Review - SLAC Mechanical Scope - SXR Undulator,1.0,8.0,8.0,8.0,01-21-22,01-21-22,AS_SXU_DE_1040: FS,AS_SXU_DE_1060: FS,SLAC,0%,52213.52213_EEDHW (Electronics & Engineering Div - HW Engr),52213_EEDHW (Electronics & Engineering Div - HW Engr),Labor,0.0d,1.0,1.0,At Completion Units,9/14/2021,9/14/2021,DM-A08-60%,0,0,0,0,0,0,0,0,0,1.03_Accelerator Systems (AS),1.03.06_AS Soft X-Ray Undulator (SXR) - SLAC,1.03.06.05_AS Soft X-Ray Undulator Engineering and Design - SLAC,1.03.06.05.01_SXR Undulator System Design,AS_SXU_DE_1050_R_PDR: Prelim. Design Review - SLAC Mechanical Scope - SXR Undulator,Electrical,,SLAC,Labor
100793,1.03,1.03.06,1.03.06.05,1.03.06.05.01,1.03.06.05.01,SXR Undulator System Design,AS_SXU_DE_6000,Storage planning and procurement support - SXR Undulator,130.0,20.0,20.0,20.0,08-10-22,02-28-23,AS_SXU_DE_1110: FS,AS_SXU_MANF_0101: FS,SLAC,0%,52190.52190_METSTP Tech Planning - Reinstated FY16,52190_METSTP Tech Planning - Reinstated FY16,Labor,0.0d,130.0,130.0,At Completion Units,2/25/2022,8/29/2022,0,0,0,0,0,0,0,0,0,0,1.03_Accelerator Systems (AS),1.03.06_AS Soft X-Ray Undulator (SXR) - SLAC,1.03.06.05_AS Soft X-Ray Undulator Engineering and Design - SLAC,1.03.06.05.01_SXR Undulator System Design,AS_SXU_DE_6000_Storage planning and procurement support - SXR Undulator,METSTPT Tech Planning,Tech,SLAC,Labor
100794,1.03,1.03.06,1.03.06.05,1.03.06.05.01,1.03.06.05.01,SXR Undulator System Design,AS_SXU_DE_1090,R_FDR: Final Design Review - SLAC Mechanical Scope - SXR Undulator,1.0,4.0,4.0,4.0,08-02-22,08-02-22,AS_SXU_DE_1080: FS,"AS_SXU_DE_1100: FS, AS_M4_3060: FS, AS_M4_3080: FS",SLAC,0%,52190.52190_METSTP Tech Planning - Reinstated FY16,52190_METSTP Tech Planning - Reinstated FY16,Labor,0.0d,1.0,1.0,At Completion Units,2/25/2022,2/25/2022,DM-A09-30%,0,0,0,0,0,0,0,0,0,1.03_Accelerator Systems (AS),1.03.06_AS Soft X-Ray Undulator (SXR) - SLAC,1.03.06.05_AS Soft X-Ray Undulator Engineering and Design - SLAC,1.03.06.05.01_SXR Undulator System Design,AS_SXU_DE_1090_R_FDR: Final Design Review - SLAC Mechanical Scope - SXR Undulator,METSTPT Tech Planning,Tech,SLAC,Labor
100795,1.03,1.03.06,1.03.06.05,1.03.06.05.01,1.03.06.05.01,SXR Undulator System Design,AS_SXU_DE_1090,R_FDR: Final Design Review - SLAC Mechanical Scope - SXR Undulator,1.0,4.0,4.0,4.0,08-02-22,08-02-22,AS_SXU_DE_1080: FS,"AS_SXU_DE_1100: FS, AS_M4_3060: FS, AS_M4_3080: FS",SLAC,0%,52211.52211_EEDOPSE (Electronics & Engineering Div - Ops & PSE),52211_EEDOPSE (Electronics & Engineering Div - Ops & PSE),Labor,0.0d,1.0,1.0,At Completion Units,2/25/2022,2/25/2022,DM-A09-30%,0,0,0,0,0,0,0,0,0,1.03_Accelerator Systems (AS),1.03.06_AS Soft X-Ray Undulator (SXR) - SLAC,1.03.06.05_AS Soft X-Ray Undulator Engineering and Design - SLAC,1.03.06.05.01_SXR Undulator System Design,AS_SXU_DE_1090_R_FDR: Final Design Review - SLAC Mechanical Scope - SXR Undulator,Electrical,,SLAC,Labor
100796,1.03,1.03.06,1.03.06.05,1.03.06.05.01,1.03.06.05.01,SXR Undulator System Design,AS_SXU_DE_1090,R_FDR: Final Design Review - SLAC Mechanical Scope - SXR Undulator,1.0,4.0,4.0,4.0,08-02-22,08-02-22,AS_SXU_DE_1080: FS,"AS_SXU_DE_1100: FS, AS_M4_3060: FS, AS_M4_3080: FS",SLAC,0%,52127.52127_Research Electrical & SW Engineer,52127_Research Electrical & SW Engineer,Labor,0.0d,1.0,1.0,At Completion Units,2/25/2022,2/25/2022,DM-A09-30%,0,0,0,0,0,0,0,0,0,1.03_Accelerator Systems (AS),1.03.06_AS Soft X-Ray Undulator (SXR) - SLAC,1.03.06.05_AS Soft X-Ray Undulator Engineering and Design - SLAC,1.03.06.05.01_SXR Undulator System Design,AS_SXU_DE_1090_R_FDR: Final Design Review - SLAC Mechanical Scope - SXR Undulator,Electrical,,SLAC,Labor
100797,1.03,1.03.06,1.03.06.05,1.03.06.05.01,1.03.06.05.01,SXR Undulator System Design,AS_SXU_DE_1050,R_PDR: Prelim. Design Review - SLAC Mechanical Scope - SXR Undulator,1.0,4.0,4.0,4.0,01-21-22,01-21-22,AS_SXU_DE_1040: FS,AS_SXU_DE_1060: FS,SLAC,0%,52190.52190_METSTP Tech Planning - Reinstated FY16,52190_METSTP Tech Planning - Reinstated FY16,Labor,0.0d,1.0,1.0,At Completion Units,9/14/2021,9/14/2021,DM-A08-60%,0,0,0,0,0,0,0,0,0,1.03_Accelerator Systems (AS),1.03.06_AS Soft X-Ray Undulator (SXR) - SLAC,1.03.06.05_AS Soft X-Ray Undulator Engineering and Design - SLAC,1.03.06.05.01_SXR Undulator System Design,AS_SXU_DE_1050_R_PDR: Prelim. Design Review - SLAC Mechanical Scope - SXR Undulator,METSTPT Tech Planning,Tech,SLAC,Labor
100798,1.03,1.03.06,1.03.06.05,1.03.06.05.01,1.03.06.05.01,SXR Undulator System Design,AS_SXU_DE_1050,R_PDR: Prelim. Design Review - SLAC Mechanical Scope - SXR Undulator,1.0,4.0,4.0,4.0,01-21-22,01-21-22,AS_SXU_DE_1040: FS,AS_SXU_DE_1060: FS,SLAC,0%,52127.52127_Research Electrical & SW Engineer,52127_Research Electrical & SW Engineer,Labor,0.0d,1.0,1.0,At Completion Units,9/14/2021,9/14/2021,DM-A08-60%,0,0,0,0,0,0,0,0,0,1.03_Accelerator Systems (AS),1.03.06_AS Soft X-Ray Undulator (SXR) - SLAC,1.03.06.05_AS Soft X-Ray Undulator Engineering and Design - SLAC,1.03.06.05.01_SXR Undulator System Design,AS_SXU_DE_1050_R_PDR: Prelim. Design Review - SLAC Mechanical Scope - SXR Undulator,Electrical,,SLAC,Labor
100799,1.03,1.03.06,1.03.06.05,1.03.06.05.01,1.03.06.05.01,SXR Undulator System Design,AS_SXU_DE_2040,Finalize Interspace and System Design - SXR Undulator,25.0,140.0,140.0,140.0,01-31-22,03-07-22,AS_SXU_DE_1070: FS,AS_SXU_DE_1080: FS,SLAC,0%,52169.52169_METS Mechanical Engineer,52169_METS Mechanical Engineer,Labor,0.0d,25.0,25.0,At Completion Units,9/22/2021,10/26/2021,0,0,0,0,0,0,0,0,0,0,1.03_Accelerator Systems (AS),1.03.06_AS Soft X-Ray Undulator (SXR) - SLAC,1.03.06.05_AS Soft X-Ray Undulator Engineering and Design - SLAC,1.03.06.05.01_SXR Undulator System Design,AS_SXU_DE_2040_Finalize Interspace and System Design - SXR Undulator,Mechanical,,SLAC,Labor
100800,1.03,1.03.06,1.03.06.05,1.03.06.05.01,1.03.06.05.01,SXR Undulator System Design,AS_SXU_DE_2010,Prepare Interspace Assembly Drawings - SXR Undulator,25.0,20.0,20.0,20.0,10-04-21,11-05-21,AS_SXU_DE_2000: SS,AS_SXU_DE_1040: FS,SLAC,0%,52168.52168_METS - Mechanical Design,52168_METS - Mechanical Design,Labor,0.0d,25.0,25.0,At Completion Units,5/27/2021,7/1/2021,0,0,0,0,0,0,0,0,0,0,1.03_Accelerator Systems (AS),1.03.06_AS Soft X-Ray Undulator (SXR) - SLAC,1.03.06.05_AS Soft X-Ray Undulator Engineering and Design - SLAC,1.03.06.05.01_SXR Undulator System Design,AS_SXU_DE_2010_Prepare Interspace Assembly Drawings - SXR Undulator,Mechanical,,SLAC,Labor
100801,1.03,1.03.06,1.03.06.05,1.03.06.05.01,1.03.06.05.01,SXR Undulator System Design,AS_SXU_DE_2010,Prepare Interspace Assembly Drawings - SXR Undulator,25.0,100.0,100.0,100.0,10-04-21,11-05-21,AS_SXU_DE_2000: SS,AS_SXU_DE_1040: FS,SLAC,0%,52169.52169_METS Mechanical Engineer,52169_METS Mechanical Engineer,Labor,0.0d,25.0,25.0,At Completion Units,5/27/2021,7/1/2021,0,0,0,0,0,0,0,0,0,0,1.03_Accelerator Systems (AS),1.03.06_AS Soft X-Ray Undulator (SXR) - SLAC,1.03.06.05_AS Soft X-Ray Undulator Engineering and Design - SLAC,1.03.06.05.01_SXR Undulator System Design,AS_SXU_DE_2010_Prepare Interspace Assembly Drawings - SXR Undulator,Mechanical,,SLAC,Labor
100802,1.03,1.03.06,1.03.06.05,1.03.06.05.01,1.03.06.05.01,SXR Undulator System Design,AS_SXU_DE_1010,R_EPP: Engineering Peer Review - SLAC Mechanical Scope - SXR Undulator,1.0,20.0,0.0,20.0,04-07-2021,04-07-2021,AS_SXU_DE_1000: FS,AS_SXU_DE_1020: SS,SLAC,100%,52191.52191_METSMET Metrology,52191_METSMET Metrology,Labor,0.0d,0.0,0.0,At Completion Units,4/7/2021,4/7/2021,Review,0,0,0,0,0,0,0,0,0,1.03_Accelerator Systems (AS),1.03.06_AS Soft X-Ray Undulator (SXR) - SLAC,1.03.06.05_AS Soft X-Ray Undulator Engineering and Design - SLAC,1.03.06.05.01_SXR Undulator System Design,AS_SXU_DE_1010_R_EPP: Engineering Peer Review - SLAC Mechanical Scope - SXR Undulator,Metrology,,SLAC,Labor
100803,1.03,1.03.06,1.03.06.05,1.03.06.05.01,1.03.06.05.01,SXR Undulator System Design,AS_SXU_DE_1010,R_EPP: Engineering Peer Review - SLAC Mechanical Scope - SXR Undulator,1.0,28.0,0.0,28.0,04-07-2021,04-07-2021,AS_SXU_DE_1000: FS,AS_SXU_DE_1020: SS,SLAC,100%,52169.52169_METS Mechanical Engineer,52169_METS Mechanical Engineer,Labor,0.0d,0.0,0.0,At Completion Units,4/7/2021,4/7/2021,Review,0,0,0,0,0,0,0,0,0,1.03_Accelerator Systems (AS),1.03.06_AS Soft X-Ray Undulator (SXR) - SLAC,1.03.06.05_AS Soft X-Ray Undulator Engineering and Design - SLAC,1.03.06.05.01_SXR Undulator System Design,AS_SXU_DE_1010_R_EPP: Engineering Peer Review - SLAC Mechanical Scope - SXR Undulator,Mechanical,,SLAC,Labor
100804,1.03,1.03.06,1.03.06.05,1.03.06.05.01,1.03.06.05.01,SXR Undulator System Design,AS_SXU_DE_2020,Prepare Entrance RFBPM Stage Design/Drawings - SXR Undulator,20.0,96.0,96.0,96.0,11-08-21,12-07-21,AS_SXU_DE_2000: FS,AS_SXU_DE_1040: FS,SLAC,0%,52169.52169_METS Mechanical Engineer,52169_METS Mechanical Engineer,Labor,0.0d,20.0,20.0,At Completion Units,5/27/2021,6/24/2021,0,0,0,0,0,0,0,0,0,0,1.03_Accelerator Systems (AS),1.03.06_AS Soft X-Ray Undulator (SXR) - SLAC,1.03.06.05_AS Soft X-Ray Undulator Engineering and Design - SLAC,1.03.06.05.01_SXR Undulator System Design,AS_SXU_DE_2020_Prepare Entrance RFBPM Stage Design/Drawings - SXR Undulator,Mechanical,,SLAC,Labor
100805,1.03,1.03.06,1.03.06.05,1.03.06.05.01,1.03.06.05.01,SXR Undulator System Design,AS_SXU_DE_1100,Respond to recommendations from FDR - SLAC Mechanical Scope - SXR Undulator,5.0,16.0,16.0,16.0,08-03-22,08-09-22,AS_SXU_DE_1090: FS,AS_SXU_DE_1110: FS,SLAC,0%,52169.52169_METS Mechanical Engineer,52169_METS Mechanical Engineer,Labor,0.0d,5.0,5.0,At Completion Units,2/28/2022,3/4/2022,0,0,0,0,0,0,0,0,0,0,1.03_Accelerator Systems (AS),1.03.06_AS Soft X-Ray Undulator (SXR) - SLAC,1.03.06.05_AS Soft X-Ray Undulator Engineering and Design - SLAC,1.03.06.05.01_SXR Undulator System Design,AS_SXU_DE_1100_Respond to recommendations from FDR - SLAC Mechanical Scope - SXR Undulator,Mechanical,,SLAC,Labor
100806,1.03,1.03.06,1.03.06.05,1.03.06.05.01,1.03.06.05.01,SXR Undulator System Design,AS_SXU_DE_1080,Prepare Final Design Review - SLAC Mechanical Scope - SXR Undulator,20.0,16.0,16.0,16.0,07-05-22,08-01-22,"AS_SXU_DE_2040: FS, AS_SXU_DE_2050: FS, AS_SXU_DE_1430: FS, AS_SXU_MANF_5510: FS",AS_SXU_DE_1090: FS,SLAC,0%,52213.52213_EEDHW (Electronics & Engineering Div - HW Engr),52213_EEDHW (Electronics & Engineering Div - HW Engr),Labor,0.0d,20.0,20.0,At Completion Units,2/3/2022,2/24/2022,0,0,0,0,0,0,0,0,0,0,1.03_Accelerator Systems (AS),1.03.06_AS Soft X-Ray Undulator (SXR) - SLAC,1.03.06.05_AS Soft X-Ray Undulator Engineering and Design - SLAC,1.03.06.05.01_SXR Undulator System Design,AS_SXU_DE_1080_Prepare Final Design Review - SLAC Mechanical Scope - SXR Undulator,Electrical,,SLAC,Labor
100807,1.03,1.03.06,1.03.06.05,1.03.06.05.01,1.03.06.05.01,SXR Undulator System Design,AS_SXU_DE_1080,Prepare Final Design Review - SLAC Mechanical Scope - SXR Undulator,20.0,60.0,60.0,60.0,07-05-22,08-01-22,"AS_SXU_DE_2040: FS, AS_SXU_DE_2050: FS, AS_SXU_DE_1430: FS, AS_SXU_MANF_5510: FS",AS_SXU_DE_1090: FS,SLAC,0%,52191.52191_METSMET Metrology,52191_METSMET Metrology,Labor,0.0d,20.0,20.0,At Completion Units,2/3/2022,2/24/2022,0,0,0,0,0,0,0,0,0,0,1.03_Accelerator Systems (AS),1.03.06_AS Soft X-Ray Undulator (SXR) - SLAC,1.03.06.05_AS Soft X-Ray Undulator Engineering and Design - SLAC,1.03.06.05.01_SXR Undulator System Design,AS_SXU_DE_1080_Prepare Final Design Review - SLAC Mechanical Scope - SXR Undulator,Metrology,,SLAC,Labor
100808,1.03,1.03.06,1.03.06.05,1.03.06.05.01,1.03.06.05.01,SXR Undulator System Design,AS_SXU_DE_1080,Prepare Final Design Review - SLAC Mechanical Scope - SXR Undulator,20.0,80.0,80.0,80.0,07-05-22,08-01-22,"AS_SXU_DE_2040: FS, AS_SXU_DE_2050: FS, AS_SXU_DE_1430: FS, AS_SXU_MANF_5510: FS",AS_SXU_DE_1090: FS,SLAC,0%,52169.52169_METS Mechanical Engineer,52169_METS Mechanical Engineer,Labor,0.0d,20.0,20.0,At Completion Units,2/3/2022,2/24/2022,0,0,0,0,0,0,0,0,0,0,1.03_Accelerator Systems (AS),1.03.06_AS Soft X-Ray Undulator (SXR) - SLAC,1.03.06.05_AS Soft X-Ray Undulator Engineering and Design - SLAC,1.03.06.05.01_SXR Undulator System Design,AS_SXU_DE_1080_Prepare Final Design Review - SLAC Mechanical Scope - SXR Undulator,Mechanical,,SLAC,Labor
100809,1.03,1.03.06,1.03.06.05,1.03.06.05.01,1.03.06.05.01,SXR Undulator System Design,AS_SXU_DE_1060,Respond to recommendations from PDR - SLAC Mechanical Scope - SXR Undulator,5.0,16.0,16.0,16.0,01-24-22,01-28-22,AS_SXU_DE_1050: FS,AS_SXU_DE_1070: FS,SLAC,0%,52169.52169_METS Mechanical Engineer,52169_METS Mechanical Engineer,Labor,0.0d,5.0,5.0,At Completion Units,9/15/2021,9/21/2021,0,0,0,0,0,0,0,0,0,0,1.03_Accelerator Systems (AS),1.03.06_AS Soft X-Ray Undulator (SXR) - SLAC,1.03.06.05_AS Soft X-Ray Undulator Engineering and Design - SLAC,1.03.06.05.01_SXR Undulator System Design,AS_SXU_DE_1060_Respond to recommendations from PDR - SLAC Mechanical Scope - SXR Undulator,Mechanical,,SLAC,Labor
100810,1.03,1.03.06,1.03.06.05,1.03.06.05.01,1.03.06.05.01,SXR Undulator System Design,AS_SXU_DE_1040,Prepare Prelim. Design Review - SLAC Mechanical Scope - SXR Undulator,20.0,16.0,16.0,16.0,12-09-21,01-20-22,"AS_SXU_DE_0020: FS, AS_SXU_DE_2010: FS, AS_SXU_DE_2020: FS, AS_SXU_DE_2030: FS, AS_SXU_DE_2440: FS",AS_SXU_DE_1050: FS,SLAC,0%,52213.52213_EEDHW (Electronics & Engineering Div - HW Engr),52213_EEDHW (Electronics & Engineering Div - HW Engr),Labor,0.0d,20.0,20.0,At Completion Units,8/16/2021,9/13/2021,0,0,0,0,0,0,0,0,0,0,1.03_Accelerator Systems (AS),1.03.06_AS Soft X-Ray Undulator (SXR) - SLAC,1.03.06.05_AS Soft X-Ray Undulator Engineering and Design - SLAC,1.03.06.05.01_SXR Undulator System Design,AS_SXU_DE_1040_Prepare Prelim. Design Review - SLAC Mechanical Scope - SXR Undulator,Electrical,,SLAC,Labor
100811,1.03,1.03.06,1.03.06.05,1.03.06.05.01,1.03.06.05.01,SXR Undulator System Design,AS_SXU_DE_1040,Prepare Prelim. Design Review - SLAC Mechanical Scope - SXR Undulator,20.0,60.0,60.0,60.0,12-09-21,01-20-22,"AS_SXU_DE_0020: FS, AS_SXU_DE_2010: FS, AS_SXU_DE_2020: FS, AS_SXU_DE_2030: FS, AS_SXU_DE_2440: FS",AS_SXU_DE_1050: FS,SLAC,0%,52191.52191_METSMET Metrology,52191_METSMET Metrology,Labor,0.0d,20.0,20.0,At Completion Units,8/16/2021,9/13/2021,0,0,0,0,0,0,0,0,0,0,1.03_Accelerator Systems (AS),1.03.06_AS Soft X-Ray Undulator (SXR) - SLAC,1.03.06.05_AS Soft X-Ray Undulator Engineering and Design - SLAC,1.03.06.05.01_SXR Undulator System Design,AS_SXU_DE_1040_Prepare Prelim. Design Review - SLAC Mechanical Scope - SXR Undulator,Metrology,,SLAC,Labor
100812,1.03,1.03.06,1.03.06.05,1.03.06.05.01,1.03.06.05.01,SXR Undulator System Design,AS_SXU_DE_1040,Prepare Prelim. Design Review - SLAC Mechanical Scope - SXR Undulator,20.0,100.0,100.0,100.0,12-09-21,01-20-22,"AS_SXU_DE_0020: FS, AS_SXU_DE_2010: FS, AS_SXU_DE_2020: FS, AS_SXU_DE_2030: FS, AS_SXU_DE_2440: FS",AS_SXU_DE_1050: FS,SLAC,0%,52169.52169_METS Mechanical Engineer,52169_METS Mechanical Engineer,Labor,0.0d,20.0,20.0,At Completion Units,8/16/2021,9/13/2021,0,0,0,0,0,0,0,0,0,0,1.03_Accelerator Systems (AS),1.03.06_AS Soft X-Ray Undulator (SXR) - SLAC,1.03.06.05_AS Soft X-Ray Undulator Engineering and Design - SLAC,1.03.06.05.01_SXR Undulator System Design,AS_SXU_DE_1040_Prepare Prelim. Design Review - SLAC Mechanical Scope - SXR Undulator,Mechanical,,SLAC,Labor
100813,1.03,1.03.06,1.03.06.05,1.03.06.05.01,1.03.06.05.01,SXR Undulator System Design,AS_SXU_DE_5030,Support FDR (LBNL scope) - SXR Undulator,5.0,0.0,0.0,0.0,11-03-21,11-09-21,"AS_SXU_DE_5020: FS, AS_LBL_DE_270: FS",AS_LBL_DE_280: FS,SLAC,0%,52213.52213_EEDHW (Electronics & Engineering Div - HW Engr),52213_EEDHW (Electronics & Engineering Div - HW Engr),Labor,0.0d,5.0,5.0,At Completion Units,10/12/2021,10/18/2021,0,0,0,0,0,0,0,0,0,0,1.03_Accelerator Systems (AS),1.03.06_AS Soft X-Ray Undulator (SXR) - SLAC,1.03.06.05_AS Soft X-Ray Undulator Engineering and Design - SLAC,1.03.06.05.01_SXR Undulator System Design,AS_SXU_DE_5030_Support FDR (LBNL scope) - SXR Undulator,Electrical,,SLAC,Labor
100814,1.03,1.03.06,1.03.06.05,1.03.06.05.01,1.03.06.05.01,SXR Undulator System Design,AS_SXU_DE_5030,Support FDR (LBNL scope) - SXR Undulator,5.0,8.0,8.0,8.0,11-03-21,11-09-21,"AS_SXU_DE_5020: FS, AS_LBL_DE_270: FS",AS_LBL_DE_280: FS,SLAC,0%,52191.52191_METSMET Metrology,52191_METSMET Metrology,Labor,0.0d,5.0,5.0,At Completion Units,10/12/2021,10/18/2021,0,0,0,0,0,0,0,0,0,0,1.03_Accelerator Systems (AS),1.03.06_AS Soft X-Ray Undulator (SXR) - SLAC,1.03.06.05_AS Soft X-Ray Undulator Engineering and Design - SLAC,1.03.06.05.01_SXR Undulator System Design,AS_SXU_DE_5030_Support FDR (LBNL scope) - SXR Undulator,Metrology,,SLAC,Labor
100815,1.03,1.03.06,1.03.06.05,1.03.06.05.01,1.03.06.05.01,SXR Undulator System Design,AS_SXU_DE_5030,Support FDR (LBNL scope) - SXR Undulator,5.0,0.0,0.0,0.0,11-03-21,11-09-21,"AS_SXU_DE_5020: FS, AS_LBL_DE_270: FS",AS_LBL_DE_280: FS,SLAC,0%,0106.0106_Staff Scientist,0106_Staff Scientist,Labor,0.0d,5.0,5.0,At Completion Units,10/12/2021,10/18/2021,0,0,0,0,0,0,0,0,0,0,1.03_Accelerator Systems (AS),1.03.06_AS Soft X-Ray Undulator (SXR) - SLAC,1.03.06.05_AS Soft X-Ray Undulator Engineering and Design - SLAC,1.03.06.05.01_SXR Undulator System Design,AS_SXU_DE_5030_Support FDR (LBNL scope) - SXR Undulator,Scientist,,SLAC,Labor
100816,1.03,1.03.06,1.03.06.05,1.03.06.05.01,1.03.06.05.01,SXR Undulator System Design,AS_SXU_DE_5030,Support FDR (LBNL scope) - SXR Undulator,5.0,8.0,8.0,8.0,11-03-21,11-09-21,"AS_SXU_DE_5020: FS, AS_LBL_DE_270: FS",AS_LBL_DE_280: FS,SLAC,0%,52169.52169_METS Mechanical Engineer,52169_METS Mechanical Engineer,Labor,0.0d,5.0,5.0,At Completion Units,10/12/2021,10/18/2021,0,0,0,0,0,0,0,0,0,0,1.03_Accelerator Systems (AS),1.03.06_AS Soft X-Ray Undulator (SXR) - SLAC,1.03.06.05_AS Soft X-Ray Undulator Engineering and Design - SLAC,1.03.06.05.01_SXR Undulator System Design,AS_SXU_DE_5030_Support FDR (LBNL scope) - SXR Undulator,Mechanical,,SLAC,Labor
100817,1.03,1.03.06,1.03.06.05,1.03.06.05.01,1.03.06.05.01,SXR Undulator System Design,AS_SXU_DE_6000,Storage planning and procurement support - SXR Undulator,130.0,400.0,400.0,400.0,08-10-22,02-28-23,AS_SXU_DE_1110: FS,AS_SXU_MANF_0101: FS,SLAC,0%,52198.52198_METSMANF (METSD Manufacturing),52198_METSMANF (METSD Manufacturing),Labor,0.0d,130.0,130.0,At Completion Units,2/25/2022,8/29/2022,0,0,0,0,0,0,0,0,0,0,1.03_Accelerator Systems (AS),1.03.06_AS Soft X-Ray Undulator (SXR) - SLAC,1.03.06.05_AS Soft X-Ray Undulator Engineering and Design - SLAC,1.03.06.05.01_SXR Undulator System Design,AS_SXU_DE_6000_Storage planning and procurement support - SXR Undulator,Manufacturing,,SLAC,Labor
100818,1.03,1.03.06,1.03.06.05,1.03.06.05.01,1.03.06.05.01,SXR Undulator System Design,AS_SXU_DE_6000,Storage planning and procurement support - SXR Undulator,130.0,120.0,120.0,120.0,08-10-22,02-28-23,AS_SXU_DE_1110: FS,AS_SXU_MANF_0101: FS,SLAC,0%,52191.52191_METSMET Metrology,52191_METSMET Metrology,Labor,0.0d,130.0,130.0,At Completion Units,2/25/2022,8/29/2022,0,0,0,0,0,0,0,0,0,0,1.03_Accelerator Systems (AS),1.03.06_AS Soft X-Ray Undulator (SXR) - SLAC,1.03.06.05_AS Soft X-Ray Undulator Engineering and Design - SLAC,1.03.06.05.01_SXR Undulator System Design,AS_SXU_DE_6000_Storage planning and procurement support - SXR Undulator,Metrology,,SLAC,Labor
100819,1.03,1.03.06,1.03.06.05,1.03.06.05.01,1.03.06.05.01,SXR Undulator System Design,AS_SXU_DE_6000,Storage planning and procurement support - SXR Undulator,130.0,240.0,240.0,240.0,08-10-22,02-28-23,AS_SXU_DE_1110: FS,AS_SXU_MANF_0101: FS,SLAC,0%,52169.52169_METS Mechanical Engineer,52169_METS Mechanical Engineer,Labor,0.0d,130.0,130.0,At Completion Units,2/25/2022,8/29/2022,0,0,0,0,0,0,0,0,0,0,1.03_Accelerator Systems (AS),1.03.06_AS Soft X-Ray Undulator (SXR) - SLAC,1.03.06.05_AS Soft X-Ray Undulator Engineering and Design - SLAC,1.03.06.05.01_SXR Undulator System Design,AS_SXU_DE_6000_Storage planning and procurement support - SXR Undulator,Mechanical,,SLAC,Labor
100820,1.03,1.03.06,1.03.06.05,1.03.06.05.01,1.03.06.05.01,SXR Undulator System Design,AS_SXU_DE_1090,R_FDR: Final Design Review - SLAC Mechanical Scope - SXR Undulator,1.0,8.0,8.0,8.0,08-02-22,08-02-22,AS_SXU_DE_1080: FS,"AS_SXU_DE_1100: FS, AS_M4_3060: FS, AS_M4_3080: FS",SLAC,0%,52213.52213_EEDHW (Electronics & Engineering Div - HW Engr),52213_EEDHW (Electronics & Engineering Div - HW Engr),Labor,0.0d,1.0,1.0,At Completion Units,2/25/2022,2/25/2022,DM-A09-30%,0,0,0,0,0,0,0,0,0,1.03_Accelerator Systems (AS),1.03.06_AS Soft X-Ray Undulator (SXR) - SLAC,1.03.06.05_AS Soft X-Ray Undulator Engineering and Design - SLAC,1.03.06.05.01_SXR Undulator System Design,AS_SXU_DE_1090_R_FDR: Final Design Review - SLAC Mechanical Scope - SXR Undulator,Electrical,,SLAC,Labor
100821,1.03,1.03.06,1.03.06.05,1.03.06.05.01,1.03.06.05.01,SXR Undulator System Design,AS_SXU_DE_1090,R_FDR: Final Design Review - SLAC Mechanical Scope - SXR Undulator,1.0,8.0,8.0,8.0,08-02-22,08-02-22,AS_SXU_DE_1080: FS,"AS_SXU_DE_1100: FS, AS_M4_3060: FS, AS_M4_3080: FS",SLAC,0%,52191.52191_METSMET Metrology,52191_METSMET Metrology,Labor,0.0d,1.0,1.0,At Completion Units,2/25/2022,2/25/2022,DM-A09-30%,0,0,0,0,0,0,0,0,0,1.03_Accelerator Systems (AS),1.03.06_AS Soft X-Ray Undulator (SXR) - SLAC,1.03.06.05_AS Soft X-Ray Undulator Engineering and Design - SLAC,1.03.06.05.01_SXR Undulator System Design,AS_SXU_DE_1090_R_FDR: Final Design Review - SLAC Mechanical Scope - SXR Undulator,Metrology,,SLAC,Labor
100822,1.03,1.03.06,1.03.06.05,1.03.06.05.01,1.03.06.05.01,SXR Undulator System Design,AS_SXU_DE_1090,R_FDR: Final Design Review - SLAC Mechanical Scope - SXR Undulator,1.0,0.0,0.0,0.0,08-02-22,08-02-22,AS_SXU_DE_1080: FS,"AS_SXU_DE_1100: FS, AS_M4_3060: FS, AS_M4_3080: FS",SLAC,0%,0106.0106_Staff Scientist,0106_Staff Scientist,Labor,0.0d,1.0,1.0,At Completion Units,2/25/2022,2/25/2022,DM-A09-30%,0,0,0,0,0,0,0,0,0,1.03_Accelerator Systems (AS),1.03.06_AS Soft X-Ray Undulator (SXR) - SLAC,1.03.06.05_AS Soft X-Ray Undulator Engineering and Design - SLAC,1.03.06.05.01_SXR Undulator System Design,AS_SXU_DE_1090_R_FDR: Final Design Review - SLAC Mechanical Scope - SXR Undulator,Scientist,,SLAC,Labor
100823,1.03,1.03.06,1.03.06.05,1.03.06.05.01,1.03.06.05.01,SXR Undulator System Design,AS_SXU_DE_1090,R_FDR: Final Design Review - SLAC Mechanical Scope - SXR Undulator,1.0,16.0,16.0,16.0,08-02-22,08-02-22,AS_SXU_DE_1080: FS,"AS_SXU_DE_1100: FS, AS_M4_3060: FS, AS_M4_3080: FS",SLAC,0%,52169.52169_METS Mechanical Engineer,52169_METS Mechanical Engineer,Labor,0.0d,1.0,1.0,At Completion Units,2/25/2022,2/25/2022,DM-A09-30%,0,0,0,0,0,0,0,0,0,1.03_Accelerator Systems (AS),1.03.06_AS Soft X-Ray Undulator (SXR) - SLAC,1.03.06.05_AS Soft X-Ray Undulator Engineering and Design - SLAC,1.03.06.05.01_SXR Undulator System Design,AS_SXU_DE_1090_R_FDR: Final Design Review - SLAC Mechanical Scope - SXR Undulator,Mechanical,,SLAC,Labor
100824,1.03,1.03.06,1.03.06.05,1.03.06.05.01,1.03.06.05.01,SXR Undulator System Design,AS_SXU_DE_1050,R_PDR: Prelim. Design Review - SLAC Mechanical Scope - SXR Undulator,1.0,4.0,4.0,4.0,01-21-22,01-21-22,AS_SXU_DE_1040: FS,AS_SXU_DE_1060: FS,SLAC,0%,52211.52211_EEDOPSE (Electronics & Engineering Div - Ops & PSE),52211_EEDOPSE (Electronics & Engineering Div - Ops & PSE),Labor,0.0d,1.0,1.0,At Completion Units,9/14/2021,9/14/2021,DM-A08-60%,0,0,0,0,0,0,0,0,0,1.03_Accelerator Systems (AS),1.03.06_AS Soft X-Ray Undulator (SXR) - SLAC,1.03.06.05_AS Soft X-Ray Undulator Engineering and Design - SLAC,1.03.06.05.01_SXR Undulator System Design,AS_SXU_DE_1050_R_PDR: Prelim. Design Review - SLAC Mechanical Scope - SXR Undulator,Electrical,,SLAC,Labor
100825,1.03,1.03.06,1.03.06.05,1.03.06.05.01,1.03.06.05.01,SXR Undulator System Design,AS_SXU_DE_1050,R_PDR: Prelim. Design Review - SLAC Mechanical Scope - SXR Undulator,1.0,8.0,8.0,8.0,01-21-22,01-21-22,AS_SXU_DE_1040: FS,AS_SXU_DE_1060: FS,SLAC,0%,52191.52191_METSMET Metrology,52191_METSMET Metrology,Labor,0.0d,1.0,1.0,At Completion Units,9/14/2021,9/14/2021,DM-A08-60%,0,0,0,0,0,0,0,0,0,1.03_Accelerator Systems (AS),1.03.06_AS Soft X-Ray Undulator (SXR) - SLAC,1.03.06.05_AS Soft X-Ray Undulator Engineering and Design - SLAC,1.03.06.05.01_SXR Undulator System Design,AS_SXU_DE_1050_R_PDR: Prelim. Design Review - SLAC Mechanical Scope - SXR Undulator,Metrology,,SLAC,Labor
100826,1.03,1.03.06,1.03.06.05,1.03.06.05.01,1.03.06.05.01,SXR Undulator System Design,AS_SXU_DE_1050,R_PDR: Prelim. Design Review - SLAC Mechanical Scope - SXR Undulator,1.0,0.0,0.0,0.0,01-21-22,01-21-22,AS_SXU_DE_1040: FS,AS_SXU_DE_1060: FS,SLAC,0%,0106.0106_Staff Scientist,0106_Staff Scientist,Labor,0.0d,1.0,1.0,At Completion Units,9/14/2021,9/14/2021,DM-A08-60%,0,0,0,0,0,0,0,0,0,1.03_Accelerator Systems (AS),1.03.06_AS Soft X-Ray Undulator (SXR) - SLAC,1.03.06.05_AS Soft X-Ray Undulator Engineering and Design - SLAC,1.03.06.05.01_SXR Undulator System Design,AS_SXU_DE_1050_R_PDR: Prelim. Design Review - SLAC Mechanical Scope - SXR Undulator,Scientist,,SLAC,Labor
100827,1.03,1.03.06,1.03.06.05,1.03.06.05.01,1.03.06.05.01,SXR Undulator System Design,AS_SXU_DE_1050,R_PDR: Prelim. Design Review - SLAC Mechanical Scope - SXR Undulator,1.0,16.0,16.0,16.0,01-21-22,01-21-22,AS_SXU_DE_1040: FS,AS_SXU_DE_1060: FS,SLAC,0%,52169.52169_METS Mechanical Engineer,52169_METS Mechanical Engineer,Labor,0.0d,1.0,1.0,At Completion Units,9/14/2021,9/14/2021,DM-A08-60%,0,0,0,0,0,0,0,0,0,1.03_Accelerator Systems (AS),1.03.06_AS Soft X-Ray Undulator (SXR) - SLAC,1.03.06.05_AS Soft X-Ray Undulator Engineering and Design - SLAC,1.03.06.05.01_SXR Undulator System Design,AS_SXU_DE_1050_R_PDR: Prelim. Design Review - SLAC Mechanical Scope - SXR Undulator,Mechanical,,SLAC,Labor
100828,1.03,1.03.06,1.03.06.05,1.03.06.05.01,1.03.06.05.01,SXR Undulator System Design,AS_SXU_DE_2050,Update System Layout and Installation Drawings - SXR Undulator,30.0,40.0,40.0,40.0,01-31-22,03-14-22,AS_SXU_DE_1070: FS,AS_SXU_DE_1080: FS,SLAC,0%,52168.52168_METS - Mechanical Design,52168_METS - Mechanical Design,Labor,0.0d,30.0,30.0,At Completion Units,9/22/2021,11/2/2021,0,0,0,0,0,0,0,0,0,0,1.03_Accelerator Systems (AS),1.03.06_AS Soft X-Ray Undulator (SXR) - SLAC,1.03.06.05_AS Soft X-Ray Undulator Engineering and Design - SLAC,1.03.06.05.01_SXR Undulator System Design,AS_SXU_DE_2050_Update System Layout and Installation Drawings - SXR Undulator,Mechanical,,SLAC,Labor
100829,1.03,1.03.06,1.03.06.05,1.03.06.05.01,1.03.06.05.01,SXR Undulator System Design,AS_SXU_DE_2050,Update System Layout and Installation Drawings - SXR Undulator,30.0,200.0,200.0,200.0,01-31-22,03-14-22,AS_SXU_DE_1070: FS,AS_SXU_DE_1080: FS,SLAC,0%,52169.52169_METS Mechanical Engineer,52169_METS Mechanical Engineer,Labor,0.0d,30.0,30.0,At Completion Units,9/22/2021,11/2/2021,0,0,0,0,0,0,0,0,0,0,1.03_Accelerator Systems (AS),1.03.06_AS Soft X-Ray Undulator (SXR) - SLAC,1.03.06.05_AS Soft X-Ray Undulator Engineering and Design - SLAC,1.03.06.05.01_SXR Undulator System Design,AS_SXU_DE_2050_Update System Layout and Installation Drawings - SXR Undulator,Mechanical,,SLAC,Labor
100830,1.03,1.03.06,1.03.06.05,1.03.06.05.01,1.03.06.05.01,SXR Undulator System Design,AS_SXU_DE_2000,Prepare Preliminary Interspace and System Design - SXR Undulator,25.0,8.0,8.0,8.0,10-04-21,11-05-21,"AS_SXU_DE_1030: FS, MS_FY_2022_Q1: FS","AS_SXU_DE_2010: SS, AS_SXU_DE_2020: FS",SLAC,0%,52191.52191_METSMET Metrology,52191_METSMET Metrology,Labor,0.0d,25.0,25.0,At Completion Units,4/22/2021,5/26/2021,0,0,0,0,0,0,0,0,0,0,1.03_Accelerator Systems (AS),1.03.06_AS Soft X-Ray Undulator (SXR) - SLAC,1.03.06.05_AS Soft X-Ray Undulator Engineering and Design - SLAC,1.03.06.05.01_SXR Undulator System Design,AS_SXU_DE_2000_Prepare Preliminary Interspace and System Design - SXR Undulator,Metrology,,SLAC,Labor
100831,1.03,1.03.06,1.03.06.05,1.03.06.05.01,1.03.06.05.01,SXR Undulator System Design,AS_SXU_DE_2000,Prepare Preliminary Interspace and System Design - SXR Undulator,25.0,0.0,0.0,0.0,10-04-21,11-05-21,"AS_SXU_DE_1030: FS, MS_FY_2022_Q1: FS","AS_SXU_DE_2010: SS, AS_SXU_DE_2020: FS",SLAC,0%,0106.0106_Staff Scientist,0106_Staff Scientist,Labor,0.0d,25.0,25.0,At Completion Units,4/22/2021,5/26/2021,0,0,0,0,0,0,0,0,0,0,1.03_Accelerator Systems (AS),1.03.06_AS Soft X-Ray Undulator (SXR) - SLAC,1.03.06.05_AS Soft X-Ray Undulator Engineering and Design - SLAC,1.03.06.05.01_SXR Undulator System Design,AS_SXU_DE_2000_Prepare Preliminary Interspace and System Design - SXR Undulator,Scientist,,SLAC,Labor
100832,1.03,1.03.06,1.03.06.05,1.03.06.05.01,1.03.06.05.01,SXR Undulator System Design,AS_SXU_DE_2000,Prepare Preliminary Interspace and System Design - SXR Undulator,9.3,160.0,160.0,160.0,10-04-21,10-15-21,"AS_SXU_DE_1030: FS, MS_FY_2022_Q1: FS","AS_SXU_DE_2010: SS, AS_SXU_DE_2020: FS",SLAC,0%,52169.52169_METS Mechanical Engineer,52169_METS Mechanical Engineer,Labor,0.0d,9.3,9.3,At Completion Units,4/22/2021,5/26/2021,0,0,0,0,0,0,0,0,0,0,1.03_Accelerator Systems (AS),1.03.06_AS Soft X-Ray Undulator (SXR) - SLAC,1.03.06.05_AS Soft X-Ray Undulator Engineering and Design - SLAC,1.03.06.05.01_SXR Undulator System Design,AS_SXU_DE_2000_Prepare Preliminary Interspace and System Design - SXR Undulator,Mechanical,,SLAC,Labor
101152,1.03,1.03.06,1.03.06.05,1.03.06.05.02,1.03.06.05.02,SXR Phase Shifter Design,AS_SXU_DE_0100,Define Phase Shifter Requirements - SXR Phase Shifter,180.0,100.0,0.0,53.0,10-02-2020,06-30-2021,MS_FY_2021_Q1: FS,"AS_SXU_DE_4000: SS, AS_SXU_DE_2200: SS",SLAC,100%,52191.52191_METSMET Metrology,52191_METSMET Metrology,Labor,179.0d,0.0,179.0,At Completion Units,10/2/2020,6/30/2021,0,0,0,0,0,0,0,0,0,0,1.03_Accelerator Systems (AS),1.03.06_AS Soft X-Ray Undulator (SXR) - SLAC,1.03.06.05_AS Soft X-Ray Undulator Engineering and Design - SLAC,1.03.06.05.02_SXR Phase Shifter Design,AS_SXU_DE_0100_Define Phase Shifter Requirements - SXR Phase Shifter,Metrology,,SLAC,Labor
101153,1.03,1.03.06,1.03.06.05,1.03.06.05.02,1.03.06.05.02,SXR Phase Shifter Design,AS_SXU_DE_0100,Define Phase Shifter Requirements - SXR Phase Shifter,180.0,6.0,0.0,53.0,10-02-2020,06-30-2021,MS_FY_2021_Q1: FS,"AS_SXU_DE_4000: SS, AS_SXU_DE_2200: SS",SLAC,100%,52169.52169_METS Mechanical Engineer,52169_METS Mechanical Engineer,Labor,179.0d,0.0,179.0,At Completion Units,10/2/2020,6/30/2021,0,0,0,0,0,0,0,0,0,0,1.03_Accelerator Systems (AS),1.03.06_AS Soft X-Ray Undulator (SXR) - SLAC,1.03.06.05_AS Soft X-Ray Undulator Engineering and Design - SLAC,1.03.06.05.02_SXR Phase Shifter Design,AS_SXU_DE_0100_Define Phase Shifter Requirements - SXR Phase Shifter,Mechanical,,SLAC,Labor
101154,1.03,1.03.06,1.03.06.05,1.03.06.05.02,1.03.06.05.02,SXR Phase Shifter Design,AS_SXU_DE_2200,Update Phase Shifter Design and Drawings - SXR Phase Shifter,105.0,16.0,0.0,128.0,01-05-2021,06-02-2021,"AS_SXU_DE_0100: SS, MS_FY_2021_Q2: FS","AS_SXU_DE_4020: SS, AS_SXU_DE_1000: FS",SLAC,100%,52191.52191_METSMET Metrology,52191_METSMET Metrology,Labor,104.0d,0.0,104.0,At Completion Units,1/5/2021,6/2/2021,0,0,0,0,0,0,0,0,0,0,1.03_Accelerator Systems (AS),1.03.06_AS Soft X-Ray Undulator (SXR) - SLAC,1.03.06.05_AS Soft X-Ray Undulator Engineering and Design - SLAC,1.03.06.05.02_SXR Phase Shifter Design,AS_SXU_DE_2200_Update Phase Shifter Design and Drawings - SXR Phase Shifter,Metrology,,SLAC,Labor
101155,1.03,1.03.06,1.03.06.05,1.03.06.05.02,1.03.06.05.02,SXR Phase Shifter Design,AS_SXU_DE_2200,Update Phase Shifter Design and Drawings - SXR Phase Shifter,105.0,240.0,0.0,128.0,01-05-2021,06-02-2021,"AS_SXU_DE_0100: SS, MS_FY_2021_Q2: FS","AS_SXU_DE_4020: SS, AS_SXU_DE_1000: FS",SLAC,100%,52169.52169_METS Mechanical Engineer,52169_METS Mechanical Engineer,Labor,104.0d,0.0,104.0,At Completion Units,1/5/2021,6/2/2021,0,0,0,0,0,0,0,0,0,0,1.03_Accelerator Systems (AS),1.03.06_AS Soft X-Ray Undulator (SXR) - SLAC,1.03.06.05_AS Soft X-Ray Undulator Engineering and Design - SLAC,1.03.06.05.02_SXR Phase Shifter Design,AS_SXU_DE_2200_Update Phase Shifter Design and Drawings - SXR Phase Shifter,Mechanical,,SLAC,Labor
101156,1.03,1.03.06,1.03.06.05,1.03.06.05.02,1.03.06.05.02,SXR Phase Shifter Design,AS_SXU_DE_4000,SXR Phase Shifter Integrity Tests,42.0,16.0,0.0,168.0,01-05-2021,03-04-2021,"AS_SXU_DE_0100: SS, MS_FY_2021_Q2: FS",AS_SXU_DE_1000: FS,SLAC,100%,52213.52213_EEDHW (Electronics & Engineering Div - HW Engr),52213_EEDHW (Electronics & Engineering Div - HW Engr),Labor,41.0d,0.0,41.0,At Completion Units,1/5/2021,3/4/2021,0,0,0,0,0,0,0,0,0,0,1.03_Accelerator Systems (AS),1.03.06_AS Soft X-Ray Undulator (SXR) - SLAC,1.03.06.05_AS Soft X-Ray Undulator Engineering and Design - SLAC,1.03.06.05.02_SXR Phase Shifter Design,AS_SXU_DE_4000_SXR Phase Shifter Integrity Tests,Electrical,,SLAC,Labor
101157,1.03,1.03.06,1.03.06.05,1.03.06.05.02,1.03.06.05.02,SXR Phase Shifter Design,AS_SXU_DE_4000,SXR Phase Shifter Integrity Tests,42.0,320.0,0.0,168.0,01-05-2021,03-04-2021,"AS_SXU_DE_0100: SS, MS_FY_2021_Q2: FS",AS_SXU_DE_1000: FS,SLAC,100%,52191.52191_METSMET Metrology,52191_METSMET Metrology,Labor,41.0d,0.0,41.0,At Completion Units,1/5/2021,3/4/2021,0,0,0,0,0,0,0,0,0,0,1.03_Accelerator Systems (AS),1.03.06_AS Soft X-Ray Undulator (SXR) - SLAC,1.03.06.05_AS Soft X-Ray Undulator Engineering and Design - SLAC,1.03.06.05.02_SXR Phase Shifter Design,AS_SXU_DE_4000_SXR Phase Shifter Integrity Tests,Metrology,,SLAC,Labor
101158,1.03,1.03.06,1.03.06.05,1.03.06.05.02,1.03.06.05.02,SXR Phase Shifter Design,AS_SXU_DE_4030,RQN: Approval of Requisition - Phase Shifter Prototype Material - SXR Phase Shifter,23.0,90000.0,0.0,0.0,06-07-2021,07-08-2021,AS_SXU_DE_4020: FS,AS_SXU_DE_4040: FS,SLAC,0%,REQ.Requisition,Requisition,Nonlabor,22.0d,0.0,22.0,At Completion Units,6/7/2021,7/8/2021,0,0,0,0,0,0,0,0,0,0,1.03_Accelerator Systems (AS),1.03.06_AS Soft X-Ray Undulator (SXR) - SLAC,1.03.06.05_AS Soft X-Ray Undulator Engineering and Design - SLAC,1.03.06.05.02_SXR Phase Shifter Design,AS_SXU_DE_4030_RQN: Approval of Requisition - Phase Shifter Prototype Material - SXR Phase Shifter,Material,,SLAC,M&S
101159,1.03,1.03.06,1.03.06.05,1.03.06.05.02,1.03.06.05.02,SXR Phase Shifter Design,AS_SXU_DE_4140,Phase Shifter Test Setup,20.0,144.0,101.0,144.0,09-08-2021,10-25-21,"AS_SXU_DE_4110: SS, AS_SXU_DE_4130: FF",AS_SXU_DE_4150: FS,SLAC,29.86%,52191.52191_METSMET Metrology,52191_METSMET Metrology,Labor,17.0d,10.0,27.0,At Completion Units,10/1/2021,10/14/2021,0,0,0,0,0,0,0,0,0,0,1.03_Accelerator Systems (AS),1.03.06_AS Soft X-Ray Undulator (SXR) - SLAC,1.03.06.05_AS Soft X-Ray Undulator Engineering and Design - SLAC,1.03.06.05.02_SXR Phase Shifter Design,AS_SXU_DE_4140_Phase Shifter Test Setup,Metrology,,SLAC,Labor
101160,1.03,1.03.06,1.03.06.05,1.03.06.05.02,1.03.06.05.02,SXR Phase Shifter Design,AS_SXU_DE_4160,"Magnetic Cross-Talk Test (SXU, PS, Quad)",15.0,16.0,16.0,16.0,12-09-21,01-12-22,"AS_SXU_DE_4150: FS, AS_SXU_DE_4240: FS","AS_SXU_DE_1400: FS, AS_SXU_DE_2210: FS, AS_SXU_DE_4250: FS",SLAC,0%,52213.52213_EEDHW (Electronics & Engineering Div - HW Engr),52213_EEDHW (Electronics & Engineering Div - HW Engr),Labor,0.0d,15.0,15.0,At Completion Units,11/30/2021,1/3/2022,0,0,0,0,0,0,0,0,0,0,1.03_Accelerator Systems (AS),1.03.06_AS Soft X-Ray Undulator (SXR) - SLAC,1.03.06.05_AS Soft X-Ray Undulator Engineering and Design - SLAC,1.03.06.05.02_SXR Phase Shifter Design,"AS_SXU_DE_4160_Magnetic Cross-Talk Test (SXU, PS, Quad)",Electrical,,SLAC,Labor
101161,1.03,1.03.06,1.03.06.05,1.03.06.05.02,1.03.06.05.02,SXR Phase Shifter Design,AS_SXU_DE_4160,"Magnetic Cross-Talk Test (SXU, PS, Quad)",15.0,288.0,288.0,288.0,12-09-21,01-12-22,"AS_SXU_DE_4150: FS, AS_SXU_DE_4240: FS","AS_SXU_DE_1400: FS, AS_SXU_DE_2210: FS, AS_SXU_DE_4250: FS",SLAC,0%,52191.52191_METSMET Metrology,52191_METSMET Metrology,Labor,0.0d,15.0,15.0,At Completion Units,11/30/2021,1/3/2022,0,0,0,0,0,0,0,0,0,0,1.03_Accelerator Systems (AS),1.03.06_AS Soft X-Ray Undulator (SXR) - SLAC,1.03.06.05_AS Soft X-Ray Undulator Engineering and Design - SLAC,1.03.06.05.02_SXR Phase Shifter Design,"AS_SXU_DE_4160_Magnetic Cross-Talk Test (SXU, PS, Quad)",Metrology,,SLAC,Labor
101162,1.03,1.03.06,1.03.06.05,1.03.06.05.02,1.03.06.05.02,SXR Phase Shifter Design,AS_SXU_DE_4160,"Magnetic Cross-Talk Test (SXU, PS, Quad)",15.0,24.0,24.0,24.0,12-09-21,01-12-22,"AS_SXU_DE_4150: FS, AS_SXU_DE_4240: FS","AS_SXU_DE_1400: FS, AS_SXU_DE_2210: FS, AS_SXU_DE_4250: FS",SLAC,0%,52169.52169_METS Mechanical Engineer,52169_METS Mechanical Engineer,Labor,0.0d,15.0,15.0,At Completion Units,11/30/2021,1/3/2022,0,0,0,0,0,0,0,0,0,0,1.03_Accelerator Systems (AS),1.03.06_AS Soft X-Ray Undulator (SXR) - SLAC,1.03.06.05_AS Soft X-Ray Undulator Engineering and Design - SLAC,1.03.06.05.02_SXR Phase Shifter Design,"AS_SXU_DE_4160_Magnetic Cross-Talk Test (SXU, PS, Quad)",Mechanical,,SLAC,Labor
101163,1.03,1.03.06,1.03.06.05,1.03.06.05.02,1.03.06.05.02,SXR Phase Shifter Design,AS_SXU_DE_4160,"Magnetic Cross-Talk Test (SXU, PS, Quad)",15.0,20.0,20.0,20.0,12-09-21,01-12-22,"AS_SXU_DE_4150: FS, AS_SXU_DE_4240: FS","AS_SXU_DE_1400: FS, AS_SXU_DE_2210: FS, AS_SXU_DE_4250: FS",SLAC,0%,0106.0106_Staff Scientist,0106_Staff Scientist,Labor,0.0d,15.0,15.0,At Completion Units,11/30/2021,1/3/2022,0,0,0,0,0,0,0,0,0,0,1.03_Accelerator Systems (AS),1.03.06_AS Soft X-Ray Undulator (SXR) - SLAC,1.03.06.05_AS Soft X-Ray Undulator Engineering and Design - SLAC,1.03.06.05.02_SXR Phase Shifter Design,"AS_SXU_DE_4160_Magnetic Cross-Talk Test (SXU, PS, Quad)",Scientist,,SLAC,Labor
101164,1.03,1.03.06,1.03.06.05,1.03.06.05.02,1.03.06.05.02,SXR Phase Shifter Design,AS_SXU_DE_4150,Phase Shifter Prototype - Magnetic Measurements,30.0,16.0,16.0,16.0,10-26-21,12-08-21,AS_SXU_DE_4140: FS,AS_SXU_DE_4160: FS,SLAC,0%,52213.52213_EEDHW (Electronics & Engineering Div - HW Engr),52213_EEDHW (Electronics & Engineering Div - HW Engr),Labor,0.0d,30.0,30.0,At Completion Units,10/15/2021,11/29/2021,0,0,0,0,0,0,0,0,0,0,1.03_Accelerator Systems (AS),1.03.06_AS Soft X-Ray Undulator (SXR) - SLAC,1.03.06.05_AS Soft X-Ray Undulator Engineering and Design - SLAC,1.03.06.05.02_SXR Phase Shifter Design,AS_SXU_DE_4150_Phase Shifter Prototype - Magnetic Measurements,Electrical,,SLAC,Labor
101165,1.03,1.03.06,1.03.06.05,1.03.06.05.02,1.03.06.05.02,SXR Phase Shifter Design,AS_SXU_DE_4150,Phase Shifter Prototype - Magnetic Measurements,30.0,340.0,340.0,340.0,10-26-21,12-08-21,AS_SXU_DE_4140: FS,AS_SXU_DE_4160: FS,SLAC,0%,52191.52191_METSMET Metrology,52191_METSMET Metrology,Labor,0.0d,30.0,30.0,At Completion Units,10/15/2021,11/29/2021,0,0,0,0,0,0,0,0,0,0,1.03_Accelerator Systems (AS),1.03.06_AS Soft X-Ray Undulator (SXR) - SLAC,1.03.06.05_AS Soft X-Ray Undulator Engineering and Design - SLAC,1.03.06.05.02_SXR Phase Shifter Design,AS_SXU_DE_4150_Phase Shifter Prototype - Magnetic Measurements,Metrology,,SLAC,Labor
101166,1.03,1.03.06,1.03.06.05,1.03.06.05.02,1.03.06.05.02,SXR Phase Shifter Design,AS_SXU_DE_4150,Phase Shifter Prototype - Magnetic Measurements,30.0,24.0,24.0,24.0,10-26-21,12-08-21,AS_SXU_DE_4140: FS,AS_SXU_DE_4160: FS,SLAC,0%,52169.52169_METS Mechanical Engineer,52169_METS Mechanical Engineer,Labor,0.0d,30.0,30.0,At Completion Units,10/15/2021,11/29/2021,0,0,0,0,0,0,0,0,0,0,1.03_Accelerator Systems (AS),1.03.06_AS Soft X-Ray Undulator (SXR) - SLAC,1.03.06.05_AS Soft X-Ray Undulator Engineering and Design - SLAC,1.03.06.05.02_SXR Phase Shifter Design,AS_SXU_DE_4150_Phase Shifter Prototype - Magnetic Measurements,Mechanical,,SLAC,Labor
101167,1.03,1.03.06,1.03.06.05,1.03.06.05.02,1.03.06.05.02,SXR Phase Shifter Design,AS_SXU_DE_2210,Finalize Phase Shifter Design and Drawings - SXR Phase Shifter,15.0,72.0,72.0,72.0,01-13-22,02-03-22,AS_SXU_DE_4160: FS,AS_SXU_DE_1410: FS,SLAC,0%,52169.52169_METS Mechanical Engineer,52169_METS Mechanical Engineer,Labor,0.0d,15.0,15.0,At Completion Units,1/4/2022,1/25/2022,DM-A11-10%,0,0,0,0,0,0,0,0,0,1.03_Accelerator Systems (AS),1.03.06_AS Soft X-Ray Undulator (SXR) - SLAC,1.03.06.05_AS Soft X-Ray Undulator Engineering and Design - SLAC,1.03.06.05.02_SXR Phase Shifter Design,AS_SXU_DE_2210_Finalize Phase Shifter Design and Drawings - SXR Phase Shifter,Mechanical,,SLAC,Labor
101168,1.03,1.03.06,1.03.06.05,1.03.06.05.02,1.03.06.05.02,SXR Phase Shifter Design,AS_SXU_DE_4120,RCV: Goods/Services - Phase Shifter Prototype Material - SXR Phase Shifter,1.0,90000.0,90000.0,90000.0,10-25-21,10-25-21,AS_SXU_DE_4110: FS,AS_SXU_DE_4130: FS,SLAC,0%,SL_MSSC.SLAC M&S (<$500K) (gets G&A) (gets ESC),SLAC M&S (<$500K) (gets G&A) (gets ESC),Nonlabor,0.0d,1.0,1.0,At Completion Units,9/30/2021,9/30/2021,0,0,0,0,0,0,0,0,0,0,1.03_Accelerator Systems (AS),1.03.06_AS Soft X-Ray Undulator (SXR) - SLAC,1.03.06.05_AS Soft X-Ray Undulator Engineering and Design - SLAC,1.03.06.05.02_SXR Phase Shifter Design,AS_SXU_DE_4120_RCV: Goods/Services - Phase Shifter Prototype Material - SXR Phase Shifter,Material,,SLAC,M&S
101169,1.03,1.03.06,1.03.06.05,1.03.06.05.02,1.03.06.05.02,SXR Phase Shifter Design,AS_SXU_DE_4100,AWARD: Procurement - Phase Shifter Prototype Material - SXR Phase Shifter,1.0,90000.0,0.0,0.0,08-20-2021,08-20-2021,AS_SXU_DE_4090: SS,AS_SXU_DE_4110: FF,SLAC,0%,AWARD_USE.AWARD - Use this AWARD,AWARD - Use this AWARD,Nonlabor,0.0d,0.0,0.0,At Completion Units,8/31/2021,8/31/2021,0,0,0,0,0,0,0,0,0,0,1.03_Accelerator Systems (AS),1.03.06_AS Soft X-Ray Undulator (SXR) - SLAC,1.03.06.05_AS Soft X-Ray Undulator Engineering and Design - SLAC,1.03.06.05.02_SXR Phase Shifter Design,AS_SXU_DE_4100_AWARD: Procurement - Phase Shifter Prototype Material - SXR Phase Shifter,Material,,SLAC,M&S
101170,1.03,1.03.06,1.03.06.05,1.03.06.05.02,1.03.06.05.02,SXR Phase Shifter Design,AS_SXU_DE_1420,Respond to recommendations from FDR - SXR Phase Shifter,5.0,16.0,16.0,16.0,02-07-22,02-11-22,AS_SXU_DE_1410: FS,AS_SXU_DE_1430: FF,SLAC,0%,52169.52169_METS Mechanical Engineer,52169_METS Mechanical Engineer,Labor,0.0d,5.0,5.0,At Completion Units,1/27/2022,2/2/2022,0,0,0,0,0,0,0,0,0,0,1.03_Accelerator Systems (AS),1.03.06_AS Soft X-Ray Undulator (SXR) - SLAC,1.03.06.05_AS Soft X-Ray Undulator Engineering and Design - SLAC,1.03.06.05.02_SXR Phase Shifter Design,AS_SXU_DE_1420_Respond to recommendations from FDR - SXR Phase Shifter,Mechanical,,SLAC,Labor
101171,1.03,1.03.06,1.03.06.05,1.03.06.05.02,1.03.06.05.02,SXR Phase Shifter Design,AS_SXU_DE_1400,Prepare Final Design Review - SXR Phase Shifter,15.0,80.0,80.0,80.0,01-13-22,02-03-22,AS_SXU_DE_4160: FS,AS_SXU_DE_1410: FS,SLAC,0%,52191.52191_METSMET Metrology,52191_METSMET Metrology,Labor,0.0d,15.0,15.0,At Completion Units,1/4/2022,1/25/2022,0,0,0,0,0,0,0,0,0,0,1.03_Accelerator Systems (AS),1.03.06_AS Soft X-Ray Undulator (SXR) - SLAC,1.03.06.05_AS Soft X-Ray Undulator Engineering and Design - SLAC,1.03.06.05.02_SXR Phase Shifter Design,AS_SXU_DE_1400_Prepare Final Design Review - SXR Phase Shifter,Metrology,,SLAC,Labor
101172,1.03,1.03.06,1.03.06.05,1.03.06.05.02,1.03.06.05.02,SXR Phase Shifter Design,AS_SXU_DE_1400,Prepare Final Design Review - SXR Phase Shifter,15.0,60.0,60.0,60.0,01-13-22,02-03-22,AS_SXU_DE_4160: FS,AS_SXU_DE_1410: FS,SLAC,0%,52169.52169_METS Mechanical Engineer,52169_METS Mechanical Engineer,Labor,0.0d,15.0,15.0,At Completion Units,1/4/2022,1/25/2022,0,0,0,0,0,0,0,0,0,0,1.03_Accelerator Systems (AS),1.03.06_AS Soft X-Ray Undulator (SXR) - SLAC,1.03.06.05_AS Soft X-Ray Undulator Engineering and Design - SLAC,1.03.06.05.02_SXR Phase Shifter Design,AS_SXU_DE_1400_Prepare Final Design Review - SXR Phase Shifter,Mechanical,,SLAC,Labor
101173,1.03,1.03.06,1.03.06.05,1.03.06.05.02,1.03.06.05.02,SXR Phase Shifter Design,AS_SXU_DE_1410,R_FDR: Final Design Review (FDR) - SXR Phase Shifter,1.0,12.0,12.0,12.0,02-04-22,02-04-22,"AS_SXU_DE_1400: FS, AS_SXU_DE_2210: FS","AS_SXU_DE_1420: FS, AS_M4_3060: FS, AS_M4_3080: FS",SLAC,0%,52191.52191_METSMET Metrology,52191_METSMET Metrology,Labor,0.0d,1.0,1.0,At Completion Units,1/26/2022,1/26/2022,Review,0,0,0,0,0,0,0,0,0,1.03_Accelerator Systems (AS),1.03.06_AS Soft X-Ray Undulator (SXR) - SLAC,1.03.06.05_AS Soft X-Ray Undulator Engineering and Design - SLAC,1.03.06.05.02_SXR Phase Shifter Design,AS_SXU_DE_1410_R_FDR: Final Design Review (FDR) - SXR Phase Shifter,Metrology,,SLAC,Labor
101174,1.03,1.03.06,1.03.06.05,1.03.06.05.02,1.03.06.05.02,SXR Phase Shifter Design,AS_SXU_DE_1410,R_FDR: Final Design Review (FDR) - SXR Phase Shifter,1.0,12.0,12.0,12.0,02-04-22,02-04-22,"AS_SXU_DE_1400: FS, AS_SXU_DE_2210: FS","AS_SXU_DE_1420: FS, AS_M4_3060: FS, AS_M4_3080: FS",SLAC,0%,52169.52169_METS Mechanical Engineer,52169_METS Mechanical Engineer,Labor,0.0d,1.0,1.0,At Completion Units,1/26/2022,1/26/2022,Review,0,0,0,0,0,0,0,0,0,1.03_Accelerator Systems (AS),1.03.06_AS Soft X-Ray Undulator (SXR) - SLAC,1.03.06.05_AS Soft X-Ray Undulator Engineering and Design - SLAC,1.03.06.05.02_SXR Phase Shifter Design,AS_SXU_DE_1410_R_FDR: Final Design Review (FDR) - SXR Phase Shifter,Mechanical,,SLAC,Labor
101494,1.03,1.03.06,1.03.06.05,1.03.06.05.03,1.03.06.05.03,SXR Prototype Tests,AS_SXU_DE_4170,Short Prototype Frame Preparation and Setup,62.0,168.0,0.0,168.0,02-03-2021,04-30-2021,AS_SXU_DE_5000: FS,"AS_SXU_DE_4190: FS, AS_SXU_DE_4180: FS",SLAC,100%,52191.52191_METSMET Metrology,52191_METSMET Metrology,Labor,61.0d,0.0,61.0,At Completion Units,2/3/2021,4/30/2021,0,0,0,0,0,0,0,0,0,0,1.03_Accelerator Systems (AS),1.03.06_AS Soft X-Ray Undulator (SXR) - SLAC,1.03.06.05_AS Soft X-Ray Undulator Engineering and Design - SLAC,1.03.06.05.03_SXR Prototype Tests,AS_SXU_DE_4170_Short Prototype Frame Preparation and Setup,Metrology,,SLAC,Labor
101495,1.03,1.03.06,1.03.06.05,1.03.06.05.03,1.03.06.05.03,SXR Prototype Tests,AS_SXU_DE_4200,Short Prototype - Evaluate Shim Signatures,15.0,140.0,70.0,140.0,08-19-2021,10-08-21,AS_SXU_DE_4190: FS,"AS_SXU_DE_4210: FS, AS_SXU_DE_4205: FS, AS_SXU_DE_1600: SS",SLAC,50%,52191.52191_METSMET Metrology,52191_METSMET Metrology,Labor,30.0d,6.0,36.0,At Completion Units,8/27/2021,9/17/2021,0,0,0,0,0,0,0,0,0,0,1.03_Accelerator Systems (AS),1.03.06_AS Soft X-Ray Undulator (SXR) - SLAC,1.03.06.05_AS Soft X-Ray Undulator Engineering and Design - SLAC,1.03.06.05.03_SXR Prototype Tests,AS_SXU_DE_4200_Short Prototype - Evaluate Shim Signatures,Metrology,,SLAC,Labor
101496,1.03,1.03.06,1.03.06.05,1.03.06.05.03,1.03.06.05.03,SXR Prototype Tests,AS_SXU_DE_4180,Procure Materials to Support Short Prototype Preparation and Setup,21.0,2500.0,0.0,0.0,05-03-2021,06-01-2021,AS_SXU_DE_4170: FS,AS_SXU_DE_4190: FS,SLAC,0%,SL_MSSC.SLAC M&S (<$500K) (gets G&A) (gets ESC),SLAC M&S (<$500K) (gets G&A) (gets ESC),Nonlabor,20.0d,0.0,20.0,At Completion Units,5/3/2021,6/1/2021,0,0,0,0,0,0,0,0,0,0,1.03_Accelerator Systems (AS),1.03.06_AS Soft X-Ray Undulator (SXR) - SLAC,1.03.06.05_AS Soft X-Ray Undulator Engineering and Design - SLAC,1.03.06.05.03_SXR Prototype Tests,AS_SXU_DE_4180_Procure Materials to Support Short Prototype Preparation and Setup,Material,,SLAC,M&S
101497,1.03,1.03.06,1.03.06.05,1.03.06.05.03,1.03.06.05.03,SXR Prototype Tests,AS_SXU_DE_4190,Short Prototype Magnet Module Setup,5.0,112.0,0.0,112.0,08-16-2021,08-19-2021,"AS_SXU_DE_4170: FS, AS_SXU_DE_4180: FS, AS_SXU_DE_4185: FS",AS_SXU_DE_4200: FS,SLAC,100%,52191.52191_METSMET Metrology,52191_METSMET Metrology,Labor,3.0d,0.0,3.0,At Completion Units,8/20/2021,8/26/2021,0,0,0,0,0,0,0,0,0,0,1.03_Accelerator Systems (AS),1.03.06_AS Soft X-Ray Undulator (SXR) - SLAC,1.03.06.05_AS Soft X-Ray Undulator Engineering and Design - SLAC,1.03.06.05.03_SXR Prototype Tests,AS_SXU_DE_4190_Short Prototype Magnet Module Setup,Metrology,,SLAC,Labor
101498,1.03,1.03.06,1.03.06.05,1.03.06.05.03,1.03.06.05.03,SXR Prototype Tests,AS_SXU_DE_4250,Short Prototype - Controls and Software Evaluation,25.0,160.0,160.0,160.0,01-13-22,02-17-22,AS_SXU_DE_4160: FS,AS_SXU_MANF_1021: FS,SLAC,0%,52191.52191_METSMET Metrology,52191_METSMET Metrology,Labor,0.0d,25.0,25.0,At Completion Units,1/4/2022,2/8/2022,0,0,0,0,0,0,0,0,0,0,1.03_Accelerator Systems (AS),1.03.06_AS Soft X-Ray Undulator (SXR) - SLAC,1.03.06.05_AS Soft X-Ray Undulator Engineering and Design - SLAC,1.03.06.05.03_SXR Prototype Tests,AS_SXU_DE_4250_Short Prototype - Controls and Software Evaluation,Metrology,,SLAC,Labor
101499,1.03,1.03.06,1.03.06.05,1.03.06.05.03,1.03.06.05.03,SXR Prototype Tests,AS_SXU_DE_4240,Short Prototype - Hall Probe Measurements,10.0,180.0,180.0,180.0,11-08-21,11-19-21,AS_SXU_DE_4230: FS,AS_SXU_DE_4160: FS,SLAC,0%,52191.52191_METSMET Metrology,52191_METSMET Metrology,Labor,0.0d,10.0,10.0,At Completion Units,10/18/2021,10/29/2021,0,0,0,0,0,0,0,0,0,0,1.03_Accelerator Systems (AS),1.03.06_AS Soft X-Ray Undulator (SXR) - SLAC,1.03.06.05_AS Soft X-Ray Undulator Engineering and Design - SLAC,1.03.06.05.03_SXR Prototype Tests,AS_SXU_DE_4240_Short Prototype - Hall Probe Measurements,Metrology,,SLAC,Labor
101500,1.03,1.03.06,1.03.06.05,1.03.06.05.03,1.03.06.05.03,SXR Prototype Tests,AS_SXU_DE_4230,Short Prototype - End Pole Evaluation,5.0,48.0,48.0,48.0,11-01-21,11-05-21,AS_SXU_DE_4220: FS,AS_SXU_DE_4240: FS,SLAC,0%,52191.52191_METSMET Metrology,52191_METSMET Metrology,Labor,0.0d,5.0,5.0,At Completion Units,10/11/2021,10/15/2021,0,0,0,0,0,0,0,0,0,0,1.03_Accelerator Systems (AS),1.03.06_AS Soft X-Ray Undulator (SXR) - SLAC,1.03.06.05_AS Soft X-Ray Undulator Engineering and Design - SLAC,1.03.06.05.03_SXR Prototype Tests,AS_SXU_DE_4230_Short Prototype - End Pole Evaluation,Metrology,,SLAC,Labor
101501,1.03,1.03.06,1.03.06.05,1.03.06.05.03,1.03.06.05.03,SXR Prototype Tests,AS_SXU_DE_4220,Short Prototype - Evaluate Pole Saturation,5.0,52.0,52.0,52.0,10-25-21,10-29-21,AS_SXU_DE_4210: FS,AS_SXU_DE_4230: FS,SLAC,0%,52191.52191_METSMET Metrology,52191_METSMET Metrology,Labor,0.0d,5.0,5.0,At Completion Units,10/4/2021,10/8/2021,0,0,0,0,0,0,0,0,0,0,1.03_Accelerator Systems (AS),1.03.06_AS Soft X-Ray Undulator (SXR) - SLAC,1.03.06.05_AS Soft X-Ray Undulator Engineering and Design - SLAC,1.03.06.05.03_SXR Prototype Tests,AS_SXU_DE_4220_Short Prototype - Evaluate Pole Saturation,Metrology,,SLAC,Labor
101502,1.03,1.03.06,1.03.06.05,1.03.06.05.03,1.03.06.05.03,SXR Prototype Tests,AS_SXU_DE_4210,Short Prototype - Check Magnetization Uniformity,10.0,100.0,100.0,100.0,10-11-21,10-22-21,AS_SXU_DE_4200: FS,AS_SXU_DE_4220: FS,SLAC,0%,52191.52191_METSMET Metrology,52191_METSMET Metrology,Labor,0.0d,10.0,10.0,At Completion Units,9/20/2021,10/1/2021,0,0,0,0,0,0,0,0,0,0,1.03_Accelerator Systems (AS),1.03.06_AS Soft X-Ray Undulator (SXR) - SLAC,1.03.06.05_AS Soft X-Ray Undulator Engineering and Design - SLAC,1.03.06.05.03_SXR Prototype Tests,AS_SXU_DE_4210_Short Prototype - Check Magnetization Uniformity,Metrology,,SLAC,Labor
101822,1.03,1.03.06,1.03.06.05,1.03.06.05.04,1.03.06.05.04,HXRSS Design,AS_SXU_DE_8030,Respond to FDR recommendations - HXRSS,15.0,16.0,16.0,16.0,07-08-22,07-28-22,AS_SXU_DE_8020: FS,AS_SXU_DE_8040: FS,SLAC,0%,52169.52169_METS Mechanical Engineer,52169_METS Mechanical Engineer,Labor,0.0d,15.0,15.0,At Completion Units,nn,,0,0,0,0,0,0,0,0,0,0,1.03_Accelerator Systems (AS),1.03.06_AS Soft X-Ray Undulator (SXR) - SLAC,1.03.06.05_AS Soft X-Ray Undulator Engineering and Design - SLAC,1.03.06.05.04_HXRSS Design,AS_SXU_DE_8030_Respond to FDR recommendations - HXRSS,Mechanical,,SLAC,Labor
101823,1.03,1.03.06,1.03.06.05,1.03.06.05.04,1.03.06.05.04,HXRSS Design,AS_SXU_DE_8020,R_FDR: Final Design Review - HXRSS,10.0,24.0,24.0,24.0,06-23-22,07-07-22,AS_SXU_DE_8010: FS,AS_SXU_DE_8030: FS,SLAC,0%,52169.52169_METS Mechanical Engineer,52169_METS Mechanical Engineer,Labor,0.0d,10.0,10.0,At Completion Units,nn,,0,0,0,0,0,0,0,0,0,0,1.03_Accelerator Systems (AS),1.03.06_AS Soft X-Ray Undulator (SXR) - SLAC,1.03.06.05_AS Soft X-Ray Undulator Engineering and Design - SLAC,1.03.06.05.04_HXRSS Design,AS_SXU_DE_8020_R_FDR: Final Design Review - HXRSS,Mechanical,,SLAC,Labor
101824,1.03,1.03.06,1.03.06.05,1.03.06.05.04,1.03.06.05.04,HXRSS Design,AS_SXU_DE_8010,Prepare for FDR - HXRSS,10.0,60.0,60.0,60.0,06-09-22,06-22-22,AS_SXU_DE_8000: FS,AS_SXU_DE_8020: FS,SLAC,0%,52169.52169_METS Mechanical Engineer,52169_METS Mechanical Engineer,Labor,0.0d,10.0,10.0,At Completion Units,nn,,0,0,0,0,0,0,0,0,0,0,1.03_Accelerator Systems (AS),1.03.06_AS Soft X-Ray Undulator (SXR) - SLAC,1.03.06.05_AS Soft X-Ray Undulator Engineering and Design - SLAC,1.03.06.05.04_HXRSS Design,AS_SXU_DE_8010_Prepare for FDR - HXRSS,Mechanical,,SLAC,Labor
101825,1.03,1.03.06,1.03.06.05,1.03.06.05.04,1.03.06.05.04,HXRSS Design,AS_SXU_DE_8000,Develop Final Design - HXRSS,47.0,600.0,600.0,600.0,04-04-22,06-08-22,MS_FY_2022_Q3: FS,AS_SXU_DE_8010: FS,SLAC,0%,52169.52169_METS Mechanical Engineer,52169_METS Mechanical Engineer,Labor,0.0d,47.0,47.0,At Completion Units,nn,,0,0,0,0,0,0,0,0,0,0,1.03_Accelerator Systems (AS),1.03.06_AS Soft X-Ray Undulator (SXR) - SLAC,1.03.06.05_AS Soft X-Ray Undulator Engineering and Design - SLAC,1.03.06.05.04_HXRSS Design,AS_SXU_DE_8000_Develop Final Design - HXRSS,Mechanical,,SLAC,Labor
102464,1.03,1.03.06,1.03.06.06,1.03.06.06.01,1.03.06.06.01,SXR Undulator Mechanical Components - Procurement & Fab,AS_SXU_MANF_5495,RCV: SXRSS Vendor design - SXU,10.0,17617.0,17617.0,17617.0,05-20-22,06-03-22,AS_SXU_MANF_5490: FS,AS_SXU_MANF_5500: FS,SLAC,0%,SL_MSSC.SLAC M&S (<$500K) (gets G&A) (gets ESC),SLAC M&S (<$500K) (gets G&A) (gets ESC),Nonlabor,0.0d,10.0,10.0,At Completion Units,11/16/2021,11/22/2021,DM-C13-50%,0,0,0,0,0,0,0,0,0,1.03_Accelerator Systems (AS),1.03.06_AS Soft X-Ray Undulator (SXR) - SLAC,1.03.06.06_AS Soft X-Ray Undulator Procurement and Fabrication - SLAC,1.03.06.06.01_SXR Undulator Mechanical Components - Procurement & Fab,AS_SXU_MANF_5495_RCV: SXRSS Vendor design - SXU,Material,,SLAC,M&S
102465,1.03,1.03.06,1.03.06.06,1.03.06.06.01,1.03.06.06.01,SXR Undulator Mechanical Components - Procurement & Fab,AS_SXU_MANF_5515,AWARD: Release production option - SXRSS chicane - SXU,2.0,99829.0,99829.0,99829.0,10-02-23,10-03-23,"AS_M4_3010: FS, AS_SXU_MANF_5500: FS, AS_SXU_DE_1110: FS","AS_SXU_MANF_5520: FS, AS_SXU_MANF_5530: FS, AS_SXU_MANF_5540: FS",SLAC,0%,AWARD_USE.AWARD - Use this AWARD,AWARD - Use this AWARD,Nonlabor,0.0d,2.0,2.0,At Completion Units,9/1/2022,9/2/2022,0,0,0,0,0,0,0,0,0,0,1.03_Accelerator Systems (AS),1.03.06_AS Soft X-Ray Undulator (SXR) - SLAC,1.03.06.06_AS Soft X-Ray Undulator Procurement and Fabrication - SLAC,1.03.06.06.01_SXR Undulator Mechanical Components - Procurement & Fab,AS_SXU_MANF_5515_AWARD: Release production option - SXRSS chicane - SXU,Material,,SLAC,M&S
102466,1.03,1.03.06,1.03.06.06,1.03.06.06.01,1.03.06.06.01,SXR Undulator Mechanical Components - Procurement & Fab,AS_SXU_MANF_4000,Prepare Requisition (Specs/SOW/ETC) - Interspace Vacuum System - SXU,20.0,32.0,32.0,32.0,04-13-23,05-10-23,"AS_SXU_MANF_3800: FS, AS_SXU_DE_1110: FS, AS_SXU_MANF_4200: FS","AS_SXU_MANF_4010: FS, AS_SXU_MANF_4600: FS, AS_SXU_MANF_5200: FS",SLAC,0%,52169.52169_METS Mechanical Engineer,52169_METS Mechanical Engineer,Labor,0.0d,20.0,20.0,At Completion Units,6/14/2022,7/12/2022,0,0,0,0,0,0,0,0,0,0,1.03_Accelerator Systems (AS),1.03.06_AS Soft X-Ray Undulator (SXR) - SLAC,1.03.06.06_AS Soft X-Ray Undulator Procurement and Fabrication - SLAC,1.03.06.06.01_SXR Undulator Mechanical Components - Procurement & Fab,AS_SXU_MANF_4000_Prepare Requisition (Specs/SOW/ETC) - Interspace Vacuum System - SXU,Mechanical,,SLAC,Labor
102467,1.03,1.03.06,1.03.06.06,1.03.06.06.01,1.03.06.06.01,SXR Undulator Mechanical Components - Procurement & Fab,AS_SXU_MANF_4600,Prepare Requisition (Specs/SOW/ETC) - Water Cooling Hardware - SXU,40.0,8.0,8.0,8.0,05-25-23,07-21-23,"AS_SXU_DE_1110: FS, AS_SXU_MANF_4000: FS, AS_SXU_MANF_4400: FS",AS_SXU_MANF_4610: FS,SLAC,0%,52169.52169_METS Mechanical Engineer,52169_METS Mechanical Engineer,Labor,0.0d,40.0,40.0,At Completion Units,6/14/2022,8/9/2022,0,0,0,0,0,0,0,0,0,0,1.03_Accelerator Systems (AS),1.03.06_AS Soft X-Ray Undulator (SXR) - SLAC,1.03.06.06_AS Soft X-Ray Undulator Procurement and Fabrication - SLAC,1.03.06.06.01_SXR Undulator Mechanical Components - Procurement & Fab,AS_SXU_MANF_4600_Prepare Requisition (Specs/SOW/ETC) - Water Cooling Hardware - SXU,Mechanical,,SLAC,Labor
102468,1.03,1.03.06,1.03.06.06,1.03.06.06.01,1.03.06.06.01,SXR Undulator Mechanical Components - Procurement & Fab,AS_SXU_MANF_4480,QA and acceptance testing - Interspace supports and hardware - SXU,15.0,24.0,24.0,24.0,01-23-24,02-12-24,"AS_SXU_MANF_4460: FS, AS_SXU_MANF_4470: FS",AS_SXU_MANF_4490: FS,SLAC,0%,52191.52191_METSMET Metrology,52191_METSMET Metrology,Labor,0.0d,15.0,15.0,At Completion Units,12/8/2022,1/11/2023,0,0,0,0,0,0,0,0,0,0,1.03_Accelerator Systems (AS),1.03.06_AS Soft X-Ray Undulator (SXR) - SLAC,1.03.06.06_AS Soft X-Ray Undulator Procurement and Fabrication - SLAC,1.03.06.06.01_SXR Undulator Mechanical Components - Procurement & Fab,AS_SXU_MANF_4480_QA and acceptance testing - Interspace supports and hardware - SXU,Metrology,,SLAC,Labor
102469,1.03,1.03.06,1.03.06.06,1.03.06.06.01,1.03.06.06.01,SXR Undulator Mechanical Components - Procurement & Fab,AS_SXU_MANF_4400,Prepare Requisition (Specs/SOW/ETC) - Interspace supports and hardware - SXU,30.0,56.0,56.0,56.0,04-13-23,05-24-23,"AS_SXU_MANF_3800: FS, AS_SXU_MANF_4200: FS, AS_SXU_DE_1110: FS","AS_SXU_MANF_4410: FS, AS_SXU_MANF_4600: FS, AS_SXU_MANF_5200: FS",SLAC,0%,52169.52169_METS Mechanical Engineer,52169_METS Mechanical Engineer,Labor,0.0d,30.0,30.0,At Completion Units,6/14/2022,7/26/2022,0,0,0,0,0,0,0,0,0,0,1.03_Accelerator Systems (AS),1.03.06_AS Soft X-Ray Undulator (SXR) - SLAC,1.03.06.06_AS Soft X-Ray Undulator Procurement and Fabrication - SLAC,1.03.06.06.01_SXR Undulator Mechanical Components - Procurement & Fab,AS_SXU_MANF_4400_Prepare Requisition (Specs/SOW/ETC) - Interspace supports and hardware - SXU,Mechanical,,SLAC,Labor
102470,1.03,1.03.06,1.03.06.06,1.03.06.06.01,1.03.06.06.01,SXR Undulator Mechanical Components - Procurement & Fab,AS_SXU_MANF_4110,QA and acceptance testing - Interspace Vacuum System - SXU,30.0,60.0,60.0,60.0,01-16-24,02-27-24,AS_SXU_MANF_4100: FS,AS_SXU_MANF_4120: FS,SLAC,0%,52191.52191_METSMET Metrology,52191_METSMET Metrology,Labor,0.0d,30.0,30.0,At Completion Units,12/12/2022,2/6/2023,0,0,0,0,0,0,0,0,0,0,1.03_Accelerator Systems (AS),1.03.06_AS Soft X-Ray Undulator (SXR) - SLAC,1.03.06.06_AS Soft X-Ray Undulator Procurement and Fabrication - SLAC,1.03.06.06.01_SXR Undulator Mechanical Components - Procurement & Fab,AS_SXU_MANF_4110_QA and acceptance testing - Interspace Vacuum System - SXU,Metrology,,SLAC,Labor
102471,1.03,1.03.06,1.03.06.06,1.03.06.06.01,1.03.06.06.01,SXR Undulator Mechanical Components - Procurement & Fab,AS_SXU_MANF_4000,Prepare Requisition (Specs/SOW/ETC) - Interspace Vacuum System - SXU,20.0,8.0,8.0,8.0,04-13-23,05-10-23,"AS_SXU_MANF_3800: FS, AS_SXU_DE_1110: FS, AS_SXU_MANF_4200: FS","AS_SXU_MANF_4010: FS, AS_SXU_MANF_4600: FS, AS_SXU_MANF_5200: FS",SLAC,0%,52190.52190_METSTP Tech Planning - Reinstated FY16,52190_METSTP Tech Planning - Reinstated FY16,Labor,0.0d,20.0,20.0,At Completion Units,6/14/2022,7/12/2022,0,0,0,0,0,0,0,0,0,0,1.03_Accelerator Systems (AS),1.03.06_AS Soft X-Ray Undulator (SXR) - SLAC,1.03.06.06_AS Soft X-Ray Undulator Procurement and Fabrication - SLAC,1.03.06.06.01_SXR Undulator Mechanical Components - Procurement & Fab,AS_SXU_MANF_4000_Prepare Requisition (Specs/SOW/ETC) - Interspace Vacuum System - SXU,METSTPT Tech Planning,Tech,SLAC,Labor
102472,1.03,1.03.06,1.03.06.06,1.03.06.06.01,1.03.06.06.01,SXR Undulator Mechanical Components - Procurement & Fab,AS_SXU_MANF_3930,QA and acceptance testing - Cam Positioners - SXU,30.0,32.0,32.0,32.0,03-13-24,04-23-24,AS_SXU_MANF_3920: FS,AS_SXU_MANF_3940: FS,SLAC,0%,52152.52152_FAC Fleet,52152_FAC Fleet,Labor,0.0d,30.0,30.0,At Completion Units,2/10/2023,3/24/2023,0,0,0,0,0,0,0,0,0,0,1.03_Accelerator Systems (AS),1.03.06_AS Soft X-Ray Undulator (SXR) - SLAC,1.03.06.06_AS Soft X-Ray Undulator Procurement and Fabrication - SLAC,1.03.06.06.01_SXR Undulator Mechanical Components - Procurement & Fab,AS_SXU_MANF_3930_QA and acceptance testing - Cam Positioners - SXU,Support System,,SLAC,Labor
102473,1.03,1.03.06,1.03.06.06,1.03.06.06.01,1.03.06.06.01,SXR Undulator Mechanical Components - Procurement & Fab,AS_SXU_MANF_3930,QA and acceptance testing - Cam Positioners - SXU,30.0,270.0,270.0,270.0,03-13-24,04-23-24,AS_SXU_MANF_3920: FS,AS_SXU_MANF_3940: FS,SLAC,0%,52213.52213_EEDHW (Electronics & Engineering Div - HW Engr),52213_EEDHW (Electronics & Engineering Div - HW Engr),Labor,0.0d,30.0,30.0,At Completion Units,2/10/2023,3/24/2023,0,0,0,0,0,0,0,0,0,0,1.03_Accelerator Systems (AS),1.03.06_AS Soft X-Ray Undulator (SXR) - SLAC,1.03.06.06_AS Soft X-Ray Undulator Procurement and Fabrication - SLAC,1.03.06.06.01_SXR Undulator Mechanical Components - Procurement & Fab,AS_SXU_MANF_3930_QA and acceptance testing - Cam Positioners - SXU,Electrical,,SLAC,Labor
102474,1.03,1.03.06,1.03.06.06,1.03.06.06.01,1.03.06.06.01,SXR Undulator Mechanical Components - Procurement & Fab,AS_SXU_MANF_3930,QA and acceptance testing - Cam Positioners - SXU,30.0,36.0,36.0,36.0,03-13-24,04-23-24,AS_SXU_MANF_3920: FS,AS_SXU_MANF_3940: FS,SLAC,0%,52191.52191_METSMET Metrology,52191_METSMET Metrology,Labor,0.0d,30.0,30.0,At Completion Units,2/10/2023,3/24/2023,0,0,0,0,0,0,0,0,0,0,1.03_Accelerator Systems (AS),1.03.06_AS Soft X-Ray Undulator (SXR) - SLAC,1.03.06.06_AS Soft X-Ray Undulator Procurement and Fabrication - SLAC,1.03.06.06.01_SXR Undulator Mechanical Components - Procurement & Fab,AS_SXU_MANF_3930_QA and acceptance testing - Cam Positioners - SXU,Metrology,,SLAC,Labor
102475,1.03,1.03.06,1.03.06.06,1.03.06.06.01,1.03.06.06.01,SXR Undulator Mechanical Components - Procurement & Fab,AS_SXU_MANF_3800,Prepare Requisition (Specs/SOW/ETC)  - Pedestal / Cam Positioner - SXU,20.0,24.0,24.0,24.0,03-16-23,04-12-23,"AS_SXU_MANF_3400: FS, AS_SXU_MANF_3600: FS, AS_SXU_DE_1110: FS","AS_SXU_MANF_3810: FS, AS_SXU_MANF_4000: FS, AS_SXU_MANF_4400: FS",SLAC,0%,52169.52169_METS Mechanical Engineer,52169_METS Mechanical Engineer,Labor,0.0d,20.0,20.0,At Completion Units,5/16/2022,6/13/2022,0,0,0,0,0,0,0,0,0,0,1.03_Accelerator Systems (AS),1.03.06_AS Soft X-Ray Undulator (SXR) - SLAC,1.03.06.06_AS Soft X-Ray Undulator Procurement and Fabrication - SLAC,1.03.06.06.01_SXR Undulator Mechanical Components - Procurement & Fab,AS_SXU_MANF_3800_Prepare Requisition (Specs/SOW/ETC)  - Pedestal / Cam Positioner - SXU,Mechanical,,SLAC,Labor
102476,1.03,1.03.06,1.03.06.06,1.03.06.06.01,1.03.06.06.01,SXR Undulator Mechanical Components - Procurement & Fab,AS_SXU_MANF_3710,QA and acceptance testing - RFBPM - SXU,65.0,280.0,280.0,280.0,08-02-24,11-01-24,AS_SXU_MANF_3700: FS,AS_SXU_MANF_3720: FS,SLAC,0%,52127.52127_Research Electrical & SW Engineer,52127_Research Electrical & SW Engineer,Labor,0.0d,65.0,65.0,At Completion Units,7/5/2023,10/4/2023,0,0,0,0,0,0,0,0,0,0,1.03_Accelerator Systems (AS),1.03.06_AS Soft X-Ray Undulator (SXR) - SLAC,1.03.06.06_AS Soft X-Ray Undulator Procurement and Fabrication - SLAC,1.03.06.06.01_SXR Undulator Mechanical Components - Procurement & Fab,AS_SXU_MANF_3710_QA and acceptance testing - RFBPM - SXU,Electrical,,SLAC,Labor
102477,1.03,1.03.06,1.03.06.06,1.03.06.06.01,1.03.06.06.01,SXR Undulator Mechanical Components - Procurement & Fab,AS_SXU_MANF_3400,Prepare Requisition (Specs/SOW/ETC) - Undulator Vacuum Chambers - SXU,50.0,44.0,44.0,44.0,01-03-23,03-15-23,"AS_SXU_DE_1110: FS, MS_FY_2023_Q2: FS","AS_SXU_MANF_3410: FS, AS_SXU_MANF_3800: FS, AS_SXU_MANF_4200: FS",SLAC,0%,52169.52169_METS Mechanical Engineer,52169_METS Mechanical Engineer,Labor,0.0d,50.0,50.0,At Completion Units,3/7/2022,5/13/2022,0,0,0,0,0,0,0,0,0,0,1.03_Accelerator Systems (AS),1.03.06_AS Soft X-Ray Undulator (SXR) - SLAC,1.03.06.06_AS Soft X-Ray Undulator Procurement and Fabrication - SLAC,1.03.06.06.01_SXR Undulator Mechanical Components - Procurement & Fab,AS_SXU_MANF_3400_Prepare Requisition (Specs/SOW/ETC) - Undulator Vacuum Chambers - SXU,Mechanical,,SLAC,Labor
102478,1.03,1.03.06,1.03.06.06,1.03.06.06.01,1.03.06.06.01,SXR Undulator Mechanical Components - Procurement & Fab,AS_SXU_MANF_8024,Interspace assembly integration - 024,10.0,3.0,3.0,3.0,03-14-25,03-27-25,"AS_SXU_MANF_3720: FS, AS_SXU_MANF_4150: FS, AS_SXU_MANF_4320: FS, AS_SXU_MANF_4490: FS, AS_SXU_MANF_8023: FS","AS_SXU_MANF_9000: FS, AS_SXU_INST_5124: FS",SLAC,0%,52190.52190_METSTP Tech Planning - Reinstated FY16,52190_METSTP Tech Planning - Reinstated FY16,Labor,0.0d,10.0,10.0,At Completion Units,2/14/2024,2/28/2024,0,0,0,0,0,0,0,0,0,0,1.03_Accelerator Systems (AS),1.03.06_AS Soft X-Ray Undulator (SXR) - SLAC,1.03.06.06_AS Soft X-Ray Undulator Procurement and Fabrication - SLAC,1.03.06.06.01_SXR Undulator Mechanical Components - Procurement & Fab,AS_SXU_MANF_8024_Interspace assembly integration - 024,METSTPT Tech Planning,Tech,SLAC,Labor
102479,1.03,1.03.06,1.03.06.06,1.03.06.06.01,1.03.06.06.01,SXR Undulator Mechanical Components - Procurement & Fab,AS_SXU_MANF_8024,Interspace assembly integration - 024,10.0,4.0,4.0,4.0,03-14-25,03-27-25,"AS_SXU_MANF_3720: FS, AS_SXU_MANF_4150: FS, AS_SXU_MANF_4320: FS, AS_SXU_MANF_4490: FS, AS_SXU_MANF_8023: FS","AS_SXU_MANF_9000: FS, AS_SXU_INST_5124: FS",SLAC,0%,52127.52127_Research Electrical & SW Engineer,52127_Research Electrical & SW Engineer,Labor,0.0d,10.0,10.0,At Completion Units,2/14/2024,2/28/2024,0,0,0,0,0,0,0,0,0,0,1.03_Accelerator Systems (AS),1.03.06_AS Soft X-Ray Undulator (SXR) - SLAC,1.03.06.06_AS Soft X-Ray Undulator Procurement and Fabrication - SLAC,1.03.06.06.01_SXR Undulator Mechanical Components - Procurement & Fab,AS_SXU_MANF_8024_Interspace assembly integration - 024,Electrical,,SLAC,Labor
102480,1.03,1.03.06,1.03.06.06,1.03.06.06.01,1.03.06.06.01,SXR Undulator Mechanical Components - Procurement & Fab,AS_SXU_MANF_8024,Interspace assembly integration - 024,10.0,48.0,48.0,48.0,03-14-25,03-27-25,"AS_SXU_MANF_3720: FS, AS_SXU_MANF_4150: FS, AS_SXU_MANF_4320: FS, AS_SXU_MANF_4490: FS, AS_SXU_MANF_8023: FS","AS_SXU_MANF_9000: FS, AS_SXU_INST_5124: FS",SLAC,0%,52198.52198_METSMANF (METSD Manufacturing),52198_METSMANF (METSD Manufacturing),Labor,0.0d,10.0,10.0,At Completion Units,2/14/2024,2/28/2024,0,0,0,0,0,0,0,0,0,0,1.03_Accelerator Systems (AS),1.03.06_AS Soft X-Ray Undulator (SXR) - SLAC,1.03.06.06_AS Soft X-Ray Undulator Procurement and Fabrication - SLAC,1.03.06.06.01_SXR Undulator Mechanical Components - Procurement & Fab,AS_SXU_MANF_8024_Interspace assembly integration - 024,Manufacturing,,SLAC,Labor
102481,1.03,1.03.06,1.03.06.06,1.03.06.06.01,1.03.06.06.01,SXR Undulator Mechanical Components - Procurement & Fab,AS_SXU_MANF_8024,Interspace assembly integration - 024,10.0,20.0,20.0,20.0,03-14-25,03-27-25,"AS_SXU_MANF_3720: FS, AS_SXU_MANF_4150: FS, AS_SXU_MANF_4320: FS, AS_SXU_MANF_4490: FS, AS_SXU_MANF_8023: FS","AS_SXU_MANF_9000: FS, AS_SXU_INST_5124: FS",SLAC,0%,52191.52191_METSMET Metrology,52191_METSMET Metrology,Labor,0.0d,10.0,10.0,At Completion Units,2/14/2024,2/28/2024,0,0,0,0,0,0,0,0,0,0,1.03_Accelerator Systems (AS),1.03.06_AS Soft X-Ray Undulator (SXR) - SLAC,1.03.06.06_AS Soft X-Ray Undulator Procurement and Fabrication - SLAC,1.03.06.06.01_SXR Undulator Mechanical Components - Procurement & Fab,AS_SXU_MANF_8024_Interspace assembly integration - 024,Metrology,,SLAC,Labor
102482,1.03,1.03.06,1.03.06.06,1.03.06.06.01,1.03.06.06.01,SXR Undulator Mechanical Components - Procurement & Fab,AS_SXU_MANF_8024,Interspace assembly integration - 024,10.0,16.0,16.0,16.0,03-14-25,03-27-25,"AS_SXU_MANF_3720: FS, AS_SXU_MANF_4150: FS, AS_SXU_MANF_4320: FS, AS_SXU_MANF_4490: FS, AS_SXU_MANF_8023: FS","AS_SXU_MANF_9000: FS, AS_SXU_INST_5124: FS",SLAC,0%,52169.52169_METS Mechanical Engineer,52169_METS Mechanical Engineer,Labor,0.0d,10.0,10.0,At Completion Units,2/14/2024,2/28/2024,0,0,0,0,0,0,0,0,0,0,1.03_Accelerator Systems (AS),1.03.06_AS Soft X-Ray Undulator (SXR) - SLAC,1.03.06.06_AS Soft X-Ray Undulator Procurement and Fabrication - SLAC,1.03.06.06.01_SXR Undulator Mechanical Components - Procurement & Fab,AS_SXU_MANF_8024_Interspace assembly integration - 024,Mechanical,,SLAC,Labor
102483,1.03,1.03.06,1.03.06.06,1.03.06.06.01,1.03.06.06.01,SXR Undulator Mechanical Components - Procurement & Fab,AS_SXU_MANF_8023,Interspace assembly integration - 023,10.0,3.0,3.0,3.0,02-28-25,03-13-25,"AS_SXU_MANF_3720: FS, AS_SXU_MANF_4150: FS, AS_SXU_MANF_4320: FS, AS_SXU_MANF_4490: FS, AS_SXU_MANF_8022: FS","AS_SXU_MANF_8024: FS, AS_SXU_INST_5123: FS",SLAC,0%,52190.52190_METSTP Tech Planning - Reinstated FY16,52190_METSTP Tech Planning - Reinstated FY16,Labor,0.0d,10.0,10.0,At Completion Units,1/31/2024,2/13/2024,0,0,0,0,0,0,0,0,0,0,1.03_Accelerator Systems (AS),1.03.06_AS Soft X-Ray Undulator (SXR) - SLAC,1.03.06.06_AS Soft X-Ray Undulator Procurement and Fabrication - SLAC,1.03.06.06.01_SXR Undulator Mechanical Components - Procurement & Fab,AS_SXU_MANF_8023_Interspace assembly integration - 023,METSTPT Tech Planning,Tech,SLAC,Labor
102484,1.03,1.03.06,1.03.06.06,1.03.06.06.01,1.03.06.06.01,SXR Undulator Mechanical Components - Procurement & Fab,AS_SXU_MANF_8023,Interspace assembly integration - 023,10.0,4.0,4.0,4.0,02-28-25,03-13-25,"AS_SXU_MANF_3720: FS, AS_SXU_MANF_4150: FS, AS_SXU_MANF_4320: FS, AS_SXU_MANF_4490: FS, AS_SXU_MANF_8022: FS","AS_SXU_MANF_8024: FS, AS_SXU_INST_5123: FS",SLAC,0%,52127.52127_Research Electrical & SW Engineer,52127_Research Electrical & SW Engineer,Labor,0.0d,10.0,10.0,At Completion Units,1/31/2024,2/13/2024,0,0,0,0,0,0,0,0,0,0,1.03_Accelerator Systems (AS),1.03.06_AS Soft X-Ray Undulator (SXR) - SLAC,1.03.06.06_AS Soft X-Ray Undulator Procurement and Fabrication - SLAC,1.03.06.06.01_SXR Undulator Mechanical Components - Procurement & Fab,AS_SXU_MANF_8023_Interspace assembly integration - 023,Electrical,,SLAC,Labor
102485,1.03,1.03.06,1.03.06.06,1.03.06.06.01,1.03.06.06.01,SXR Undulator Mechanical Components - Procurement & Fab,AS_SXU_MANF_8023,Interspace assembly integration - 023,10.0,48.0,48.0,48.0,02-28-25,03-13-25,"AS_SXU_MANF_3720: FS, AS_SXU_MANF_4150: FS, AS_SXU_MANF_4320: FS, AS_SXU_MANF_4490: FS, AS_SXU_MANF_8022: FS","AS_SXU_MANF_8024: FS, AS_SXU_INST_5123: FS",SLAC,0%,52198.52198_METSMANF (METSD Manufacturing),52198_METSMANF (METSD Manufacturing),Labor,0.0d,10.0,10.0,At Completion Units,1/31/2024,2/13/2024,0,0,0,0,0,0,0,0,0,0,1.03_Accelerator Systems (AS),1.03.06_AS Soft X-Ray Undulator (SXR) - SLAC,1.03.06.06_AS Soft X-Ray Undulator Procurement and Fabrication - SLAC,1.03.06.06.01_SXR Undulator Mechanical Components - Procurement & Fab,AS_SXU_MANF_8023_Interspace assembly integration - 023,Manufacturing,,SLAC,Labor
102486,1.03,1.03.06,1.03.06.06,1.03.06.06.01,1.03.06.06.01,SXR Undulator Mechanical Components - Procurement & Fab,AS_SXU_MANF_8023,Interspace assembly integration - 023,10.0,20.0,20.0,20.0,02-28-25,03-13-25,"AS_SXU_MANF_3720: FS, AS_SXU_MANF_4150: FS, AS_SXU_MANF_4320: FS, AS_SXU_MANF_4490: FS, AS_SXU_MANF_8022: FS","AS_SXU_MANF_8024: FS, AS_SXU_INST_5123: FS",SLAC,0%,52191.52191_METSMET Metrology,52191_METSMET Metrology,Labor,0.0d,10.0,10.0,At Completion Units,1/31/2024,2/13/2024,0,0,0,0,0,0,0,0,0,0,1.03_Accelerator Systems (AS),1.03.06_AS Soft X-Ray Undulator (SXR) - SLAC,1.03.06.06_AS Soft X-Ray Undulator Procurement and Fabrication - SLAC,1.03.06.06.01_SXR Undulator Mechanical Components - Procurement & Fab,AS_SXU_MANF_8023_Interspace assembly integration - 023,Metrology,,SLAC,Labor
102487,1.03,1.03.06,1.03.06.06,1.03.06.06.01,1.03.06.06.01,SXR Undulator Mechanical Components - Procurement & Fab,AS_SXU_MANF_8023,Interspace assembly integration - 023,10.0,16.0,16.0,16.0,02-28-25,03-13-25,"AS_SXU_MANF_3720: FS, AS_SXU_MANF_4150: FS, AS_SXU_MANF_4320: FS, AS_SXU_MANF_4490: FS, AS_SXU_MANF_8022: FS","AS_SXU_MANF_8024: FS, AS_SXU_INST_5123: FS",SLAC,0%,52169.52169_METS Mechanical Engineer,52169_METS Mechanical Engineer,Labor,0.0d,10.0,10.0,At Completion Units,1/31/2024,2/13/2024,0,0,0,0,0,0,0,0,0,0,1.03_Accelerator Systems (AS),1.03.06_AS Soft X-Ray Undulator (SXR) - SLAC,1.03.06.06_AS Soft X-Ray Undulator Procurement and Fabrication - SLAC,1.03.06.06.01_SXR Undulator Mechanical Components - Procurement & Fab,AS_SXU_MANF_8023_Interspace assembly integration - 023,Mechanical,,SLAC,Labor
102488,1.03,1.03.06,1.03.06.06,1.03.06.06.01,1.03.06.06.01,SXR Undulator Mechanical Components - Procurement & Fab,AS_SXU_MANF_8022,Interspace assembly integration - 022,10.0,3.0,3.0,3.0,02-13-25,02-27-25,"AS_SXU_MANF_3720: FS, AS_SXU_MANF_4150: FS, AS_SXU_MANF_4320: FS, AS_SXU_MANF_4490: FS, AS_SXU_MANF_8021: FS","AS_SXU_MANF_8023: FS, AS_SXU_INST_5122: FS",SLAC,0%,52190.52190_METSTP Tech Planning - Reinstated FY16,52190_METSTP Tech Planning - Reinstated FY16,Labor,0.0d,10.0,10.0,At Completion Units,1/17/2024,1/30/2024,0,0,0,0,0,0,0,0,0,0,1.03_Accelerator Systems (AS),1.03.06_AS Soft X-Ray Undulator (SXR) - SLAC,1.03.06.06_AS Soft X-Ray Undulator Procurement and Fabrication - SLAC,1.03.06.06.01_SXR Undulator Mechanical Components - Procurement & Fab,AS_SXU_MANF_8022_Interspace assembly integration - 022,METSTPT Tech Planning,Tech,SLAC,Labor
102489,1.03,1.03.06,1.03.06.06,1.03.06.06.01,1.03.06.06.01,SXR Undulator Mechanical Components - Procurement & Fab,AS_SXU_MANF_8022,Interspace assembly integration - 022,10.0,4.0,4.0,4.0,02-13-25,02-27-25,"AS_SXU_MANF_3720: FS, AS_SXU_MANF_4150: FS, AS_SXU_MANF_4320: FS, AS_SXU_MANF_4490: FS, AS_SXU_MANF_8021: FS","AS_SXU_MANF_8023: FS, AS_SXU_INST_5122: FS",SLAC,0%,52127.52127_Research Electrical & SW Engineer,52127_Research Electrical & SW Engineer,Labor,0.0d,10.0,10.0,At Completion Units,1/17/2024,1/30/2024,0,0,0,0,0,0,0,0,0,0,1.03_Accelerator Systems (AS),1.03.06_AS Soft X-Ray Undulator (SXR) - SLAC,1.03.06.06_AS Soft X-Ray Undulator Procurement and Fabrication - SLAC,1.03.06.06.01_SXR Undulator Mechanical Components - Procurement & Fab,AS_SXU_MANF_8022_Interspace assembly integration - 022,Electrical,,SLAC,Labor
102490,1.03,1.03.06,1.03.06.06,1.03.06.06.01,1.03.06.06.01,SXR Undulator Mechanical Components - Procurement & Fab,AS_SXU_MANF_8022,Interspace assembly integration - 022,10.0,48.0,48.0,48.0,02-13-25,02-27-25,"AS_SXU_MANF_3720: FS, AS_SXU_MANF_4150: FS, AS_SXU_MANF_4320: FS, AS_SXU_MANF_4490: FS, AS_SXU_MANF_8021: FS","AS_SXU_MANF_8023: FS, AS_SXU_INST_5122: FS",SLAC,0%,52198.52198_METSMANF (METSD Manufacturing),52198_METSMANF (METSD Manufacturing),Labor,0.0d,10.0,10.0,At Completion Units,1/17/2024,1/30/2024,0,0,0,0,0,0,0,0,0,0,1.03_Accelerator Systems (AS),1.03.06_AS Soft X-Ray Undulator (SXR) - SLAC,1.03.06.06_AS Soft X-Ray Undulator Procurement and Fabrication - SLAC,1.03.06.06.01_SXR Undulator Mechanical Components - Procurement & Fab,AS_SXU_MANF_8022_Interspace assembly integration - 022,Manufacturing,,SLAC,Labor
102491,1.03,1.03.06,1.03.06.06,1.03.06.06.01,1.03.06.06.01,SXR Undulator Mechanical Components - Procurement & Fab,AS_SXU_MANF_8022,Interspace assembly integration - 022,10.0,20.0,20.0,20.0,02-13-25,02-27-25,"AS_SXU_MANF_3720: FS, AS_SXU_MANF_4150: FS, AS_SXU_MANF_4320: FS, AS_SXU_MANF_4490: FS, AS_SXU_MANF_8021: FS","AS_SXU_MANF_8023: FS, AS_SXU_INST_5122: FS",SLAC,0%,52191.52191_METSMET Metrology,52191_METSMET Metrology,Labor,0.0d,10.0,10.0,At Completion Units,1/17/2024,1/30/2024,0,0,0,0,0,0,0,0,0,0,1.03_Accelerator Systems (AS),1.03.06_AS Soft X-Ray Undulator (SXR) - SLAC,1.03.06.06_AS Soft X-Ray Undulator Procurement and Fabrication - SLAC,1.03.06.06.01_SXR Undulator Mechanical Components - Procurement & Fab,AS_SXU_MANF_8022_Interspace assembly integration - 022,Metrology,,SLAC,Labor
102492,1.03,1.03.06,1.03.06.06,1.03.06.06.01,1.03.06.06.01,SXR Undulator Mechanical Components - Procurement & Fab,AS_SXU_MANF_8022,Interspace assembly integration - 022,10.0,16.0,16.0,16.0,02-13-25,02-27-25,"AS_SXU_MANF_3720: FS, AS_SXU_MANF_4150: FS, AS_SXU_MANF_4320: FS, AS_SXU_MANF_4490: FS, AS_SXU_MANF_8021: FS","AS_SXU_MANF_8023: FS, AS_SXU_INST_5122: FS",SLAC,0%,52169.52169_METS Mechanical Engineer,52169_METS Mechanical Engineer,Labor,0.0d,10.0,10.0,At Completion Units,1/17/2024,1/30/2024,0,0,0,0,0,0,0,0,0,0,1.03_Accelerator Systems (AS),1.03.06_AS Soft X-Ray Undulator (SXR) - SLAC,1.03.06.06_AS Soft X-Ray Undulator Procurement and Fabrication - SLAC,1.03.06.06.01_SXR Undulator Mechanical Components - Procurement & Fab,AS_SXU_MANF_8022_Interspace assembly integration - 022,Mechanical,,SLAC,Labor
102493,1.03,1.03.06,1.03.06.06,1.03.06.06.01,1.03.06.06.01,SXR Undulator Mechanical Components - Procurement & Fab,AS_SXU_MANF_8021,Interspace assembly integration - 021,10.0,3.0,3.0,3.0,01-30-25,02-12-25,"AS_SXU_MANF_3720: FS, AS_SXU_MANF_4150: FS, AS_SXU_MANF_4320: FS, AS_SXU_MANF_4490: FS, AS_SXU_MANF_8020: FS","AS_SXU_MANF_8022: FS, AS_SXU_INST_5121: FS",SLAC,0%,52190.52190_METSTP Tech Planning - Reinstated FY16,52190_METSTP Tech Planning - Reinstated FY16,Labor,0.0d,10.0,10.0,At Completion Units,1/2/2024,1/16/2024,0,0,0,0,0,0,0,0,0,0,1.03_Accelerator Systems (AS),1.03.06_AS Soft X-Ray Undulator (SXR) - SLAC,1.03.06.06_AS Soft X-Ray Undulator Procurement and Fabrication - SLAC,1.03.06.06.01_SXR Undulator Mechanical Components - Procurement & Fab,AS_SXU_MANF_8021_Interspace assembly integration - 021,METSTPT Tech Planning,Tech,SLAC,Labor
102494,1.03,1.03.06,1.03.06.06,1.03.06.06.01,1.03.06.06.01,SXR Undulator Mechanical Components - Procurement & Fab,AS_SXU_MANF_8021,Interspace assembly integration - 021,10.0,4.0,4.0,4.0,01-30-25,02-12-25,"AS_SXU_MANF_3720: FS, AS_SXU_MANF_4150: FS, AS_SXU_MANF_4320: FS, AS_SXU_MANF_4490: FS, AS_SXU_MANF_8020: FS","AS_SXU_MANF_8022: FS, AS_SXU_INST_5121: FS",SLAC,0%,52127.52127_Research Electrical & SW Engineer,52127_Research Electrical & SW Engineer,Labor,0.0d,10.0,10.0,At Completion Units,1/2/2024,1/16/2024,0,0,0,0,0,0,0,0,0,0,1.03_Accelerator Systems (AS),1.03.06_AS Soft X-Ray Undulator (SXR) - SLAC,1.03.06.06_AS Soft X-Ray Undulator Procurement and Fabrication - SLAC,1.03.06.06.01_SXR Undulator Mechanical Components - Procurement & Fab,AS_SXU_MANF_8021_Interspace assembly integration - 021,Electrical,,SLAC,Labor
102495,1.03,1.03.06,1.03.06.06,1.03.06.06.01,1.03.06.06.01,SXR Undulator Mechanical Components - Procurement & Fab,AS_SXU_MANF_8021,Interspace assembly integration - 021,10.0,48.0,48.0,48.0,01-30-25,02-12-25,"AS_SXU_MANF_3720: FS, AS_SXU_MANF_4150: FS, AS_SXU_MANF_4320: FS, AS_SXU_MANF_4490: FS, AS_SXU_MANF_8020: FS","AS_SXU_MANF_8022: FS, AS_SXU_INST_5121: FS",SLAC,0%,52198.52198_METSMANF (METSD Manufacturing),52198_METSMANF (METSD Manufacturing),Labor,0.0d,10.0,10.0,At Completion Units,1/2/2024,1/16/2024,0,0,0,0,0,0,0,0,0,0,1.03_Accelerator Systems (AS),1.03.06_AS Soft X-Ray Undulator (SXR) - SLAC,1.03.06.06_AS Soft X-Ray Undulator Procurement and Fabrication - SLAC,1.03.06.06.01_SXR Undulator Mechanical Components - Procurement & Fab,AS_SXU_MANF_8021_Interspace assembly integration - 021,Manufacturing,,SLAC,Labor
102496,1.03,1.03.06,1.03.06.06,1.03.06.06.01,1.03.06.06.01,SXR Undulator Mechanical Components - Procurement & Fab,AS_SXU_MANF_8021,Interspace assembly integration - 021,10.0,20.0,20.0,20.0,01-30-25,02-12-25,"AS_SXU_MANF_3720: FS, AS_SXU_MANF_4150: FS, AS_SXU_MANF_4320: FS, AS_SXU_MANF_4490: FS, AS_SXU_MANF_8020: FS","AS_SXU_MANF_8022: FS, AS_SXU_INST_5121: FS",SLAC,0%,52191.52191_METSMET Metrology,52191_METSMET Metrology,Labor,0.0d,10.0,10.0,At Completion Units,1/2/2024,1/16/2024,0,0,0,0,0,0,0,0,0,0,1.03_Accelerator Systems (AS),1.03.06_AS Soft X-Ray Undulator (SXR) - SLAC,1.03.06.06_AS Soft X-Ray Undulator Procurement and Fabrication - SLAC,1.03.06.06.01_SXR Undulator Mechanical Components - Procurement & Fab,AS_SXU_MANF_8021_Interspace assembly integration - 021,Metrology,,SLAC,Labor
102497,1.03,1.03.06,1.03.06.06,1.03.06.06.01,1.03.06.06.01,SXR Undulator Mechanical Components - Procurement & Fab,AS_SXU_MANF_8021,Interspace assembly integration - 021,10.0,16.0,16.0,16.0,01-30-25,02-12-25,"AS_SXU_MANF_3720: FS, AS_SXU_MANF_4150: FS, AS_SXU_MANF_4320: FS, AS_SXU_MANF_4490: FS, AS_SXU_MANF_8020: FS","AS_SXU_MANF_8022: FS, AS_SXU_INST_5121: FS",SLAC,0%,52169.52169_METS Mechanical Engineer,52169_METS Mechanical Engineer,Labor,0.0d,10.0,10.0,At Completion Units,1/2/2024,1/16/2024,0,0,0,0,0,0,0,0,0,0,1.03_Accelerator Systems (AS),1.03.06_AS Soft X-Ray Undulator (SXR) - SLAC,1.03.06.06_AS Soft X-Ray Undulator Procurement and Fabrication - SLAC,1.03.06.06.01_SXR Undulator Mechanical Components - Procurement & Fab,AS_SXU_MANF_8021_Interspace assembly integration - 021,Mechanical,,SLAC,Labor
102498,1.03,1.03.06,1.03.06.06,1.03.06.06.01,1.03.06.06.01,SXR Undulator Mechanical Components - Procurement & Fab,AS_SXU_MANF_8020,Interspace assembly integration - 020,10.0,3.0,3.0,3.0,01-15-25,01-29-25,"AS_SXU_MANF_3720: FS, AS_SXU_MANF_4150: FS, AS_SXU_MANF_4320: FS, AS_SXU_MANF_4490: FS, AS_SXU_MANF_8019: FS","AS_SXU_MANF_8021: FS, AS_SXU_INST_5120: FS",SLAC,0%,52190.52190_METSTP Tech Planning - Reinstated FY16,52190_METSTP Tech Planning - Reinstated FY16,Labor,0.0d,10.0,10.0,At Completion Units,12/4/2023,12/15/2023,0,0,0,0,0,0,0,0,0,0,1.03_Accelerator Systems (AS),1.03.06_AS Soft X-Ray Undulator (SXR) - SLAC,1.03.06.06_AS Soft X-Ray Undulator Procurement and Fabrication - SLAC,1.03.06.06.01_SXR Undulator Mechanical Components - Procurement & Fab,AS_SXU_MANF_8020_Interspace assembly integration - 020,METSTPT Tech Planning,Tech,SLAC,Labor
102499,1.03,1.03.06,1.03.06.06,1.03.06.06.01,1.03.06.06.01,SXR Undulator Mechanical Components - Procurement & Fab,AS_SXU_MANF_8020,Interspace assembly integration - 020,10.0,4.0,4.0,4.0,01-15-25,01-29-25,"AS_SXU_MANF_3720: FS, AS_SXU_MANF_4150: FS, AS_SXU_MANF_4320: FS, AS_SXU_MANF_4490: FS, AS_SXU_MANF_8019: FS","AS_SXU_MANF_8021: FS, AS_SXU_INST_5120: FS",SLAC,0%,52127.52127_Research Electrical & SW Engineer,52127_Research Electrical & SW Engineer,Labor,0.0d,10.0,10.0,At Completion Units,12/4/2023,12/15/2023,0,0,0,0,0,0,0,0,0,0,1.03_Accelerator Systems (AS),1.03.06_AS Soft X-Ray Undulator (SXR) - SLAC,1.03.06.06_AS Soft X-Ray Undulator Procurement and Fabrication - SLAC,1.03.06.06.01_SXR Undulator Mechanical Components - Procurement & Fab,AS_SXU_MANF_8020_Interspace assembly integration - 020,Electrical,,SLAC,Labor
102500,1.03,1.03.06,1.03.06.06,1.03.06.06.01,1.03.06.06.01,SXR Undulator Mechanical Components - Procurement & Fab,AS_SXU_MANF_8020,Interspace assembly integration - 020,10.0,48.0,48.0,48.0,01-15-25,01-29-25,"AS_SXU_MANF_3720: FS, AS_SXU_MANF_4150: FS, AS_SXU_MANF_4320: FS, AS_SXU_MANF_4490: FS, AS_SXU_MANF_8019: FS","AS_SXU_MANF_8021: FS, AS_SXU_INST_5120: FS",SLAC,0%,52198.52198_METSMANF (METSD Manufacturing),52198_METSMANF (METSD Manufacturing),Labor,0.0d,10.0,10.0,At Completion Units,12/4/2023,12/15/2023,0,0,0,0,0,0,0,0,0,0,1.03_Accelerator Systems (AS),1.03.06_AS Soft X-Ray Undulator (SXR) - SLAC,1.03.06.06_AS Soft X-Ray Undulator Procurement and Fabrication - SLAC,1.03.06.06.01_SXR Undulator Mechanical Components - Procurement & Fab,AS_SXU_MANF_8020_Interspace assembly integration - 020,Manufacturing,,SLAC,Labor
102501,1.03,1.03.06,1.03.06.06,1.03.06.06.01,1.03.06.06.01,SXR Undulator Mechanical Components - Procurement & Fab,AS_SXU_MANF_8020,Interspace assembly integration - 020,10.0,20.0,20.0,20.0,01-15-25,01-29-25,"AS_SXU_MANF_3720: FS, AS_SXU_MANF_4150: FS, AS_SXU_MANF_4320: FS, AS_SXU_MANF_4490: FS, AS_SXU_MANF_8019: FS","AS_SXU_MANF_8021: FS, AS_SXU_INST_5120: FS",SLAC,0%,52191.52191_METSMET Metrology,52191_METSMET Metrology,Labor,0.0d,10.0,10.0,At Completion Units,12/4/2023,12/15/2023,0,0,0,0,0,0,0,0,0,0,1.03_Accelerator Systems (AS),1.03.06_AS Soft X-Ray Undulator (SXR) - SLAC,1.03.06.06_AS Soft X-Ray Undulator Procurement and Fabrication - SLAC,1.03.06.06.01_SXR Undulator Mechanical Components - Procurement & Fab,AS_SXU_MANF_8020_Interspace assembly integration - 020,Metrology,,SLAC,Labor
102502,1.03,1.03.06,1.03.06.06,1.03.06.06.01,1.03.06.06.01,SXR Undulator Mechanical Components - Procurement & Fab,AS_SXU_MANF_8020,Interspace assembly integration - 020,10.0,16.0,16.0,16.0,01-15-25,01-29-25,"AS_SXU_MANF_3720: FS, AS_SXU_MANF_4150: FS, AS_SXU_MANF_4320: FS, AS_SXU_MANF_4490: FS, AS_SXU_MANF_8019: FS","AS_SXU_MANF_8021: FS, AS_SXU_INST_5120: FS",SLAC,0%,52169.52169_METS Mechanical Engineer,52169_METS Mechanical Engineer,Labor,0.0d,10.0,10.0,At Completion Units,12/4/2023,12/15/2023,0,0,0,0,0,0,0,0,0,0,1.03_Accelerator Systems (AS),1.03.06_AS Soft X-Ray Undulator (SXR) - SLAC,1.03.06.06_AS Soft X-Ray Undulator Procurement and Fabrication - SLAC,1.03.06.06.01_SXR Undulator Mechanical Components - Procurement & Fab,AS_SXU_MANF_8020_Interspace assembly integration - 020,Mechanical,,SLAC,Labor
102503,1.03,1.03.06,1.03.06.06,1.03.06.06.01,1.03.06.06.01,SXR Undulator Mechanical Components - Procurement & Fab,AS_SXU_MANF_8019,Interspace assembly integration - 019,10.0,3.0,3.0,3.0,12-18-24,01-14-25,"AS_SXU_MANF_3720: FS, AS_SXU_MANF_4320: FS, AS_SXU_MANF_4490: FS, AS_SXU_MANF_8018: FS","AS_SXU_MANF_8020: FS, AS_SXU_INST_5119: FS",SLAC,0%,52190.52190_METSTP Tech Planning - Reinstated FY16,52190_METSTP Tech Planning - Reinstated FY16,Labor,0.0d,10.0,10.0,At Completion Units,11/16/2023,12/1/2023,0,0,0,0,0,0,0,0,0,0,1.03_Accelerator Systems (AS),1.03.06_AS Soft X-Ray Undulator (SXR) - SLAC,1.03.06.06_AS Soft X-Ray Undulator Procurement and Fabrication - SLAC,1.03.06.06.01_SXR Undulator Mechanical Components - Procurement & Fab,AS_SXU_MANF_8019_Interspace assembly integration - 019,METSTPT Tech Planning,Tech,SLAC,Labor
102504,1.03,1.03.06,1.03.06.06,1.03.06.06.01,1.03.06.06.01,SXR Undulator Mechanical Components - Procurement & Fab,AS_SXU_MANF_8019,Interspace assembly integration - 019,10.0,4.0,4.0,4.0,12-18-24,01-14-25,"AS_SXU_MANF_3720: FS, AS_SXU_MANF_4320: FS, AS_SXU_MANF_4490: FS, AS_SXU_MANF_8018: FS","AS_SXU_MANF_8020: FS, AS_SXU_INST_5119: FS",SLAC,0%,52127.52127_Research Electrical & SW Engineer,52127_Research Electrical & SW Engineer,Labor,0.0d,10.0,10.0,At Completion Units,11/16/2023,12/1/2023,0,0,0,0,0,0,0,0,0,0,1.03_Accelerator Systems (AS),1.03.06_AS Soft X-Ray Undulator (SXR) - SLAC,1.03.06.06_AS Soft X-Ray Undulator Procurement and Fabrication - SLAC,1.03.06.06.01_SXR Undulator Mechanical Components - Procurement & Fab,AS_SXU_MANF_8019_Interspace assembly integration - 019,Electrical,,SLAC,Labor
102505,1.03,1.03.06,1.03.06.06,1.03.06.06.01,1.03.06.06.01,SXR Undulator Mechanical Components - Procurement & Fab,AS_SXU_MANF_8019,Interspace assembly integration - 019,10.0,48.0,48.0,48.0,12-18-24,01-14-25,"AS_SXU_MANF_3720: FS, AS_SXU_MANF_4320: FS, AS_SXU_MANF_4490: FS, AS_SXU_MANF_8018: FS","AS_SXU_MANF_8020: FS, AS_SXU_INST_5119: FS",SLAC,0%,52198.52198_METSMANF (METSD Manufacturing),52198_METSMANF (METSD Manufacturing),Labor,0.0d,10.0,10.0,At Completion Units,11/16/2023,12/1/2023,0,0,0,0,0,0,0,0,0,0,1.03_Accelerator Systems (AS),1.03.06_AS Soft X-Ray Undulator (SXR) - SLAC,1.03.06.06_AS Soft X-Ray Undulator Procurement and Fabrication - SLAC,1.03.06.06.01_SXR Undulator Mechanical Components - Procurement & Fab,AS_SXU_MANF_8019_Interspace assembly integration - 019,Manufacturing,,SLAC,Labor
102506,1.03,1.03.06,1.03.06.06,1.03.06.06.01,1.03.06.06.01,SXR Undulator Mechanical Components - Procurement & Fab,AS_SXU_MANF_8019,Interspace assembly integration - 019,10.0,20.0,20.0,20.0,12-18-24,01-14-25,"AS_SXU_MANF_3720: FS, AS_SXU_MANF_4320: FS, AS_SXU_MANF_4490: FS, AS_SXU_MANF_8018: FS","AS_SXU_MANF_8020: FS, AS_SXU_INST_5119: FS",SLAC,0%,52191.52191_METSMET Metrology,52191_METSMET Metrology,Labor,0.0d,10.0,10.0,At Completion Units,11/16/2023,12/1/2023,0,0,0,0,0,0,0,0,0,0,1.03_Accelerator Systems (AS),1.03.06_AS Soft X-Ray Undulator (SXR) - SLAC,1.03.06.06_AS Soft X-Ray Undulator Procurement and Fabrication - SLAC,1.03.06.06.01_SXR Undulator Mechanical Components - Procurement & Fab,AS_SXU_MANF_8019_Interspace assembly integration - 019,Metrology,,SLAC,Labor
102507,1.03,1.03.06,1.03.06.06,1.03.06.06.01,1.03.06.06.01,SXR Undulator Mechanical Components - Procurement & Fab,AS_SXU_MANF_8019,Interspace assembly integration - 019,10.0,16.0,16.0,16.0,12-18-24,01-14-25,"AS_SXU_MANF_3720: FS, AS_SXU_MANF_4320: FS, AS_SXU_MANF_4490: FS, AS_SXU_MANF_8018: FS","AS_SXU_MANF_8020: FS, AS_SXU_INST_5119: FS",SLAC,0%,52169.52169_METS Mechanical Engineer,52169_METS Mechanical Engineer,Labor,0.0d,10.0,10.0,At Completion Units,11/16/2023,12/1/2023,0,0,0,0,0,0,0,0,0,0,1.03_Accelerator Systems (AS),1.03.06_AS Soft X-Ray Undulator (SXR) - SLAC,1.03.06.06_AS Soft X-Ray Undulator Procurement and Fabrication - SLAC,1.03.06.06.01_SXR Undulator Mechanical Components - Procurement & Fab,AS_SXU_MANF_8019_Interspace assembly integration - 019,Mechanical,,SLAC,Labor
102508,1.03,1.03.06,1.03.06.06,1.03.06.06.01,1.03.06.06.01,SXR Undulator Mechanical Components - Procurement & Fab,AS_SXU_MANF_8018,Interspace assembly integration - 018,10.0,3.0,3.0,3.0,12-04-24,12-17-24,"AS_SXU_MANF_3720: FS, AS_SXU_MANF_4150: FS, AS_SXU_MANF_4320: FS, AS_SXU_MANF_4490: FS, AS_SXU_MANF_8017: FS","AS_SXU_MANF_8019: FS, AS_SXU_INST_5118: FS",SLAC,0%,52190.52190_METSTP Tech Planning - Reinstated FY16,52190_METSTP Tech Planning - Reinstated FY16,Labor,0.0d,10.0,10.0,At Completion Units,11/2/2023,11/15/2023,0,0,0,0,0,0,0,0,0,0,1.03_Accelerator Systems (AS),1.03.06_AS Soft X-Ray Undulator (SXR) - SLAC,1.03.06.06_AS Soft X-Ray Undulator Procurement and Fabrication - SLAC,1.03.06.06.01_SXR Undulator Mechanical Components - Procurement & Fab,AS_SXU_MANF_8018_Interspace assembly integration - 018,METSTPT Tech Planning,Tech,SLAC,Labor
102509,1.03,1.03.06,1.03.06.06,1.03.06.06.01,1.03.06.06.01,SXR Undulator Mechanical Components - Procurement & Fab,AS_SXU_MANF_8018,Interspace assembly integration - 018,10.0,4.0,4.0,4.0,12-04-24,12-17-24,"AS_SXU_MANF_3720: FS, AS_SXU_MANF_4150: FS, AS_SXU_MANF_4320: FS, AS_SXU_MANF_4490: FS, AS_SXU_MANF_8017: FS","AS_SXU_MANF_8019: FS, AS_SXU_INST_5118: FS",SLAC,0%,52127.52127_Research Electrical & SW Engineer,52127_Research Electrical & SW Engineer,Labor,0.0d,10.0,10.0,At Completion Units,11/2/2023,11/15/2023,0,0,0,0,0,0,0,0,0,0,1.03_Accelerator Systems (AS),1.03.06_AS Soft X-Ray Undulator (SXR) - SLAC,1.03.06.06_AS Soft X-Ray Undulator Procurement and Fabrication - SLAC,1.03.06.06.01_SXR Undulator Mechanical Components - Procurement & Fab,AS_SXU_MANF_8018_Interspace assembly integration - 018,Electrical,,SLAC,Labor
102510,1.03,1.03.06,1.03.06.06,1.03.06.06.01,1.03.06.06.01,SXR Undulator Mechanical Components - Procurement & Fab,AS_SXU_MANF_8018,Interspace assembly integration - 018,10.0,48.0,48.0,48.0,12-04-24,12-17-24,"AS_SXU_MANF_3720: FS, AS_SXU_MANF_4150: FS, AS_SXU_MANF_4320: FS, AS_SXU_MANF_4490: FS, AS_SXU_MANF_8017: FS","AS_SXU_MANF_8019: FS, AS_SXU_INST_5118: FS",SLAC,0%,52198.52198_METSMANF (METSD Manufacturing),52198_METSMANF (METSD Manufacturing),Labor,0.0d,10.0,10.0,At Completion Units,11/2/2023,11/15/2023,0,0,0,0,0,0,0,0,0,0,1.03_Accelerator Systems (AS),1.03.06_AS Soft X-Ray Undulator (SXR) - SLAC,1.03.06.06_AS Soft X-Ray Undulator Procurement and Fabrication - SLAC,1.03.06.06.01_SXR Undulator Mechanical Components - Procurement & Fab,AS_SXU_MANF_8018_Interspace assembly integration - 018,Manufacturing,,SLAC,Labor
102511,1.03,1.03.06,1.03.06.06,1.03.06.06.01,1.03.06.06.01,SXR Undulator Mechanical Components - Procurement & Fab,AS_SXU_MANF_8018,Interspace assembly integration - 018,10.0,20.0,20.0,20.0,12-04-24,12-17-24,"AS_SXU_MANF_3720: FS, AS_SXU_MANF_4150: FS, AS_SXU_MANF_4320: FS, AS_SXU_MANF_4490: FS, AS_SXU_MANF_8017: FS","AS_SXU_MANF_8019: FS, AS_SXU_INST_5118: FS",SLAC,0%,52191.52191_METSMET Metrology,52191_METSMET Metrology,Labor,0.0d,10.0,10.0,At Completion Units,11/2/2023,11/15/2023,0,0,0,0,0,0,0,0,0,0,1.03_Accelerator Systems (AS),1.03.06_AS Soft X-Ray Undulator (SXR) - SLAC,1.03.06.06_AS Soft X-Ray Undulator Procurement and Fabrication - SLAC,1.03.06.06.01_SXR Undulator Mechanical Components - Procurement & Fab,AS_SXU_MANF_8018_Interspace assembly integration - 018,Metrology,,SLAC,Labor
102512,1.03,1.03.06,1.03.06.06,1.03.06.06.01,1.03.06.06.01,SXR Undulator Mechanical Components - Procurement & Fab,AS_SXU_MANF_8018,Interspace assembly integration - 018,10.0,16.0,16.0,16.0,12-04-24,12-17-24,"AS_SXU_MANF_3720: FS, AS_SXU_MANF_4150: FS, AS_SXU_MANF_4320: FS, AS_SXU_MANF_4490: FS, AS_SXU_MANF_8017: FS","AS_SXU_MANF_8019: FS, AS_SXU_INST_5118: FS",SLAC,0%,52169.52169_METS Mechanical Engineer,52169_METS Mechanical Engineer,Labor,0.0d,10.0,10.0,At Completion Units,11/2/2023,11/15/2023,0,0,0,0,0,0,0,0,0,0,1.03_Accelerator Systems (AS),1.03.06_AS Soft X-Ray Undulator (SXR) - SLAC,1.03.06.06_AS Soft X-Ray Undulator Procurement and Fabrication - SLAC,1.03.06.06.01_SXR Undulator Mechanical Components - Procurement & Fab,AS_SXU_MANF_8018_Interspace assembly integration - 018,Mechanical,,SLAC,Labor
102513,1.03,1.03.06,1.03.06.06,1.03.06.06.01,1.03.06.06.01,SXR Undulator Mechanical Components - Procurement & Fab,AS_SXU_MANF_8017,Interspace assembly integration - 017,10.0,3.0,3.0,3.0,11-18-24,12-03-24,"AS_SXU_MANF_3720: FS, AS_SXU_MANF_4150: FS, AS_SXU_MANF_4320: FS, AS_SXU_MANF_4490: FS, AS_SXU_MANF_8016: FS","AS_SXU_MANF_8018: FS, AS_SXU_INST_5117: FS",SLAC,0%,52190.52190_METSTP Tech Planning - Reinstated FY16,52190_METSTP Tech Planning - Reinstated FY16,Labor,0.0d,10.0,10.0,At Completion Units,10/19/2023,11/1/2023,0,0,0,0,0,0,0,0,0,0,1.03_Accelerator Systems (AS),1.03.06_AS Soft X-Ray Undulator (SXR) - SLAC,1.03.06.06_AS Soft X-Ray Undulator Procurement and Fabrication - SLAC,1.03.06.06.01_SXR Undulator Mechanical Components - Procurement & Fab,AS_SXU_MANF_8017_Interspace assembly integration - 017,METSTPT Tech Planning,Tech,SLAC,Labor
102514,1.03,1.03.06,1.03.06.06,1.03.06.06.01,1.03.06.06.01,SXR Undulator Mechanical Components - Procurement & Fab,AS_SXU_MANF_8017,Interspace assembly integration - 017,10.0,4.0,4.0,4.0,11-18-24,12-03-24,"AS_SXU_MANF_3720: FS, AS_SXU_MANF_4150: FS, AS_SXU_MANF_4320: FS, AS_SXU_MANF_4490: FS, AS_SXU_MANF_8016: FS","AS_SXU_MANF_8018: FS, AS_SXU_INST_5117: FS",SLAC,0%,52127.52127_Research Electrical & SW Engineer,52127_Research Electrical & SW Engineer,Labor,0.0d,10.0,10.0,At Completion Units,10/19/2023,11/1/2023,0,0,0,0,0,0,0,0,0,0,1.03_Accelerator Systems (AS),1.03.06_AS Soft X-Ray Undulator (SXR) - SLAC,1.03.06.06_AS Soft X-Ray Undulator Procurement and Fabrication - SLAC,1.03.06.06.01_SXR Undulator Mechanical Components - Procurement & Fab,AS_SXU_MANF_8017_Interspace assembly integration - 017,Electrical,,SLAC,Labor
102515,1.03,1.03.06,1.03.06.06,1.03.06.06.01,1.03.06.06.01,SXR Undulator Mechanical Components - Procurement & Fab,AS_SXU_MANF_8017,Interspace assembly integration - 017,10.0,48.0,48.0,48.0,11-18-24,12-03-24,"AS_SXU_MANF_3720: FS, AS_SXU_MANF_4150: FS, AS_SXU_MANF_4320: FS, AS_SXU_MANF_4490: FS, AS_SXU_MANF_8016: FS","AS_SXU_MANF_8018: FS, AS_SXU_INST_5117: FS",SLAC,0%,52198.52198_METSMANF (METSD Manufacturing),52198_METSMANF (METSD Manufacturing),Labor,0.0d,10.0,10.0,At Completion Units,10/19/2023,11/1/2023,0,0,0,0,0,0,0,0,0,0,1.03_Accelerator Systems (AS),1.03.06_AS Soft X-Ray Undulator (SXR) - SLAC,1.03.06.06_AS Soft X-Ray Undulator Procurement and Fabrication - SLAC,1.03.06.06.01_SXR Undulator Mechanical Components - Procurement & Fab,AS_SXU_MANF_8017_Interspace assembly integration - 017,Manufacturing,,SLAC,Labor
102516,1.03,1.03.06,1.03.06.06,1.03.06.06.01,1.03.06.06.01,SXR Undulator Mechanical Components - Procurement & Fab,AS_SXU_MANF_8017,Interspace assembly integration - 017,10.0,20.0,20.0,20.0,11-18-24,12-03-24,"AS_SXU_MANF_3720: FS, AS_SXU_MANF_4150: FS, AS_SXU_MANF_4320: FS, AS_SXU_MANF_4490: FS, AS_SXU_MANF_8016: FS","AS_SXU_MANF_8018: FS, AS_SXU_INST_5117: FS",SLAC,0%,52191.52191_METSMET Metrology,52191_METSMET Metrology,Labor,0.0d,10.0,10.0,At Completion Units,10/19/2023,11/1/2023,0,0,0,0,0,0,0,0,0,0,1.03_Accelerator Systems (AS),1.03.06_AS Soft X-Ray Undulator (SXR) - SLAC,1.03.06.06_AS Soft X-Ray Undulator Procurement and Fabrication - SLAC,1.03.06.06.01_SXR Undulator Mechanical Components - Procurement & Fab,AS_SXU_MANF_8017_Interspace assembly integration - 017,Metrology,,SLAC,Labor
102517,1.03,1.03.06,1.03.06.06,1.03.06.06.01,1.03.06.06.01,SXR Undulator Mechanical Components - Procurement & Fab,AS_SXU_MANF_8017,Interspace assembly integration - 017,10.0,16.0,16.0,16.0,11-18-24,12-03-24,"AS_SXU_MANF_3720: FS, AS_SXU_MANF_4150: FS, AS_SXU_MANF_4320: FS, AS_SXU_MANF_4490: FS, AS_SXU_MANF_8016: FS","AS_SXU_MANF_8018: FS, AS_SXU_INST_5117: FS",SLAC,0%,52169.52169_METS Mechanical Engineer,52169_METS Mechanical Engineer,Labor,0.0d,10.0,10.0,At Completion Units,10/19/2023,11/1/2023,0,0,0,0,0,0,0,0,0,0,1.03_Accelerator Systems (AS),1.03.06_AS Soft X-Ray Undulator (SXR) - SLAC,1.03.06.06_AS Soft X-Ray Undulator Procurement and Fabrication - SLAC,1.03.06.06.01_SXR Undulator Mechanical Components - Procurement & Fab,AS_SXU_MANF_8017_Interspace assembly integration - 017,Mechanical,,SLAC,Labor
102518,1.03,1.03.06,1.03.06.06,1.03.06.06.01,1.03.06.06.01,SXR Undulator Mechanical Components - Procurement & Fab,AS_SXU_MANF_8016,Interspace assembly integration - 016,10.0,3.0,3.0,3.0,11-04-24,11-15-24,"AS_SXU_MANF_3720: FS, AS_SXU_MANF_4150: FS, AS_SXU_MANF_4490: FS, AS_SXU_MANF_4320: FS","AS_SXU_MANF_8017: FS, AS_SXU_INST_5116: FS",SLAC,0%,52190.52190_METSTP Tech Planning - Reinstated FY16,52190_METSTP Tech Planning - Reinstated FY16,Labor,0.0d,10.0,10.0,At Completion Units,10/5/2023,10/18/2023,0,0,0,0,0,0,0,0,0,0,1.03_Accelerator Systems (AS),1.03.06_AS Soft X-Ray Undulator (SXR) - SLAC,1.03.06.06_AS Soft X-Ray Undulator Procurement and Fabrication - SLAC,1.03.06.06.01_SXR Undulator Mechanical Components - Procurement & Fab,AS_SXU_MANF_8016_Interspace assembly integration - 016,METSTPT Tech Planning,Tech,SLAC,Labor
102519,1.03,1.03.06,1.03.06.06,1.03.06.06.01,1.03.06.06.01,SXR Undulator Mechanical Components - Procurement & Fab,AS_SXU_MANF_8016,Interspace assembly integration - 016,10.0,4.0,4.0,4.0,11-04-24,11-15-24,"AS_SXU_MANF_3720: FS, AS_SXU_MANF_4150: FS, AS_SXU_MANF_4490: FS, AS_SXU_MANF_4320: FS","AS_SXU_MANF_8017: FS, AS_SXU_INST_5116: FS",SLAC,0%,52127.52127_Research Electrical & SW Engineer,52127_Research Electrical & SW Engineer,Labor,0.0d,10.0,10.0,At Completion Units,10/5/2023,10/18/2023,0,0,0,0,0,0,0,0,0,0,1.03_Accelerator Systems (AS),1.03.06_AS Soft X-Ray Undulator (SXR) - SLAC,1.03.06.06_AS Soft X-Ray Undulator Procurement and Fabrication - SLAC,1.03.06.06.01_SXR Undulator Mechanical Components - Procurement & Fab,AS_SXU_MANF_8016_Interspace assembly integration - 016,Electrical,,SLAC,Labor
102520,1.03,1.03.06,1.03.06.06,1.03.06.06.01,1.03.06.06.01,SXR Undulator Mechanical Components - Procurement & Fab,AS_SXU_MANF_8016,Interspace assembly integration - 016,10.0,48.0,48.0,48.0,11-04-24,11-15-24,"AS_SXU_MANF_3720: FS, AS_SXU_MANF_4150: FS, AS_SXU_MANF_4490: FS, AS_SXU_MANF_4320: FS","AS_SXU_MANF_8017: FS, AS_SXU_INST_5116: FS",SLAC,0%,52198.52198_METSMANF (METSD Manufacturing),52198_METSMANF (METSD Manufacturing),Labor,0.0d,10.0,10.0,At Completion Units,10/5/2023,10/18/2023,0,0,0,0,0,0,0,0,0,0,1.03_Accelerator Systems (AS),1.03.06_AS Soft X-Ray Undulator (SXR) - SLAC,1.03.06.06_AS Soft X-Ray Undulator Procurement and Fabrication - SLAC,1.03.06.06.01_SXR Undulator Mechanical Components - Procurement & Fab,AS_SXU_MANF_8016_Interspace assembly integration - 016,Manufacturing,,SLAC,Labor
102521,1.03,1.03.06,1.03.06.06,1.03.06.06.01,1.03.06.06.01,SXR Undulator Mechanical Components - Procurement & Fab,AS_SXU_MANF_8016,Interspace assembly integration - 016,10.0,20.0,20.0,20.0,11-04-24,11-15-24,"AS_SXU_MANF_3720: FS, AS_SXU_MANF_4150: FS, AS_SXU_MANF_4490: FS, AS_SXU_MANF_4320: FS","AS_SXU_MANF_8017: FS, AS_SXU_INST_5116: FS",SLAC,0%,52191.52191_METSMET Metrology,52191_METSMET Metrology,Labor,0.0d,10.0,10.0,At Completion Units,10/5/2023,10/18/2023,0,0,0,0,0,0,0,0,0,0,1.03_Accelerator Systems (AS),1.03.06_AS Soft X-Ray Undulator (SXR) - SLAC,1.03.06.06_AS Soft X-Ray Undulator Procurement and Fabrication - SLAC,1.03.06.06.01_SXR Undulator Mechanical Components - Procurement & Fab,AS_SXU_MANF_8016_Interspace assembly integration - 016,Metrology,,SLAC,Labor
102522,1.03,1.03.06,1.03.06.06,1.03.06.06.01,1.03.06.06.01,SXR Undulator Mechanical Components - Procurement & Fab,AS_SXU_MANF_8016,Interspace assembly integration - 016,10.0,16.0,16.0,16.0,11-04-24,11-15-24,"AS_SXU_MANF_3720: FS, AS_SXU_MANF_4150: FS, AS_SXU_MANF_4490: FS, AS_SXU_MANF_4320: FS","AS_SXU_MANF_8017: FS, AS_SXU_INST_5116: FS",SLAC,0%,52169.52169_METS Mechanical Engineer,52169_METS Mechanical Engineer,Labor,0.0d,10.0,10.0,At Completion Units,10/5/2023,10/18/2023,0,0,0,0,0,0,0,0,0,0,1.03_Accelerator Systems (AS),1.03.06_AS Soft X-Ray Undulator (SXR) - SLAC,1.03.06.06_AS Soft X-Ray Undulator Procurement and Fabrication - SLAC,1.03.06.06.01_SXR Undulator Mechanical Components - Procurement & Fab,AS_SXU_MANF_8016_Interspace assembly integration - 016,Mechanical,,SLAC,Labor
102523,1.03,1.03.06,1.03.06.06,1.03.06.06.01,1.03.06.06.01,SXR Undulator Mechanical Components - Procurement & Fab,AS_SXU_MANF_5570,Receipt of SXRSS Misc Hardware - SXU,1.0,6000.0,6000.0,6000.0,11-15-23,11-15-23,AS_SXU_MANF_5540: FS,AS_SXU_MANF_5590: FS,SLAC,0%,SL_MSSC.SLAC M&S (<$500K) (gets G&A) (gets ESC),SLAC M&S (<$500K) (gets G&A) (gets ESC),Nonlabor,0.0d,1.0,1.0,At Completion Units,10/18/2022,10/18/2022,0,0,0,0,0,0,0,0,0,0,1.03_Accelerator Systems (AS),1.03.06_AS Soft X-Ray Undulator (SXR) - SLAC,1.03.06.06_AS Soft X-Ray Undulator Procurement and Fabrication - SLAC,1.03.06.06.01_SXR Undulator Mechanical Components - Procurement & Fab,AS_SXU_MANF_5570_Receipt of SXRSS Misc Hardware - SXU,Material,,SLAC,M&S
102524,1.03,1.03.06,1.03.06.06,1.03.06.06.01,1.03.06.06.01,SXR Undulator Mechanical Components - Procurement & Fab,AS_SXU_MANF_5560,RCV: SXRSS Dipole Stands - SXU,1.0,26740.0,26740.0,26740.0,01-23-24,01-23-24,AS_SXU_MANF_5530: FS,AS_SXU_MANF_5580: FS,SLAC,0%,SL_MSSC.SLAC M&S (<$500K) (gets G&A) (gets ESC),SLAC M&S (<$500K) (gets G&A) (gets ESC),Nonlabor,0.0d,1.0,1.0,At Completion Units,12/8/2022,12/8/2022,0,0,0,0,0,0,0,0,0,0,1.03_Accelerator Systems (AS),1.03.06_AS Soft X-Ray Undulator (SXR) - SLAC,1.03.06.06_AS Soft X-Ray Undulator Procurement and Fabrication - SLAC,1.03.06.06.01_SXR Undulator Mechanical Components - Procurement & Fab,AS_SXU_MANF_5560_RCV: SXRSS Dipole Stands - SXU,Material,,SLAC,M&S
102525,1.03,1.03.06,1.03.06.06,1.03.06.06.01,1.03.06.06.01,SXR Undulator Mechanical Components - Procurement & Fab,AS_SXU_MANF_4470,RCV: Component Supports - SXU,1.0,27000.0,27000.0,27000.0,01-22-24,01-22-24,AS_SXU_MANF_4450: FS,AS_SXU_MANF_4480: FS,SLAC,0%,SL_MSSC.SLAC M&S (<$500K) (gets G&A) (gets ESC),SLAC M&S (<$500K) (gets G&A) (gets ESC),Nonlabor,0.0d,1.0,1.0,At Completion Units,12/7/2022,12/7/2022,0,0,0,0,0,0,0,0,0,0,1.03_Accelerator Systems (AS),1.03.06_AS Soft X-Ray Undulator (SXR) - SLAC,1.03.06.06_AS Soft X-Ray Undulator Procurement and Fabrication - SLAC,1.03.06.06.01_SXR Undulator Mechanical Components - Procurement & Fab,AS_SXU_MANF_4470_RCV: Component Supports - SXU,Material,,SLAC,M&S
102526,1.03,1.03.06,1.03.06.06,1.03.06.06.01,1.03.06.06.01,SXR Undulator Mechanical Components - Procurement & Fab,AS_SXU_MANF_4150,Controls Vac Processing - Interspace Vacuum System - SXU,20.0,4.0,4.0,4.0,05-01-24,05-29-24,AS_SXU_MANF_4140: FS,"AS_SXU_MANF_8016: FS, AS_SXU_MANF_8017: FS, AS_SXU_MANF_8018: FS, AS_SXU_MANF_8020: FS, AS_SXU_MANF_8021: FS, AS_SXU_MANF_8022: FS, AS_SXU_MANF_8023: FS, AS_SXU_MANF_8024: FS",SLAC,0%,52190.52190_METSTP Tech Planning - Reinstated FY16,52190_METSTP Tech Planning - Reinstated FY16,Labor,0.0d,20.0,20.0,At Completion Units,4/19/2023,5/16/2023,0,0,0,0,0,0,0,0,0,0,1.03_Accelerator Systems (AS),1.03.06_AS Soft X-Ray Undulator (SXR) - SLAC,1.03.06.06_AS Soft X-Ray Undulator Procurement and Fabrication - SLAC,1.03.06.06.01_SXR Undulator Mechanical Components - Procurement & Fab,AS_SXU_MANF_4150_Controls Vac Processing - Interspace Vacuum System - SXU,METSTPT Tech Planning,Tech,SLAC,Labor
102527,1.03,1.03.06,1.03.06.06,1.03.06.06.01,1.03.06.06.01,SXR Undulator Mechanical Components - Procurement & Fab,AS_SXU_MANF_4150,Controls Vac Processing - Interspace Vacuum System - SXU,20.0,0.0,0.0,0.0,05-01-24,05-29-24,AS_SXU_MANF_4140: FS,"AS_SXU_MANF_8016: FS, AS_SXU_MANF_8017: FS, AS_SXU_MANF_8018: FS, AS_SXU_MANF_8020: FS, AS_SXU_MANF_8021: FS, AS_SXU_MANF_8022: FS, AS_SXU_MANF_8023: FS, AS_SXU_MANF_8024: FS",SLAC,0%,52169.52169_METS Mechanical Engineer,52169_METS Mechanical Engineer,Labor,0.0d,20.0,20.0,At Completion Units,4/19/2023,5/16/2023,0,0,0,0,0,0,0,0,0,0,1.03_Accelerator Systems (AS),1.03.06_AS Soft X-Ray Undulator (SXR) - SLAC,1.03.06.06_AS Soft X-Ray Undulator Procurement and Fabrication - SLAC,1.03.06.06.01_SXR Undulator Mechanical Components - Procurement & Fab,AS_SXU_MANF_4150_Controls Vac Processing - Interspace Vacuum System - SXU,Mechanical,,SLAC,Labor
102528,1.03,1.03.06,1.03.06.06,1.03.06.06.01,1.03.06.06.01,SXR Undulator Mechanical Components - Procurement & Fab,AS_SXU_MANF_4150,Controls Vac Processing - Interspace Vacuum System - SXU,20.0,160.0,160.0,160.0,05-01-24,05-29-24,AS_SXU_MANF_4140: FS,"AS_SXU_MANF_8016: FS, AS_SXU_MANF_8017: FS, AS_SXU_MANF_8018: FS, AS_SXU_MANF_8020: FS, AS_SXU_MANF_8021: FS, AS_SXU_MANF_8022: FS, AS_SXU_MANF_8023: FS, AS_SXU_MANF_8024: FS",SLAC,0%,52198.52198_METSMANF (METSD Manufacturing),52198_METSMANF (METSD Manufacturing),Labor,0.0d,20.0,20.0,At Completion Units,4/19/2023,5/16/2023,0,0,0,0,0,0,0,0,0,0,1.03_Accelerator Systems (AS),1.03.06_AS Soft X-Ray Undulator (SXR) - SLAC,1.03.06.06_AS Soft X-Ray Undulator Procurement and Fabrication - SLAC,1.03.06.06.01_SXR Undulator Mechanical Components - Procurement & Fab,AS_SXU_MANF_4150_Controls Vac Processing - Interspace Vacuum System - SXU,Manufacturing,,SLAC,Labor
102529,1.03,1.03.06,1.03.06.06,1.03.06.06.01,1.03.06.06.01,SXR Undulator Mechanical Components - Procurement & Fab,AS_SXU_MANF_4140,Spool Vac Processing - Interspace Vacuum System - SXU,20.0,4.0,4.0,4.0,04-03-24,04-30-24,AS_SXU_MANF_4130: FS,AS_SXU_MANF_4150: FS,SLAC,0%,52190.52190_METSTP Tech Planning - Reinstated FY16,52190_METSTP Tech Planning - Reinstated FY16,Labor,0.0d,20.0,20.0,At Completion Units,3/15/2023,4/18/2023,0,0,0,0,0,0,0,0,0,0,1.03_Accelerator Systems (AS),1.03.06_AS Soft X-Ray Undulator (SXR) - SLAC,1.03.06.06_AS Soft X-Ray Undulator Procurement and Fabrication - SLAC,1.03.06.06.01_SXR Undulator Mechanical Components - Procurement & Fab,AS_SXU_MANF_4140_Spool Vac Processing - Interspace Vacuum System - SXU,METSTPT Tech Planning,Tech,SLAC,Labor
102530,1.03,1.03.06,1.03.06.06,1.03.06.06.01,1.03.06.06.01,SXR Undulator Mechanical Components - Procurement & Fab,AS_SXU_MANF_4140,Spool Vac Processing - Interspace Vacuum System - SXU,20.0,0.0,0.0,0.0,04-03-24,04-30-24,AS_SXU_MANF_4130: FS,AS_SXU_MANF_4150: FS,SLAC,0%,52169.52169_METS Mechanical Engineer,52169_METS Mechanical Engineer,Labor,0.0d,20.0,20.0,At Completion Units,3/15/2023,4/18/2023,0,0,0,0,0,0,0,0,0,0,1.03_Accelerator Systems (AS),1.03.06_AS Soft X-Ray Undulator (SXR) - SLAC,1.03.06.06_AS Soft X-Ray Undulator Procurement and Fabrication - SLAC,1.03.06.06.01_SXR Undulator Mechanical Components - Procurement & Fab,AS_SXU_MANF_4140_Spool Vac Processing - Interspace Vacuum System - SXU,Mechanical,,SLAC,Labor
102531,1.03,1.03.06,1.03.06.06,1.03.06.06.01,1.03.06.06.01,SXR Undulator Mechanical Components - Procurement & Fab,AS_SXU_MANF_4140,Spool Vac Processing - Interspace Vacuum System - SXU,20.0,227.0,227.0,227.0,04-03-24,04-30-24,AS_SXU_MANF_4130: FS,AS_SXU_MANF_4150: FS,SLAC,0%,52198.52198_METSMANF (METSD Manufacturing),52198_METSMANF (METSD Manufacturing),Labor,0.0d,20.0,20.0,At Completion Units,3/15/2023,4/18/2023,0,0,0,0,0,0,0,0,0,0,1.03_Accelerator Systems (AS),1.03.06_AS Soft X-Ray Undulator (SXR) - SLAC,1.03.06.06_AS Soft X-Ray Undulator Procurement and Fabrication - SLAC,1.03.06.06.01_SXR Undulator Mechanical Components - Procurement & Fab,AS_SXU_MANF_4140_Spool Vac Processing - Interspace Vacuum System - SXU,Manufacturing,,SLAC,Labor
102532,1.03,1.03.06,1.03.06.06,1.03.06.06.01,1.03.06.06.01,SXR Undulator Mechanical Components - Procurement & Fab,AS_SXU_MANF_4130,Spool Plating - Interspace Vacuum System - SXU,25.0,10.0,10.0,10.0,02-28-24,04-02-24,AS_SXU_MANF_4120: FS,AS_SXU_MANF_4140: FS,SLAC,0%,52190.52190_METSTP Tech Planning - Reinstated FY16,52190_METSTP Tech Planning - Reinstated FY16,Labor,0.0d,25.0,25.0,At Completion Units,2/7/2023,3/14/2023,0,0,0,0,0,0,0,0,0,0,1.03_Accelerator Systems (AS),1.03.06_AS Soft X-Ray Undulator (SXR) - SLAC,1.03.06.06_AS Soft X-Ray Undulator Procurement and Fabrication - SLAC,1.03.06.06.01_SXR Undulator Mechanical Components - Procurement & Fab,AS_SXU_MANF_4130_Spool Plating - Interspace Vacuum System - SXU,METSTPT Tech Planning,Tech,SLAC,Labor
102533,1.03,1.03.06,1.03.06.06,1.03.06.06.01,1.03.06.06.01,SXR Undulator Mechanical Components - Procurement & Fab,AS_SXU_MANF_4130,Spool Plating - Interspace Vacuum System - SXU,25.0,0.0,0.0,0.0,02-28-24,04-02-24,AS_SXU_MANF_4120: FS,AS_SXU_MANF_4140: FS,SLAC,0%,52169.52169_METS Mechanical Engineer,52169_METS Mechanical Engineer,Labor,0.0d,25.0,25.0,At Completion Units,2/7/2023,3/14/2023,0,0,0,0,0,0,0,0,0,0,1.03_Accelerator Systems (AS),1.03.06_AS Soft X-Ray Undulator (SXR) - SLAC,1.03.06.06_AS Soft X-Ray Undulator Procurement and Fabrication - SLAC,1.03.06.06.01_SXR Undulator Mechanical Components - Procurement & Fab,AS_SXU_MANF_4130_Spool Plating - Interspace Vacuum System - SXU,Mechanical,,SLAC,Labor
102534,1.03,1.03.06,1.03.06.06,1.03.06.06.01,1.03.06.06.01,SXR Undulator Mechanical Components - Procurement & Fab,AS_SXU_MANF_4130,Spool Plating - Interspace Vacuum System - SXU,25.0,200.0,200.0,200.0,02-28-24,04-02-24,AS_SXU_MANF_4120: FS,AS_SXU_MANF_4140: FS,SLAC,0%,52198.52198_METSMANF (METSD Manufacturing),52198_METSMANF (METSD Manufacturing),Labor,0.0d,25.0,25.0,At Completion Units,2/7/2023,3/14/2023,0,0,0,0,0,0,0,0,0,0,1.03_Accelerator Systems (AS),1.03.06_AS Soft X-Ray Undulator (SXR) - SLAC,1.03.06.06_AS Soft X-Ray Undulator Procurement and Fabrication - SLAC,1.03.06.06.01_SXR Undulator Mechanical Components - Procurement & Fab,AS_SXU_MANF_4130_Spool Plating - Interspace Vacuum System - SXU,Manufacturing,,SLAC,Labor
102535,1.03,1.03.06,1.03.06.06,1.03.06.06.01,1.03.06.06.01,SXR Undulator Mechanical Components - Procurement & Fab,AS_SXU_MANF_3930,QA and acceptance testing - Cam Positioners - SXU,30.0,72.0,72.0,72.0,03-13-24,04-23-24,AS_SXU_MANF_3920: FS,AS_SXU_MANF_3940: FS,SLAC,0%,52169.52169_METS Mechanical Engineer,52169_METS Mechanical Engineer,Labor,0.0d,30.0,30.0,At Completion Units,2/10/2023,3/24/2023,0,0,0,0,0,0,0,0,0,0,1.03_Accelerator Systems (AS),1.03.06_AS Soft X-Ray Undulator (SXR) - SLAC,1.03.06.06_AS Soft X-Ray Undulator Procurement and Fabrication - SLAC,1.03.06.06.01_SXR Undulator Mechanical Components - Procurement & Fab,AS_SXU_MANF_3930_QA and acceptance testing - Cam Positioners - SXU,Mechanical,,SLAC,Labor
102536,1.03,1.03.06,1.03.06.06,1.03.06.06.01,1.03.06.06.01,SXR Undulator Mechanical Components - Procurement & Fab,AS_SXU_MANF_3930,QA and acceptance testing - Cam Positioners - SXU,30.0,54.0,54.0,54.0,03-13-24,04-23-24,AS_SXU_MANF_3920: FS,AS_SXU_MANF_3940: FS,SLAC,0%,52198.52198_METSMANF (METSD Manufacturing),52198_METSMANF (METSD Manufacturing),Labor,0.0d,30.0,30.0,At Completion Units,2/10/2023,3/24/2023,0,0,0,0,0,0,0,0,0,0,1.03_Accelerator Systems (AS),1.03.06_AS Soft X-Ray Undulator (SXR) - SLAC,1.03.06.06_AS Soft X-Ray Undulator Procurement and Fabrication - SLAC,1.03.06.06.01_SXR Undulator Mechanical Components - Procurement & Fab,AS_SXU_MANF_3930_QA and acceptance testing - Cam Positioners - SXU,Manufacturing,,SLAC,Labor
102537,1.03,1.03.06,1.03.06.06,1.03.06.06.01,1.03.06.06.01,SXR Undulator Mechanical Components - Procurement & Fab,AS_SXU_MANF_3920,RCV: Cam Positioner Only - SXU,1.0,88316.0,88316.0,88316.0,03-12-24,03-12-24,AS_SXU_MANF_3900: FS,AS_SXU_MANF_3930: FS,SLAC,0%,SL_MSSC.SLAC M&S (<$500K) (gets G&A) (gets ESC),SLAC M&S (<$500K) (gets G&A) (gets ESC),Nonlabor,0.0d,1.0,1.0,At Completion Units,2/9/2023,2/9/2023,0,0,0,0,0,0,0,0,0,0,1.03_Accelerator Systems (AS),1.03.06_AS Soft X-Ray Undulator (SXR) - SLAC,1.03.06.06_AS Soft X-Ray Undulator Procurement and Fabrication - SLAC,1.03.06.06.01_SXR Undulator Mechanical Components - Procurement & Fab,AS_SXU_MANF_3920_RCV: Cam Positioner Only - SXU,Material,,SLAC,M&S
102538,1.03,1.03.06,1.03.06.06,1.03.06.06.01,1.03.06.06.01,SXR Undulator Mechanical Components - Procurement & Fab,AS_SXU_MANF_3570,QA and acceptance testing Und vacuum chamber - BATCH 2 - SXU,40.0,240.0,240.0,240.0,05-14-24,07-10-24,AS_SXU_MANF_3550: FS,AS_SXU_MANF_3580: FS,SLAC,0%,52191.52191_METSMET Metrology,52191_METSMET Metrology,Labor,0.0d,40.0,40.0,At Completion Units,6/19/2023,8/14/2023,0,0,0,0,0,0,0,0,0,0,1.03_Accelerator Systems (AS),1.03.06_AS Soft X-Ray Undulator (SXR) - SLAC,1.03.06.06_AS Soft X-Ray Undulator Procurement and Fabrication - SLAC,1.03.06.06.01_SXR Undulator Mechanical Components - Procurement & Fab,AS_SXU_MANF_3570_QA and acceptance testing Und vacuum chamber - BATCH 2 - SXU,Metrology,,SLAC,Labor
102539,1.03,1.03.06,1.03.06.06,1.03.06.06.01,1.03.06.06.01,SXR Undulator Mechanical Components - Procurement & Fab,AS_SXU_MANF_3570,QA and acceptance testing Und vacuum chamber - BATCH 2 - SXU,40.0,20.0,20.0,20.0,05-14-24,07-10-24,AS_SXU_MANF_3550: FS,AS_SXU_MANF_3580: FS,SLAC,0%,52169.52169_METS Mechanical Engineer,52169_METS Mechanical Engineer,Labor,0.0d,40.0,40.0,At Completion Units,6/19/2023,8/14/2023,0,0,0,0,0,0,0,0,0,0,1.03_Accelerator Systems (AS),1.03.06_AS Soft X-Ray Undulator (SXR) - SLAC,1.03.06.06_AS Soft X-Ray Undulator Procurement and Fabrication - SLAC,1.03.06.06.01_SXR Undulator Mechanical Components - Procurement & Fab,AS_SXU_MANF_3570_QA and acceptance testing Und vacuum chamber - BATCH 2 - SXU,Mechanical,,SLAC,Labor
102540,1.03,1.03.06,1.03.06.06,1.03.06.06.01,1.03.06.06.01,SXR Undulator Mechanical Components - Procurement & Fab,AS_SXU_MANF_3570,QA and acceptance testing Und vacuum chamber - BATCH 2 - SXU,40.0,30.0,30.0,30.0,05-14-24,07-10-24,AS_SXU_MANF_3550: FS,AS_SXU_MANF_3580: FS,SLAC,0%,52198.52198_METSMANF (METSD Manufacturing),52198_METSMANF (METSD Manufacturing),Labor,0.0d,40.0,40.0,At Completion Units,6/19/2023,8/14/2023,0,0,0,0,0,0,0,0,0,0,1.03_Accelerator Systems (AS),1.03.06_AS Soft X-Ray Undulator (SXR) - SLAC,1.03.06.06_AS Soft X-Ray Undulator Procurement and Fabrication - SLAC,1.03.06.06.01_SXR Undulator Mechanical Components - Procurement & Fab,AS_SXU_MANF_3570_QA and acceptance testing Und vacuum chamber - BATCH 2 - SXU,Manufacturing,,SLAC,Labor
102541,1.03,1.03.06,1.03.06.06,1.03.06.06.01,1.03.06.06.01,SXR Undulator Mechanical Components - Procurement & Fab,AS_SXU_MANF_3550,RCV: Undulator Vacuum Chambers - BATCH 2 - SXU,1.0,249734.0,249734.0,249734.0,05-13-24,05-13-24,AS_SXU_MANF_3530: FS,AS_SXU_MANF_3570: FS,SLAC,0%,SL_MSSY.SLAC M&S (>$500K) (NO G&A) (gets ESC),SLAC M&S (>$500K) (NO G&A) (gets ESC),Nonlabor,0.0d,1.0,1.0,At Completion Units,6/16/2023,6/16/2023,0,0,0,0,0,0,0,0,0,0,1.03_Accelerator Systems (AS),1.03.06_AS Soft X-Ray Undulator (SXR) - SLAC,1.03.06.06_AS Soft X-Ray Undulator Procurement and Fabrication - SLAC,1.03.06.06.01_SXR Undulator Mechanical Components - Procurement & Fab,AS_SXU_MANF_3550_RCV: Undulator Vacuum Chambers - BATCH 2 - SXU,Material,,SLAC,M&S
102542,1.03,1.03.06,1.03.06.06,1.03.06.06.01,1.03.06.06.01,SXR Undulator Mechanical Components - Procurement & Fab,AS_SXU_MANF_3550,RCV: Undulator Vacuum Chambers - BATCH 2 - SXU,1.0,125133.0,125133.0,125133.0,05-13-24,05-13-24,AS_SXU_MANF_3530: FS,AS_SXU_MANF_3570: FS,SLAC,0%,SL_MSSC.SLAC M&S (<$500K) (gets G&A) (gets ESC),SLAC M&S (<$500K) (gets G&A) (gets ESC),Nonlabor,0.0d,1.0,1.0,At Completion Units,6/16/2023,6/16/2023,0,0,0,0,0,0,0,0,0,0,1.03_Accelerator Systems (AS),1.03.06_AS Soft X-Ray Undulator (SXR) - SLAC,1.03.06.06_AS Soft X-Ray Undulator Procurement and Fabrication - SLAC,1.03.06.06.01_SXR Undulator Mechanical Components - Procurement & Fab,AS_SXU_MANF_3550_RCV: Undulator Vacuum Chambers - BATCH 2 - SXU,Material,,SLAC,M&S
102543,1.03,1.03.06,1.03.06.06,1.03.06.06.01,1.03.06.06.01,SXR Undulator Mechanical Components - Procurement & Fab,AS_SXU_MANF_3540,RCV: Undulator Vacuum Chambers - BATCH 1 - SXU,1.0,374867.0,374867.0,374867.0,03-18-24,03-18-24,AS_SXU_MANF_3520: FS,AS_SXU_MANF_3560: FS,SLAC,0%,SL_MSSC.SLAC M&S (<$500K) (gets G&A) (gets ESC),SLAC M&S (<$500K) (gets G&A) (gets ESC),Nonlabor,0.0d,1.0,1.0,At Completion Units,4/20/2023,4/20/2023,0,0,0,0,0,0,0,0,0,0,1.03_Accelerator Systems (AS),1.03.06_AS Soft X-Ray Undulator (SXR) - SLAC,1.03.06.06_AS Soft X-Ray Undulator Procurement and Fabrication - SLAC,1.03.06.06.01_SXR Undulator Mechanical Components - Procurement & Fab,AS_SXU_MANF_3540_RCV: Undulator Vacuum Chambers - BATCH 1 - SXU,Material,,SLAC,M&S
102544,1.03,1.03.06,1.03.06.06,1.03.06.06.01,1.03.06.06.01,SXR Undulator Mechanical Components - Procurement & Fab,AS_SXU_MANF_4300,RCV: Quadrupole Magnets - SXU,1.0,85223.0,85223.0,85223.0,04-23-24,04-23-24,AS_SXU_MANF_4290: FS,AS_SXU_MANF_4310: FS,SLAC,0%,SL_MSSC.SLAC M&S (<$500K) (gets G&A) (gets ESC),SLAC M&S (<$500K) (gets G&A) (gets ESC),Nonlabor,0.0d,1.0,1.0,At Completion Units,3/24/2023,3/24/2023,0,0,0,0,0,0,0,0,0,0,1.03_Accelerator Systems (AS),1.03.06_AS Soft X-Ray Undulator (SXR) - SLAC,1.03.06.06_AS Soft X-Ray Undulator Procurement and Fabrication - SLAC,1.03.06.06.01_SXR Undulator Mechanical Components - Procurement & Fab,AS_SXU_MANF_4300_RCV: Quadrupole Magnets - SXU,Material,,SLAC,M&S
102545,1.03,1.03.06,1.03.06.06,1.03.06.06.01,1.03.06.06.01,SXR Undulator Mechanical Components - Procurement & Fab,AS_SXU_MANF_4460,RCV: Interspace base plate - SXU,1.0,34913.0,34913.0,34913.0,01-22-24,01-22-24,AS_SXU_MANF_4440: FS,AS_SXU_MANF_4480: FS,SLAC,0%,SL_MSSC.SLAC M&S (<$500K) (gets G&A) (gets ESC),SLAC M&S (<$500K) (gets G&A) (gets ESC),Nonlabor,0.0d,1.0,1.0,At Completion Units,12/7/2022,12/7/2022,0,0,0,0,0,0,0,0,0,0,1.03_Accelerator Systems (AS),1.03.06_AS Soft X-Ray Undulator (SXR) - SLAC,1.03.06.06_AS Soft X-Ray Undulator Procurement and Fabrication - SLAC,1.03.06.06.01_SXR Undulator Mechanical Components - Procurement & Fab,AS_SXU_MANF_4460_RCV: Interspace base plate - SXU,Material,,SLAC,M&S
102546,1.03,1.03.06,1.03.06.06,1.03.06.06.01,1.03.06.06.01,SXR Undulator Mechanical Components - Procurement & Fab,AS_SXU_MANF_5050,RCV: MMF Tooling - SXU,1.0,30000.0,30000.0,30000.0,05-03-22,05-03-22,AS_SXU_MANF_5040: FS,AS_SXU_MANF_5060: FS,SLAC,0%,SL_MSSC.SLAC M&S (<$500K) (gets G&A) (gets ESC),SLAC M&S (<$500K) (gets G&A) (gets ESC),Nonlabor,0.0d,1.0,1.0,At Completion Units,7/21/2022,7/21/2022,0,0,0,0,0,0,0,0,0,0,1.03_Accelerator Systems (AS),1.03.06_AS Soft X-Ray Undulator (SXR) - SLAC,1.03.06.06_AS Soft X-Ray Undulator Procurement and Fabrication - SLAC,1.03.06.06.01_SXR Undulator Mechanical Components - Procurement & Fab,AS_SXU_MANF_5050_RCV: MMF Tooling - SXU,Material,,SLAC,M&S
102547,1.03,1.03.06,1.03.06.06,1.03.06.06.01,1.03.06.06.01,SXR Undulator Mechanical Components - Procurement & Fab,AS_SXU_MANF_5550,RCV: SXRSS Chicane Magnets - SXU,1.0,73089.0,73089.0,73089.0,02-13-24,02-13-24,AS_SXU_MANF_5520: FS,AS_SXU_MANF_5580: FS,SLAC,0%,SL_MSSC.SLAC M&S (<$500K) (gets G&A) (gets ESC),SLAC M&S (<$500K) (gets G&A) (gets ESC),Nonlabor,0.0d,1.0,1.0,At Completion Units,1/12/2023,1/12/2023,0,0,0,0,0,0,0,0,0,0,1.03_Accelerator Systems (AS),1.03.06_AS Soft X-Ray Undulator (SXR) - SLAC,1.03.06.06_AS Soft X-Ray Undulator Procurement and Fabrication - SLAC,1.03.06.06.01_SXR Undulator Mechanical Components - Procurement & Fab,AS_SXU_MANF_5550_RCV: SXRSS Chicane Magnets - SXU,Material,,SLAC,M&S
102548,1.03,1.03.06,1.03.06.06,1.03.06.06.01,1.03.06.06.01,SXR Undulator Mechanical Components - Procurement & Fab,AS_SXU_MANF_3700,RCV: RFBPMs - SXU,1.0,229473.0,229473.0,229473.0,08-01-24,08-01-24,AS_SXU_MANF_3690: FS,AS_SXU_MANF_3710: FS,SLAC,0%,SL_MSSC.SLAC M&S (<$500K) (gets G&A) (gets ESC),SLAC M&S (<$500K) (gets G&A) (gets ESC),Nonlabor,0.0d,1.0,1.0,At Completion Units,7/3/2023,7/3/2023,0,0,0,0,0,0,0,0,0,0,1.03_Accelerator Systems (AS),1.03.06_AS Soft X-Ray Undulator (SXR) - SLAC,1.03.06.06_AS Soft X-Ray Undulator Procurement and Fabrication - SLAC,1.03.06.06.01_SXR Undulator Mechanical Components - Procurement & Fab,AS_SXU_MANF_3700_RCV: RFBPMs - SXU,Material,,SLAC,M&S
102549,1.03,1.03.06,1.03.06.06,1.03.06.06.01,1.03.06.06.01,SXR Undulator Mechanical Components - Procurement & Fab,AS_SXU_MANF_4100,RCV: Interspace Vacuum System - SXU,1.0,68574.0,68574.0,68574.0,01-12-24,01-12-24,AS_SXU_MANF_4090: FS,AS_SXU_MANF_4110: FS,SLAC,0%,SL_MSSC.SLAC M&S (<$500K) (gets G&A) (gets ESC),SLAC M&S (<$500K) (gets G&A) (gets ESC),Nonlabor,0.0d,1.0,1.0,At Completion Units,12/9/2022,12/9/2022,0,0,0,0,0,0,0,0,0,0,1.03_Accelerator Systems (AS),1.03.06_AS Soft X-Ray Undulator (SXR) - SLAC,1.03.06.06_AS Soft X-Ray Undulator Procurement and Fabrication - SLAC,1.03.06.06.01_SXR Undulator Mechanical Components - Procurement & Fab,AS_SXU_MANF_4100_RCV: Interspace Vacuum System - SXU,Material,,SLAC,M&S
102550,1.03,1.03.06,1.03.06.06,1.03.06.06.01,1.03.06.06.01,SXR Undulator Mechanical Components - Procurement & Fab,AS_SXU_MANF_3910,RCV: Pedestal / Cam Positioner - SXU,1.0,140732.0,140732.0,140732.0,03-12-24,03-12-24,AS_SXU_MANF_3890: FS,AS_SXU_MANF_3940: FS,SLAC,0%,SL_MSSC.SLAC M&S (<$500K) (gets G&A) (gets ESC),SLAC M&S (<$500K) (gets G&A) (gets ESC),Nonlabor,0.0d,1.0,1.0,At Completion Units,2/9/2023,2/9/2023,0,0,0,0,0,0,0,0,0,0,1.03_Accelerator Systems (AS),1.03.06_AS Soft X-Ray Undulator (SXR) - SLAC,1.03.06.06_AS Soft X-Ray Undulator Procurement and Fabrication - SLAC,1.03.06.06.01_SXR Undulator Mechanical Components - Procurement & Fab,AS_SXU_MANF_3910_RCV: Pedestal / Cam Positioner - SXU,Material,,SLAC,M&S
102551,1.03,1.03.06,1.03.06.06,1.03.06.06.01,1.03.06.06.01,SXR Undulator Mechanical Components - Procurement & Fab,AS_SXU_MANF_4650,RCV: Water Cooling Hardware - SXU,1.0,24641.0,24641.0,24641.0,10-27-23,10-27-23,AS_SXU_MANF_4640: FS,AS_SXU_MANF_4660: FS,SLAC,0%,SL_MSSC.SLAC M&S (<$500K) (gets G&A) (gets ESC),SLAC M&S (<$500K) (gets G&A) (gets ESC),Nonlabor,0.0d,1.0,1.0,At Completion Units,9/29/2022,9/29/2022,0,0,0,0,0,0,0,0,0,0,1.03_Accelerator Systems (AS),1.03.06_AS Soft X-Ray Undulator (SXR) - SLAC,1.03.06.06_AS Soft X-Ray Undulator Procurement and Fabrication - SLAC,1.03.06.06.01_SXR Undulator Mechanical Components - Procurement & Fab,AS_SXU_MANF_4650_RCV: Water Cooling Hardware - SXU,Material,,SLAC,M&S
102552,1.03,1.03.06,1.03.06.06,1.03.06.06.01,1.03.06.06.01,SXR Undulator Mechanical Components - Procurement & Fab,AS_SXU_MANF_5250,RCV: Radiation Monitoring System - SXU,1.0,24003.0,24003.0,24003.0,04-23-24,04-23-24,"AS_SXU_MANF_5240: FS, AS_SXU_MANF_4670: FS",AS_SXU_MANF_5260: FS,SLAC,0%,SL_MSSC.SLAC M&S (<$500K) (gets G&A) (gets ESC),SLAC M&S (<$500K) (gets G&A) (gets ESC),Nonlabor,0.0d,1.0,1.0,At Completion Units,3/24/2023,3/24/2023,0,0,0,0,0,0,0,0,0,0,1.03_Accelerator Systems (AS),1.03.06_AS Soft X-Ray Undulator (SXR) - SLAC,1.03.06.06_AS Soft X-Ray Undulator Procurement and Fabrication - SLAC,1.03.06.06.01_SXR Undulator Mechanical Components - Procurement & Fab,AS_SXU_MANF_5250_RCV: Radiation Monitoring System - SXU,Material,,SLAC,M&S
102553,1.03,1.03.06,1.03.06.06,1.03.06.06.01,1.03.06.06.01,SXR Undulator Mechanical Components - Procurement & Fab,AS_SXU_MANF_3600,Prepare Requisition (Specs/SOW/ETC) - RFBPMs - SXU,50.0,32.0,32.0,32.0,01-03-23,03-15-23,"AS_SXU_DE_1110: FS, MS_FY_2023_Q2: FS","AS_SXU_MANF_3610: FS, AS_SXU_MANF_3800: FS, AS_SXU_MANF_4200: FS",SLAC,0%,52169.52169_METS Mechanical Engineer,52169_METS Mechanical Engineer,Labor,0.0d,50.0,50.0,At Completion Units,3/7/2022,5/13/2022,0,0,0,0,0,0,0,0,0,0,1.03_Accelerator Systems (AS),1.03.06_AS Soft X-Ray Undulator (SXR) - SLAC,1.03.06.06_AS Soft X-Ray Undulator Procurement and Fabrication - SLAC,1.03.06.06.01_SXR Undulator Mechanical Components - Procurement & Fab,AS_SXU_MANF_3600_Prepare Requisition (Specs/SOW/ETC) - RFBPMs - SXU,Mechanical,,SLAC,Labor
102554,1.03,1.03.06,1.03.06.06,1.03.06.06.01,1.03.06.06.01,SXR Undulator Mechanical Components - Procurement & Fab,AS_SXU_MANF_5580,Receiving inspection - SXRSS Dipole Chicane Magnets - SXU,15.0,48.0,48.0,48.0,02-14-24,03-06-24,"AS_SXU_MANF_5550: FS, AS_SXU_MANF_5560: FS",AS_SXU_MANF_5590: FS,SLAC,0%,52191.52191_METSMET Metrology,52191_METSMET Metrology,Labor,0.0d,15.0,15.0,At Completion Units,1/13/2023,2/3/2023,0,0,0,0,0,0,0,0,0,0,1.03_Accelerator Systems (AS),1.03.06_AS Soft X-Ray Undulator (SXR) - SLAC,1.03.06.06_AS Soft X-Ray Undulator Procurement and Fabrication - SLAC,1.03.06.06.01_SXR Undulator Mechanical Components - Procurement & Fab,AS_SXU_MANF_5580_Receiving inspection - SXRSS Dipole Chicane Magnets - SXU,Metrology,,SLAC,Labor
102555,1.03,1.03.06,1.03.06.06,1.03.06.06.01,1.03.06.06.01,SXR Undulator Mechanical Components - Procurement & Fab,AS_SXU_MANF_5580,Receiving inspection - SXRSS Dipole Chicane Magnets - SXU,15.0,12.0,12.0,12.0,02-14-24,03-06-24,"AS_SXU_MANF_5550: FS, AS_SXU_MANF_5560: FS",AS_SXU_MANF_5590: FS,SLAC,0%,52169.52169_METS Mechanical Engineer,52169_METS Mechanical Engineer,Labor,0.0d,15.0,15.0,At Completion Units,1/13/2023,2/3/2023,0,0,0,0,0,0,0,0,0,0,1.03_Accelerator Systems (AS),1.03.06_AS Soft X-Ray Undulator (SXR) - SLAC,1.03.06.06_AS Soft X-Ray Undulator Procurement and Fabrication - SLAC,1.03.06.06.01_SXR Undulator Mechanical Components - Procurement & Fab,AS_SXU_MANF_5580_Receiving inspection - SXRSS Dipole Chicane Magnets - SXU,Mechanical,,SLAC,Labor
102556,1.03,1.03.06,1.03.06.06,1.03.06.06.01,1.03.06.06.01,SXR Undulator Mechanical Components - Procurement & Fab,AS_SXU_MANF_5500,SLAC Approval of vendor design SXRSS Chicane - SXU,10.0,12.0,12.0,12.0,06-06-22,06-17-22,AS_SXU_MANF_5495: FS,"AS_SXU_MANF_5510: FS, AS_SXU_MANF_5515: FS",SLAC,0%,52169.52169_METS Mechanical Engineer,52169_METS Mechanical Engineer,Labor,0.0d,10.0,10.0,At Completion Units,11/23/2021,12/8/2021,DM-C14-10%,0,0,0,0,0,0,0,0,0,1.03_Accelerator Systems (AS),1.03.06_AS Soft X-Ray Undulator (SXR) - SLAC,1.03.06.06_AS Soft X-Ray Undulator Procurement and Fabrication - SLAC,1.03.06.06.01_SXR Undulator Mechanical Components - Procurement & Fab,AS_SXU_MANF_5500_SLAC Approval of vendor design SXRSS Chicane - SXU,Mechanical,,SLAC,Labor
102557,1.03,1.03.06,1.03.06.06,1.03.06.06.01,1.03.06.06.01,SXR Undulator Mechanical Components - Procurement & Fab,AS_SXU_MANF_5420,Prepare RFP - SXRSS Chicane - SXU,10.0,8.0,8.0,8.0,01-14-22,01-28-22,AS_SXU_MANF_5410: FS,AS_SXU_MANF_5430: FS,SLAC,0%,52169.52169_METS Mechanical Engineer,52169_METS Mechanical Engineer,Labor,0.0d,10.0,10.0,At Completion Units,7/28/2021,8/10/2021,0,0,0,0,0,0,0,0,0,0,1.03_Accelerator Systems (AS),1.03.06_AS Soft X-Ray Undulator (SXR) - SLAC,1.03.06.06_AS Soft X-Ray Undulator Procurement and Fabrication - SLAC,1.03.06.06.01_SXR Undulator Mechanical Components - Procurement & Fab,AS_SXU_MANF_5420_Prepare RFP - SXRSS Chicane - SXU,Mechanical,,SLAC,Labor
102558,1.03,1.03.06,1.03.06.06,1.03.06.06.01,1.03.06.06.01,SXR Undulator Mechanical Components - Procurement & Fab,AS_SXU_MANF_5420,Prepare RFP - SXRSS Chicane - SXU,10.0,8.0,8.0,8.0,01-14-22,01-28-22,AS_SXU_MANF_5410: FS,AS_SXU_MANF_5430: FS,SLAC,0%,52190.52190_METSTP Tech Planning - Reinstated FY16,52190_METSTP Tech Planning - Reinstated FY16,Labor,0.0d,10.0,10.0,At Completion Units,7/28/2021,8/10/2021,0,0,0,0,0,0,0,0,0,0,1.03_Accelerator Systems (AS),1.03.06_AS Soft X-Ray Undulator (SXR) - SLAC,1.03.06.06_AS Soft X-Ray Undulator Procurement and Fabrication - SLAC,1.03.06.06.01_SXR Undulator Mechanical Components - Procurement & Fab,AS_SXU_MANF_5420_Prepare RFP - SXRSS Chicane - SXU,METSTPT Tech Planning,Tech,SLAC,Labor
102559,1.03,1.03.06,1.03.06.06,1.03.06.06.01,1.03.06.06.01,SXR Undulator Mechanical Components - Procurement & Fab,AS_SXU_MANF_4600,Prepare Requisition (Specs/SOW/ETC) - Water Cooling Hardware - SXU,40.0,8.0,8.0,8.0,05-25-23,07-21-23,"AS_SXU_DE_1110: FS, AS_SXU_MANF_4000: FS, AS_SXU_MANF_4400: FS",AS_SXU_MANF_4610: FS,SLAC,0%,52190.52190_METSTP Tech Planning - Reinstated FY16,52190_METSTP Tech Planning - Reinstated FY16,Labor,0.0d,40.0,40.0,At Completion Units,6/14/2022,8/9/2022,0,0,0,0,0,0,0,0,0,0,1.03_Accelerator Systems (AS),1.03.06_AS Soft X-Ray Undulator (SXR) - SLAC,1.03.06.06_AS Soft X-Ray Undulator Procurement and Fabrication - SLAC,1.03.06.06.01_SXR Undulator Mechanical Components - Procurement & Fab,AS_SXU_MANF_4600_Prepare Requisition (Specs/SOW/ETC) - Water Cooling Hardware - SXU,METSTPT Tech Planning,Tech,SLAC,Labor
102560,1.03,1.03.06,1.03.06.06,1.03.06.06.01,1.03.06.06.01,SXR Undulator Mechanical Components - Procurement & Fab,AS_SXU_MANF_4400,Prepare Requisition (Specs/SOW/ETC) - Interspace supports and hardware - SXU,30.0,8.0,8.0,8.0,04-13-23,05-24-23,"AS_SXU_MANF_3800: FS, AS_SXU_MANF_4200: FS, AS_SXU_DE_1110: FS","AS_SXU_MANF_4410: FS, AS_SXU_MANF_4600: FS, AS_SXU_MANF_5200: FS",SLAC,0%,52190.52190_METSTP Tech Planning - Reinstated FY16,52190_METSTP Tech Planning - Reinstated FY16,Labor,0.0d,30.0,30.0,At Completion Units,6/14/2022,7/26/2022,0,0,0,0,0,0,0,0,0,0,1.03_Accelerator Systems (AS),1.03.06_AS Soft X-Ray Undulator (SXR) - SLAC,1.03.06.06_AS Soft X-Ray Undulator Procurement and Fabrication - SLAC,1.03.06.06.01_SXR Undulator Mechanical Components - Procurement & Fab,AS_SXU_MANF_4400_Prepare Requisition (Specs/SOW/ETC) - Interspace supports and hardware - SXU,METSTPT Tech Planning,Tech,SLAC,Labor
102561,1.03,1.03.06,1.03.06.06,1.03.06.06.01,1.03.06.06.01,SXR Undulator Mechanical Components - Procurement & Fab,AS_SXU_MANF_4200,Prepare Requisition (Specs/SOW/ETC) - Quadrupole Magnets - SXU,15.0,24.0,24.0,24.0,03-16-23,04-05-23,"AS_SXU_MANF_3400: FS, AS_SXU_MANF_3600: FS, AS_SXU_DE_1110: FS","AS_SXU_MANF_4210: FS, AS_SXU_MANF_4400: FS, AS_SXU_MANF_4000: FS",SLAC,0%,52190.52190_METSTP Tech Planning - Reinstated FY16,52190_METSTP Tech Planning - Reinstated FY16,Labor,0.0d,15.0,15.0,At Completion Units,5/16/2022,6/6/2022,0,0,0,0,0,0,0,0,0,0,1.03_Accelerator Systems (AS),1.03.06_AS Soft X-Ray Undulator (SXR) - SLAC,1.03.06.06_AS Soft X-Ray Undulator Procurement and Fabrication - SLAC,1.03.06.06.01_SXR Undulator Mechanical Components - Procurement & Fab,AS_SXU_MANF_4200_Prepare Requisition (Specs/SOW/ETC) - Quadrupole Magnets - SXU,METSTPT Tech Planning,Tech,SLAC,Labor
102562,1.03,1.03.06,1.03.06.06,1.03.06.06.01,1.03.06.06.01,SXR Undulator Mechanical Components - Procurement & Fab,AS_SXU_MANF_3800,Prepare Requisition (Specs/SOW/ETC)  - Pedestal / Cam Positioner - SXU,20.0,8.0,8.0,8.0,03-16-23,04-12-23,"AS_SXU_MANF_3400: FS, AS_SXU_MANF_3600: FS, AS_SXU_DE_1110: FS","AS_SXU_MANF_3810: FS, AS_SXU_MANF_4000: FS, AS_SXU_MANF_4400: FS",SLAC,0%,52190.52190_METSTP Tech Planning - Reinstated FY16,52190_METSTP Tech Planning - Reinstated FY16,Labor,0.0d,20.0,20.0,At Completion Units,5/16/2022,6/13/2022,0,0,0,0,0,0,0,0,0,0,1.03_Accelerator Systems (AS),1.03.06_AS Soft X-Ray Undulator (SXR) - SLAC,1.03.06.06_AS Soft X-Ray Undulator Procurement and Fabrication - SLAC,1.03.06.06.01_SXR Undulator Mechanical Components - Procurement & Fab,AS_SXU_MANF_3800_Prepare Requisition (Specs/SOW/ETC)  - Pedestal / Cam Positioner - SXU,METSTPT Tech Planning,Tech,SLAC,Labor
102563,1.03,1.03.06,1.03.06.06,1.03.06.06.01,1.03.06.06.01,SXR Undulator Mechanical Components - Procurement & Fab,AS_SXU_MANF_3600,Prepare Requisition (Specs/SOW/ETC) - RFBPMs - SXU,50.0,8.0,8.0,8.0,01-03-23,03-15-23,"AS_SXU_DE_1110: FS, MS_FY_2023_Q2: FS","AS_SXU_MANF_3610: FS, AS_SXU_MANF_3800: FS, AS_SXU_MANF_4200: FS",SLAC,0%,52190.52190_METSTP Tech Planning - Reinstated FY16,52190_METSTP Tech Planning - Reinstated FY16,Labor,0.0d,50.0,50.0,At Completion Units,3/7/2022,5/13/2022,0,0,0,0,0,0,0,0,0,0,1.03_Accelerator Systems (AS),1.03.06_AS Soft X-Ray Undulator (SXR) - SLAC,1.03.06.06_AS Soft X-Ray Undulator Procurement and Fabrication - SLAC,1.03.06.06.01_SXR Undulator Mechanical Components - Procurement & Fab,AS_SXU_MANF_3600_Prepare Requisition (Specs/SOW/ETC) - RFBPMs - SXU,METSTPT Tech Planning,Tech,SLAC,Labor
102564,1.03,1.03.06,1.03.06.06,1.03.06.06.01,1.03.06.06.01,SXR Undulator Mechanical Components - Procurement & Fab,AS_SXU_MANF_5480,AWARD: Release design option - SXRSS Chicane - SXU,1.0,17617.0,17617.0,17617.0,03-24-22,03-24-22,AS_SXU_MANF_5470: FS,AS_SXU_MANF_5490: FS,SLAC,0%,AWARD_USE.AWARD - Use this AWARD,AWARD - Use this AWARD,Nonlabor,0.0d,1.0,1.0,At Completion Units,10/4/2021,10/4/2021,0,0,0,0,0,0,0,0,0,0,1.03_Accelerator Systems (AS),1.03.06_AS Soft X-Ray Undulator (SXR) - SLAC,1.03.06.06_AS Soft X-Ray Undulator Procurement and Fabrication - SLAC,1.03.06.06.01_SXR Undulator Mechanical Components - Procurement & Fab,AS_SXU_MANF_5480_AWARD: Release design option - SXRSS Chicane - SXU,Material,,SLAC,M&S
102565,1.03,1.03.06,1.03.06.06,1.03.06.06.01,1.03.06.06.01,SXR Undulator Mechanical Components - Procurement & Fab,AS_SXU_MANF_5410,RQN: Approval of Requisition - SXRSS Chicane - SXU,1.0,117446.0,117446.0,117446.0,01-13-22,01-13-22,AS_SXU_MANF_5400: FS,AS_SXU_MANF_5420: FS,SLAC,0%,REQ.Requisition,Requisition,Nonlabor,0.0d,1.0,1.0,At Completion Units,7/27/2021,7/27/2021,0,0,0,0,0,0,0,0,0,0,1.03_Accelerator Systems (AS),1.03.06_AS Soft X-Ray Undulator (SXR) - SLAC,1.03.06.06_AS Soft X-Ray Undulator Procurement and Fabrication - SLAC,1.03.06.06.01_SXR Undulator Mechanical Components - Procurement & Fab,AS_SXU_MANF_5410_RQN: Approval of Requisition - SXRSS Chicane - SXU,Material,,SLAC,M&S
102566,1.03,1.03.06,1.03.06.06,1.03.06.06.01,1.03.06.06.01,SXR Undulator Mechanical Components - Procurement & Fab,AS_SXU_MANF_5230,AWARD: Procurement - Radiation Monitoring System - SXU,1.0,24003.0,24003.0,24003.0,10-02-23,10-02-23,"AS_SXU_MANF_5220: FS, AS_M4_3010: FS",AS_SXU_MANF_5240: FS,SLAC,0%,AWARD_USE.AWARD - Use this AWARD,AWARD - Use this AWARD,Nonlabor,0.0d,1.0,1.0,At Completion Units,9/1/2022,9/1/2022,0,0,0,0,0,0,0,0,0,0,1.03_Accelerator Systems (AS),1.03.06_AS Soft X-Ray Undulator (SXR) - SLAC,1.03.06.06_AS Soft X-Ray Undulator Procurement and Fabrication - SLAC,1.03.06.06.01_SXR Undulator Mechanical Components - Procurement & Fab,AS_SXU_MANF_5230_AWARD: Procurement - Radiation Monitoring System - SXU,Material,,SLAC,M&S
102567,1.03,1.03.06,1.03.06.06,1.03.06.06.01,1.03.06.06.01,SXR Undulator Mechanical Components - Procurement & Fab,AS_SXU_MANF_5210,RQN: Approval of Requisition - Radiation Monitoring System - SXU,1.0,24003.0,24003.0,24003.0,07-10-23,07-10-23,AS_SXU_MANF_5200: FS,AS_SXU_MANF_5220: FS,SLAC,0%,REQ.Requisition,Requisition,Nonlabor,0.0d,1.0,1.0,At Completion Units,7/27/2022,7/27/2022,0,0,0,0,0,0,0,0,0,0,1.03_Accelerator Systems (AS),1.03.06_AS Soft X-Ray Undulator (SXR) - SLAC,1.03.06.06_AS Soft X-Ray Undulator Procurement and Fabrication - SLAC,1.03.06.06.01_SXR Undulator Mechanical Components - Procurement & Fab,AS_SXU_MANF_5210_RQN: Approval of Requisition - Radiation Monitoring System - SXU,Material,,SLAC,M&S
102568,1.03,1.03.06,1.03.06.06,1.03.06.06.01,1.03.06.06.01,SXR Undulator Mechanical Components - Procurement & Fab,AS_SXU_MANF_5030,AWARD: Procurement - MMF Tooling - SXU,1.0,30000.0,30000.0,30000.0,01-21-22,01-21-22,AS_SXU_MANF_5020: FS,AS_SXU_MANF_5040: FS,SLAC,0%,AWARD_USE.AWARD - Use this AWARD,AWARD - Use this AWARD,Nonlabor,0.0d,1.0,1.0,At Completion Units,2/28/2022,2/28/2022,0,0,0,0,0,0,0,0,0,0,1.03_Accelerator Systems (AS),1.03.06_AS Soft X-Ray Undulator (SXR) - SLAC,1.03.06.06_AS Soft X-Ray Undulator Procurement and Fabrication - SLAC,1.03.06.06.01_SXR Undulator Mechanical Components - Procurement & Fab,AS_SXU_MANF_5030_AWARD: Procurement - MMF Tooling - SXU,Material,,SLAC,M&S
102569,1.03,1.03.06,1.03.06.06,1.03.06.06.01,1.03.06.06.01,SXR Undulator Mechanical Components - Procurement & Fab,AS_SXU_MANF_5010,RQN: Approval of Requisition - MMF Tooling - SXU,1.0,30000.0,30000.0,30000.0,12-08-21,12-08-21,AS_SXU_MANF_5000: FS,AS_SXU_MANF_5020: FS,SLAC,0%,REQ.Requisition,Requisition,Nonlabor,0.0d,1.0,1.0,At Completion Units,12/15/2021,12/15/2021,0,0,0,0,0,0,0,0,0,0,1.03_Accelerator Systems (AS),1.03.06_AS Soft X-Ray Undulator (SXR) - SLAC,1.03.06.06_AS Soft X-Ray Undulator Procurement and Fabrication - SLAC,1.03.06.06.01_SXR Undulator Mechanical Components - Procurement & Fab,AS_SXU_MANF_5010_RQN: Approval of Requisition - MMF Tooling - SXU,Material,,SLAC,M&S
102570,1.03,1.03.06,1.03.06.06,1.03.06.06.01,1.03.06.06.01,SXR Undulator Mechanical Components - Procurement & Fab,AS_SXU_MANF_4630,AWARD: Procurement - Water Cooling Hardware - SXU,1.0,24641.0,24641.0,24641.0,10-02-23,10-02-23,"AS_SXU_MANF_4620: FS, AS_M4_3010: FS",AS_SXU_MANF_4640: FS,SLAC,0%,AWARD_USE.AWARD - Use this AWARD,AWARD - Use this AWARD,Nonlabor,0.0d,1.0,1.0,At Completion Units,9/1/2022,9/1/2022,0,0,0,0,0,0,0,0,0,0,1.03_Accelerator Systems (AS),1.03.06_AS Soft X-Ray Undulator (SXR) - SLAC,1.03.06.06_AS Soft X-Ray Undulator Procurement and Fabrication - SLAC,1.03.06.06.01_SXR Undulator Mechanical Components - Procurement & Fab,AS_SXU_MANF_4630_AWARD: Procurement - Water Cooling Hardware - SXU,Material,,SLAC,M&S
102571,1.03,1.03.06,1.03.06.06,1.03.06.06.01,1.03.06.06.01,SXR Undulator Mechanical Components - Procurement & Fab,AS_SXU_MANF_4610,RQN: Approval of Requisition - Water Cooling Hardware - SXU,1.0,24641.0,24641.0,24641.0,07-24-23,07-24-23,AS_SXU_MANF_4600: FS,AS_SXU_MANF_4620: FS,SLAC,0%,REQ.Requisition,Requisition,Nonlabor,0.0d,1.0,1.0,At Completion Units,8/10/2022,8/10/2022,0,0,0,0,0,0,0,0,0,0,1.03_Accelerator Systems (AS),1.03.06_AS Soft X-Ray Undulator (SXR) - SLAC,1.03.06.06_AS Soft X-Ray Undulator Procurement and Fabrication - SLAC,1.03.06.06.01_SXR Undulator Mechanical Components - Procurement & Fab,AS_SXU_MANF_4610_RQN: Approval of Requisition - Water Cooling Hardware - SXU,Material,,SLAC,M&S
102572,1.03,1.03.06,1.03.06.06,1.03.06.06.01,1.03.06.06.01,SXR Undulator Mechanical Components - Procurement & Fab,AS_SXU_MANF_4430,AWARD: Procurement - Interspace supports and hardware - SXU,1.0,61913.0,61913.0,61913.0,10-02-23,10-02-23,"AS_SXU_MANF_4420: FS, AS_M4_3010: FS","AS_SXU_MANF_4440: FS, AS_SXU_MANF_4450: FS",SLAC,0%,AWARD_USE.AWARD - Use this AWARD,AWARD - Use this AWARD,Nonlabor,0.0d,1.0,1.0,At Completion Units,9/1/2022,9/1/2022,0,0,0,0,0,0,0,0,0,0,1.03_Accelerator Systems (AS),1.03.06_AS Soft X-Ray Undulator (SXR) - SLAC,1.03.06.06_AS Soft X-Ray Undulator Procurement and Fabrication - SLAC,1.03.06.06.01_SXR Undulator Mechanical Components - Procurement & Fab,AS_SXU_MANF_4430_AWARD: Procurement - Interspace supports and hardware - SXU,Material,,SLAC,M&S
102573,1.03,1.03.06,1.03.06.06,1.03.06.06.01,1.03.06.06.01,SXR Undulator Mechanical Components - Procurement & Fab,AS_SXU_MANF_4410,RQN: Approval of Requisition - Interspace supports and hardware - SXU,1.0,61913.0,61913.0,61913.0,05-25-23,05-25-23,AS_SXU_MANF_4400: FS,AS_SXU_MANF_4420: FS,SLAC,0%,REQ.Requisition,Requisition,Nonlabor,0.0d,1.0,1.0,At Completion Units,7/27/2022,7/27/2022,0,0,0,0,0,0,0,0,0,0,1.03_Accelerator Systems (AS),1.03.06_AS Soft X-Ray Undulator (SXR) - SLAC,1.03.06.06_AS Soft X-Ray Undulator Procurement and Fabrication - SLAC,1.03.06.06.01_SXR Undulator Mechanical Components - Procurement & Fab,AS_SXU_MANF_4410_RQN: Approval of Requisition - Interspace supports and hardware - SXU,Material,,SLAC,M&S
102574,1.03,1.03.06,1.03.06.06,1.03.06.06.01,1.03.06.06.01,SXR Undulator Mechanical Components - Procurement & Fab,AS_SXU_MANF_4280,AWARD: Procurement - Quadrupole Magnets - SXU,1.0,85223.0,85223.0,85223.0,10-02-23,10-02-23,"AS_SXU_MANF_4270: FS, AS_M4_3010: FS",AS_SXU_MANF_4290: FS,SLAC,0%,AWARD_USE.AWARD - Use this AWARD,AWARD - Use this AWARD,Nonlabor,0.0d,1.0,1.0,At Completion Units,9/1/2022,9/1/2022,0,0,0,0,0,0,0,0,0,0,1.03_Accelerator Systems (AS),1.03.06_AS Soft X-Ray Undulator (SXR) - SLAC,1.03.06.06_AS Soft X-Ray Undulator Procurement and Fabrication - SLAC,1.03.06.06.01_SXR Undulator Mechanical Components - Procurement & Fab,AS_SXU_MANF_4280_AWARD: Procurement - Quadrupole Magnets - SXU,Material,,SLAC,M&S
102575,1.03,1.03.06,1.03.06.06,1.03.06.06.01,1.03.06.06.01,SXR Undulator Mechanical Components - Procurement & Fab,AS_SXU_MANF_4210,RQN: Approval of Requisition - Quadrupole Magnets - SXU,1.0,85233.0,85233.0,85233.0,04-06-23,04-06-23,AS_SXU_MANF_4200: FS,AS_SXU_MANF_4220: FS,SLAC,0%,REQ.Requisition,Requisition,Nonlabor,0.0d,1.0,1.0,At Completion Units,6/7/2022,6/7/2022,0,0,0,0,0,0,0,0,0,0,1.03_Accelerator Systems (AS),1.03.06_AS Soft X-Ray Undulator (SXR) - SLAC,1.03.06.06_AS Soft X-Ray Undulator Procurement and Fabrication - SLAC,1.03.06.06.01_SXR Undulator Mechanical Components - Procurement & Fab,AS_SXU_MANF_4210_RQN: Approval of Requisition - Quadrupole Magnets - SXU,Material,,SLAC,M&S
102576,1.03,1.03.06,1.03.06.06,1.03.06.06.01,1.03.06.06.01,SXR Undulator Mechanical Components - Procurement & Fab,AS_SXU_MANF_4080,AWARD: Procurement - Interspace Vacuum System - SXU,1.0,68574.0,68574.0,68574.0,10-02-23,10-02-23,"AS_SXU_MANF_4070: FS, AS_M4_3010: FS",AS_SXU_MANF_4090: FS,SLAC,0%,AWARD_USE.AWARD - Use this AWARD,AWARD - Use this AWARD,Nonlabor,0.0d,1.0,1.0,At Completion Units,9/13/2022,9/13/2022,0,0,0,0,0,0,0,0,0,0,1.03_Accelerator Systems (AS),1.03.06_AS Soft X-Ray Undulator (SXR) - SLAC,1.03.06.06_AS Soft X-Ray Undulator Procurement and Fabrication - SLAC,1.03.06.06.01_SXR Undulator Mechanical Components - Procurement & Fab,AS_SXU_MANF_4080_AWARD: Procurement - Interspace Vacuum System - SXU,Material,,SLAC,M&S
102577,1.03,1.03.06,1.03.06.06,1.03.06.06.01,1.03.06.06.01,SXR Undulator Mechanical Components - Procurement & Fab,AS_SXU_MANF_4010,RQN: Approval of Requisition - Interspace Vacuum System - SXU,1.0,68574.0,68574.0,68574.0,05-11-23,05-11-23,AS_SXU_MANF_4000: FS,AS_SXU_MANF_4020: FS,SLAC,0%,REQ.Requisition,Requisition,Nonlabor,0.0d,1.0,1.0,At Completion Units,7/13/2022,7/13/2022,0,0,0,0,0,0,0,0,0,0,1.03_Accelerator Systems (AS),1.03.06_AS Soft X-Ray Undulator (SXR) - SLAC,1.03.06.06_AS Soft X-Ray Undulator Procurement and Fabrication - SLAC,1.03.06.06.01_SXR Undulator Mechanical Components - Procurement & Fab,AS_SXU_MANF_4010_RQN: Approval of Requisition - Interspace Vacuum System - SXU,Material,,SLAC,M&S
102578,1.03,1.03.06,1.03.06.06,1.03.06.06.01,1.03.06.06.01,SXR Undulator Mechanical Components - Procurement & Fab,AS_SXU_MANF_3880,AWARD: Procurement - Pedestal / Cam Positioner - SXU,1.0,229048.0,229048.0,229048.0,10-02-23,10-02-23,"AS_SXU_MANF_3870: FS, AS_M4_3010: FS","AS_SXU_MANF_3890: FS, AS_SXU_MANF_3900: FS",SLAC,0%,AWARD_USE.AWARD - Use this AWARD,AWARD - Use this AWARD,Nonlabor,0.0d,1.0,1.0,At Completion Units,9/1/2022,9/1/2022,0,0,0,0,0,0,0,0,0,0,1.03_Accelerator Systems (AS),1.03.06_AS Soft X-Ray Undulator (SXR) - SLAC,1.03.06.06_AS Soft X-Ray Undulator Procurement and Fabrication - SLAC,1.03.06.06.01_SXR Undulator Mechanical Components - Procurement & Fab,AS_SXU_MANF_3880_AWARD: Procurement - Pedestal / Cam Positioner - SXU,Material,,SLAC,M&S
102579,1.03,1.03.06,1.03.06.06,1.03.06.06.01,1.03.06.06.01,SXR Undulator Mechanical Components - Procurement & Fab,AS_SXU_MANF_3810,RQN: Approval of Requisition - Pedestal / Cam Positioner - SXU,1.0,229048.0,229048.0,229048.0,04-13-23,04-13-23,AS_SXU_MANF_3800: FS,AS_SXU_MANF_3820: FS,SLAC,0%,REQ.Requisition,Requisition,Nonlabor,0.0d,1.0,1.0,At Completion Units,6/14/2022,6/14/2022,0,0,0,0,0,0,0,0,0,0,1.03_Accelerator Systems (AS),1.03.06_AS Soft X-Ray Undulator (SXR) - SLAC,1.03.06.06_AS Soft X-Ray Undulator Procurement and Fabrication - SLAC,1.03.06.06.01_SXR Undulator Mechanical Components - Procurement & Fab,AS_SXU_MANF_3810_RQN: Approval of Requisition - Pedestal / Cam Positioner - SXU,Material,,SLAC,M&S
102580,1.03,1.03.06,1.03.06.06,1.03.06.06.01,1.03.06.06.01,SXR Undulator Mechanical Components - Procurement & Fab,AS_SXU_MANF_3680,AWARD: Procurement - RFBPMs - SXU,1.0,229473.0,229473.0,229473.0,10-02-23,10-02-23,"AS_SXU_MANF_3670: FS, AS_M4_3010: FS",AS_SXU_MANF_3690: FS,SLAC,0%,AWARD_USE.AWARD - Use this AWARD,AWARD - Use this AWARD,Nonlabor,0.0d,1.0,1.0,At Completion Units,9/1/2022,9/1/2022,0,0,0,0,0,0,0,0,0,0,1.03_Accelerator Systems (AS),1.03.06_AS Soft X-Ray Undulator (SXR) - SLAC,1.03.06.06_AS Soft X-Ray Undulator Procurement and Fabrication - SLAC,1.03.06.06.01_SXR Undulator Mechanical Components - Procurement & Fab,AS_SXU_MANF_3680_AWARD: Procurement - RFBPMs - SXU,Material,,SLAC,M&S
102581,1.03,1.03.06,1.03.06.06,1.03.06.06.01,1.03.06.06.01,SXR Undulator Mechanical Components - Procurement & Fab,AS_SXU_MANF_3610,RQN: Approval of Requisition - RFBPMs - SXU,1.0,229473.0,229473.0,229473.0,03-16-23,03-16-23,AS_SXU_MANF_3600: FS,AS_SXU_MANF_3620: FS,SLAC,0%,REQ.Requisition,Requisition,Nonlabor,0.0d,1.0,1.0,At Completion Units,5/16/2022,5/16/2022,0,0,0,0,0,0,0,0,0,0,1.03_Accelerator Systems (AS),1.03.06_AS Soft X-Ray Undulator (SXR) - SLAC,1.03.06.06_AS Soft X-Ray Undulator Procurement and Fabrication - SLAC,1.03.06.06.01_SXR Undulator Mechanical Components - Procurement & Fab,AS_SXU_MANF_3610_RQN: Approval of Requisition - RFBPMs - SXU,Material,,SLAC,M&S
102582,1.03,1.03.06,1.03.06.06,1.03.06.06.01,1.03.06.06.01,SXR Undulator Mechanical Components - Procurement & Fab,AS_SXU_MANF_3510,AWARD: Procurement - Undulator Vacuum Chambers - SXU,5.0,749734.0,749734.0,749734.0,10-02-23,10-06-23,"AS_SXU_MANF_3500: FS, AS_M4_3010: FS",AS_SXU_MANF_3520: FS,SLAC,0%,AWARD_USE.AWARD - Use this AWARD,AWARD - Use this AWARD,Nonlabor,0.0d,5.0,5.0,At Completion Units,11/4/2022,11/10/2022,0,0,0,0,0,0,0,0,0,0,1.03_Accelerator Systems (AS),1.03.06_AS Soft X-Ray Undulator (SXR) - SLAC,1.03.06.06_AS Soft X-Ray Undulator Procurement and Fabrication - SLAC,1.03.06.06.01_SXR Undulator Mechanical Components - Procurement & Fab,AS_SXU_MANF_3510_AWARD: Procurement - Undulator Vacuum Chambers - SXU,Material,,SLAC,M&S
102583,1.03,1.03.06,1.03.06.06,1.03.06.06.01,1.03.06.06.01,SXR Undulator Mechanical Components - Procurement & Fab,AS_SXU_MANF_3410,RQN: Approval of Requisition - Undulator Vacuum Chambers - SXU,1.0,749734.0,749734.0,749734.0,03-16-23,03-16-23,AS_SXU_MANF_3400: FS,AS_SXU_MANF_3420: FS,SLAC,0%,REQ.Requisition,Requisition,Nonlabor,0.0d,1.0,1.0,At Completion Units,5/16/2022,5/16/2022,0,0,0,0,0,0,0,0,0,0,1.03_Accelerator Systems (AS),1.03.06_AS Soft X-Ray Undulator (SXR) - SLAC,1.03.06.06_AS Soft X-Ray Undulator Procurement and Fabrication - SLAC,1.03.06.06.01_SXR Undulator Mechanical Components - Procurement & Fab,AS_SXU_MANF_3410_RQN: Approval of Requisition - Undulator Vacuum Chambers - SXU,Material,,SLAC,M&S
102584,1.03,1.03.06,1.03.06.06,1.03.06.06.01,1.03.06.06.01,SXR Undulator Mechanical Components - Procurement & Fab,AS_SXU_MANF_5510,SXRSS Chicane Drawing Release - SXU,10.0,32.0,32.0,32.0,06-20-22,07-01-22,AS_SXU_MANF_5500: FS,AS_SXU_DE_1080: FS,SLAC,0%,52169.52169_METS Mechanical Engineer,52169_METS Mechanical Engineer,Labor,0.0d,10.0,10.0,At Completion Units,12/9/2021,1/5/2022,0,0,0,0,0,0,0,0,0,0,1.03_Accelerator Systems (AS),1.03.06_AS Soft X-Ray Undulator (SXR) - SLAC,1.03.06.06_AS Soft X-Ray Undulator Procurement and Fabrication - SLAC,1.03.06.06.01_SXR Undulator Mechanical Components - Procurement & Fab,AS_SXU_MANF_5510_SXRSS Chicane Drawing Release - SXU,Mechanical,,SLAC,Labor
102585,1.03,1.03.06,1.03.06.06,1.03.06.06.01,1.03.06.06.01,SXR Undulator Mechanical Components - Procurement & Fab,AS_SXU_MANF_5260,QA and inspection testing Radiation Monitoring System - SXU,30.0,240.0,240.0,240.0,04-24-24,06-05-24,AS_SXU_MANF_5250: FS,AS_SXU_MANF_5270: FS,SLAC,0%,52211.52211_EEDOPSE (Electronics & Engineering Div - Ops & PSE),52211_EEDOPSE (Electronics & Engineering Div - Ops & PSE),Labor,0.0d,30.0,30.0,At Completion Units,3/27/2023,5/5/2023,0,0,0,0,0,0,0,0,0,0,1.03_Accelerator Systems (AS),1.03.06_AS Soft X-Ray Undulator (SXR) - SLAC,1.03.06.06_AS Soft X-Ray Undulator Procurement and Fabrication - SLAC,1.03.06.06.01_SXR Undulator Mechanical Components - Procurement & Fab,AS_SXU_MANF_5260_QA and inspection testing Radiation Monitoring System - SXU,Electrical,,SLAC,Labor
102586,1.03,1.03.06,1.03.06.06,1.03.06.06.01,1.03.06.06.01,SXR Undulator Mechanical Components - Procurement & Fab,AS_SXU_MANF_5260,QA and inspection testing Radiation Monitoring System - SXU,30.0,40.0,40.0,40.0,04-24-24,06-05-24,AS_SXU_MANF_5250: FS,AS_SXU_MANF_5270: FS,SLAC,0%,52168.52168_METS - Mechanical Design,52168_METS - Mechanical Design,Labor,0.0d,30.0,30.0,At Completion Units,3/27/2023,5/5/2023,0,0,0,0,0,0,0,0,0,0,1.03_Accelerator Systems (AS),1.03.06_AS Soft X-Ray Undulator (SXR) - SLAC,1.03.06.06_AS Soft X-Ray Undulator Procurement and Fabrication - SLAC,1.03.06.06.01_SXR Undulator Mechanical Components - Procurement & Fab,AS_SXU_MANF_5260_QA and inspection testing Radiation Monitoring System - SXU,Mechanical,,SLAC,Labor
102587,1.03,1.03.06,1.03.06.06,1.03.06.06.01,1.03.06.06.01,SXR Undulator Mechanical Components - Procurement & Fab,AS_SXU_MANF_5260,QA and inspection testing Radiation Monitoring System - SXU,30.0,120.0,120.0,120.0,04-24-24,06-05-24,AS_SXU_MANF_5250: FS,AS_SXU_MANF_5270: FS,SLAC,0%,0106.0106_Staff Scientist,0106_Staff Scientist,Labor,0.0d,30.0,30.0,At Completion Units,3/27/2023,5/5/2023,0,0,0,0,0,0,0,0,0,0,1.03_Accelerator Systems (AS),1.03.06_AS Soft X-Ray Undulator (SXR) - SLAC,1.03.06.06_AS Soft X-Ray Undulator Procurement and Fabrication - SLAC,1.03.06.06.01_SXR Undulator Mechanical Components - Procurement & Fab,AS_SXU_MANF_5260_QA and inspection testing Radiation Monitoring System - SXU,Scientist,,SLAC,Labor
102588,1.03,1.03.06,1.03.06.06,1.03.06.06.01,1.03.06.06.01,SXR Undulator Mechanical Components - Procurement & Fab,AS_SXU_MANF_5260,QA and inspection testing Radiation Monitoring System - SXU,30.0,240.0,240.0,240.0,04-24-24,06-05-24,AS_SXU_MANF_5250: FS,AS_SXU_MANF_5270: FS,SLAC,0%,52198.52198_METSMANF (METSD Manufacturing),52198_METSMANF (METSD Manufacturing),Labor,0.0d,30.0,30.0,At Completion Units,3/27/2023,5/5/2023,0,0,0,0,0,0,0,0,0,0,1.03_Accelerator Systems (AS),1.03.06_AS Soft X-Ray Undulator (SXR) - SLAC,1.03.06.06_AS Soft X-Ray Undulator Procurement and Fabrication - SLAC,1.03.06.06.01_SXR Undulator Mechanical Components - Procurement & Fab,AS_SXU_MANF_5260_QA and inspection testing Radiation Monitoring System - SXU,Manufacturing,,SLAC,Labor
102589,1.03,1.03.06,1.03.06.06,1.03.06.06.01,1.03.06.06.01,SXR Undulator Mechanical Components - Procurement & Fab,AS_SXU_MANF_4660,QA and acceptance testing - Water Cooling Hardware - SXU,10.0,16.0,16.0,16.0,10-30-23,11-10-23,AS_SXU_MANF_4650: FS,AS_SXU_MANF_4670: FS,SLAC,0%,52169.52169_METS Mechanical Engineer,52169_METS Mechanical Engineer,Labor,0.0d,10.0,10.0,At Completion Units,9/30/2022,10/13/2022,0,0,0,0,0,0,0,0,0,0,1.03_Accelerator Systems (AS),1.03.06_AS Soft X-Ray Undulator (SXR) - SLAC,1.03.06.06_AS Soft X-Ray Undulator Procurement and Fabrication - SLAC,1.03.06.06.01_SXR Undulator Mechanical Components - Procurement & Fab,AS_SXU_MANF_4660_QA and acceptance testing - Water Cooling Hardware - SXU,Mechanical,,SLAC,Labor
102590,1.03,1.03.06,1.03.06.06,1.03.06.06.01,1.03.06.06.01,SXR Undulator Mechanical Components - Procurement & Fab,AS_SXU_MANF_4660,QA and acceptance testing - Water Cooling Hardware - SXU,10.0,40.0,40.0,40.0,10-30-23,11-10-23,AS_SXU_MANF_4650: FS,AS_SXU_MANF_4670: FS,SLAC,0%,52198.52198_METSMANF (METSD Manufacturing),52198_METSMANF (METSD Manufacturing),Labor,0.0d,10.0,10.0,At Completion Units,9/30/2022,10/13/2022,0,0,0,0,0,0,0,0,0,0,1.03_Accelerator Systems (AS),1.03.06_AS Soft X-Ray Undulator (SXR) - SLAC,1.03.06.06_AS Soft X-Ray Undulator Procurement and Fabrication - SLAC,1.03.06.06.01_SXR Undulator Mechanical Components - Procurement & Fab,AS_SXU_MANF_4660_QA and acceptance testing - Water Cooling Hardware - SXU,Manufacturing,,SLAC,Labor
102591,1.03,1.03.06,1.03.06.06,1.03.06.06.01,1.03.06.06.01,SXR Undulator Mechanical Components - Procurement & Fab,AS_SXU_MANF_4480,QA and acceptance testing - Interspace supports and hardware - SXU,15.0,4.0,4.0,4.0,01-23-24,02-12-24,"AS_SXU_MANF_4460: FS, AS_SXU_MANF_4470: FS",AS_SXU_MANF_4490: FS,SLAC,0%,52190.52190_METSTP Tech Planning - Reinstated FY16,52190_METSTP Tech Planning - Reinstated FY16,Labor,0.0d,15.0,15.0,At Completion Units,12/8/2022,1/11/2023,0,0,0,0,0,0,0,0,0,0,1.03_Accelerator Systems (AS),1.03.06_AS Soft X-Ray Undulator (SXR) - SLAC,1.03.06.06_AS Soft X-Ray Undulator Procurement and Fabrication - SLAC,1.03.06.06.01_SXR Undulator Mechanical Components - Procurement & Fab,AS_SXU_MANF_4480_QA and acceptance testing - Interspace supports and hardware - SXU,METSTPT Tech Planning,Tech,SLAC,Labor
102592,1.03,1.03.06,1.03.06.06,1.03.06.06.01,1.03.06.06.01,SXR Undulator Mechanical Components - Procurement & Fab,AS_SXU_MANF_4480,QA and acceptance testing - Interspace supports and hardware - SXU,15.0,12.0,12.0,12.0,01-23-24,02-12-24,"AS_SXU_MANF_4460: FS, AS_SXU_MANF_4470: FS",AS_SXU_MANF_4490: FS,SLAC,0%,52169.52169_METS Mechanical Engineer,52169_METS Mechanical Engineer,Labor,0.0d,15.0,15.0,At Completion Units,12/8/2022,1/11/2023,0,0,0,0,0,0,0,0,0,0,1.03_Accelerator Systems (AS),1.03.06_AS Soft X-Ray Undulator (SXR) - SLAC,1.03.06.06_AS Soft X-Ray Undulator Procurement and Fabrication - SLAC,1.03.06.06.01_SXR Undulator Mechanical Components - Procurement & Fab,AS_SXU_MANF_4480_QA and acceptance testing - Interspace supports and hardware - SXU,Mechanical,,SLAC,Labor
102593,1.03,1.03.06,1.03.06.06,1.03.06.06.01,1.03.06.06.01,SXR Undulator Mechanical Components - Procurement & Fab,AS_SXU_MANF_4310,QA and acceptance testing - Quadrupole Magnet - SXU,20.0,20.0,20.0,20.0,04-24-24,05-21-24,AS_SXU_MANF_4300: FS,AS_SXU_MANF_4320: FS,SLAC,0%,52211.52211_EEDOPSE (Electronics & Engineering Div - Ops & PSE),52211_EEDOPSE (Electronics & Engineering Div - Ops & PSE),Labor,0.0d,20.0,20.0,At Completion Units,3/27/2023,4/21/2023,0,0,0,0,0,0,0,0,0,0,1.03_Accelerator Systems (AS),1.03.06_AS Soft X-Ray Undulator (SXR) - SLAC,1.03.06.06_AS Soft X-Ray Undulator Procurement and Fabrication - SLAC,1.03.06.06.01_SXR Undulator Mechanical Components - Procurement & Fab,AS_SXU_MANF_4310_QA and acceptance testing - Quadrupole Magnet - SXU,Electrical,,SLAC,Labor
102594,1.03,1.03.06,1.03.06.06,1.03.06.06.01,1.03.06.06.01,SXR Undulator Mechanical Components - Procurement & Fab,AS_SXU_MANF_4310,QA and acceptance testing - Quadrupole Magnet - SXU,20.0,80.0,80.0,80.0,04-24-24,05-21-24,AS_SXU_MANF_4300: FS,AS_SXU_MANF_4320: FS,SLAC,0%,52169.52169_METS Mechanical Engineer,52169_METS Mechanical Engineer,Labor,0.0d,20.0,20.0,At Completion Units,3/27/2023,4/21/2023,0,0,0,0,0,0,0,0,0,0,1.03_Accelerator Systems (AS),1.03.06_AS Soft X-Ray Undulator (SXR) - SLAC,1.03.06.06_AS Soft X-Ray Undulator Procurement and Fabrication - SLAC,1.03.06.06.01_SXR Undulator Mechanical Components - Procurement & Fab,AS_SXU_MANF_4310_QA and acceptance testing - Quadrupole Magnet - SXU,Mechanical,,SLAC,Labor
102595,1.03,1.03.06,1.03.06.06,1.03.06.06.01,1.03.06.06.01,SXR Undulator Mechanical Components - Procurement & Fab,AS_SXU_MANF_4310,QA and acceptance testing - Quadrupole Magnet - SXU,20.0,120.0,120.0,120.0,04-24-24,05-21-24,AS_SXU_MANF_4300: FS,AS_SXU_MANF_4320: FS,SLAC,0%,52198.52198_METSMANF (METSD Manufacturing),52198_METSMANF (METSD Manufacturing),Labor,0.0d,20.0,20.0,At Completion Units,3/27/2023,4/21/2023,0,0,0,0,0,0,0,0,0,0,1.03_Accelerator Systems (AS),1.03.06_AS Soft X-Ray Undulator (SXR) - SLAC,1.03.06.06_AS Soft X-Ray Undulator Procurement and Fabrication - SLAC,1.03.06.06.01_SXR Undulator Mechanical Components - Procurement & Fab,AS_SXU_MANF_4310_QA and acceptance testing - Quadrupole Magnet - SXU,Manufacturing,,SLAC,Labor
102596,1.03,1.03.06,1.03.06.06,1.03.06.06.01,1.03.06.06.01,SXR Undulator Mechanical Components - Procurement & Fab,AS_SXU_MANF_4110,QA and acceptance testing - Interspace Vacuum System - SXU,30.0,6.0,6.0,6.0,01-16-24,02-27-24,AS_SXU_MANF_4100: FS,AS_SXU_MANF_4120: FS,SLAC,0%,52190.52190_METSTP Tech Planning - Reinstated FY16,52190_METSTP Tech Planning - Reinstated FY16,Labor,0.0d,30.0,30.0,At Completion Units,12/12/2022,2/6/2023,0,0,0,0,0,0,0,0,0,0,1.03_Accelerator Systems (AS),1.03.06_AS Soft X-Ray Undulator (SXR) - SLAC,1.03.06.06_AS Soft X-Ray Undulator Procurement and Fabrication - SLAC,1.03.06.06.01_SXR Undulator Mechanical Components - Procurement & Fab,AS_SXU_MANF_4110_QA and acceptance testing - Interspace Vacuum System - SXU,METSTPT Tech Planning,Tech,SLAC,Labor
102597,1.03,1.03.06,1.03.06.06,1.03.06.06.01,1.03.06.06.01,SXR Undulator Mechanical Components - Procurement & Fab,AS_SXU_MANF_4110,QA and acceptance testing - Interspace Vacuum System - SXU,30.0,20.0,20.0,20.0,01-16-24,02-27-24,AS_SXU_MANF_4100: FS,AS_SXU_MANF_4120: FS,SLAC,0%,52169.52169_METS Mechanical Engineer,52169_METS Mechanical Engineer,Labor,0.0d,30.0,30.0,At Completion Units,12/12/2022,2/6/2023,0,0,0,0,0,0,0,0,0,0,1.03_Accelerator Systems (AS),1.03.06_AS Soft X-Ray Undulator (SXR) - SLAC,1.03.06.06_AS Soft X-Ray Undulator Procurement and Fabrication - SLAC,1.03.06.06.01_SXR Undulator Mechanical Components - Procurement & Fab,AS_SXU_MANF_4110_QA and acceptance testing - Interspace Vacuum System - SXU,Mechanical,,SLAC,Labor
102598,1.03,1.03.06,1.03.06.06,1.03.06.06.01,1.03.06.06.01,SXR Undulator Mechanical Components - Procurement & Fab,AS_SXU_MANF_4110,QA and acceptance testing - Interspace Vacuum System - SXU,30.0,40.0,40.0,40.0,01-16-24,02-27-24,AS_SXU_MANF_4100: FS,AS_SXU_MANF_4120: FS,SLAC,0%,52198.52198_METSMANF (METSD Manufacturing),52198_METSMANF (METSD Manufacturing),Labor,0.0d,30.0,30.0,At Completion Units,12/12/2022,2/6/2023,0,0,0,0,0,0,0,0,0,0,1.03_Accelerator Systems (AS),1.03.06_AS Soft X-Ray Undulator (SXR) - SLAC,1.03.06.06_AS Soft X-Ray Undulator Procurement and Fabrication - SLAC,1.03.06.06.01_SXR Undulator Mechanical Components - Procurement & Fab,AS_SXU_MANF_4110_QA and acceptance testing - Interspace Vacuum System - SXU,Manufacturing,,SLAC,Labor
102599,1.03,1.03.06,1.03.06.06,1.03.06.06.01,1.03.06.06.01,SXR Undulator Mechanical Components - Procurement & Fab,AS_SXU_MANF_3710,QA and acceptance testing - RFBPM - SXU,65.0,80.0,80.0,80.0,08-02-24,11-01-24,AS_SXU_MANF_3700: FS,AS_SXU_MANF_3720: FS,SLAC,0%,52169.52169_METS Mechanical Engineer,52169_METS Mechanical Engineer,Labor,0.0d,65.0,65.0,At Completion Units,7/5/2023,10/4/2023,0,0,0,0,0,0,0,0,0,0,1.03_Accelerator Systems (AS),1.03.06_AS Soft X-Ray Undulator (SXR) - SLAC,1.03.06.06_AS Soft X-Ray Undulator Procurement and Fabrication - SLAC,1.03.06.06.01_SXR Undulator Mechanical Components - Procurement & Fab,AS_SXU_MANF_3710_QA and acceptance testing - RFBPM - SXU,Mechanical,,SLAC,Labor
102600,1.03,1.03.06,1.03.06.06,1.03.06.06.01,1.03.06.06.01,SXR Undulator Mechanical Components - Procurement & Fab,AS_SXU_MANF_3710,QA and acceptance testing - RFBPM - SXU,65.0,224.0,224.0,224.0,08-02-24,11-01-24,AS_SXU_MANF_3700: FS,AS_SXU_MANF_3720: FS,SLAC,0%,52198.52198_METSMANF (METSD Manufacturing),52198_METSMANF (METSD Manufacturing),Labor,0.0d,65.0,65.0,At Completion Units,7/5/2023,10/4/2023,0,0,0,0,0,0,0,0,0,0,1.03_Accelerator Systems (AS),1.03.06_AS Soft X-Ray Undulator (SXR) - SLAC,1.03.06.06_AS Soft X-Ray Undulator Procurement and Fabrication - SLAC,1.03.06.06.01_SXR Undulator Mechanical Components - Procurement & Fab,AS_SXU_MANF_3710_QA and acceptance testing - RFBPM - SXU,Manufacturing,,SLAC,Labor
102601,1.03,1.03.06,1.03.06.06,1.03.06.06.01,1.03.06.06.01,SXR Undulator Mechanical Components - Procurement & Fab,AS_SXU_MANF_3560,QA and acceptance testing Und vacuum chamber - BATCH 1 - SXU,40.0,240.0,240.0,240.0,03-19-24,05-13-24,AS_SXU_MANF_3540: FS,AS_SXU_MANF_3580: FS,SLAC,0%,52191.52191_METSMET Metrology,52191_METSMET Metrology,Labor,0.0d,40.0,40.0,At Completion Units,4/21/2023,6/16/2023,0,0,0,0,0,0,0,0,0,0,1.03_Accelerator Systems (AS),1.03.06_AS Soft X-Ray Undulator (SXR) - SLAC,1.03.06.06_AS Soft X-Ray Undulator Procurement and Fabrication - SLAC,1.03.06.06.01_SXR Undulator Mechanical Components - Procurement & Fab,AS_SXU_MANF_3560_QA and acceptance testing Und vacuum chamber - BATCH 1 - SXU,Metrology,,SLAC,Labor
102602,1.03,1.03.06,1.03.06.06,1.03.06.06.01,1.03.06.06.01,SXR Undulator Mechanical Components - Procurement & Fab,AS_SXU_MANF_3560,QA and acceptance testing Und vacuum chamber - BATCH 1 - SXU,40.0,20.0,20.0,20.0,03-19-24,05-13-24,AS_SXU_MANF_3540: FS,AS_SXU_MANF_3580: FS,SLAC,0%,52169.52169_METS Mechanical Engineer,52169_METS Mechanical Engineer,Labor,0.0d,40.0,40.0,At Completion Units,4/21/2023,6/16/2023,0,0,0,0,0,0,0,0,0,0,1.03_Accelerator Systems (AS),1.03.06_AS Soft X-Ray Undulator (SXR) - SLAC,1.03.06.06_AS Soft X-Ray Undulator Procurement and Fabrication - SLAC,1.03.06.06.01_SXR Undulator Mechanical Components - Procurement & Fab,AS_SXU_MANF_3560_QA and acceptance testing Und vacuum chamber - BATCH 1 - SXU,Mechanical,,SLAC,Labor
102603,1.03,1.03.06,1.03.06.06,1.03.06.06.01,1.03.06.06.01,SXR Undulator Mechanical Components - Procurement & Fab,AS_SXU_MANF_3560,QA and acceptance testing Und vacuum chamber - BATCH 1 - SXU,40.0,30.0,30.0,30.0,03-19-24,05-13-24,AS_SXU_MANF_3540: FS,AS_SXU_MANF_3580: FS,SLAC,0%,52198.52198_METSMANF (METSD Manufacturing),52198_METSMANF (METSD Manufacturing),Labor,0.0d,40.0,40.0,At Completion Units,4/21/2023,6/16/2023,0,0,0,0,0,0,0,0,0,0,1.03_Accelerator Systems (AS),1.03.06_AS Soft X-Ray Undulator (SXR) - SLAC,1.03.06.06_AS Soft X-Ray Undulator Procurement and Fabrication - SLAC,1.03.06.06.01_SXR Undulator Mechanical Components - Procurement & Fab,AS_SXU_MANF_3560_QA and acceptance testing Und vacuum chamber - BATCH 1 - SXU,Manufacturing,,SLAC,Labor
102604,1.03,1.03.06,1.03.06.06,1.03.06.06.01,1.03.06.06.01,SXR Undulator Mechanical Components - Procurement & Fab,AS_SXU_MANF_3400,Prepare Requisition (Specs/SOW/ETC) - Undulator Vacuum Chambers - SXU,50.0,16.0,16.0,16.0,01-03-23,03-15-23,"AS_SXU_DE_1110: FS, MS_FY_2023_Q2: FS","AS_SXU_MANF_3410: FS, AS_SXU_MANF_3800: FS, AS_SXU_MANF_4200: FS",SLAC,0%,52190.52190_METSTP Tech Planning - Reinstated FY16,52190_METSTP Tech Planning - Reinstated FY16,Labor,0.0d,50.0,50.0,At Completion Units,3/7/2022,5/13/2022,0,0,0,0,0,0,0,0,0,0,1.03_Accelerator Systems (AS),1.03.06_AS Soft X-Ray Undulator (SXR) - SLAC,1.03.06.06_AS Soft X-Ray Undulator Procurement and Fabrication - SLAC,1.03.06.06.01_SXR Undulator Mechanical Components - Procurement & Fab,AS_SXU_MANF_3400_Prepare Requisition (Specs/SOW/ETC) - Undulator Vacuum Chambers - SXU,METSTPT Tech Planning,Tech,SLAC,Labor
102924,1.03,1.03.06,1.03.06.06,1.03.06.06.02,1.03.06.06.02,SXR Phase Shifter Manufacturing and Testing,AS_SXU_MANF_3270,Evaluations/Negotiations - Phase Shifters,55.0,8.0,8.0,8.0,04-07-23,06-23-23,AS_SXU_MANF_3260: FS,AS_SXU_MANF_3280: FS,SLAC,0%,52169.52169_METS Mechanical Engineer,52169_METS Mechanical Engineer,Labor,0.0d,55.0,55.0,At Completion Units,9/23/2022,12/12/2022,0,0,0,0,0,0,0,0,0,0,1.03_Accelerator Systems (AS),1.03.06_AS Soft X-Ray Undulator (SXR) - SLAC,1.03.06.06_AS Soft X-Ray Undulator Procurement and Fabrication - SLAC,1.03.06.06.02_SXR Phase Shifter Manufacturing and Testing,AS_SXU_MANF_3270_Evaluations/Negotiations - Phase Shifters,Mechanical,,SLAC,Labor
102925,1.03,1.03.06,1.03.06.06,1.03.06.06.02,1.03.06.06.02,SXR Phase Shifter Manufacturing and Testing,AS_SXU_MANF_3200,Prepare Requisition (Specs/SOW/ETC) - Phase Shifters,30.0,16.0,16.0,16.0,10-14-22,11-28-22,AS_SXU_MANF_3130: FS,AS_SXU_MANF_3210: FS,SLAC,0%,52169.52169_METS Mechanical Engineer,52169_METS Mechanical Engineer,Labor,0.0d,30.0,30.0,At Completion Units,3/28/2022,5/27/2022,0,0,0,0,0,0,0,0,0,0,1.03_Accelerator Systems (AS),1.03.06_AS Soft X-Ray Undulator (SXR) - SLAC,1.03.06.06_AS Soft X-Ray Undulator Procurement and Fabrication - SLAC,1.03.06.06.02_SXR Phase Shifter Manufacturing and Testing,AS_SXU_MANF_3200_Prepare Requisition (Specs/SOW/ETC) - Phase Shifters,Mechanical,,SLAC,Labor
102926,1.03,1.03.06,1.03.06.06,1.03.06.06.02,1.03.06.06.02,SXR Phase Shifter Manufacturing and Testing,AS_SXU_MANF_6079,Tune and Calibrate Phase Shifter 29,5.0,6.0,6.0,6.0,02-27-25,03-06-25,"AS_SXU_MANF_6029: FS, AS_SXU_MANF_6078: FS",AS_SXU_INST_2912: FS,SLAC,0%,52213.52213_EEDHW (Electronics & Engineering Div - HW Engr),52213_EEDHW (Electronics & Engineering Div - HW Engr),Labor,0.0d,5.0,5.0,At Completion Units,2/27/2025,3/6/2025,0,0,0,0,0,0,0,0,0,0,1.03_Accelerator Systems (AS),1.03.06_AS Soft X-Ray Undulator (SXR) - SLAC,1.03.06.06_AS Soft X-Ray Undulator Procurement and Fabrication - SLAC,1.03.06.06.02_SXR Phase Shifter Manufacturing and Testing,AS_SXU_MANF_6079_Tune and Calibrate Phase Shifter 29,Electrical,,SLAC,Labor
102927,1.03,1.03.06,1.03.06.06,1.03.06.06.02,1.03.06.06.02,SXR Phase Shifter Manufacturing and Testing,AS_SXU_MANF_6079,Tune and Calibrate Phase Shifter 29,5.0,40.0,40.0,40.0,02-27-25,03-06-25,"AS_SXU_MANF_6029: FS, AS_SXU_MANF_6078: FS",AS_SXU_INST_2912: FS,SLAC,0%,52191.52191_METSMET Metrology,52191_METSMET Metrology,Labor,0.0d,5.0,5.0,At Completion Units,2/27/2025,3/6/2025,0,0,0,0,0,0,0,0,0,0,1.03_Accelerator Systems (AS),1.03.06_AS Soft X-Ray Undulator (SXR) - SLAC,1.03.06.06_AS Soft X-Ray Undulator Procurement and Fabrication - SLAC,1.03.06.06.02_SXR Phase Shifter Manufacturing and Testing,AS_SXU_MANF_6079_Tune and Calibrate Phase Shifter 29,Metrology,,SLAC,Labor
102928,1.03,1.03.06,1.03.06.06,1.03.06.06.02,1.03.06.06.02,SXR Phase Shifter Manufacturing and Testing,AS_SXU_MANF_6079,Tune and Calibrate Phase Shifter 29,5.0,6.0,6.0,6.0,02-27-25,03-06-25,"AS_SXU_MANF_6029: FS, AS_SXU_MANF_6078: FS",AS_SXU_INST_2912: FS,SLAC,0%,52169.52169_METS Mechanical Engineer,52169_METS Mechanical Engineer,Labor,0.0d,5.0,5.0,At Completion Units,2/27/2025,3/6/2025,0,0,0,0,0,0,0,0,0,0,1.03_Accelerator Systems (AS),1.03.06_AS Soft X-Ray Undulator (SXR) - SLAC,1.03.06.06_AS Soft X-Ray Undulator Procurement and Fabrication - SLAC,1.03.06.06.02_SXR Phase Shifter Manufacturing and Testing,AS_SXU_MANF_6079_Tune and Calibrate Phase Shifter 29,Mechanical,,SLAC,Labor
102929,1.03,1.03.06,1.03.06.06,1.03.06.06.02,1.03.06.06.02,SXR Phase Shifter Manufacturing and Testing,AS_SXU_MANF_6078,Tune and Calibrate Phase Shifter 28,5.0,6.0,6.0,6.0,02-20-25,02-27-25,"AS_SXU_MANF_6028: FS, AS_SXU_MANF_6077: FS","AS_SXU_MANF_6079: FS, AS_SXU_INST_2812: FS",SLAC,0%,52213.52213_EEDHW (Electronics & Engineering Div - HW Engr),52213_EEDHW (Electronics & Engineering Div - HW Engr),Labor,0.0d,5.0,5.0,At Completion Units,2/20/2025,2/27/2025,0,0,0,0,0,0,0,0,0,0,1.03_Accelerator Systems (AS),1.03.06_AS Soft X-Ray Undulator (SXR) - SLAC,1.03.06.06_AS Soft X-Ray Undulator Procurement and Fabrication - SLAC,1.03.06.06.02_SXR Phase Shifter Manufacturing and Testing,AS_SXU_MANF_6078_Tune and Calibrate Phase Shifter 28,Electrical,,SLAC,Labor
102930,1.03,1.03.06,1.03.06.06,1.03.06.06.02,1.03.06.06.02,SXR Phase Shifter Manufacturing and Testing,AS_SXU_MANF_6078,Tune and Calibrate Phase Shifter 28,5.0,40.0,40.0,40.0,02-20-25,02-27-25,"AS_SXU_MANF_6028: FS, AS_SXU_MANF_6077: FS","AS_SXU_MANF_6079: FS, AS_SXU_INST_2812: FS",SLAC,0%,52191.52191_METSMET Metrology,52191_METSMET Metrology,Labor,0.0d,5.0,5.0,At Completion Units,2/20/2025,2/27/2025,0,0,0,0,0,0,0,0,0,0,1.03_Accelerator Systems (AS),1.03.06_AS Soft X-Ray Undulator (SXR) - SLAC,1.03.06.06_AS Soft X-Ray Undulator Procurement and Fabrication - SLAC,1.03.06.06.02_SXR Phase Shifter Manufacturing and Testing,AS_SXU_MANF_6078_Tune and Calibrate Phase Shifter 28,Metrology,,SLAC,Labor
102931,1.03,1.03.06,1.03.06.06,1.03.06.06.02,1.03.06.06.02,SXR Phase Shifter Manufacturing and Testing,AS_SXU_MANF_6078,Tune and Calibrate Phase Shifter 28,5.0,6.0,6.0,6.0,02-20-25,02-27-25,"AS_SXU_MANF_6028: FS, AS_SXU_MANF_6077: FS","AS_SXU_MANF_6079: FS, AS_SXU_INST_2812: FS",SLAC,0%,52169.52169_METS Mechanical Engineer,52169_METS Mechanical Engineer,Labor,0.0d,5.0,5.0,At Completion Units,2/20/2025,2/27/2025,0,0,0,0,0,0,0,0,0,0,1.03_Accelerator Systems (AS),1.03.06_AS Soft X-Ray Undulator (SXR) - SLAC,1.03.06.06_AS Soft X-Ray Undulator Procurement and Fabrication - SLAC,1.03.06.06.02_SXR Phase Shifter Manufacturing and Testing,AS_SXU_MANF_6078_Tune and Calibrate Phase Shifter 28,Mechanical,,SLAC,Labor
102932,1.03,1.03.06,1.03.06.06,1.03.06.06.02,1.03.06.06.02,SXR Phase Shifter Manufacturing and Testing,AS_SXU_MANF_6077,Tune and Calibrate Phase Shifter 27,5.0,6.0,6.0,6.0,01-23-25,01-29-25,"AS_SXU_MANF_6027: FS, AS_SXU_MANF_6076: FS","AS_SXU_MANF_6078: FS, AS_SXU_INST_2712: FS",SLAC,0%,52213.52213_EEDHW (Electronics & Engineering Div - HW Engr),52213_EEDHW (Electronics & Engineering Div - HW Engr),Labor,0.0d,5.0,5.0,At Completion Units,1/23/2025,1/29/2025,0,0,0,0,0,0,0,0,0,0,1.03_Accelerator Systems (AS),1.03.06_AS Soft X-Ray Undulator (SXR) - SLAC,1.03.06.06_AS Soft X-Ray Undulator Procurement and Fabrication - SLAC,1.03.06.06.02_SXR Phase Shifter Manufacturing and Testing,AS_SXU_MANF_6077_Tune and Calibrate Phase Shifter 27,Electrical,,SLAC,Labor
102933,1.03,1.03.06,1.03.06.06,1.03.06.06.02,1.03.06.06.02,SXR Phase Shifter Manufacturing and Testing,AS_SXU_MANF_6077,Tune and Calibrate Phase Shifter 27,5.0,40.0,40.0,40.0,01-23-25,01-29-25,"AS_SXU_MANF_6027: FS, AS_SXU_MANF_6076: FS","AS_SXU_MANF_6078: FS, AS_SXU_INST_2712: FS",SLAC,0%,52191.52191_METSMET Metrology,52191_METSMET Metrology,Labor,0.0d,5.0,5.0,At Completion Units,1/23/2025,1/29/2025,0,0,0,0,0,0,0,0,0,0,1.03_Accelerator Systems (AS),1.03.06_AS Soft X-Ray Undulator (SXR) - SLAC,1.03.06.06_AS Soft X-Ray Undulator Procurement and Fabrication - SLAC,1.03.06.06.02_SXR Phase Shifter Manufacturing and Testing,AS_SXU_MANF_6077_Tune and Calibrate Phase Shifter 27,Metrology,,SLAC,Labor
102934,1.03,1.03.06,1.03.06.06,1.03.06.06.02,1.03.06.06.02,SXR Phase Shifter Manufacturing and Testing,AS_SXU_MANF_6077,Tune and Calibrate Phase Shifter 27,5.0,6.0,6.0,6.0,01-23-25,01-29-25,"AS_SXU_MANF_6027: FS, AS_SXU_MANF_6076: FS","AS_SXU_MANF_6078: FS, AS_SXU_INST_2712: FS",SLAC,0%,52169.52169_METS Mechanical Engineer,52169_METS Mechanical Engineer,Labor,0.0d,5.0,5.0,At Completion Units,1/23/2025,1/29/2025,0,0,0,0,0,0,0,0,0,0,1.03_Accelerator Systems (AS),1.03.06_AS Soft X-Ray Undulator (SXR) - SLAC,1.03.06.06_AS Soft X-Ray Undulator Procurement and Fabrication - SLAC,1.03.06.06.02_SXR Phase Shifter Manufacturing and Testing,AS_SXU_MANF_6077_Tune and Calibrate Phase Shifter 27,Mechanical,,SLAC,Labor
102935,1.03,1.03.06,1.03.06.06,1.03.06.06.02,1.03.06.06.02,SXR Phase Shifter Manufacturing and Testing,AS_SXU_MANF_6076,Tune and Calibrate Phase Shifter 26,5.0,6.0,6.0,6.0,01-15-25,01-22-25,"AS_SXU_MANF_6026: FS, AS_SXU_MANF_6075: FS","AS_SXU_MANF_6077: FS, AS_SXU_INST_2612: FS",SLAC,0%,52213.52213_EEDHW (Electronics & Engineering Div - HW Engr),52213_EEDHW (Electronics & Engineering Div - HW Engr),Labor,0.0d,5.0,5.0,At Completion Units,1/15/2025,1/22/2025,0,0,0,0,0,0,0,0,0,0,1.03_Accelerator Systems (AS),1.03.06_AS Soft X-Ray Undulator (SXR) - SLAC,1.03.06.06_AS Soft X-Ray Undulator Procurement and Fabrication - SLAC,1.03.06.06.02_SXR Phase Shifter Manufacturing and Testing,AS_SXU_MANF_6076_Tune and Calibrate Phase Shifter 26,Electrical,,SLAC,Labor
102936,1.03,1.03.06,1.03.06.06,1.03.06.06.02,1.03.06.06.02,SXR Phase Shifter Manufacturing and Testing,AS_SXU_MANF_6076,Tune and Calibrate Phase Shifter 26,5.0,40.0,40.0,40.0,01-15-25,01-22-25,"AS_SXU_MANF_6026: FS, AS_SXU_MANF_6075: FS","AS_SXU_MANF_6077: FS, AS_SXU_INST_2612: FS",SLAC,0%,52191.52191_METSMET Metrology,52191_METSMET Metrology,Labor,0.0d,5.0,5.0,At Completion Units,1/15/2025,1/22/2025,0,0,0,0,0,0,0,0,0,0,1.03_Accelerator Systems (AS),1.03.06_AS Soft X-Ray Undulator (SXR) - SLAC,1.03.06.06_AS Soft X-Ray Undulator Procurement and Fabrication - SLAC,1.03.06.06.02_SXR Phase Shifter Manufacturing and Testing,AS_SXU_MANF_6076_Tune and Calibrate Phase Shifter 26,Metrology,,SLAC,Labor
102937,1.03,1.03.06,1.03.06.06,1.03.06.06.02,1.03.06.06.02,SXR Phase Shifter Manufacturing and Testing,AS_SXU_MANF_6076,Tune and Calibrate Phase Shifter 26,5.0,6.0,6.0,6.0,01-15-25,01-22-25,"AS_SXU_MANF_6026: FS, AS_SXU_MANF_6075: FS","AS_SXU_MANF_6077: FS, AS_SXU_INST_2612: FS",SLAC,0%,52169.52169_METS Mechanical Engineer,52169_METS Mechanical Engineer,Labor,0.0d,5.0,5.0,At Completion Units,1/15/2025,1/22/2025,0,0,0,0,0,0,0,0,0,0,1.03_Accelerator Systems (AS),1.03.06_AS Soft X-Ray Undulator (SXR) - SLAC,1.03.06.06_AS Soft X-Ray Undulator Procurement and Fabrication - SLAC,1.03.06.06.02_SXR Phase Shifter Manufacturing and Testing,AS_SXU_MANF_6076_Tune and Calibrate Phase Shifter 26,Mechanical,,SLAC,Labor
102938,1.03,1.03.06,1.03.06.06,1.03.06.06.02,1.03.06.06.02,SXR Phase Shifter Manufacturing and Testing,AS_SXU_MANF_6075,Tune and Calibrate Phase Shifter 25,5.0,6.0,6.0,6.0,11-21-24,12-02-24,"AS_SXU_MANF_6025: FS, AS_SXU_MANF_6074: FS","AS_SXU_MANF_6076: FS, AS_SXU_INST_2512: FS",SLAC,0%,52213.52213_EEDHW (Electronics & Engineering Div - HW Engr),52213_EEDHW (Electronics & Engineering Div - HW Engr),Labor,0.0d,5.0,5.0,At Completion Units,11/21/2024,12/2/2024,0,0,0,0,0,0,0,0,0,0,1.03_Accelerator Systems (AS),1.03.06_AS Soft X-Ray Undulator (SXR) - SLAC,1.03.06.06_AS Soft X-Ray Undulator Procurement and Fabrication - SLAC,1.03.06.06.02_SXR Phase Shifter Manufacturing and Testing,AS_SXU_MANF_6075_Tune and Calibrate Phase Shifter 25,Electrical,,SLAC,Labor
102939,1.03,1.03.06,1.03.06.06,1.03.06.06.02,1.03.06.06.02,SXR Phase Shifter Manufacturing and Testing,AS_SXU_MANF_6075,Tune and Calibrate Phase Shifter 25,5.0,40.0,40.0,40.0,11-21-24,12-02-24,"AS_SXU_MANF_6025: FS, AS_SXU_MANF_6074: FS","AS_SXU_MANF_6076: FS, AS_SXU_INST_2512: FS",SLAC,0%,52191.52191_METSMET Metrology,52191_METSMET Metrology,Labor,0.0d,5.0,5.0,At Completion Units,11/21/2024,12/2/2024,0,0,0,0,0,0,0,0,0,0,1.03_Accelerator Systems (AS),1.03.06_AS Soft X-Ray Undulator (SXR) - SLAC,1.03.06.06_AS Soft X-Ray Undulator Procurement and Fabrication - SLAC,1.03.06.06.02_SXR Phase Shifter Manufacturing and Testing,AS_SXU_MANF_6075_Tune and Calibrate Phase Shifter 25,Metrology,,SLAC,Labor
102940,1.03,1.03.06,1.03.06.06,1.03.06.06.02,1.03.06.06.02,SXR Phase Shifter Manufacturing and Testing,AS_SXU_MANF_6075,Tune and Calibrate Phase Shifter 25,5.0,6.0,6.0,6.0,11-21-24,12-02-24,"AS_SXU_MANF_6025: FS, AS_SXU_MANF_6074: FS","AS_SXU_MANF_6076: FS, AS_SXU_INST_2512: FS",SLAC,0%,52169.52169_METS Mechanical Engineer,52169_METS Mechanical Engineer,Labor,0.0d,5.0,5.0,At Completion Units,11/21/2024,12/2/2024,0,0,0,0,0,0,0,0,0,0,1.03_Accelerator Systems (AS),1.03.06_AS Soft X-Ray Undulator (SXR) - SLAC,1.03.06.06_AS Soft X-Ray Undulator Procurement and Fabrication - SLAC,1.03.06.06.02_SXR Phase Shifter Manufacturing and Testing,AS_SXU_MANF_6075_Tune and Calibrate Phase Shifter 25,Mechanical,,SLAC,Labor
102941,1.03,1.03.06,1.03.06.06,1.03.06.06.02,1.03.06.06.02,SXR Phase Shifter Manufacturing and Testing,AS_SXU_MANF_6074,Tune and Calibrate Phase Shifter 24,5.0,6.0,6.0,6.0,11-14-24,11-21-24,"AS_SXU_MANF_6024: FS, AS_SXU_MANF_6073: FS","AS_SXU_MANF_6075: FS, AS_SXU_INST_2412: FS",SLAC,0%,52213.52213_EEDHW (Electronics & Engineering Div - HW Engr),52213_EEDHW (Electronics & Engineering Div - HW Engr),Labor,0.0d,5.0,5.0,At Completion Units,11/14/2024,11/21/2024,0,0,0,0,0,0,0,0,0,0,1.03_Accelerator Systems (AS),1.03.06_AS Soft X-Ray Undulator (SXR) - SLAC,1.03.06.06_AS Soft X-Ray Undulator Procurement and Fabrication - SLAC,1.03.06.06.02_SXR Phase Shifter Manufacturing and Testing,AS_SXU_MANF_6074_Tune and Calibrate Phase Shifter 24,Electrical,,SLAC,Labor
102942,1.03,1.03.06,1.03.06.06,1.03.06.06.02,1.03.06.06.02,SXR Phase Shifter Manufacturing and Testing,AS_SXU_MANF_6074,Tune and Calibrate Phase Shifter 24,5.0,40.0,40.0,40.0,11-14-24,11-21-24,"AS_SXU_MANF_6024: FS, AS_SXU_MANF_6073: FS","AS_SXU_MANF_6075: FS, AS_SXU_INST_2412: FS",SLAC,0%,52191.52191_METSMET Metrology,52191_METSMET Metrology,Labor,0.0d,5.0,5.0,At Completion Units,11/14/2024,11/21/2024,0,0,0,0,0,0,0,0,0,0,1.03_Accelerator Systems (AS),1.03.06_AS Soft X-Ray Undulator (SXR) - SLAC,1.03.06.06_AS Soft X-Ray Undulator Procurement and Fabrication - SLAC,1.03.06.06.02_SXR Phase Shifter Manufacturing and Testing,AS_SXU_MANF_6074_Tune and Calibrate Phase Shifter 24,Metrology,,SLAC,Labor
102943,1.03,1.03.06,1.03.06.06,1.03.06.06.02,1.03.06.06.02,SXR Phase Shifter Manufacturing and Testing,AS_SXU_MANF_6074,Tune and Calibrate Phase Shifter 24,5.0,6.0,6.0,6.0,11-14-24,11-21-24,"AS_SXU_MANF_6024: FS, AS_SXU_MANF_6073: FS","AS_SXU_MANF_6075: FS, AS_SXU_INST_2412: FS",SLAC,0%,52169.52169_METS Mechanical Engineer,52169_METS Mechanical Engineer,Labor,0.0d,5.0,5.0,At Completion Units,11/14/2024,11/21/2024,0,0,0,0,0,0,0,0,0,0,1.03_Accelerator Systems (AS),1.03.06_AS Soft X-Ray Undulator (SXR) - SLAC,1.03.06.06_AS Soft X-Ray Undulator Procurement and Fabrication - SLAC,1.03.06.06.02_SXR Phase Shifter Manufacturing and Testing,AS_SXU_MANF_6074_Tune and Calibrate Phase Shifter 24,Mechanical,,SLAC,Labor
102944,1.03,1.03.06,1.03.06.06,1.03.06.06.02,1.03.06.06.02,SXR Phase Shifter Manufacturing and Testing,AS_SXU_MANF_6073,Tune and Calibrate Phase Shifter 23,5.0,6.0,6.0,6.0,10-11-24,10-17-24,"AS_SXU_MANF_6023: FS, AS_SXU_MANF_6072: FS","AS_SXU_MANF_6074: FS, AS_SXU_INST_2312: FS",SLAC,0%,52213.52213_EEDHW (Electronics & Engineering Div - HW Engr),52213_EEDHW (Electronics & Engineering Div - HW Engr),Labor,0.0d,5.0,5.0,At Completion Units,9/12/2024,9/19/2024,0,0,0,0,0,0,0,0,0,0,1.03_Accelerator Systems (AS),1.03.06_AS Soft X-Ray Undulator (SXR) - SLAC,1.03.06.06_AS Soft X-Ray Undulator Procurement and Fabrication - SLAC,1.03.06.06.02_SXR Phase Shifter Manufacturing and Testing,AS_SXU_MANF_6073_Tune and Calibrate Phase Shifter 23,Electrical,,SLAC,Labor
102945,1.03,1.03.06,1.03.06.06,1.03.06.06.02,1.03.06.06.02,SXR Phase Shifter Manufacturing and Testing,AS_SXU_MANF_6073,Tune and Calibrate Phase Shifter 23,5.0,40.0,40.0,40.0,10-11-24,10-17-24,"AS_SXU_MANF_6023: FS, AS_SXU_MANF_6072: FS","AS_SXU_MANF_6074: FS, AS_SXU_INST_2312: FS",SLAC,0%,52191.52191_METSMET Metrology,52191_METSMET Metrology,Labor,0.0d,5.0,5.0,At Completion Units,9/12/2024,9/19/2024,0,0,0,0,0,0,0,0,0,0,1.03_Accelerator Systems (AS),1.03.06_AS Soft X-Ray Undulator (SXR) - SLAC,1.03.06.06_AS Soft X-Ray Undulator Procurement and Fabrication - SLAC,1.03.06.06.02_SXR Phase Shifter Manufacturing and Testing,AS_SXU_MANF_6073_Tune and Calibrate Phase Shifter 23,Metrology,,SLAC,Labor
102946,1.03,1.03.06,1.03.06.06,1.03.06.06.02,1.03.06.06.02,SXR Phase Shifter Manufacturing and Testing,AS_SXU_MANF_6073,Tune and Calibrate Phase Shifter 23,5.0,6.0,6.0,6.0,10-11-24,10-17-24,"AS_SXU_MANF_6023: FS, AS_SXU_MANF_6072: FS","AS_SXU_MANF_6074: FS, AS_SXU_INST_2312: FS",SLAC,0%,52169.52169_METS Mechanical Engineer,52169_METS Mechanical Engineer,Labor,0.0d,5.0,5.0,At Completion Units,9/12/2024,9/19/2024,0,0,0,0,0,0,0,0,0,0,1.03_Accelerator Systems (AS),1.03.06_AS Soft X-Ray Undulator (SXR) - SLAC,1.03.06.06_AS Soft X-Ray Undulator Procurement and Fabrication - SLAC,1.03.06.06.02_SXR Phase Shifter Manufacturing and Testing,AS_SXU_MANF_6073_Tune and Calibrate Phase Shifter 23,Mechanical,,SLAC,Labor
102947,1.03,1.03.06,1.03.06.06,1.03.06.06.02,1.03.06.06.02,SXR Phase Shifter Manufacturing and Testing,AS_SXU_MANF_6072,Tune and Calibrate Phase Shifter 22,5.0,6.0,6.0,6.0,10-04-24,10-10-24,"AS_SXU_MANF_6022: FS, AS_SXU_MANF_6071: FS","AS_SXU_MANF_6073: FS, AS_SXU_INST_2212: FS",SLAC,0%,52213.52213_EEDHW (Electronics & Engineering Div - HW Engr),52213_EEDHW (Electronics & Engineering Div - HW Engr),Labor,0.0d,5.0,5.0,At Completion Units,9/5/2024,9/12/2024,0,0,0,0,0,0,0,0,0,0,1.03_Accelerator Systems (AS),1.03.06_AS Soft X-Ray Undulator (SXR) - SLAC,1.03.06.06_AS Soft X-Ray Undulator Procurement and Fabrication - SLAC,1.03.06.06.02_SXR Phase Shifter Manufacturing and Testing,AS_SXU_MANF_6072_Tune and Calibrate Phase Shifter 22,Electrical,,SLAC,Labor
102948,1.03,1.03.06,1.03.06.06,1.03.06.06.02,1.03.06.06.02,SXR Phase Shifter Manufacturing and Testing,AS_SXU_MANF_6072,Tune and Calibrate Phase Shifter 22,5.0,40.0,40.0,40.0,10-04-24,10-10-24,"AS_SXU_MANF_6022: FS, AS_SXU_MANF_6071: FS","AS_SXU_MANF_6073: FS, AS_SXU_INST_2212: FS",SLAC,0%,52191.52191_METSMET Metrology,52191_METSMET Metrology,Labor,0.0d,5.0,5.0,At Completion Units,9/5/2024,9/12/2024,0,0,0,0,0,0,0,0,0,0,1.03_Accelerator Systems (AS),1.03.06_AS Soft X-Ray Undulator (SXR) - SLAC,1.03.06.06_AS Soft X-Ray Undulator Procurement and Fabrication - SLAC,1.03.06.06.02_SXR Phase Shifter Manufacturing and Testing,AS_SXU_MANF_6072_Tune and Calibrate Phase Shifter 22,Metrology,,SLAC,Labor
102949,1.03,1.03.06,1.03.06.06,1.03.06.06.02,1.03.06.06.02,SXR Phase Shifter Manufacturing and Testing,AS_SXU_MANF_6072,Tune and Calibrate Phase Shifter 22,5.0,6.0,6.0,6.0,10-04-24,10-10-24,"AS_SXU_MANF_6022: FS, AS_SXU_MANF_6071: FS","AS_SXU_MANF_6073: FS, AS_SXU_INST_2212: FS",SLAC,0%,52169.52169_METS Mechanical Engineer,52169_METS Mechanical Engineer,Labor,0.0d,5.0,5.0,At Completion Units,9/5/2024,9/12/2024,0,0,0,0,0,0,0,0,0,0,1.03_Accelerator Systems (AS),1.03.06_AS Soft X-Ray Undulator (SXR) - SLAC,1.03.06.06_AS Soft X-Ray Undulator Procurement and Fabrication - SLAC,1.03.06.06.02_SXR Phase Shifter Manufacturing and Testing,AS_SXU_MANF_6072_Tune and Calibrate Phase Shifter 22,Mechanical,,SLAC,Labor
102950,1.03,1.03.06,1.03.06.06,1.03.06.06.02,1.03.06.06.02,SXR Phase Shifter Manufacturing and Testing,AS_SXU_MANF_6071,Tune and Calibrate Phase Shifter 21,5.0,6.0,6.0,6.0,09-27-24,10-03-24,"AS_SXU_MANF_6021: FS, AS_SXU_MANF_6070: FS","AS_SXU_MANF_6072: FS, AS_SXU_INST_2112: FS",SLAC,0%,52213.52213_EEDHW (Electronics & Engineering Div - HW Engr),52213_EEDHW (Electronics & Engineering Div - HW Engr),Labor,0.0d,5.0,5.0,At Completion Units,7/9/2024,7/16/2024,0,0,0,0,0,0,0,0,0,0,1.03_Accelerator Systems (AS),1.03.06_AS Soft X-Ray Undulator (SXR) - SLAC,1.03.06.06_AS Soft X-Ray Undulator Procurement and Fabrication - SLAC,1.03.06.06.02_SXR Phase Shifter Manufacturing and Testing,AS_SXU_MANF_6071_Tune and Calibrate Phase Shifter 21,Electrical,,SLAC,Labor
102951,1.03,1.03.06,1.03.06.06,1.03.06.06.02,1.03.06.06.02,SXR Phase Shifter Manufacturing and Testing,AS_SXU_MANF_6071,Tune and Calibrate Phase Shifter 21,5.0,40.0,40.0,40.0,09-27-24,10-03-24,"AS_SXU_MANF_6021: FS, AS_SXU_MANF_6070: FS","AS_SXU_MANF_6072: FS, AS_SXU_INST_2112: FS",SLAC,0%,52191.52191_METSMET Metrology,52191_METSMET Metrology,Labor,0.0d,5.0,5.0,At Completion Units,7/9/2024,7/16/2024,0,0,0,0,0,0,0,0,0,0,1.03_Accelerator Systems (AS),1.03.06_AS Soft X-Ray Undulator (SXR) - SLAC,1.03.06.06_AS Soft X-Ray Undulator Procurement and Fabrication - SLAC,1.03.06.06.02_SXR Phase Shifter Manufacturing and Testing,AS_SXU_MANF_6071_Tune and Calibrate Phase Shifter 21,Metrology,,SLAC,Labor
102952,1.03,1.03.06,1.03.06.06,1.03.06.06.02,1.03.06.06.02,SXR Phase Shifter Manufacturing and Testing,AS_SXU_MANF_6071,Tune and Calibrate Phase Shifter 21,5.0,6.0,6.0,6.0,09-27-24,10-03-24,"AS_SXU_MANF_6021: FS, AS_SXU_MANF_6070: FS","AS_SXU_MANF_6072: FS, AS_SXU_INST_2112: FS",SLAC,0%,52169.52169_METS Mechanical Engineer,52169_METS Mechanical Engineer,Labor,0.0d,5.0,5.0,At Completion Units,7/9/2024,7/16/2024,0,0,0,0,0,0,0,0,0,0,1.03_Accelerator Systems (AS),1.03.06_AS Soft X-Ray Undulator (SXR) - SLAC,1.03.06.06_AS Soft X-Ray Undulator Procurement and Fabrication - SLAC,1.03.06.06.02_SXR Phase Shifter Manufacturing and Testing,AS_SXU_MANF_6071_Tune and Calibrate Phase Shifter 21,Mechanical,,SLAC,Labor
102953,1.03,1.03.06,1.03.06.06,1.03.06.06.02,1.03.06.06.02,SXR Phase Shifter Manufacturing and Testing,AS_SXU_MANF_6070,Tune and Calibrate Phase Shifter 20,5.0,6.0,6.0,6.0,09-20-24,09-26-24,"AS_SXU_MANF_6020: FS, AS_SXU_MANF_6069: FS","AS_SXU_MANF_6071: FS, AS_SXU_INST_2012: FS",SLAC,0%,52213.52213_EEDHW (Electronics & Engineering Div - HW Engr),52213_EEDHW (Electronics & Engineering Div - HW Engr),Labor,0.0d,5.0,5.0,At Completion Units,7/1/2024,7/9/2024,0,0,0,0,0,0,0,0,0,0,1.03_Accelerator Systems (AS),1.03.06_AS Soft X-Ray Undulator (SXR) - SLAC,1.03.06.06_AS Soft X-Ray Undulator Procurement and Fabrication - SLAC,1.03.06.06.02_SXR Phase Shifter Manufacturing and Testing,AS_SXU_MANF_6070_Tune and Calibrate Phase Shifter 20,Electrical,,SLAC,Labor
102954,1.03,1.03.06,1.03.06.06,1.03.06.06.02,1.03.06.06.02,SXR Phase Shifter Manufacturing and Testing,AS_SXU_MANF_6070,Tune and Calibrate Phase Shifter 20,5.0,40.0,40.0,40.0,09-20-24,09-26-24,"AS_SXU_MANF_6020: FS, AS_SXU_MANF_6069: FS","AS_SXU_MANF_6071: FS, AS_SXU_INST_2012: FS",SLAC,0%,52191.52191_METSMET Metrology,52191_METSMET Metrology,Labor,0.0d,5.0,5.0,At Completion Units,7/1/2024,7/9/2024,0,0,0,0,0,0,0,0,0,0,1.03_Accelerator Systems (AS),1.03.06_AS Soft X-Ray Undulator (SXR) - SLAC,1.03.06.06_AS Soft X-Ray Undulator Procurement and Fabrication - SLAC,1.03.06.06.02_SXR Phase Shifter Manufacturing and Testing,AS_SXU_MANF_6070_Tune and Calibrate Phase Shifter 20,Metrology,,SLAC,Labor
102955,1.03,1.03.06,1.03.06.06,1.03.06.06.02,1.03.06.06.02,SXR Phase Shifter Manufacturing and Testing,AS_SXU_MANF_6070,Tune and Calibrate Phase Shifter 20,5.0,6.0,6.0,6.0,09-20-24,09-26-24,"AS_SXU_MANF_6020: FS, AS_SXU_MANF_6069: FS","AS_SXU_MANF_6071: FS, AS_SXU_INST_2012: FS",SLAC,0%,52169.52169_METS Mechanical Engineer,52169_METS Mechanical Engineer,Labor,0.0d,5.0,5.0,At Completion Units,7/1/2024,7/9/2024,0,0,0,0,0,0,0,0,0,0,1.03_Accelerator Systems (AS),1.03.06_AS Soft X-Ray Undulator (SXR) - SLAC,1.03.06.06_AS Soft X-Ray Undulator Procurement and Fabrication - SLAC,1.03.06.06.02_SXR Phase Shifter Manufacturing and Testing,AS_SXU_MANF_6070_Tune and Calibrate Phase Shifter 20,Mechanical,,SLAC,Labor
102956,1.03,1.03.06,1.03.06.06,1.03.06.06.02,1.03.06.06.02,SXR Phase Shifter Manufacturing and Testing,AS_SXU_MANF_6069,Tune and Calibrate Phase Shifter 19,5.0,6.0,6.0,6.0,09-13-24,09-19-24,"AS_SXU_MANF_6019: FS, AS_SXU_MANF_6068: FS","AS_SXU_MANF_6070: FS, AS_SXU_INST_1912: FS",SLAC,0%,52213.52213_EEDHW (Electronics & Engineering Div - HW Engr),52213_EEDHW (Electronics & Engineering Div - HW Engr),Labor,0.0d,5.0,5.0,At Completion Units,4/26/2024,5/3/2024,0,0,0,0,0,0,0,0,0,0,1.03_Accelerator Systems (AS),1.03.06_AS Soft X-Ray Undulator (SXR) - SLAC,1.03.06.06_AS Soft X-Ray Undulator Procurement and Fabrication - SLAC,1.03.06.06.02_SXR Phase Shifter Manufacturing and Testing,AS_SXU_MANF_6069_Tune and Calibrate Phase Shifter 19,Electrical,,SLAC,Labor
102957,1.03,1.03.06,1.03.06.06,1.03.06.06.02,1.03.06.06.02,SXR Phase Shifter Manufacturing and Testing,AS_SXU_MANF_6069,Tune and Calibrate Phase Shifter 19,5.0,40.0,40.0,40.0,09-13-24,09-19-24,"AS_SXU_MANF_6019: FS, AS_SXU_MANF_6068: FS","AS_SXU_MANF_6070: FS, AS_SXU_INST_1912: FS",SLAC,0%,52191.52191_METSMET Metrology,52191_METSMET Metrology,Labor,0.0d,5.0,5.0,At Completion Units,4/26/2024,5/3/2024,0,0,0,0,0,0,0,0,0,0,1.03_Accelerator Systems (AS),1.03.06_AS Soft X-Ray Undulator (SXR) - SLAC,1.03.06.06_AS Soft X-Ray Undulator Procurement and Fabrication - SLAC,1.03.06.06.02_SXR Phase Shifter Manufacturing and Testing,AS_SXU_MANF_6069_Tune and Calibrate Phase Shifter 19,Metrology,,SLAC,Labor
102958,1.03,1.03.06,1.03.06.06,1.03.06.06.02,1.03.06.06.02,SXR Phase Shifter Manufacturing and Testing,AS_SXU_MANF_6069,Tune and Calibrate Phase Shifter 19,5.0,6.0,6.0,6.0,09-13-24,09-19-24,"AS_SXU_MANF_6019: FS, AS_SXU_MANF_6068: FS","AS_SXU_MANF_6070: FS, AS_SXU_INST_1912: FS",SLAC,0%,52169.52169_METS Mechanical Engineer,52169_METS Mechanical Engineer,Labor,0.0d,5.0,5.0,At Completion Units,4/26/2024,5/3/2024,0,0,0,0,0,0,0,0,0,0,1.03_Accelerator Systems (AS),1.03.06_AS Soft X-Ray Undulator (SXR) - SLAC,1.03.06.06_AS Soft X-Ray Undulator Procurement and Fabrication - SLAC,1.03.06.06.02_SXR Phase Shifter Manufacturing and Testing,AS_SXU_MANF_6069_Tune and Calibrate Phase Shifter 19,Mechanical,,SLAC,Labor
102959,1.03,1.03.06,1.03.06.06,1.03.06.06.02,1.03.06.06.02,SXR Phase Shifter Manufacturing and Testing,AS_SXU_MANF_6068,Tune and Calibrate Phase Shifter 18,5.0,6.0,6.0,6.0,09-06-24,09-12-24,"AS_SXU_MANF_6018: FS, AS_SXU_MANF_6067: FS","AS_SXU_MANF_6069: FS, AS_SXU_INST_1812: FS",SLAC,0%,52213.52213_EEDHW (Electronics & Engineering Div - HW Engr),52213_EEDHW (Electronics & Engineering Div - HW Engr),Labor,0.0d,5.0,5.0,At Completion Units,1/19/2024,1/25/2024,0,0,0,0,0,0,0,0,0,0,1.03_Accelerator Systems (AS),1.03.06_AS Soft X-Ray Undulator (SXR) - SLAC,1.03.06.06_AS Soft X-Ray Undulator Procurement and Fabrication - SLAC,1.03.06.06.02_SXR Phase Shifter Manufacturing and Testing,AS_SXU_MANF_6068_Tune and Calibrate Phase Shifter 18,Electrical,,SLAC,Labor
102960,1.03,1.03.06,1.03.06.06,1.03.06.06.02,1.03.06.06.02,SXR Phase Shifter Manufacturing and Testing,AS_SXU_MANF_6068,Tune and Calibrate Phase Shifter 18,5.0,40.0,40.0,40.0,09-06-24,09-12-24,"AS_SXU_MANF_6018: FS, AS_SXU_MANF_6067: FS","AS_SXU_MANF_6069: FS, AS_SXU_INST_1812: FS",SLAC,0%,52191.52191_METSMET Metrology,52191_METSMET Metrology,Labor,0.0d,5.0,5.0,At Completion Units,1/19/2024,1/25/2024,0,0,0,0,0,0,0,0,0,0,1.03_Accelerator Systems (AS),1.03.06_AS Soft X-Ray Undulator (SXR) - SLAC,1.03.06.06_AS Soft X-Ray Undulator Procurement and Fabrication - SLAC,1.03.06.06.02_SXR Phase Shifter Manufacturing and Testing,AS_SXU_MANF_6068_Tune and Calibrate Phase Shifter 18,Metrology,,SLAC,Labor
102961,1.03,1.03.06,1.03.06.06,1.03.06.06.02,1.03.06.06.02,SXR Phase Shifter Manufacturing and Testing,AS_SXU_MANF_6068,Tune and Calibrate Phase Shifter 18,5.0,6.0,6.0,6.0,09-06-24,09-12-24,"AS_SXU_MANF_6018: FS, AS_SXU_MANF_6067: FS","AS_SXU_MANF_6069: FS, AS_SXU_INST_1812: FS",SLAC,0%,52169.52169_METS Mechanical Engineer,52169_METS Mechanical Engineer,Labor,0.0d,5.0,5.0,At Completion Units,1/19/2024,1/25/2024,0,0,0,0,0,0,0,0,0,0,1.03_Accelerator Systems (AS),1.03.06_AS Soft X-Ray Undulator (SXR) - SLAC,1.03.06.06_AS Soft X-Ray Undulator Procurement and Fabrication - SLAC,1.03.06.06.02_SXR Phase Shifter Manufacturing and Testing,AS_SXU_MANF_6068_Tune and Calibrate Phase Shifter 18,Mechanical,,SLAC,Labor
102962,1.03,1.03.06,1.03.06.06,1.03.06.06.02,1.03.06.06.02,SXR Phase Shifter Manufacturing and Testing,AS_SXU_MANF_6067,Tune and Calibrate Phase Shifter 17,5.0,6.0,6.0,6.0,08-29-24,09-05-24,"AS_SXU_MANF_6017: FS, AS_SXU_MANF_6066: FS","AS_SXU_MANF_6068: FS, AS_SXU_INST_1712: FS",SLAC,0%,52213.52213_EEDHW (Electronics & Engineering Div - HW Engr),52213_EEDHW (Electronics & Engineering Div - HW Engr),Labor,0.0d,5.0,5.0,At Completion Units,1/11/2024,1/18/2024,0,0,0,0,0,0,0,0,0,0,1.03_Accelerator Systems (AS),1.03.06_AS Soft X-Ray Undulator (SXR) - SLAC,1.03.06.06_AS Soft X-Ray Undulator Procurement and Fabrication - SLAC,1.03.06.06.02_SXR Phase Shifter Manufacturing and Testing,AS_SXU_MANF_6067_Tune and Calibrate Phase Shifter 17,Electrical,,SLAC,Labor
102963,1.03,1.03.06,1.03.06.06,1.03.06.06.02,1.03.06.06.02,SXR Phase Shifter Manufacturing and Testing,AS_SXU_MANF_6067,Tune and Calibrate Phase Shifter 17,5.0,40.0,40.0,40.0,08-29-24,09-05-24,"AS_SXU_MANF_6017: FS, AS_SXU_MANF_6066: FS","AS_SXU_MANF_6068: FS, AS_SXU_INST_1712: FS",SLAC,0%,52191.52191_METSMET Metrology,52191_METSMET Metrology,Labor,0.0d,5.0,5.0,At Completion Units,1/11/2024,1/18/2024,0,0,0,0,0,0,0,0,0,0,1.03_Accelerator Systems (AS),1.03.06_AS Soft X-Ray Undulator (SXR) - SLAC,1.03.06.06_AS Soft X-Ray Undulator Procurement and Fabrication - SLAC,1.03.06.06.02_SXR Phase Shifter Manufacturing and Testing,AS_SXU_MANF_6067_Tune and Calibrate Phase Shifter 17,Metrology,,SLAC,Labor
102964,1.03,1.03.06,1.03.06.06,1.03.06.06.02,1.03.06.06.02,SXR Phase Shifter Manufacturing and Testing,AS_SXU_MANF_6067,Tune and Calibrate Phase Shifter 17,5.0,6.0,6.0,6.0,08-29-24,09-05-24,"AS_SXU_MANF_6017: FS, AS_SXU_MANF_6066: FS","AS_SXU_MANF_6068: FS, AS_SXU_INST_1712: FS",SLAC,0%,52169.52169_METS Mechanical Engineer,52169_METS Mechanical Engineer,Labor,0.0d,5.0,5.0,At Completion Units,1/11/2024,1/18/2024,0,0,0,0,0,0,0,0,0,0,1.03_Accelerator Systems (AS),1.03.06_AS Soft X-Ray Undulator (SXR) - SLAC,1.03.06.06_AS Soft X-Ray Undulator Procurement and Fabrication - SLAC,1.03.06.06.02_SXR Phase Shifter Manufacturing and Testing,AS_SXU_MANF_6067_Tune and Calibrate Phase Shifter 17,Mechanical,,SLAC,Labor
102965,1.03,1.03.06,1.03.06.06,1.03.06.06.02,1.03.06.06.02,SXR Phase Shifter Manufacturing and Testing,AS_SXU_MANF_6066,Tune and Calibrate Phase Shifter 16,5.0,6.0,6.0,6.0,08-22-24,08-28-24,"AS_SXU_MANF_6016: FS, AS_SXU_MANF_6065: FS","AS_SXU_MANF_6067: FS, AS_SXU_INST_1612: FS",SLAC,0%,52213.52213_EEDHW (Electronics & Engineering Div - HW Engr),52213_EEDHW (Electronics & Engineering Div - HW Engr),Labor,0.0d,5.0,5.0,At Completion Units,12/11/2023,1/2/2024,0,0,0,0,0,0,0,0,0,0,1.03_Accelerator Systems (AS),1.03.06_AS Soft X-Ray Undulator (SXR) - SLAC,1.03.06.06_AS Soft X-Ray Undulator Procurement and Fabrication - SLAC,1.03.06.06.02_SXR Phase Shifter Manufacturing and Testing,AS_SXU_MANF_6066_Tune and Calibrate Phase Shifter 16,Electrical,,SLAC,Labor
102966,1.03,1.03.06,1.03.06.06,1.03.06.06.02,1.03.06.06.02,SXR Phase Shifter Manufacturing and Testing,AS_SXU_MANF_6066,Tune and Calibrate Phase Shifter 16,5.0,40.0,40.0,40.0,08-22-24,08-28-24,"AS_SXU_MANF_6016: FS, AS_SXU_MANF_6065: FS","AS_SXU_MANF_6067: FS, AS_SXU_INST_1612: FS",SLAC,0%,52191.52191_METSMET Metrology,52191_METSMET Metrology,Labor,0.0d,5.0,5.0,At Completion Units,12/11/2023,1/2/2024,0,0,0,0,0,0,0,0,0,0,1.03_Accelerator Systems (AS),1.03.06_AS Soft X-Ray Undulator (SXR) - SLAC,1.03.06.06_AS Soft X-Ray Undulator Procurement and Fabrication - SLAC,1.03.06.06.02_SXR Phase Shifter Manufacturing and Testing,AS_SXU_MANF_6066_Tune and Calibrate Phase Shifter 16,Metrology,,SLAC,Labor
102967,1.03,1.03.06,1.03.06.06,1.03.06.06.02,1.03.06.06.02,SXR Phase Shifter Manufacturing and Testing,AS_SXU_MANF_6066,Tune and Calibrate Phase Shifter 16,5.0,6.0,6.0,6.0,08-22-24,08-28-24,"AS_SXU_MANF_6016: FS, AS_SXU_MANF_6065: FS","AS_SXU_MANF_6067: FS, AS_SXU_INST_1612: FS",SLAC,0%,52169.52169_METS Mechanical Engineer,52169_METS Mechanical Engineer,Labor,0.0d,5.0,5.0,At Completion Units,12/11/2023,1/2/2024,0,0,0,0,0,0,0,0,0,0,1.03_Accelerator Systems (AS),1.03.06_AS Soft X-Ray Undulator (SXR) - SLAC,1.03.06.06_AS Soft X-Ray Undulator Procurement and Fabrication - SLAC,1.03.06.06.02_SXR Phase Shifter Manufacturing and Testing,AS_SXU_MANF_6066_Tune and Calibrate Phase Shifter 16,Mechanical,,SLAC,Labor
102968,1.03,1.03.06,1.03.06.06,1.03.06.06.02,1.03.06.06.02,SXR Phase Shifter Manufacturing and Testing,AS_SXU_MANF_6065,Tune and Calibrate Phase Shifter 15,5.0,6.0,6.0,6.0,08-15-24,08-21-24,"AS_SXU_MANF_6015: FS, AS_SXU_MANF_6064: FS","AS_SXU_MANF_6066: FS, AS_SXU_INST_1512: FS",SLAC,0%,52213.52213_EEDHW (Electronics & Engineering Div - HW Engr),52213_EEDHW (Electronics & Engineering Div - HW Engr),Labor,0.0d,5.0,5.0,At Completion Units,12/4/2023,12/11/2023,0,0,0,0,0,0,0,0,0,0,1.03_Accelerator Systems (AS),1.03.06_AS Soft X-Ray Undulator (SXR) - SLAC,1.03.06.06_AS Soft X-Ray Undulator Procurement and Fabrication - SLAC,1.03.06.06.02_SXR Phase Shifter Manufacturing and Testing,AS_SXU_MANF_6065_Tune and Calibrate Phase Shifter 15,Electrical,,SLAC,Labor
102969,1.03,1.03.06,1.03.06.06,1.03.06.06.02,1.03.06.06.02,SXR Phase Shifter Manufacturing and Testing,AS_SXU_MANF_6065,Tune and Calibrate Phase Shifter 15,5.0,40.0,40.0,40.0,08-15-24,08-21-24,"AS_SXU_MANF_6015: FS, AS_SXU_MANF_6064: FS","AS_SXU_MANF_6066: FS, AS_SXU_INST_1512: FS",SLAC,0%,52191.52191_METSMET Metrology,52191_METSMET Metrology,Labor,0.0d,5.0,5.0,At Completion Units,12/4/2023,12/11/2023,0,0,0,0,0,0,0,0,0,0,1.03_Accelerator Systems (AS),1.03.06_AS Soft X-Ray Undulator (SXR) - SLAC,1.03.06.06_AS Soft X-Ray Undulator Procurement and Fabrication - SLAC,1.03.06.06.02_SXR Phase Shifter Manufacturing and Testing,AS_SXU_MANF_6065_Tune and Calibrate Phase Shifter 15,Metrology,,SLAC,Labor
102970,1.03,1.03.06,1.03.06.06,1.03.06.06.02,1.03.06.06.02,SXR Phase Shifter Manufacturing and Testing,AS_SXU_MANF_6065,Tune and Calibrate Phase Shifter 15,5.0,6.0,6.0,6.0,08-15-24,08-21-24,"AS_SXU_MANF_6015: FS, AS_SXU_MANF_6064: FS","AS_SXU_MANF_6066: FS, AS_SXU_INST_1512: FS",SLAC,0%,52169.52169_METS Mechanical Engineer,52169_METS Mechanical Engineer,Labor,0.0d,5.0,5.0,At Completion Units,12/4/2023,12/11/2023,0,0,0,0,0,0,0,0,0,0,1.03_Accelerator Systems (AS),1.03.06_AS Soft X-Ray Undulator (SXR) - SLAC,1.03.06.06_AS Soft X-Ray Undulator Procurement and Fabrication - SLAC,1.03.06.06.02_SXR Phase Shifter Manufacturing and Testing,AS_SXU_MANF_6065_Tune and Calibrate Phase Shifter 15,Mechanical,,SLAC,Labor
102971,1.03,1.03.06,1.03.06.06,1.03.06.06.02,1.03.06.06.02,SXR Phase Shifter Manufacturing and Testing,AS_SXU_MANF_6064,Tune and Calibrate Phase Shifter 14,5.0,6.0,6.0,6.0,08-08-24,08-14-24,"AS_SXU_MANF_6014: FS, AS_SXU_MANF_6063: FS","AS_SXU_MANF_6065: FS, AS_SXU_INST_1412: FS",SLAC,0%,52213.52213_EEDHW (Electronics & Engineering Div - HW Engr),52213_EEDHW (Electronics & Engineering Div - HW Engr),Labor,0.0d,5.0,5.0,At Completion Units,11/15/2023,11/21/2023,0,0,0,0,0,0,0,0,0,0,1.03_Accelerator Systems (AS),1.03.06_AS Soft X-Ray Undulator (SXR) - SLAC,1.03.06.06_AS Soft X-Ray Undulator Procurement and Fabrication - SLAC,1.03.06.06.02_SXR Phase Shifter Manufacturing and Testing,AS_SXU_MANF_6064_Tune and Calibrate Phase Shifter 14,Electrical,,SLAC,Labor
102972,1.03,1.03.06,1.03.06.06,1.03.06.06.02,1.03.06.06.02,SXR Phase Shifter Manufacturing and Testing,AS_SXU_MANF_6064,Tune and Calibrate Phase Shifter 14,5.0,40.0,40.0,40.0,08-08-24,08-14-24,"AS_SXU_MANF_6014: FS, AS_SXU_MANF_6063: FS","AS_SXU_MANF_6065: FS, AS_SXU_INST_1412: FS",SLAC,0%,52191.52191_METSMET Metrology,52191_METSMET Metrology,Labor,0.0d,5.0,5.0,At Completion Units,11/15/2023,11/21/2023,0,0,0,0,0,0,0,0,0,0,1.03_Accelerator Systems (AS),1.03.06_AS Soft X-Ray Undulator (SXR) - SLAC,1.03.06.06_AS Soft X-Ray Undulator Procurement and Fabrication - SLAC,1.03.06.06.02_SXR Phase Shifter Manufacturing and Testing,AS_SXU_MANF_6064_Tune and Calibrate Phase Shifter 14,Metrology,,SLAC,Labor
102973,1.03,1.03.06,1.03.06.06,1.03.06.06.02,1.03.06.06.02,SXR Phase Shifter Manufacturing and Testing,AS_SXU_MANF_6064,Tune and Calibrate Phase Shifter 14,5.0,6.0,6.0,6.0,08-08-24,08-14-24,"AS_SXU_MANF_6014: FS, AS_SXU_MANF_6063: FS","AS_SXU_MANF_6065: FS, AS_SXU_INST_1412: FS",SLAC,0%,52169.52169_METS Mechanical Engineer,52169_METS Mechanical Engineer,Labor,0.0d,5.0,5.0,At Completion Units,11/15/2023,11/21/2023,0,0,0,0,0,0,0,0,0,0,1.03_Accelerator Systems (AS),1.03.06_AS Soft X-Ray Undulator (SXR) - SLAC,1.03.06.06_AS Soft X-Ray Undulator Procurement and Fabrication - SLAC,1.03.06.06.02_SXR Phase Shifter Manufacturing and Testing,AS_SXU_MANF_6064_Tune and Calibrate Phase Shifter 14,Mechanical,,SLAC,Labor
102974,1.03,1.03.06,1.03.06.06,1.03.06.06.02,1.03.06.06.02,SXR Phase Shifter Manufacturing and Testing,AS_SXU_MANF_6063,Tune and Calibrate Phase Shifter 13,5.0,6.0,6.0,6.0,08-01-24,08-07-24,"AS_SXU_MANF_6013: FS, AS_SXU_MANF_6062: FS","AS_SXU_MANF_6064: FS, AS_SXU_INST_1312: FS",SLAC,0%,52213.52213_EEDHW (Electronics & Engineering Div - HW Engr),52213_EEDHW (Electronics & Engineering Div - HW Engr),Labor,0.0d,5.0,5.0,At Completion Units,11/8/2023,11/14/2023,0,0,0,0,0,0,0,0,0,0,1.03_Accelerator Systems (AS),1.03.06_AS Soft X-Ray Undulator (SXR) - SLAC,1.03.06.06_AS Soft X-Ray Undulator Procurement and Fabrication - SLAC,1.03.06.06.02_SXR Phase Shifter Manufacturing and Testing,AS_SXU_MANF_6063_Tune and Calibrate Phase Shifter 13,Electrical,,SLAC,Labor
102975,1.03,1.03.06,1.03.06.06,1.03.06.06.02,1.03.06.06.02,SXR Phase Shifter Manufacturing and Testing,AS_SXU_MANF_6063,Tune and Calibrate Phase Shifter 13,5.0,40.0,40.0,40.0,08-01-24,08-07-24,"AS_SXU_MANF_6013: FS, AS_SXU_MANF_6062: FS","AS_SXU_MANF_6064: FS, AS_SXU_INST_1312: FS",SLAC,0%,52191.52191_METSMET Metrology,52191_METSMET Metrology,Labor,0.0d,5.0,5.0,At Completion Units,11/8/2023,11/14/2023,0,0,0,0,0,0,0,0,0,0,1.03_Accelerator Systems (AS),1.03.06_AS Soft X-Ray Undulator (SXR) - SLAC,1.03.06.06_AS Soft X-Ray Undulator Procurement and Fabrication - SLAC,1.03.06.06.02_SXR Phase Shifter Manufacturing and Testing,AS_SXU_MANF_6063_Tune and Calibrate Phase Shifter 13,Metrology,,SLAC,Labor
102976,1.03,1.03.06,1.03.06.06,1.03.06.06.02,1.03.06.06.02,SXR Phase Shifter Manufacturing and Testing,AS_SXU_MANF_6063,Tune and Calibrate Phase Shifter 13,5.0,6.0,6.0,6.0,08-01-24,08-07-24,"AS_SXU_MANF_6013: FS, AS_SXU_MANF_6062: FS","AS_SXU_MANF_6064: FS, AS_SXU_INST_1312: FS",SLAC,0%,52169.52169_METS Mechanical Engineer,52169_METS Mechanical Engineer,Labor,0.0d,5.0,5.0,At Completion Units,11/8/2023,11/14/2023,0,0,0,0,0,0,0,0,0,0,1.03_Accelerator Systems (AS),1.03.06_AS Soft X-Ray Undulator (SXR) - SLAC,1.03.06.06_AS Soft X-Ray Undulator Procurement and Fabrication - SLAC,1.03.06.06.02_SXR Phase Shifter Manufacturing and Testing,AS_SXU_MANF_6063_Tune and Calibrate Phase Shifter 13,Mechanical,,SLAC,Labor
102977,1.03,1.03.06,1.03.06.06,1.03.06.06.02,1.03.06.06.02,SXR Phase Shifter Manufacturing and Testing,AS_SXU_MANF_6062,Tune and Calibrate Phase Shifter 12,5.0,6.0,6.0,6.0,07-25-24,07-31-24,"AS_SXU_MANF_6012: FS, AS_SXU_MANF_6061: FS","AS_SXU_MANF_6063: FS, AS_SXU_INST_1212: FS",SLAC,0%,52213.52213_EEDHW (Electronics & Engineering Div - HW Engr),52213_EEDHW (Electronics & Engineering Div - HW Engr),Labor,0.0d,5.0,5.0,At Completion Units,11/1/2023,11/7/2023,0,0,0,0,0,0,0,0,0,0,1.03_Accelerator Systems (AS),1.03.06_AS Soft X-Ray Undulator (SXR) - SLAC,1.03.06.06_AS Soft X-Ray Undulator Procurement and Fabrication - SLAC,1.03.06.06.02_SXR Phase Shifter Manufacturing and Testing,AS_SXU_MANF_6062_Tune and Calibrate Phase Shifter 12,Electrical,,SLAC,Labor
102978,1.03,1.03.06,1.03.06.06,1.03.06.06.02,1.03.06.06.02,SXR Phase Shifter Manufacturing and Testing,AS_SXU_MANF_6062,Tune and Calibrate Phase Shifter 12,5.0,40.0,40.0,40.0,07-25-24,07-31-24,"AS_SXU_MANF_6012: FS, AS_SXU_MANF_6061: FS","AS_SXU_MANF_6063: FS, AS_SXU_INST_1212: FS",SLAC,0%,52191.52191_METSMET Metrology,52191_METSMET Metrology,Labor,0.0d,5.0,5.0,At Completion Units,11/1/2023,11/7/2023,0,0,0,0,0,0,0,0,0,0,1.03_Accelerator Systems (AS),1.03.06_AS Soft X-Ray Undulator (SXR) - SLAC,1.03.06.06_AS Soft X-Ray Undulator Procurement and Fabrication - SLAC,1.03.06.06.02_SXR Phase Shifter Manufacturing and Testing,AS_SXU_MANF_6062_Tune and Calibrate Phase Shifter 12,Metrology,,SLAC,Labor
102979,1.03,1.03.06,1.03.06.06,1.03.06.06.02,1.03.06.06.02,SXR Phase Shifter Manufacturing and Testing,AS_SXU_MANF_6062,Tune and Calibrate Phase Shifter 12,5.0,6.0,6.0,6.0,07-25-24,07-31-24,"AS_SXU_MANF_6012: FS, AS_SXU_MANF_6061: FS","AS_SXU_MANF_6063: FS, AS_SXU_INST_1212: FS",SLAC,0%,52169.52169_METS Mechanical Engineer,52169_METS Mechanical Engineer,Labor,0.0d,5.0,5.0,At Completion Units,11/1/2023,11/7/2023,0,0,0,0,0,0,0,0,0,0,1.03_Accelerator Systems (AS),1.03.06_AS Soft X-Ray Undulator (SXR) - SLAC,1.03.06.06_AS Soft X-Ray Undulator Procurement and Fabrication - SLAC,1.03.06.06.02_SXR Phase Shifter Manufacturing and Testing,AS_SXU_MANF_6062_Tune and Calibrate Phase Shifter 12,Mechanical,,SLAC,Labor
102980,1.03,1.03.06,1.03.06.06,1.03.06.06.02,1.03.06.06.02,SXR Phase Shifter Manufacturing and Testing,AS_SXU_MANF_6061,Tune and Calibrate Phase Shifter 11,5.0,6.0,6.0,6.0,07-18-24,07-24-24,"AS_SXU_MANF_6011: FS, AS_SXU_MANF_6060: FS","AS_SXU_MANF_6062: FS, AS_SXU_INST_1112: FS",SLAC,0%,52213.52213_EEDHW (Electronics & Engineering Div - HW Engr),52213_EEDHW (Electronics & Engineering Div - HW Engr),Labor,0.0d,5.0,5.0,At Completion Units,10/25/2023,10/31/2023,0,0,0,0,0,0,0,0,0,0,1.03_Accelerator Systems (AS),1.03.06_AS Soft X-Ray Undulator (SXR) - SLAC,1.03.06.06_AS Soft X-Ray Undulator Procurement and Fabrication - SLAC,1.03.06.06.02_SXR Phase Shifter Manufacturing and Testing,AS_SXU_MANF_6061_Tune and Calibrate Phase Shifter 11,Electrical,,SLAC,Labor
102981,1.03,1.03.06,1.03.06.06,1.03.06.06.02,1.03.06.06.02,SXR Phase Shifter Manufacturing and Testing,AS_SXU_MANF_6061,Tune and Calibrate Phase Shifter 11,5.0,40.0,40.0,40.0,07-18-24,07-24-24,"AS_SXU_MANF_6011: FS, AS_SXU_MANF_6060: FS","AS_SXU_MANF_6062: FS, AS_SXU_INST_1112: FS",SLAC,0%,52191.52191_METSMET Metrology,52191_METSMET Metrology,Labor,0.0d,5.0,5.0,At Completion Units,10/25/2023,10/31/2023,0,0,0,0,0,0,0,0,0,0,1.03_Accelerator Systems (AS),1.03.06_AS Soft X-Ray Undulator (SXR) - SLAC,1.03.06.06_AS Soft X-Ray Undulator Procurement and Fabrication - SLAC,1.03.06.06.02_SXR Phase Shifter Manufacturing and Testing,AS_SXU_MANF_6061_Tune and Calibrate Phase Shifter 11,Metrology,,SLAC,Labor
102982,1.03,1.03.06,1.03.06.06,1.03.06.06.02,1.03.06.06.02,SXR Phase Shifter Manufacturing and Testing,AS_SXU_MANF_6061,Tune and Calibrate Phase Shifter 11,5.0,6.0,6.0,6.0,07-18-24,07-24-24,"AS_SXU_MANF_6011: FS, AS_SXU_MANF_6060: FS","AS_SXU_MANF_6062: FS, AS_SXU_INST_1112: FS",SLAC,0%,52169.52169_METS Mechanical Engineer,52169_METS Mechanical Engineer,Labor,0.0d,5.0,5.0,At Completion Units,10/25/2023,10/31/2023,0,0,0,0,0,0,0,0,0,0,1.03_Accelerator Systems (AS),1.03.06_AS Soft X-Ray Undulator (SXR) - SLAC,1.03.06.06_AS Soft X-Ray Undulator Procurement and Fabrication - SLAC,1.03.06.06.02_SXR Phase Shifter Manufacturing and Testing,AS_SXU_MANF_6061_Tune and Calibrate Phase Shifter 11,Mechanical,,SLAC,Labor
102983,1.03,1.03.06,1.03.06.06,1.03.06.06.02,1.03.06.06.02,SXR Phase Shifter Manufacturing and Testing,AS_SXU_MANF_6060,Tune and Calibrate Phase Shifter 10,5.0,6.0,6.0,6.0,07-11-24,07-17-24,"AS_SXU_MANF_6010: FS, AS_SXU_MANF_6059: FS","AS_SXU_MANF_6061: FS, AS_SXU_INST_1012: FS",SLAC,0%,52213.52213_EEDHW (Electronics & Engineering Div - HW Engr),52213_EEDHW (Electronics & Engineering Div - HW Engr),Labor,0.0d,5.0,5.0,At Completion Units,10/18/2023,10/24/2023,0,0,0,0,0,0,0,0,0,0,1.03_Accelerator Systems (AS),1.03.06_AS Soft X-Ray Undulator (SXR) - SLAC,1.03.06.06_AS Soft X-Ray Undulator Procurement and Fabrication - SLAC,1.03.06.06.02_SXR Phase Shifter Manufacturing and Testing,AS_SXU_MANF_6060_Tune and Calibrate Phase Shifter 10,Electrical,,SLAC,Labor
102984,1.03,1.03.06,1.03.06.06,1.03.06.06.02,1.03.06.06.02,SXR Phase Shifter Manufacturing and Testing,AS_SXU_MANF_6060,Tune and Calibrate Phase Shifter 10,5.0,40.0,40.0,40.0,07-11-24,07-17-24,"AS_SXU_MANF_6010: FS, AS_SXU_MANF_6059: FS","AS_SXU_MANF_6061: FS, AS_SXU_INST_1012: FS",SLAC,0%,52191.52191_METSMET Metrology,52191_METSMET Metrology,Labor,0.0d,5.0,5.0,At Completion Units,10/18/2023,10/24/2023,0,0,0,0,0,0,0,0,0,0,1.03_Accelerator Systems (AS),1.03.06_AS Soft X-Ray Undulator (SXR) - SLAC,1.03.06.06_AS Soft X-Ray Undulator Procurement and Fabrication - SLAC,1.03.06.06.02_SXR Phase Shifter Manufacturing and Testing,AS_SXU_MANF_6060_Tune and Calibrate Phase Shifter 10,Metrology,,SLAC,Labor
102985,1.03,1.03.06,1.03.06.06,1.03.06.06.02,1.03.06.06.02,SXR Phase Shifter Manufacturing and Testing,AS_SXU_MANF_6060,Tune and Calibrate Phase Shifter 10,5.0,6.0,6.0,6.0,07-11-24,07-17-24,"AS_SXU_MANF_6010: FS, AS_SXU_MANF_6059: FS","AS_SXU_MANF_6061: FS, AS_SXU_INST_1012: FS",SLAC,0%,52169.52169_METS Mechanical Engineer,52169_METS Mechanical Engineer,Labor,0.0d,5.0,5.0,At Completion Units,10/18/2023,10/24/2023,0,0,0,0,0,0,0,0,0,0,1.03_Accelerator Systems (AS),1.03.06_AS Soft X-Ray Undulator (SXR) - SLAC,1.03.06.06_AS Soft X-Ray Undulator Procurement and Fabrication - SLAC,1.03.06.06.02_SXR Phase Shifter Manufacturing and Testing,AS_SXU_MANF_6060_Tune and Calibrate Phase Shifter 10,Mechanical,,SLAC,Labor
102986,1.03,1.03.06,1.03.06.06,1.03.06.06.02,1.03.06.06.02,SXR Phase Shifter Manufacturing and Testing,AS_SXU_MANF_6059,Tune and Calibrate Phase Shifter 9,5.0,6.0,6.0,6.0,07-03-24,07-10-24,"AS_SXU_MANF_3360: FS, AS_SXU_MANF_6058: FS","AS_SXU_MANF_6060: FS, AS_SXU_INST_0912: FS",SLAC,0%,52213.52213_EEDHW (Electronics & Engineering Div - HW Engr),52213_EEDHW (Electronics & Engineering Div - HW Engr),Labor,0.0d,5.0,5.0,At Completion Units,10/11/2023,10/17/2023,0,0,0,0,0,0,0,0,0,0,1.03_Accelerator Systems (AS),1.03.06_AS Soft X-Ray Undulator (SXR) - SLAC,1.03.06.06_AS Soft X-Ray Undulator Procurement and Fabrication - SLAC,1.03.06.06.02_SXR Phase Shifter Manufacturing and Testing,AS_SXU_MANF_6059_Tune and Calibrate Phase Shifter 9,Electrical,,SLAC,Labor
102987,1.03,1.03.06,1.03.06.06,1.03.06.06.02,1.03.06.06.02,SXR Phase Shifter Manufacturing and Testing,AS_SXU_MANF_6059,Tune and Calibrate Phase Shifter 9,5.0,40.0,40.0,40.0,07-03-24,07-10-24,"AS_SXU_MANF_3360: FS, AS_SXU_MANF_6058: FS","AS_SXU_MANF_6060: FS, AS_SXU_INST_0912: FS",SLAC,0%,52191.52191_METSMET Metrology,52191_METSMET Metrology,Labor,0.0d,5.0,5.0,At Completion Units,10/11/2023,10/17/2023,0,0,0,0,0,0,0,0,0,0,1.03_Accelerator Systems (AS),1.03.06_AS Soft X-Ray Undulator (SXR) - SLAC,1.03.06.06_AS Soft X-Ray Undulator Procurement and Fabrication - SLAC,1.03.06.06.02_SXR Phase Shifter Manufacturing and Testing,AS_SXU_MANF_6059_Tune and Calibrate Phase Shifter 9,Metrology,,SLAC,Labor
102988,1.03,1.03.06,1.03.06.06,1.03.06.06.02,1.03.06.06.02,SXR Phase Shifter Manufacturing and Testing,AS_SXU_MANF_6059,Tune and Calibrate Phase Shifter 9,5.0,6.0,6.0,6.0,07-03-24,07-10-24,"AS_SXU_MANF_3360: FS, AS_SXU_MANF_6058: FS","AS_SXU_MANF_6060: FS, AS_SXU_INST_0912: FS",SLAC,0%,52169.52169_METS Mechanical Engineer,52169_METS Mechanical Engineer,Labor,0.0d,5.0,5.0,At Completion Units,10/11/2023,10/17/2023,0,0,0,0,0,0,0,0,0,0,1.03_Accelerator Systems (AS),1.03.06_AS Soft X-Ray Undulator (SXR) - SLAC,1.03.06.06_AS Soft X-Ray Undulator Procurement and Fabrication - SLAC,1.03.06.06.02_SXR Phase Shifter Manufacturing and Testing,AS_SXU_MANF_6059_Tune and Calibrate Phase Shifter 9,Mechanical,,SLAC,Labor
102989,1.03,1.03.06,1.03.06.06,1.03.06.06.02,1.03.06.06.02,SXR Phase Shifter Manufacturing and Testing,AS_SXU_MANF_6058,Tune and Calibrate Phase Shifter 8,5.0,6.0,6.0,6.0,06-26-24,07-02-24,"AS_SXU_MANF_3360: FS, AS_SXU_MANF_6057: FS","AS_SXU_MANF_6059: FS, AS_SXU_INST_0812: FS",SLAC,0%,52213.52213_EEDHW (Electronics & Engineering Div - HW Engr),52213_EEDHW (Electronics & Engineering Div - HW Engr),Labor,0.0d,5.0,5.0,At Completion Units,10/4/2023,10/10/2023,0,0,0,0,0,0,0,0,0,0,1.03_Accelerator Systems (AS),1.03.06_AS Soft X-Ray Undulator (SXR) - SLAC,1.03.06.06_AS Soft X-Ray Undulator Procurement and Fabrication - SLAC,1.03.06.06.02_SXR Phase Shifter Manufacturing and Testing,AS_SXU_MANF_6058_Tune and Calibrate Phase Shifter 8,Electrical,,SLAC,Labor
102990,1.03,1.03.06,1.03.06.06,1.03.06.06.02,1.03.06.06.02,SXR Phase Shifter Manufacturing and Testing,AS_SXU_MANF_6058,Tune and Calibrate Phase Shifter 8,5.0,40.0,40.0,40.0,06-26-24,07-02-24,"AS_SXU_MANF_3360: FS, AS_SXU_MANF_6057: FS","AS_SXU_MANF_6059: FS, AS_SXU_INST_0812: FS",SLAC,0%,52191.52191_METSMET Metrology,52191_METSMET Metrology,Labor,0.0d,5.0,5.0,At Completion Units,10/4/2023,10/10/2023,0,0,0,0,0,0,0,0,0,0,1.03_Accelerator Systems (AS),1.03.06_AS Soft X-Ray Undulator (SXR) - SLAC,1.03.06.06_AS Soft X-Ray Undulator Procurement and Fabrication - SLAC,1.03.06.06.02_SXR Phase Shifter Manufacturing and Testing,AS_SXU_MANF_6058_Tune and Calibrate Phase Shifter 8,Metrology,,SLAC,Labor
102991,1.03,1.03.06,1.03.06.06,1.03.06.06.02,1.03.06.06.02,SXR Phase Shifter Manufacturing and Testing,AS_SXU_MANF_6058,Tune and Calibrate Phase Shifter 8,5.0,6.0,6.0,6.0,06-26-24,07-02-24,"AS_SXU_MANF_3360: FS, AS_SXU_MANF_6057: FS","AS_SXU_MANF_6059: FS, AS_SXU_INST_0812: FS",SLAC,0%,52169.52169_METS Mechanical Engineer,52169_METS Mechanical Engineer,Labor,0.0d,5.0,5.0,At Completion Units,10/4/2023,10/10/2023,0,0,0,0,0,0,0,0,0,0,1.03_Accelerator Systems (AS),1.03.06_AS Soft X-Ray Undulator (SXR) - SLAC,1.03.06.06_AS Soft X-Ray Undulator Procurement and Fabrication - SLAC,1.03.06.06.02_SXR Phase Shifter Manufacturing and Testing,AS_SXU_MANF_6058_Tune and Calibrate Phase Shifter 8,Mechanical,,SLAC,Labor
102992,1.03,1.03.06,1.03.06.06,1.03.06.06.02,1.03.06.06.02,SXR Phase Shifter Manufacturing and Testing,AS_SXU_MANF_6057,Tune and Calibrate Phase Shifter 7,5.0,6.0,6.0,6.0,06-19-24,06-25-24,"AS_SXU_MANF_3360: FS, AS_SXU_MANF_6056: FS","AS_SXU_MANF_6058: FS, AS_SXU_INST_0712: FS",SLAC,0%,52213.52213_EEDHW (Electronics & Engineering Div - HW Engr),52213_EEDHW (Electronics & Engineering Div - HW Engr),Labor,0.0d,5.0,5.0,At Completion Units,9/27/2023,10/3/2023,0,0,0,0,0,0,0,0,0,0,1.03_Accelerator Systems (AS),1.03.06_AS Soft X-Ray Undulator (SXR) - SLAC,1.03.06.06_AS Soft X-Ray Undulator Procurement and Fabrication - SLAC,1.03.06.06.02_SXR Phase Shifter Manufacturing and Testing,AS_SXU_MANF_6057_Tune and Calibrate Phase Shifter 7,Electrical,,SLAC,Labor
102993,1.03,1.03.06,1.03.06.06,1.03.06.06.02,1.03.06.06.02,SXR Phase Shifter Manufacturing and Testing,AS_SXU_MANF_6057,Tune and Calibrate Phase Shifter 7,5.0,40.0,40.0,40.0,06-19-24,06-25-24,"AS_SXU_MANF_3360: FS, AS_SXU_MANF_6056: FS","AS_SXU_MANF_6058: FS, AS_SXU_INST_0712: FS",SLAC,0%,52191.52191_METSMET Metrology,52191_METSMET Metrology,Labor,0.0d,5.0,5.0,At Completion Units,9/27/2023,10/3/2023,0,0,0,0,0,0,0,0,0,0,1.03_Accelerator Systems (AS),1.03.06_AS Soft X-Ray Undulator (SXR) - SLAC,1.03.06.06_AS Soft X-Ray Undulator Procurement and Fabrication - SLAC,1.03.06.06.02_SXR Phase Shifter Manufacturing and Testing,AS_SXU_MANF_6057_Tune and Calibrate Phase Shifter 7,Metrology,,SLAC,Labor
102994,1.03,1.03.06,1.03.06.06,1.03.06.06.02,1.03.06.06.02,SXR Phase Shifter Manufacturing and Testing,AS_SXU_MANF_6057,Tune and Calibrate Phase Shifter 7,5.0,6.0,6.0,6.0,06-19-24,06-25-24,"AS_SXU_MANF_3360: FS, AS_SXU_MANF_6056: FS","AS_SXU_MANF_6058: FS, AS_SXU_INST_0712: FS",SLAC,0%,52169.52169_METS Mechanical Engineer,52169_METS Mechanical Engineer,Labor,0.0d,5.0,5.0,At Completion Units,9/27/2023,10/3/2023,0,0,0,0,0,0,0,0,0,0,1.03_Accelerator Systems (AS),1.03.06_AS Soft X-Ray Undulator (SXR) - SLAC,1.03.06.06_AS Soft X-Ray Undulator Procurement and Fabrication - SLAC,1.03.06.06.02_SXR Phase Shifter Manufacturing and Testing,AS_SXU_MANF_6057_Tune and Calibrate Phase Shifter 7,Mechanical,,SLAC,Labor
102995,1.03,1.03.06,1.03.06.06,1.03.06.06.02,1.03.06.06.02,SXR Phase Shifter Manufacturing and Testing,AS_SXU_MANF_6056,Tune and Calibrate Phase Shifter 6,5.0,6.0,6.0,6.0,06-12-24,06-18-24,"AS_SXU_MANF_3360: FS, AS_SXU_MANF_6055: FS","AS_SXU_MANF_6057: FS, AS_SXU_INST_0612: FS",SLAC,0%,52213.52213_EEDHW (Electronics & Engineering Div - HW Engr),52213_EEDHW (Electronics & Engineering Div - HW Engr),Labor,0.0d,5.0,5.0,At Completion Units,9/20/2023,9/26/2023,0,0,0,0,0,0,0,0,0,0,1.03_Accelerator Systems (AS),1.03.06_AS Soft X-Ray Undulator (SXR) - SLAC,1.03.06.06_AS Soft X-Ray Undulator Procurement and Fabrication - SLAC,1.03.06.06.02_SXR Phase Shifter Manufacturing and Testing,AS_SXU_MANF_6056_Tune and Calibrate Phase Shifter 6,Electrical,,SLAC,Labor
102996,1.03,1.03.06,1.03.06.06,1.03.06.06.02,1.03.06.06.02,SXR Phase Shifter Manufacturing and Testing,AS_SXU_MANF_6056,Tune and Calibrate Phase Shifter 6,5.0,40.0,40.0,40.0,06-12-24,06-18-24,"AS_SXU_MANF_3360: FS, AS_SXU_MANF_6055: FS","AS_SXU_MANF_6057: FS, AS_SXU_INST_0612: FS",SLAC,0%,52191.52191_METSMET Metrology,52191_METSMET Metrology,Labor,0.0d,5.0,5.0,At Completion Units,9/20/2023,9/26/2023,0,0,0,0,0,0,0,0,0,0,1.03_Accelerator Systems (AS),1.03.06_AS Soft X-Ray Undulator (SXR) - SLAC,1.03.06.06_AS Soft X-Ray Undulator Procurement and Fabrication - SLAC,1.03.06.06.02_SXR Phase Shifter Manufacturing and Testing,AS_SXU_MANF_6056_Tune and Calibrate Phase Shifter 6,Metrology,,SLAC,Labor
102997,1.03,1.03.06,1.03.06.06,1.03.06.06.02,1.03.06.06.02,SXR Phase Shifter Manufacturing and Testing,AS_SXU_MANF_6056,Tune and Calibrate Phase Shifter 6,5.0,6.0,6.0,6.0,06-12-24,06-18-24,"AS_SXU_MANF_3360: FS, AS_SXU_MANF_6055: FS","AS_SXU_MANF_6057: FS, AS_SXU_INST_0612: FS",SLAC,0%,52169.52169_METS Mechanical Engineer,52169_METS Mechanical Engineer,Labor,0.0d,5.0,5.0,At Completion Units,9/20/2023,9/26/2023,0,0,0,0,0,0,0,0,0,0,1.03_Accelerator Systems (AS),1.03.06_AS Soft X-Ray Undulator (SXR) - SLAC,1.03.06.06_AS Soft X-Ray Undulator Procurement and Fabrication - SLAC,1.03.06.06.02_SXR Phase Shifter Manufacturing and Testing,AS_SXU_MANF_6056_Tune and Calibrate Phase Shifter 6,Mechanical,,SLAC,Labor
102998,1.03,1.03.06,1.03.06.06,1.03.06.06.02,1.03.06.06.02,SXR Phase Shifter Manufacturing and Testing,AS_SXU_MANF_6055,Tune and Calibrate Phase Shifter 5,5.0,6.0,6.0,6.0,06-05-24,06-11-24,"AS_SXU_MANF_3360: FS, AS_SXU_MANF_6054: FS","AS_SXU_MANF_6056: FS, AS_SXU_INST_0512: FS",SLAC,0%,52213.52213_EEDHW (Electronics & Engineering Div - HW Engr),52213_EEDHW (Electronics & Engineering Div - HW Engr),Labor,0.0d,5.0,5.0,At Completion Units,9/13/2023,9/19/2023,0,0,0,0,0,0,0,0,0,0,1.03_Accelerator Systems (AS),1.03.06_AS Soft X-Ray Undulator (SXR) - SLAC,1.03.06.06_AS Soft X-Ray Undulator Procurement and Fabrication - SLAC,1.03.06.06.02_SXR Phase Shifter Manufacturing and Testing,AS_SXU_MANF_6055_Tune and Calibrate Phase Shifter 5,Electrical,,SLAC,Labor
102999,1.03,1.03.06,1.03.06.06,1.03.06.06.02,1.03.06.06.02,SXR Phase Shifter Manufacturing and Testing,AS_SXU_MANF_6055,Tune and Calibrate Phase Shifter 5,5.0,40.0,40.0,40.0,06-05-24,06-11-24,"AS_SXU_MANF_3360: FS, AS_SXU_MANF_6054: FS","AS_SXU_MANF_6056: FS, AS_SXU_INST_0512: FS",SLAC,0%,52191.52191_METSMET Metrology,52191_METSMET Metrology,Labor,0.0d,5.0,5.0,At Completion Units,9/13/2023,9/19/2023,0,0,0,0,0,0,0,0,0,0,1.03_Accelerator Systems (AS),1.03.06_AS Soft X-Ray Undulator (SXR) - SLAC,1.03.06.06_AS Soft X-Ray Undulator Procurement and Fabrication - SLAC,1.03.06.06.02_SXR Phase Shifter Manufacturing and Testing,AS_SXU_MANF_6055_Tune and Calibrate Phase Shifter 5,Metrology,,SLAC,Labor
103000,1.03,1.03.06,1.03.06.06,1.03.06.06.02,1.03.06.06.02,SXR Phase Shifter Manufacturing and Testing,AS_SXU_MANF_6055,Tune and Calibrate Phase Shifter 5,5.0,6.0,6.0,6.0,06-05-24,06-11-24,"AS_SXU_MANF_3360: FS, AS_SXU_MANF_6054: FS","AS_SXU_MANF_6056: FS, AS_SXU_INST_0512: FS",SLAC,0%,52169.52169_METS Mechanical Engineer,52169_METS Mechanical Engineer,Labor,0.0d,5.0,5.0,At Completion Units,9/13/2023,9/19/2023,0,0,0,0,0,0,0,0,0,0,1.03_Accelerator Systems (AS),1.03.06_AS Soft X-Ray Undulator (SXR) - SLAC,1.03.06.06_AS Soft X-Ray Undulator Procurement and Fabrication - SLAC,1.03.06.06.02_SXR Phase Shifter Manufacturing and Testing,AS_SXU_MANF_6055_Tune and Calibrate Phase Shifter 5,Mechanical,,SLAC,Labor
103001,1.03,1.03.06,1.03.06.06,1.03.06.06.02,1.03.06.06.02,SXR Phase Shifter Manufacturing and Testing,AS_SXU_MANF_6054,Tune and Calibrate Phase Shifter 4,5.0,6.0,6.0,6.0,05-29-24,06-04-24,"AS_SXU_MANF_3360: FS, AS_SXU_MANF_6053: FS","AS_SXU_MANF_6055: FS, AS_SXU_INST_0412: FS",SLAC,0%,52213.52213_EEDHW (Electronics & Engineering Div - HW Engr),52213_EEDHW (Electronics & Engineering Div - HW Engr),Labor,0.0d,5.0,5.0,At Completion Units,9/6/2023,9/12/2023,0,0,0,0,0,0,0,0,0,0,1.03_Accelerator Systems (AS),1.03.06_AS Soft X-Ray Undulator (SXR) - SLAC,1.03.06.06_AS Soft X-Ray Undulator Procurement and Fabrication - SLAC,1.03.06.06.02_SXR Phase Shifter Manufacturing and Testing,AS_SXU_MANF_6054_Tune and Calibrate Phase Shifter 4,Electrical,,SLAC,Labor
103002,1.03,1.03.06,1.03.06.06,1.03.06.06.02,1.03.06.06.02,SXR Phase Shifter Manufacturing and Testing,AS_SXU_MANF_6054,Tune and Calibrate Phase Shifter 4,5.0,40.0,40.0,40.0,05-29-24,06-04-24,"AS_SXU_MANF_3360: FS, AS_SXU_MANF_6053: FS","AS_SXU_MANF_6055: FS, AS_SXU_INST_0412: FS",SLAC,0%,52191.52191_METSMET Metrology,52191_METSMET Metrology,Labor,0.0d,5.0,5.0,At Completion Units,9/6/2023,9/12/2023,0,0,0,0,0,0,0,0,0,0,1.03_Accelerator Systems (AS),1.03.06_AS Soft X-Ray Undulator (SXR) - SLAC,1.03.06.06_AS Soft X-Ray Undulator Procurement and Fabrication - SLAC,1.03.06.06.02_SXR Phase Shifter Manufacturing and Testing,AS_SXU_MANF_6054_Tune and Calibrate Phase Shifter 4,Metrology,,SLAC,Labor
103003,1.03,1.03.06,1.03.06.06,1.03.06.06.02,1.03.06.06.02,SXR Phase Shifter Manufacturing and Testing,AS_SXU_MANF_6054,Tune and Calibrate Phase Shifter 4,5.0,6.0,6.0,6.0,05-29-24,06-04-24,"AS_SXU_MANF_3360: FS, AS_SXU_MANF_6053: FS","AS_SXU_MANF_6055: FS, AS_SXU_INST_0412: FS",SLAC,0%,52169.52169_METS Mechanical Engineer,52169_METS Mechanical Engineer,Labor,0.0d,5.0,5.0,At Completion Units,9/6/2023,9/12/2023,0,0,0,0,0,0,0,0,0,0,1.03_Accelerator Systems (AS),1.03.06_AS Soft X-Ray Undulator (SXR) - SLAC,1.03.06.06_AS Soft X-Ray Undulator Procurement and Fabrication - SLAC,1.03.06.06.02_SXR Phase Shifter Manufacturing and Testing,AS_SXU_MANF_6054_Tune and Calibrate Phase Shifter 4,Mechanical,,SLAC,Labor
103004,1.03,1.03.06,1.03.06.06,1.03.06.06.02,1.03.06.06.02,SXR Phase Shifter Manufacturing and Testing,AS_SXU_MANF_6053,Tune and Calibrate Phase Shifter 3,5.0,6.0,6.0,6.0,05-21-24,05-28-24,"AS_SXU_MANF_3360: FS, AS_SXU_MANF_6052: FS","AS_SXU_MANF_6054: FS, AS_SXU_INST_0312: FS",SLAC,0%,52213.52213_EEDHW (Electronics & Engineering Div - HW Engr),52213_EEDHW (Electronics & Engineering Div - HW Engr),Labor,0.0d,5.0,5.0,At Completion Units,8/29/2023,9/5/2023,0,0,0,0,0,0,0,0,0,0,1.03_Accelerator Systems (AS),1.03.06_AS Soft X-Ray Undulator (SXR) - SLAC,1.03.06.06_AS Soft X-Ray Undulator Procurement and Fabrication - SLAC,1.03.06.06.02_SXR Phase Shifter Manufacturing and Testing,AS_SXU_MANF_6053_Tune and Calibrate Phase Shifter 3,Electrical,,SLAC,Labor
103005,1.03,1.03.06,1.03.06.06,1.03.06.06.02,1.03.06.06.02,SXR Phase Shifter Manufacturing and Testing,AS_SXU_MANF_6053,Tune and Calibrate Phase Shifter 3,5.0,40.0,40.0,40.0,05-21-24,05-28-24,"AS_SXU_MANF_3360: FS, AS_SXU_MANF_6052: FS","AS_SXU_MANF_6054: FS, AS_SXU_INST_0312: FS",SLAC,0%,52191.52191_METSMET Metrology,52191_METSMET Metrology,Labor,0.0d,5.0,5.0,At Completion Units,8/29/2023,9/5/2023,0,0,0,0,0,0,0,0,0,0,1.03_Accelerator Systems (AS),1.03.06_AS Soft X-Ray Undulator (SXR) - SLAC,1.03.06.06_AS Soft X-Ray Undulator Procurement and Fabrication - SLAC,1.03.06.06.02_SXR Phase Shifter Manufacturing and Testing,AS_SXU_MANF_6053_Tune and Calibrate Phase Shifter 3,Metrology,,SLAC,Labor
103006,1.03,1.03.06,1.03.06.06,1.03.06.06.02,1.03.06.06.02,SXR Phase Shifter Manufacturing and Testing,AS_SXU_MANF_6053,Tune and Calibrate Phase Shifter 3,5.0,6.0,6.0,6.0,05-21-24,05-28-24,"AS_SXU_MANF_3360: FS, AS_SXU_MANF_6052: FS","AS_SXU_MANF_6054: FS, AS_SXU_INST_0312: FS",SLAC,0%,52169.52169_METS Mechanical Engineer,52169_METS Mechanical Engineer,Labor,0.0d,5.0,5.0,At Completion Units,8/29/2023,9/5/2023,0,0,0,0,0,0,0,0,0,0,1.03_Accelerator Systems (AS),1.03.06_AS Soft X-Ray Undulator (SXR) - SLAC,1.03.06.06_AS Soft X-Ray Undulator Procurement and Fabrication - SLAC,1.03.06.06.02_SXR Phase Shifter Manufacturing and Testing,AS_SXU_MANF_6053_Tune and Calibrate Phase Shifter 3,Mechanical,,SLAC,Labor
103007,1.03,1.03.06,1.03.06.06,1.03.06.06.02,1.03.06.06.02,SXR Phase Shifter Manufacturing and Testing,AS_SXU_MANF_6052,Tune and Calibrate Phase Shifter 2,5.0,6.0,6.0,6.0,05-14-24,05-20-24,"AS_SXU_MANF_3360: FS, AS_SXU_MANF_6051: FS","AS_SXU_MANF_6053: FS, AS_SXU_INST_0212: FS",SLAC,0%,52213.52213_EEDHW (Electronics & Engineering Div - HW Engr),52213_EEDHW (Electronics & Engineering Div - HW Engr),Labor,0.0d,5.0,5.0,At Completion Units,8/22/2023,8/28/2023,0,0,0,0,0,0,0,0,0,0,1.03_Accelerator Systems (AS),1.03.06_AS Soft X-Ray Undulator (SXR) - SLAC,1.03.06.06_AS Soft X-Ray Undulator Procurement and Fabrication - SLAC,1.03.06.06.02_SXR Phase Shifter Manufacturing and Testing,AS_SXU_MANF_6052_Tune and Calibrate Phase Shifter 2,Electrical,,SLAC,Labor
103008,1.03,1.03.06,1.03.06.06,1.03.06.06.02,1.03.06.06.02,SXR Phase Shifter Manufacturing and Testing,AS_SXU_MANF_6052,Tune and Calibrate Phase Shifter 2,5.0,40.0,40.0,40.0,05-14-24,05-20-24,"AS_SXU_MANF_3360: FS, AS_SXU_MANF_6051: FS","AS_SXU_MANF_6053: FS, AS_SXU_INST_0212: FS",SLAC,0%,52191.52191_METSMET Metrology,52191_METSMET Metrology,Labor,0.0d,5.0,5.0,At Completion Units,8/22/2023,8/28/2023,0,0,0,0,0,0,0,0,0,0,1.03_Accelerator Systems (AS),1.03.06_AS Soft X-Ray Undulator (SXR) - SLAC,1.03.06.06_AS Soft X-Ray Undulator Procurement and Fabrication - SLAC,1.03.06.06.02_SXR Phase Shifter Manufacturing and Testing,AS_SXU_MANF_6052_Tune and Calibrate Phase Shifter 2,Metrology,,SLAC,Labor
103009,1.03,1.03.06,1.03.06.06,1.03.06.06.02,1.03.06.06.02,SXR Phase Shifter Manufacturing and Testing,AS_SXU_MANF_6052,Tune and Calibrate Phase Shifter 2,5.0,6.0,6.0,6.0,05-14-24,05-20-24,"AS_SXU_MANF_3360: FS, AS_SXU_MANF_6051: FS","AS_SXU_MANF_6053: FS, AS_SXU_INST_0212: FS",SLAC,0%,52169.52169_METS Mechanical Engineer,52169_METS Mechanical Engineer,Labor,0.0d,5.0,5.0,At Completion Units,8/22/2023,8/28/2023,0,0,0,0,0,0,0,0,0,0,1.03_Accelerator Systems (AS),1.03.06_AS Soft X-Ray Undulator (SXR) - SLAC,1.03.06.06_AS Soft X-Ray Undulator Procurement and Fabrication - SLAC,1.03.06.06.02_SXR Phase Shifter Manufacturing and Testing,AS_SXU_MANF_6052_Tune and Calibrate Phase Shifter 2,Mechanical,,SLAC,Labor
103010,1.03,1.03.06,1.03.06.06,1.03.06.06.02,1.03.06.06.02,SXR Phase Shifter Manufacturing and Testing,AS_SXU_MANF_6051,Tune and Calibrate Phase Shifter 1,5.0,6.0,6.0,6.0,05-07-24,05-13-24,AS_SXU_MANF_3360: FS,"AS_SXU_MANF_6052: FS, AS_SXU_INST_0112: FS",SLAC,0%,52213.52213_EEDHW (Electronics & Engineering Div - HW Engr),52213_EEDHW (Electronics & Engineering Div - HW Engr),Labor,0.0d,5.0,5.0,At Completion Units,8/15/2023,8/21/2023,0,0,0,0,0,0,0,0,0,0,1.03_Accelerator Systems (AS),1.03.06_AS Soft X-Ray Undulator (SXR) - SLAC,1.03.06.06_AS Soft X-Ray Undulator Procurement and Fabrication - SLAC,1.03.06.06.02_SXR Phase Shifter Manufacturing and Testing,AS_SXU_MANF_6051_Tune and Calibrate Phase Shifter 1,Electrical,,SLAC,Labor
103011,1.03,1.03.06,1.03.06.06,1.03.06.06.02,1.03.06.06.02,SXR Phase Shifter Manufacturing and Testing,AS_SXU_MANF_6051,Tune and Calibrate Phase Shifter 1,5.0,40.0,40.0,40.0,05-07-24,05-13-24,AS_SXU_MANF_3360: FS,"AS_SXU_MANF_6052: FS, AS_SXU_INST_0112: FS",SLAC,0%,52191.52191_METSMET Metrology,52191_METSMET Metrology,Labor,0.0d,5.0,5.0,At Completion Units,8/15/2023,8/21/2023,0,0,0,0,0,0,0,0,0,0,1.03_Accelerator Systems (AS),1.03.06_AS Soft X-Ray Undulator (SXR) - SLAC,1.03.06.06_AS Soft X-Ray Undulator Procurement and Fabrication - SLAC,1.03.06.06.02_SXR Phase Shifter Manufacturing and Testing,AS_SXU_MANF_6051_Tune and Calibrate Phase Shifter 1,Metrology,,SLAC,Labor
103012,1.03,1.03.06,1.03.06.06,1.03.06.06.02,1.03.06.06.02,SXR Phase Shifter Manufacturing and Testing,AS_SXU_MANF_6051,Tune and Calibrate Phase Shifter 1,5.0,6.0,6.0,6.0,05-07-24,05-13-24,AS_SXU_MANF_3360: FS,"AS_SXU_MANF_6052: FS, AS_SXU_INST_0112: FS",SLAC,0%,52169.52169_METS Mechanical Engineer,52169_METS Mechanical Engineer,Labor,0.0d,5.0,5.0,At Completion Units,8/15/2023,8/21/2023,0,0,0,0,0,0,0,0,0,0,1.03_Accelerator Systems (AS),1.03.06_AS Soft X-Ray Undulator (SXR) - SLAC,1.03.06.06_AS Soft X-Ray Undulator Procurement and Fabrication - SLAC,1.03.06.06.02_SXR Phase Shifter Manufacturing and Testing,AS_SXU_MANF_6051_Tune and Calibrate Phase Shifter 1,Mechanical,,SLAC,Labor
103013,1.03,1.03.06,1.03.06.06,1.03.06.06.02,1.03.06.06.02,SXR Phase Shifter Manufacturing and Testing,AS_SXU_MANF_6029,Refurbish existing Phase Shifter  29,5.0,4.0,4.0,4.0,02-20-25,02-27-25,"AS_SXU_MANF_3370: FS, AS_SXU_MANF_6028: FS, AS_SXU_INST_2902: FS",AS_SXU_MANF_6079: FS,SLAC,0%,52198.52198_METSMANF (METSD Manufacturing),52198_METSMANF (METSD Manufacturing),Labor,0.0d,5.0,5.0,At Completion Units,2/20/2025,2/27/2025,0,0,0,0,0,0,0,0,0,0,1.03_Accelerator Systems (AS),1.03.06_AS Soft X-Ray Undulator (SXR) - SLAC,1.03.06.06_AS Soft X-Ray Undulator Procurement and Fabrication - SLAC,1.03.06.06.02_SXR Phase Shifter Manufacturing and Testing,AS_SXU_MANF_6029_Refurbish existing Phase Shifter  29,Manufacturing,,SLAC,Labor
103014,1.03,1.03.06,1.03.06.06,1.03.06.06.02,1.03.06.06.02,SXR Phase Shifter Manufacturing and Testing,AS_SXU_MANF_6029,Refurbish existing Phase Shifter  29,5.0,6.0,6.0,6.0,02-20-25,02-27-25,"AS_SXU_MANF_3370: FS, AS_SXU_MANF_6028: FS, AS_SXU_INST_2902: FS",AS_SXU_MANF_6079: FS,SLAC,0%,52213.52213_EEDHW (Electronics & Engineering Div - HW Engr),52213_EEDHW (Electronics & Engineering Div - HW Engr),Labor,0.0d,5.0,5.0,At Completion Units,2/20/2025,2/27/2025,0,0,0,0,0,0,0,0,0,0,1.03_Accelerator Systems (AS),1.03.06_AS Soft X-Ray Undulator (SXR) - SLAC,1.03.06.06_AS Soft X-Ray Undulator Procurement and Fabrication - SLAC,1.03.06.06.02_SXR Phase Shifter Manufacturing and Testing,AS_SXU_MANF_6029_Refurbish existing Phase Shifter  29,Electrical,,SLAC,Labor
103015,1.03,1.03.06,1.03.06.06,1.03.06.06.02,1.03.06.06.02,SXR Phase Shifter Manufacturing and Testing,AS_SXU_MANF_6029,Refurbish existing Phase Shifter  29,5.0,32.0,32.0,32.0,02-20-25,02-27-25,"AS_SXU_MANF_3370: FS, AS_SXU_MANF_6028: FS, AS_SXU_INST_2902: FS",AS_SXU_MANF_6079: FS,SLAC,0%,52191.52191_METSMET Metrology,52191_METSMET Metrology,Labor,0.0d,5.0,5.0,At Completion Units,2/20/2025,2/27/2025,0,0,0,0,0,0,0,0,0,0,1.03_Accelerator Systems (AS),1.03.06_AS Soft X-Ray Undulator (SXR) - SLAC,1.03.06.06_AS Soft X-Ray Undulator Procurement and Fabrication - SLAC,1.03.06.06.02_SXR Phase Shifter Manufacturing and Testing,AS_SXU_MANF_6029_Refurbish existing Phase Shifter  29,Metrology,,SLAC,Labor
103016,1.03,1.03.06,1.03.06.06,1.03.06.06.02,1.03.06.06.02,SXR Phase Shifter Manufacturing and Testing,AS_SXU_MANF_6029,Refurbish existing Phase Shifter  29,5.0,6.0,6.0,6.0,02-20-25,02-27-25,"AS_SXU_MANF_3370: FS, AS_SXU_MANF_6028: FS, AS_SXU_INST_2902: FS",AS_SXU_MANF_6079: FS,SLAC,0%,52169.52169_METS Mechanical Engineer,52169_METS Mechanical Engineer,Labor,0.0d,5.0,5.0,At Completion Units,2/20/2025,2/27/2025,0,0,0,0,0,0,0,0,0,0,1.03_Accelerator Systems (AS),1.03.06_AS Soft X-Ray Undulator (SXR) - SLAC,1.03.06.06_AS Soft X-Ray Undulator Procurement and Fabrication - SLAC,1.03.06.06.02_SXR Phase Shifter Manufacturing and Testing,AS_SXU_MANF_6029_Refurbish existing Phase Shifter  29,Mechanical,,SLAC,Labor
103017,1.03,1.03.06,1.03.06.06,1.03.06.06.02,1.03.06.06.02,SXR Phase Shifter Manufacturing and Testing,AS_SXU_MANF_6028,Refurbish existing Phase Shifter  28,5.0,4.0,4.0,4.0,02-12-25,02-20-25,"AS_SXU_MANF_3370: FS, AS_SXU_MANF_6027: FS, AS_SXU_INST_2802: FS","AS_SXU_MANF_6078: FS, AS_SXU_MANF_6029: FS",SLAC,0%,52198.52198_METSMANF (METSD Manufacturing),52198_METSMANF (METSD Manufacturing),Labor,0.0d,5.0,5.0,At Completion Units,2/12/2025,2/20/2025,0,0,0,0,0,0,0,0,0,0,1.03_Accelerator Systems (AS),1.03.06_AS Soft X-Ray Undulator (SXR) - SLAC,1.03.06.06_AS Soft X-Ray Undulator Procurement and Fabrication - SLAC,1.03.06.06.02_SXR Phase Shifter Manufacturing and Testing,AS_SXU_MANF_6028_Refurbish existing Phase Shifter  28,Manufacturing,,SLAC,Labor
103018,1.03,1.03.06,1.03.06.06,1.03.06.06.02,1.03.06.06.02,SXR Phase Shifter Manufacturing and Testing,AS_SXU_MANF_6028,Refurbish existing Phase Shifter  28,5.0,6.0,6.0,6.0,02-12-25,02-20-25,"AS_SXU_MANF_3370: FS, AS_SXU_MANF_6027: FS, AS_SXU_INST_2802: FS","AS_SXU_MANF_6078: FS, AS_SXU_MANF_6029: FS",SLAC,0%,52213.52213_EEDHW (Electronics & Engineering Div - HW Engr),52213_EEDHW (Electronics & Engineering Div - HW Engr),Labor,0.0d,5.0,5.0,At Completion Units,2/12/2025,2/20/2025,0,0,0,0,0,0,0,0,0,0,1.03_Accelerator Systems (AS),1.03.06_AS Soft X-Ray Undulator (SXR) - SLAC,1.03.06.06_AS Soft X-Ray Undulator Procurement and Fabrication - SLAC,1.03.06.06.02_SXR Phase Shifter Manufacturing and Testing,AS_SXU_MANF_6028_Refurbish existing Phase Shifter  28,Electrical,,SLAC,Labor
103019,1.03,1.03.06,1.03.06.06,1.03.06.06.02,1.03.06.06.02,SXR Phase Shifter Manufacturing and Testing,AS_SXU_MANF_6028,Refurbish existing Phase Shifter  28,5.0,32.0,32.0,32.0,02-12-25,02-20-25,"AS_SXU_MANF_3370: FS, AS_SXU_MANF_6027: FS, AS_SXU_INST_2802: FS","AS_SXU_MANF_6078: FS, AS_SXU_MANF_6029: FS",SLAC,0%,52191.52191_METSMET Metrology,52191_METSMET Metrology,Labor,0.0d,5.0,5.0,At Completion Units,2/12/2025,2/20/2025,0,0,0,0,0,0,0,0,0,0,1.03_Accelerator Systems (AS),1.03.06_AS Soft X-Ray Undulator (SXR) - SLAC,1.03.06.06_AS Soft X-Ray Undulator Procurement and Fabrication - SLAC,1.03.06.06.02_SXR Phase Shifter Manufacturing and Testing,AS_SXU_MANF_6028_Refurbish existing Phase Shifter  28,Metrology,,SLAC,Labor
103020,1.03,1.03.06,1.03.06.06,1.03.06.06.02,1.03.06.06.02,SXR Phase Shifter Manufacturing and Testing,AS_SXU_MANF_6028,Refurbish existing Phase Shifter  28,5.0,6.0,6.0,6.0,02-12-25,02-20-25,"AS_SXU_MANF_3370: FS, AS_SXU_MANF_6027: FS, AS_SXU_INST_2802: FS","AS_SXU_MANF_6078: FS, AS_SXU_MANF_6029: FS",SLAC,0%,52169.52169_METS Mechanical Engineer,52169_METS Mechanical Engineer,Labor,0.0d,5.0,5.0,At Completion Units,2/12/2025,2/20/2025,0,0,0,0,0,0,0,0,0,0,1.03_Accelerator Systems (AS),1.03.06_AS Soft X-Ray Undulator (SXR) - SLAC,1.03.06.06_AS Soft X-Ray Undulator Procurement and Fabrication - SLAC,1.03.06.06.02_SXR Phase Shifter Manufacturing and Testing,AS_SXU_MANF_6028_Refurbish existing Phase Shifter  28,Mechanical,,SLAC,Labor
103021,1.03,1.03.06,1.03.06.06,1.03.06.06.02,1.03.06.06.02,SXR Phase Shifter Manufacturing and Testing,AS_SXU_MANF_6027,Refurbish existing Phase Shifter  27,5.0,4.0,4.0,4.0,01-15-25,01-22-25,"AS_SXU_MANF_3370: FS, AS_SXU_MANF_6026: FS, AS_SXU_INST_2702: FS","AS_SXU_MANF_6077: FS, AS_SXU_MANF_6028: FS",SLAC,0%,52198.52198_METSMANF (METSD Manufacturing),52198_METSMANF (METSD Manufacturing),Labor,0.0d,5.0,5.0,At Completion Units,1/15/2025,1/22/2025,0,0,0,0,0,0,0,0,0,0,1.03_Accelerator Systems (AS),1.03.06_AS Soft X-Ray Undulator (SXR) - SLAC,1.03.06.06_AS Soft X-Ray Undulator Procurement and Fabrication - SLAC,1.03.06.06.02_SXR Phase Shifter Manufacturing and Testing,AS_SXU_MANF_6027_Refurbish existing Phase Shifter  27,Manufacturing,,SLAC,Labor
103022,1.03,1.03.06,1.03.06.06,1.03.06.06.02,1.03.06.06.02,SXR Phase Shifter Manufacturing and Testing,AS_SXU_MANF_6027,Refurbish existing Phase Shifter  27,5.0,6.0,6.0,6.0,01-15-25,01-22-25,"AS_SXU_MANF_3370: FS, AS_SXU_MANF_6026: FS, AS_SXU_INST_2702: FS","AS_SXU_MANF_6077: FS, AS_SXU_MANF_6028: FS",SLAC,0%,52213.52213_EEDHW (Electronics & Engineering Div - HW Engr),52213_EEDHW (Electronics & Engineering Div - HW Engr),Labor,0.0d,5.0,5.0,At Completion Units,1/15/2025,1/22/2025,0,0,0,0,0,0,0,0,0,0,1.03_Accelerator Systems (AS),1.03.06_AS Soft X-Ray Undulator (SXR) - SLAC,1.03.06.06_AS Soft X-Ray Undulator Procurement and Fabrication - SLAC,1.03.06.06.02_SXR Phase Shifter Manufacturing and Testing,AS_SXU_MANF_6027_Refurbish existing Phase Shifter  27,Electrical,,SLAC,Labor
103023,1.03,1.03.06,1.03.06.06,1.03.06.06.02,1.03.06.06.02,SXR Phase Shifter Manufacturing and Testing,AS_SXU_MANF_6027,Refurbish existing Phase Shifter  27,5.0,32.0,32.0,32.0,01-15-25,01-22-25,"AS_SXU_MANF_3370: FS, AS_SXU_MANF_6026: FS, AS_SXU_INST_2702: FS","AS_SXU_MANF_6077: FS, AS_SXU_MANF_6028: FS",SLAC,0%,52191.52191_METSMET Metrology,52191_METSMET Metrology,Labor,0.0d,5.0,5.0,At Completion Units,1/15/2025,1/22/2025,0,0,0,0,0,0,0,0,0,0,1.03_Accelerator Systems (AS),1.03.06_AS Soft X-Ray Undulator (SXR) - SLAC,1.03.06.06_AS Soft X-Ray Undulator Procurement and Fabrication - SLAC,1.03.06.06.02_SXR Phase Shifter Manufacturing and Testing,AS_SXU_MANF_6027_Refurbish existing Phase Shifter  27,Metrology,,SLAC,Labor
103024,1.03,1.03.06,1.03.06.06,1.03.06.06.02,1.03.06.06.02,SXR Phase Shifter Manufacturing and Testing,AS_SXU_MANF_6027,Refurbish existing Phase Shifter  27,5.0,6.0,6.0,6.0,01-15-25,01-22-25,"AS_SXU_MANF_3370: FS, AS_SXU_MANF_6026: FS, AS_SXU_INST_2702: FS","AS_SXU_MANF_6077: FS, AS_SXU_MANF_6028: FS",SLAC,0%,52169.52169_METS Mechanical Engineer,52169_METS Mechanical Engineer,Labor,0.0d,5.0,5.0,At Completion Units,1/15/2025,1/22/2025,0,0,0,0,0,0,0,0,0,0,1.03_Accelerator Systems (AS),1.03.06_AS Soft X-Ray Undulator (SXR) - SLAC,1.03.06.06_AS Soft X-Ray Undulator Procurement and Fabrication - SLAC,1.03.06.06.02_SXR Phase Shifter Manufacturing and Testing,AS_SXU_MANF_6027_Refurbish existing Phase Shifter  27,Mechanical,,SLAC,Labor
103025,1.03,1.03.06,1.03.06.06,1.03.06.06.02,1.03.06.06.02,SXR Phase Shifter Manufacturing and Testing,AS_SXU_MANF_6026,Refurbish existing Phase Shifter  26,5.0,4.0,4.0,4.0,01-08-25,01-14-25,"AS_SXU_MANF_3370: FS, AS_SXU_MANF_6025: FS, AS_SXU_INST_2602: FS","AS_SXU_MANF_6076: FS, AS_SXU_MANF_6027: FS",SLAC,0%,52198.52198_METSMANF (METSD Manufacturing),52198_METSMANF (METSD Manufacturing),Labor,0.0d,5.0,5.0,At Completion Units,1/8/2025,1/14/2025,0,0,0,0,0,0,0,0,0,0,1.03_Accelerator Systems (AS),1.03.06_AS Soft X-Ray Undulator (SXR) - SLAC,1.03.06.06_AS Soft X-Ray Undulator Procurement and Fabrication - SLAC,1.03.06.06.02_SXR Phase Shifter Manufacturing and Testing,AS_SXU_MANF_6026_Refurbish existing Phase Shifter  26,Manufacturing,,SLAC,Labor
103026,1.03,1.03.06,1.03.06.06,1.03.06.06.02,1.03.06.06.02,SXR Phase Shifter Manufacturing and Testing,AS_SXU_MANF_6026,Refurbish existing Phase Shifter  26,5.0,6.0,6.0,6.0,01-08-25,01-14-25,"AS_SXU_MANF_3370: FS, AS_SXU_MANF_6025: FS, AS_SXU_INST_2602: FS","AS_SXU_MANF_6076: FS, AS_SXU_MANF_6027: FS",SLAC,0%,52213.52213_EEDHW (Electronics & Engineering Div - HW Engr),52213_EEDHW (Electronics & Engineering Div - HW Engr),Labor,0.0d,5.0,5.0,At Completion Units,1/8/2025,1/14/2025,0,0,0,0,0,0,0,0,0,0,1.03_Accelerator Systems (AS),1.03.06_AS Soft X-Ray Undulator (SXR) - SLAC,1.03.06.06_AS Soft X-Ray Undulator Procurement and Fabrication - SLAC,1.03.06.06.02_SXR Phase Shifter Manufacturing and Testing,AS_SXU_MANF_6026_Refurbish existing Phase Shifter  26,Electrical,,SLAC,Labor
103027,1.03,1.03.06,1.03.06.06,1.03.06.06.02,1.03.06.06.02,SXR Phase Shifter Manufacturing and Testing,AS_SXU_MANF_6026,Refurbish existing Phase Shifter  26,5.0,32.0,32.0,32.0,01-08-25,01-14-25,"AS_SXU_MANF_3370: FS, AS_SXU_MANF_6025: FS, AS_SXU_INST_2602: FS","AS_SXU_MANF_6076: FS, AS_SXU_MANF_6027: FS",SLAC,0%,52191.52191_METSMET Metrology,52191_METSMET Metrology,Labor,0.0d,5.0,5.0,At Completion Units,1/8/2025,1/14/2025,0,0,0,0,0,0,0,0,0,0,1.03_Accelerator Systems (AS),1.03.06_AS Soft X-Ray Undulator (SXR) - SLAC,1.03.06.06_AS Soft X-Ray Undulator Procurement and Fabrication - SLAC,1.03.06.06.02_SXR Phase Shifter Manufacturing and Testing,AS_SXU_MANF_6026_Refurbish existing Phase Shifter  26,Metrology,,SLAC,Labor
103028,1.03,1.03.06,1.03.06.06,1.03.06.06.02,1.03.06.06.02,SXR Phase Shifter Manufacturing and Testing,AS_SXU_MANF_6026,Refurbish existing Phase Shifter  26,5.0,6.0,6.0,6.0,01-08-25,01-14-25,"AS_SXU_MANF_3370: FS, AS_SXU_MANF_6025: FS, AS_SXU_INST_2602: FS","AS_SXU_MANF_6076: FS, AS_SXU_MANF_6027: FS",SLAC,0%,52169.52169_METS Mechanical Engineer,52169_METS Mechanical Engineer,Labor,0.0d,5.0,5.0,At Completion Units,1/8/2025,1/14/2025,0,0,0,0,0,0,0,0,0,0,1.03_Accelerator Systems (AS),1.03.06_AS Soft X-Ray Undulator (SXR) - SLAC,1.03.06.06_AS Soft X-Ray Undulator Procurement and Fabrication - SLAC,1.03.06.06.02_SXR Phase Shifter Manufacturing and Testing,AS_SXU_MANF_6026_Refurbish existing Phase Shifter  26,Mechanical,,SLAC,Labor
103029,1.03,1.03.06,1.03.06.06,1.03.06.06.02,1.03.06.06.02,SXR Phase Shifter Manufacturing and Testing,AS_SXU_MANF_6025,Refurbish existing Phase Shifter  25,5.0,4.0,4.0,4.0,11-14-24,11-21-24,"AS_SXU_MANF_3370: FS, AS_SXU_MANF_6024: FS, AS_SXU_INST_2502: FS","AS_SXU_MANF_6075: FS, AS_SXU_MANF_6026: FS",SLAC,0%,52198.52198_METSMANF (METSD Manufacturing),52198_METSMANF (METSD Manufacturing),Labor,0.0d,5.0,5.0,At Completion Units,11/14/2024,11/21/2024,0,0,0,0,0,0,0,0,0,0,1.03_Accelerator Systems (AS),1.03.06_AS Soft X-Ray Undulator (SXR) - SLAC,1.03.06.06_AS Soft X-Ray Undulator Procurement and Fabrication - SLAC,1.03.06.06.02_SXR Phase Shifter Manufacturing and Testing,AS_SXU_MANF_6025_Refurbish existing Phase Shifter  25,Manufacturing,,SLAC,Labor
103030,1.03,1.03.06,1.03.06.06,1.03.06.06.02,1.03.06.06.02,SXR Phase Shifter Manufacturing and Testing,AS_SXU_MANF_6025,Refurbish existing Phase Shifter  25,5.0,6.0,6.0,6.0,11-14-24,11-21-24,"AS_SXU_MANF_3370: FS, AS_SXU_MANF_6024: FS, AS_SXU_INST_2502: FS","AS_SXU_MANF_6075: FS, AS_SXU_MANF_6026: FS",SLAC,0%,52213.52213_EEDHW (Electronics & Engineering Div - HW Engr),52213_EEDHW (Electronics & Engineering Div - HW Engr),Labor,0.0d,5.0,5.0,At Completion Units,11/14/2024,11/21/2024,0,0,0,0,0,0,0,0,0,0,1.03_Accelerator Systems (AS),1.03.06_AS Soft X-Ray Undulator (SXR) - SLAC,1.03.06.06_AS Soft X-Ray Undulator Procurement and Fabrication - SLAC,1.03.06.06.02_SXR Phase Shifter Manufacturing and Testing,AS_SXU_MANF_6025_Refurbish existing Phase Shifter  25,Electrical,,SLAC,Labor
103031,1.03,1.03.06,1.03.06.06,1.03.06.06.02,1.03.06.06.02,SXR Phase Shifter Manufacturing and Testing,AS_SXU_MANF_6025,Refurbish existing Phase Shifter  25,5.0,32.0,32.0,32.0,11-14-24,11-21-24,"AS_SXU_MANF_3370: FS, AS_SXU_MANF_6024: FS, AS_SXU_INST_2502: FS","AS_SXU_MANF_6075: FS, AS_SXU_MANF_6026: FS",SLAC,0%,52191.52191_METSMET Metrology,52191_METSMET Metrology,Labor,0.0d,5.0,5.0,At Completion Units,11/14/2024,11/21/2024,0,0,0,0,0,0,0,0,0,0,1.03_Accelerator Systems (AS),1.03.06_AS Soft X-Ray Undulator (SXR) - SLAC,1.03.06.06_AS Soft X-Ray Undulator Procurement and Fabrication - SLAC,1.03.06.06.02_SXR Phase Shifter Manufacturing and Testing,AS_SXU_MANF_6025_Refurbish existing Phase Shifter  25,Metrology,,SLAC,Labor
103032,1.03,1.03.06,1.03.06.06,1.03.06.06.02,1.03.06.06.02,SXR Phase Shifter Manufacturing and Testing,AS_SXU_MANF_6025,Refurbish existing Phase Shifter  25,5.0,6.0,6.0,6.0,11-14-24,11-21-24,"AS_SXU_MANF_3370: FS, AS_SXU_MANF_6024: FS, AS_SXU_INST_2502: FS","AS_SXU_MANF_6075: FS, AS_SXU_MANF_6026: FS",SLAC,0%,52169.52169_METS Mechanical Engineer,52169_METS Mechanical Engineer,Labor,0.0d,5.0,5.0,At Completion Units,11/14/2024,11/21/2024,0,0,0,0,0,0,0,0,0,0,1.03_Accelerator Systems (AS),1.03.06_AS Soft X-Ray Undulator (SXR) - SLAC,1.03.06.06_AS Soft X-Ray Undulator Procurement and Fabrication - SLAC,1.03.06.06.02_SXR Phase Shifter Manufacturing and Testing,AS_SXU_MANF_6025_Refurbish existing Phase Shifter  25,Mechanical,,SLAC,Labor
103033,1.03,1.03.06,1.03.06.06,1.03.06.06.02,1.03.06.06.02,SXR Phase Shifter Manufacturing and Testing,AS_SXU_MANF_6024,Refurbish existing Phase Shifter  24,5.0,4.0,4.0,4.0,11-07-24,11-14-24,"AS_SXU_MANF_3370: FS, AS_SXU_MANF_6023: FS, AS_SXU_INST_2402: FS","AS_SXU_MANF_6074: FS, AS_SXU_MANF_6025: FS",SLAC,0%,52198.52198_METSMANF (METSD Manufacturing),52198_METSMANF (METSD Manufacturing),Labor,0.0d,5.0,5.0,At Completion Units,11/7/2024,11/14/2024,0,0,0,0,0,0,0,0,0,0,1.03_Accelerator Systems (AS),1.03.06_AS Soft X-Ray Undulator (SXR) - SLAC,1.03.06.06_AS Soft X-Ray Undulator Procurement and Fabrication - SLAC,1.03.06.06.02_SXR Phase Shifter Manufacturing and Testing,AS_SXU_MANF_6024_Refurbish existing Phase Shifter  24,Manufacturing,,SLAC,Labor
103034,1.03,1.03.06,1.03.06.06,1.03.06.06.02,1.03.06.06.02,SXR Phase Shifter Manufacturing and Testing,AS_SXU_MANF_6024,Refurbish existing Phase Shifter  24,5.0,6.0,6.0,6.0,11-07-24,11-14-24,"AS_SXU_MANF_3370: FS, AS_SXU_MANF_6023: FS, AS_SXU_INST_2402: FS","AS_SXU_MANF_6074: FS, AS_SXU_MANF_6025: FS",SLAC,0%,52213.52213_EEDHW (Electronics & Engineering Div - HW Engr),52213_EEDHW (Electronics & Engineering Div - HW Engr),Labor,0.0d,5.0,5.0,At Completion Units,11/7/2024,11/14/2024,0,0,0,0,0,0,0,0,0,0,1.03_Accelerator Systems (AS),1.03.06_AS Soft X-Ray Undulator (SXR) - SLAC,1.03.06.06_AS Soft X-Ray Undulator Procurement and Fabrication - SLAC,1.03.06.06.02_SXR Phase Shifter Manufacturing and Testing,AS_SXU_MANF_6024_Refurbish existing Phase Shifter  24,Electrical,,SLAC,Labor
103035,1.03,1.03.06,1.03.06.06,1.03.06.06.02,1.03.06.06.02,SXR Phase Shifter Manufacturing and Testing,AS_SXU_MANF_6024,Refurbish existing Phase Shifter  24,5.0,32.0,32.0,32.0,11-07-24,11-14-24,"AS_SXU_MANF_3370: FS, AS_SXU_MANF_6023: FS, AS_SXU_INST_2402: FS","AS_SXU_MANF_6074: FS, AS_SXU_MANF_6025: FS",SLAC,0%,52191.52191_METSMET Metrology,52191_METSMET Metrology,Labor,0.0d,5.0,5.0,At Completion Units,11/7/2024,11/14/2024,0,0,0,0,0,0,0,0,0,0,1.03_Accelerator Systems (AS),1.03.06_AS Soft X-Ray Undulator (SXR) - SLAC,1.03.06.06_AS Soft X-Ray Undulator Procurement and Fabrication - SLAC,1.03.06.06.02_SXR Phase Shifter Manufacturing and Testing,AS_SXU_MANF_6024_Refurbish existing Phase Shifter  24,Metrology,,SLAC,Labor
103036,1.03,1.03.06,1.03.06.06,1.03.06.06.02,1.03.06.06.02,SXR Phase Shifter Manufacturing and Testing,AS_SXU_MANF_6024,Refurbish existing Phase Shifter  24,5.0,6.0,6.0,6.0,11-07-24,11-14-24,"AS_SXU_MANF_3370: FS, AS_SXU_MANF_6023: FS, AS_SXU_INST_2402: FS","AS_SXU_MANF_6074: FS, AS_SXU_MANF_6025: FS",SLAC,0%,52169.52169_METS Mechanical Engineer,52169_METS Mechanical Engineer,Labor,0.0d,5.0,5.0,At Completion Units,11/7/2024,11/14/2024,0,0,0,0,0,0,0,0,0,0,1.03_Accelerator Systems (AS),1.03.06_AS Soft X-Ray Undulator (SXR) - SLAC,1.03.06.06_AS Soft X-Ray Undulator Procurement and Fabrication - SLAC,1.03.06.06.02_SXR Phase Shifter Manufacturing and Testing,AS_SXU_MANF_6024_Refurbish existing Phase Shifter  24,Mechanical,,SLAC,Labor
103037,1.03,1.03.06,1.03.06.06,1.03.06.06.02,1.03.06.06.02,SXR Phase Shifter Manufacturing and Testing,AS_SXU_MANF_6023,Refurbish existing Phase Shifter  23,5.0,4.0,4.0,4.0,09-05-24,09-12-24,"AS_SXU_MANF_3370: FS, AS_SXU_MANF_6022: FS, AS_SXU_INST_2302: FS","AS_SXU_MANF_6073: FS, AS_SXU_MANF_6024: FS",SLAC,0%,52198.52198_METSMANF (METSD Manufacturing),52198_METSMANF (METSD Manufacturing),Labor,0.0d,5.0,5.0,At Completion Units,9/5/2024,9/12/2024,0,0,0,0,0,0,0,0,0,0,1.03_Accelerator Systems (AS),1.03.06_AS Soft X-Ray Undulator (SXR) - SLAC,1.03.06.06_AS Soft X-Ray Undulator Procurement and Fabrication - SLAC,1.03.06.06.02_SXR Phase Shifter Manufacturing and Testing,AS_SXU_MANF_6023_Refurbish existing Phase Shifter  23,Manufacturing,,SLAC,Labor
103038,1.03,1.03.06,1.03.06.06,1.03.06.06.02,1.03.06.06.02,SXR Phase Shifter Manufacturing and Testing,AS_SXU_MANF_6023,Refurbish existing Phase Shifter  23,5.0,6.0,6.0,6.0,09-05-24,09-12-24,"AS_SXU_MANF_3370: FS, AS_SXU_MANF_6022: FS, AS_SXU_INST_2302: FS","AS_SXU_MANF_6073: FS, AS_SXU_MANF_6024: FS",SLAC,0%,52213.52213_EEDHW (Electronics & Engineering Div - HW Engr),52213_EEDHW (Electronics & Engineering Div - HW Engr),Labor,0.0d,5.0,5.0,At Completion Units,9/5/2024,9/12/2024,0,0,0,0,0,0,0,0,0,0,1.03_Accelerator Systems (AS),1.03.06_AS Soft X-Ray Undulator (SXR) - SLAC,1.03.06.06_AS Soft X-Ray Undulator Procurement and Fabrication - SLAC,1.03.06.06.02_SXR Phase Shifter Manufacturing and Testing,AS_SXU_MANF_6023_Refurbish existing Phase Shifter  23,Electrical,,SLAC,Labor
103039,1.03,1.03.06,1.03.06.06,1.03.06.06.02,1.03.06.06.02,SXR Phase Shifter Manufacturing and Testing,AS_SXU_MANF_6023,Refurbish existing Phase Shifter  23,5.0,32.0,32.0,32.0,09-05-24,09-12-24,"AS_SXU_MANF_3370: FS, AS_SXU_MANF_6022: FS, AS_SXU_INST_2302: FS","AS_SXU_MANF_6073: FS, AS_SXU_MANF_6024: FS",SLAC,0%,52191.52191_METSMET Metrology,52191_METSMET Metrology,Labor,0.0d,5.0,5.0,At Completion Units,9/5/2024,9/12/2024,0,0,0,0,0,0,0,0,0,0,1.03_Accelerator Systems (AS),1.03.06_AS Soft X-Ray Undulator (SXR) - SLAC,1.03.06.06_AS Soft X-Ray Undulator Procurement and Fabrication - SLAC,1.03.06.06.02_SXR Phase Shifter Manufacturing and Testing,AS_SXU_MANF_6023_Refurbish existing Phase Shifter  23,Metrology,,SLAC,Labor
103040,1.03,1.03.06,1.03.06.06,1.03.06.06.02,1.03.06.06.02,SXR Phase Shifter Manufacturing and Testing,AS_SXU_MANF_6023,Refurbish existing Phase Shifter  23,5.0,6.0,6.0,6.0,09-05-24,09-12-24,"AS_SXU_MANF_3370: FS, AS_SXU_MANF_6022: FS, AS_SXU_INST_2302: FS","AS_SXU_MANF_6073: FS, AS_SXU_MANF_6024: FS",SLAC,0%,52169.52169_METS Mechanical Engineer,52169_METS Mechanical Engineer,Labor,0.0d,5.0,5.0,At Completion Units,9/5/2024,9/12/2024,0,0,0,0,0,0,0,0,0,0,1.03_Accelerator Systems (AS),1.03.06_AS Soft X-Ray Undulator (SXR) - SLAC,1.03.06.06_AS Soft X-Ray Undulator Procurement and Fabrication - SLAC,1.03.06.06.02_SXR Phase Shifter Manufacturing and Testing,AS_SXU_MANF_6023_Refurbish existing Phase Shifter  23,Mechanical,,SLAC,Labor
103041,1.03,1.03.06,1.03.06.06,1.03.06.06.02,1.03.06.06.02,SXR Phase Shifter Manufacturing and Testing,AS_SXU_MANF_6022,Refurbish existing Phase Shifter  22,5.0,4.0,4.0,4.0,08-28-24,09-05-24,"AS_SXU_MANF_3370: FS, AS_SXU_MANF_6021: FS, AS_SXU_INST_2202: FS","AS_SXU_MANF_6072: FS, AS_SXU_MANF_6023: FS",SLAC,0%,52198.52198_METSMANF (METSD Manufacturing),52198_METSMANF (METSD Manufacturing),Labor,0.0d,5.0,5.0,At Completion Units,8/28/2024,9/5/2024,0,0,0,0,0,0,0,0,0,0,1.03_Accelerator Systems (AS),1.03.06_AS Soft X-Ray Undulator (SXR) - SLAC,1.03.06.06_AS Soft X-Ray Undulator Procurement and Fabrication - SLAC,1.03.06.06.02_SXR Phase Shifter Manufacturing and Testing,AS_SXU_MANF_6022_Refurbish existing Phase Shifter  22,Manufacturing,,SLAC,Labor
103042,1.03,1.03.06,1.03.06.06,1.03.06.06.02,1.03.06.06.02,SXR Phase Shifter Manufacturing and Testing,AS_SXU_MANF_6022,Refurbish existing Phase Shifter  22,5.0,6.0,6.0,6.0,08-28-24,09-05-24,"AS_SXU_MANF_3370: FS, AS_SXU_MANF_6021: FS, AS_SXU_INST_2202: FS","AS_SXU_MANF_6072: FS, AS_SXU_MANF_6023: FS",SLAC,0%,52213.52213_EEDHW (Electronics & Engineering Div - HW Engr),52213_EEDHW (Electronics & Engineering Div - HW Engr),Labor,0.0d,5.0,5.0,At Completion Units,8/28/2024,9/5/2024,0,0,0,0,0,0,0,0,0,0,1.03_Accelerator Systems (AS),1.03.06_AS Soft X-Ray Undulator (SXR) - SLAC,1.03.06.06_AS Soft X-Ray Undulator Procurement and Fabrication - SLAC,1.03.06.06.02_SXR Phase Shifter Manufacturing and Testing,AS_SXU_MANF_6022_Refurbish existing Phase Shifter  22,Electrical,,SLAC,Labor
103043,1.03,1.03.06,1.03.06.06,1.03.06.06.02,1.03.06.06.02,SXR Phase Shifter Manufacturing and Testing,AS_SXU_MANF_6022,Refurbish existing Phase Shifter  22,5.0,32.0,32.0,32.0,08-28-24,09-05-24,"AS_SXU_MANF_3370: FS, AS_SXU_MANF_6021: FS, AS_SXU_INST_2202: FS","AS_SXU_MANF_6072: FS, AS_SXU_MANF_6023: FS",SLAC,0%,52191.52191_METSMET Metrology,52191_METSMET Metrology,Labor,0.0d,5.0,5.0,At Completion Units,8/28/2024,9/5/2024,0,0,0,0,0,0,0,0,0,0,1.03_Accelerator Systems (AS),1.03.06_AS Soft X-Ray Undulator (SXR) - SLAC,1.03.06.06_AS Soft X-Ray Undulator Procurement and Fabrication - SLAC,1.03.06.06.02_SXR Phase Shifter Manufacturing and Testing,AS_SXU_MANF_6022_Refurbish existing Phase Shifter  22,Metrology,,SLAC,Labor
103044,1.03,1.03.06,1.03.06.06,1.03.06.06.02,1.03.06.06.02,SXR Phase Shifter Manufacturing and Testing,AS_SXU_MANF_6022,Refurbish existing Phase Shifter  22,5.0,6.0,6.0,6.0,08-28-24,09-05-24,"AS_SXU_MANF_3370: FS, AS_SXU_MANF_6021: FS, AS_SXU_INST_2202: FS","AS_SXU_MANF_6072: FS, AS_SXU_MANF_6023: FS",SLAC,0%,52169.52169_METS Mechanical Engineer,52169_METS Mechanical Engineer,Labor,0.0d,5.0,5.0,At Completion Units,8/28/2024,9/5/2024,0,0,0,0,0,0,0,0,0,0,1.03_Accelerator Systems (AS),1.03.06_AS Soft X-Ray Undulator (SXR) - SLAC,1.03.06.06_AS Soft X-Ray Undulator Procurement and Fabrication - SLAC,1.03.06.06.02_SXR Phase Shifter Manufacturing and Testing,AS_SXU_MANF_6022_Refurbish existing Phase Shifter  22,Mechanical,,SLAC,Labor
103045,1.03,1.03.06,1.03.06.06,1.03.06.06.02,1.03.06.06.02,SXR Phase Shifter Manufacturing and Testing,AS_SXU_MANF_6021,Refurbish existing Phase Shifter  21,5.0,4.0,4.0,4.0,07-25-24,07-31-24,"AS_SXU_MANF_3370: FS, AS_SXU_MANF_6020: FS, AS_SXU_INST_2102: FS","AS_SXU_MANF_6071: FS, AS_SXU_MANF_6022: FS",SLAC,0%,52198.52198_METSMANF (METSD Manufacturing),52198_METSMANF (METSD Manufacturing),Labor,0.0d,5.0,5.0,At Completion Units,7/1/2024,7/9/2024,0,0,0,0,0,0,0,0,0,0,1.03_Accelerator Systems (AS),1.03.06_AS Soft X-Ray Undulator (SXR) - SLAC,1.03.06.06_AS Soft X-Ray Undulator Procurement and Fabrication - SLAC,1.03.06.06.02_SXR Phase Shifter Manufacturing and Testing,AS_SXU_MANF_6021_Refurbish existing Phase Shifter  21,Manufacturing,,SLAC,Labor
103046,1.03,1.03.06,1.03.06.06,1.03.06.06.02,1.03.06.06.02,SXR Phase Shifter Manufacturing and Testing,AS_SXU_MANF_6021,Refurbish existing Phase Shifter  21,5.0,6.0,6.0,6.0,07-25-24,07-31-24,"AS_SXU_MANF_3370: FS, AS_SXU_MANF_6020: FS, AS_SXU_INST_2102: FS","AS_SXU_MANF_6071: FS, AS_SXU_MANF_6022: FS",SLAC,0%,52213.52213_EEDHW (Electronics & Engineering Div - HW Engr),52213_EEDHW (Electronics & Engineering Div - HW Engr),Labor,0.0d,5.0,5.0,At Completion Units,7/1/2024,7/9/2024,0,0,0,0,0,0,0,0,0,0,1.03_Accelerator Systems (AS),1.03.06_AS Soft X-Ray Undulator (SXR) - SLAC,1.03.06.06_AS Soft X-Ray Undulator Procurement and Fabrication - SLAC,1.03.06.06.02_SXR Phase Shifter Manufacturing and Testing,AS_SXU_MANF_6021_Refurbish existing Phase Shifter  21,Electrical,,SLAC,Labor
103047,1.03,1.03.06,1.03.06.06,1.03.06.06.02,1.03.06.06.02,SXR Phase Shifter Manufacturing and Testing,AS_SXU_MANF_6021,Refurbish existing Phase Shifter  21,5.0,32.0,32.0,32.0,07-25-24,07-31-24,"AS_SXU_MANF_3370: FS, AS_SXU_MANF_6020: FS, AS_SXU_INST_2102: FS","AS_SXU_MANF_6071: FS, AS_SXU_MANF_6022: FS",SLAC,0%,52191.52191_METSMET Metrology,52191_METSMET Metrology,Labor,0.0d,5.0,5.0,At Completion Units,7/1/2024,7/9/2024,0,0,0,0,0,0,0,0,0,0,1.03_Accelerator Systems (AS),1.03.06_AS Soft X-Ray Undulator (SXR) - SLAC,1.03.06.06_AS Soft X-Ray Undulator Procurement and Fabrication - SLAC,1.03.06.06.02_SXR Phase Shifter Manufacturing and Testing,AS_SXU_MANF_6021_Refurbish existing Phase Shifter  21,Metrology,,SLAC,Labor
103048,1.03,1.03.06,1.03.06.06,1.03.06.06.02,1.03.06.06.02,SXR Phase Shifter Manufacturing and Testing,AS_SXU_MANF_6021,Refurbish existing Phase Shifter  21,5.0,6.0,6.0,6.0,07-25-24,07-31-24,"AS_SXU_MANF_3370: FS, AS_SXU_MANF_6020: FS, AS_SXU_INST_2102: FS","AS_SXU_MANF_6071: FS, AS_SXU_MANF_6022: FS",SLAC,0%,52169.52169_METS Mechanical Engineer,52169_METS Mechanical Engineer,Labor,0.0d,5.0,5.0,At Completion Units,7/1/2024,7/9/2024,0,0,0,0,0,0,0,0,0,0,1.03_Accelerator Systems (AS),1.03.06_AS Soft X-Ray Undulator (SXR) - SLAC,1.03.06.06_AS Soft X-Ray Undulator Procurement and Fabrication - SLAC,1.03.06.06.02_SXR Phase Shifter Manufacturing and Testing,AS_SXU_MANF_6021_Refurbish existing Phase Shifter  21,Mechanical,,SLAC,Labor
103049,1.03,1.03.06,1.03.06.06,1.03.06.06.02,1.03.06.06.02,SXR Phase Shifter Manufacturing and Testing,AS_SXU_MANF_6020,Refurbish existing Phase Shifter  20,5.0,4.0,4.0,4.0,07-18-24,07-24-24,"AS_SXU_MANF_3370: FS, AS_SXU_MANF_6019: FS, AS_SXU_INST_2002: FS","AS_SXU_MANF_6070: FS, AS_SXU_MANF_6021: FS",SLAC,0%,52198.52198_METSMANF (METSD Manufacturing),52198_METSMANF (METSD Manufacturing),Labor,0.0d,5.0,5.0,At Completion Units,6/24/2024,7/1/2024,0,0,0,0,0,0,0,0,0,0,1.03_Accelerator Systems (AS),1.03.06_AS Soft X-Ray Undulator (SXR) - SLAC,1.03.06.06_AS Soft X-Ray Undulator Procurement and Fabrication - SLAC,1.03.06.06.02_SXR Phase Shifter Manufacturing and Testing,AS_SXU_MANF_6020_Refurbish existing Phase Shifter  20,Manufacturing,,SLAC,Labor
103050,1.03,1.03.06,1.03.06.06,1.03.06.06.02,1.03.06.06.02,SXR Phase Shifter Manufacturing and Testing,AS_SXU_MANF_6020,Refurbish existing Phase Shifter  20,5.0,6.0,6.0,6.0,07-18-24,07-24-24,"AS_SXU_MANF_3370: FS, AS_SXU_MANF_6019: FS, AS_SXU_INST_2002: FS","AS_SXU_MANF_6070: FS, AS_SXU_MANF_6021: FS",SLAC,0%,52213.52213_EEDHW (Electronics & Engineering Div - HW Engr),52213_EEDHW (Electronics & Engineering Div - HW Engr),Labor,0.0d,5.0,5.0,At Completion Units,6/24/2024,7/1/2024,0,0,0,0,0,0,0,0,0,0,1.03_Accelerator Systems (AS),1.03.06_AS Soft X-Ray Undulator (SXR) - SLAC,1.03.06.06_AS Soft X-Ray Undulator Procurement and Fabrication - SLAC,1.03.06.06.02_SXR Phase Shifter Manufacturing and Testing,AS_SXU_MANF_6020_Refurbish existing Phase Shifter  20,Electrical,,SLAC,Labor
103051,1.03,1.03.06,1.03.06.06,1.03.06.06.02,1.03.06.06.02,SXR Phase Shifter Manufacturing and Testing,AS_SXU_MANF_6020,Refurbish existing Phase Shifter  20,5.0,32.0,32.0,32.0,07-18-24,07-24-24,"AS_SXU_MANF_3370: FS, AS_SXU_MANF_6019: FS, AS_SXU_INST_2002: FS","AS_SXU_MANF_6070: FS, AS_SXU_MANF_6021: FS",SLAC,0%,52191.52191_METSMET Metrology,52191_METSMET Metrology,Labor,0.0d,5.0,5.0,At Completion Units,6/24/2024,7/1/2024,0,0,0,0,0,0,0,0,0,0,1.03_Accelerator Systems (AS),1.03.06_AS Soft X-Ray Undulator (SXR) - SLAC,1.03.06.06_AS Soft X-Ray Undulator Procurement and Fabrication - SLAC,1.03.06.06.02_SXR Phase Shifter Manufacturing and Testing,AS_SXU_MANF_6020_Refurbish existing Phase Shifter  20,Metrology,,SLAC,Labor
103052,1.03,1.03.06,1.03.06.06,1.03.06.06.02,1.03.06.06.02,SXR Phase Shifter Manufacturing and Testing,AS_SXU_MANF_6020,Refurbish existing Phase Shifter  20,5.0,6.0,6.0,6.0,07-18-24,07-24-24,"AS_SXU_MANF_3370: FS, AS_SXU_MANF_6019: FS, AS_SXU_INST_2002: FS","AS_SXU_MANF_6070: FS, AS_SXU_MANF_6021: FS",SLAC,0%,52169.52169_METS Mechanical Engineer,52169_METS Mechanical Engineer,Labor,0.0d,5.0,5.0,At Completion Units,6/24/2024,7/1/2024,0,0,0,0,0,0,0,0,0,0,1.03_Accelerator Systems (AS),1.03.06_AS Soft X-Ray Undulator (SXR) - SLAC,1.03.06.06_AS Soft X-Ray Undulator Procurement and Fabrication - SLAC,1.03.06.06.02_SXR Phase Shifter Manufacturing and Testing,AS_SXU_MANF_6020_Refurbish existing Phase Shifter  20,Mechanical,,SLAC,Labor
103053,1.03,1.03.06,1.03.06.06,1.03.06.06.02,1.03.06.06.02,SXR Phase Shifter Manufacturing and Testing,AS_SXU_MANF_6019,Refurbish existing Phase Shifter  19,5.0,4.0,4.0,4.0,07-11-24,07-17-24,"AS_SXU_MANF_3370: FS, AS_SXU_MANF_6018: FS, AS_SXU_INST_1902: FS","AS_SXU_MANF_6069: FS, AS_SXU_MANF_6020: FS",SLAC,0%,52198.52198_METSMANF (METSD Manufacturing),52198_METSMANF (METSD Manufacturing),Labor,0.0d,5.0,5.0,At Completion Units,4/19/2024,4/26/2024,0,0,0,0,0,0,0,0,0,0,1.03_Accelerator Systems (AS),1.03.06_AS Soft X-Ray Undulator (SXR) - SLAC,1.03.06.06_AS Soft X-Ray Undulator Procurement and Fabrication - SLAC,1.03.06.06.02_SXR Phase Shifter Manufacturing and Testing,AS_SXU_MANF_6019_Refurbish existing Phase Shifter  19,Manufacturing,,SLAC,Labor
103054,1.03,1.03.06,1.03.06.06,1.03.06.06.02,1.03.06.06.02,SXR Phase Shifter Manufacturing and Testing,AS_SXU_MANF_6019,Refurbish existing Phase Shifter  19,5.0,6.0,6.0,6.0,07-11-24,07-17-24,"AS_SXU_MANF_3370: FS, AS_SXU_MANF_6018: FS, AS_SXU_INST_1902: FS","AS_SXU_MANF_6069: FS, AS_SXU_MANF_6020: FS",SLAC,0%,52213.52213_EEDHW (Electronics & Engineering Div - HW Engr),52213_EEDHW (Electronics & Engineering Div - HW Engr),Labor,0.0d,5.0,5.0,At Completion Units,4/19/2024,4/26/2024,0,0,0,0,0,0,0,0,0,0,1.03_Accelerator Systems (AS),1.03.06_AS Soft X-Ray Undulator (SXR) - SLAC,1.03.06.06_AS Soft X-Ray Undulator Procurement and Fabrication - SLAC,1.03.06.06.02_SXR Phase Shifter Manufacturing and Testing,AS_SXU_MANF_6019_Refurbish existing Phase Shifter  19,Electrical,,SLAC,Labor
103055,1.03,1.03.06,1.03.06.06,1.03.06.06.02,1.03.06.06.02,SXR Phase Shifter Manufacturing and Testing,AS_SXU_MANF_6019,Refurbish existing Phase Shifter  19,5.0,32.0,32.0,32.0,07-11-24,07-17-24,"AS_SXU_MANF_3370: FS, AS_SXU_MANF_6018: FS, AS_SXU_INST_1902: FS","AS_SXU_MANF_6069: FS, AS_SXU_MANF_6020: FS",SLAC,0%,52191.52191_METSMET Metrology,52191_METSMET Metrology,Labor,0.0d,5.0,5.0,At Completion Units,4/19/2024,4/26/2024,0,0,0,0,0,0,0,0,0,0,1.03_Accelerator Systems (AS),1.03.06_AS Soft X-Ray Undulator (SXR) - SLAC,1.03.06.06_AS Soft X-Ray Undulator Procurement and Fabrication - SLAC,1.03.06.06.02_SXR Phase Shifter Manufacturing and Testing,AS_SXU_MANF_6019_Refurbish existing Phase Shifter  19,Metrology,,SLAC,Labor
103056,1.03,1.03.06,1.03.06.06,1.03.06.06.02,1.03.06.06.02,SXR Phase Shifter Manufacturing and Testing,AS_SXU_MANF_6019,Refurbish existing Phase Shifter  19,5.0,6.0,6.0,6.0,07-11-24,07-17-24,"AS_SXU_MANF_3370: FS, AS_SXU_MANF_6018: FS, AS_SXU_INST_1902: FS","AS_SXU_MANF_6069: FS, AS_SXU_MANF_6020: FS",SLAC,0%,52169.52169_METS Mechanical Engineer,52169_METS Mechanical Engineer,Labor,0.0d,5.0,5.0,At Completion Units,4/19/2024,4/26/2024,0,0,0,0,0,0,0,0,0,0,1.03_Accelerator Systems (AS),1.03.06_AS Soft X-Ray Undulator (SXR) - SLAC,1.03.06.06_AS Soft X-Ray Undulator Procurement and Fabrication - SLAC,1.03.06.06.02_SXR Phase Shifter Manufacturing and Testing,AS_SXU_MANF_6019_Refurbish existing Phase Shifter  19,Mechanical,,SLAC,Labor
103057,1.03,1.03.06,1.03.06.06,1.03.06.06.02,1.03.06.06.02,SXR Phase Shifter Manufacturing and Testing,AS_SXU_MANF_6018,Refurbish existing Phase Shifter  18,5.0,4.0,4.0,4.0,07-03-24,07-10-24,"AS_SXU_MANF_3370: FS, AS_SXU_MANF_6017: FS, AS_SXU_INST_1802: FS","AS_SXU_MANF_6068: FS, AS_SXU_MANF_6019: FS",SLAC,0%,52198.52198_METSMANF (METSD Manufacturing),52198_METSMANF (METSD Manufacturing),Labor,0.0d,5.0,5.0,At Completion Units,1/11/2024,1/18/2024,0,0,0,0,0,0,0,0,0,0,1.03_Accelerator Systems (AS),1.03.06_AS Soft X-Ray Undulator (SXR) - SLAC,1.03.06.06_AS Soft X-Ray Undulator Procurement and Fabrication - SLAC,1.03.06.06.02_SXR Phase Shifter Manufacturing and Testing,AS_SXU_MANF_6018_Refurbish existing Phase Shifter  18,Manufacturing,,SLAC,Labor
103058,1.03,1.03.06,1.03.06.06,1.03.06.06.02,1.03.06.06.02,SXR Phase Shifter Manufacturing and Testing,AS_SXU_MANF_6018,Refurbish existing Phase Shifter  18,5.0,6.0,6.0,6.0,07-03-24,07-10-24,"AS_SXU_MANF_3370: FS, AS_SXU_MANF_6017: FS, AS_SXU_INST_1802: FS","AS_SXU_MANF_6068: FS, AS_SXU_MANF_6019: FS",SLAC,0%,52213.52213_EEDHW (Electronics & Engineering Div - HW Engr),52213_EEDHW (Electronics & Engineering Div - HW Engr),Labor,0.0d,5.0,5.0,At Completion Units,1/11/2024,1/18/2024,0,0,0,0,0,0,0,0,0,0,1.03_Accelerator Systems (AS),1.03.06_AS Soft X-Ray Undulator (SXR) - SLAC,1.03.06.06_AS Soft X-Ray Undulator Procurement and Fabrication - SLAC,1.03.06.06.02_SXR Phase Shifter Manufacturing and Testing,AS_SXU_MANF_6018_Refurbish existing Phase Shifter  18,Electrical,,SLAC,Labor
103059,1.03,1.03.06,1.03.06.06,1.03.06.06.02,1.03.06.06.02,SXR Phase Shifter Manufacturing and Testing,AS_SXU_MANF_6018,Refurbish existing Phase Shifter  18,5.0,32.0,32.0,32.0,07-03-24,07-10-24,"AS_SXU_MANF_3370: FS, AS_SXU_MANF_6017: FS, AS_SXU_INST_1802: FS","AS_SXU_MANF_6068: FS, AS_SXU_MANF_6019: FS",SLAC,0%,52191.52191_METSMET Metrology,52191_METSMET Metrology,Labor,0.0d,5.0,5.0,At Completion Units,1/11/2024,1/18/2024,0,0,0,0,0,0,0,0,0,0,1.03_Accelerator Systems (AS),1.03.06_AS Soft X-Ray Undulator (SXR) - SLAC,1.03.06.06_AS Soft X-Ray Undulator Procurement and Fabrication - SLAC,1.03.06.06.02_SXR Phase Shifter Manufacturing and Testing,AS_SXU_MANF_6018_Refurbish existing Phase Shifter  18,Metrology,,SLAC,Labor
103060,1.03,1.03.06,1.03.06.06,1.03.06.06.02,1.03.06.06.02,SXR Phase Shifter Manufacturing and Testing,AS_SXU_MANF_6018,Refurbish existing Phase Shifter  18,5.0,6.0,6.0,6.0,07-03-24,07-10-24,"AS_SXU_MANF_3370: FS, AS_SXU_MANF_6017: FS, AS_SXU_INST_1802: FS","AS_SXU_MANF_6068: FS, AS_SXU_MANF_6019: FS",SLAC,0%,52169.52169_METS Mechanical Engineer,52169_METS Mechanical Engineer,Labor,0.0d,5.0,5.0,At Completion Units,1/11/2024,1/18/2024,0,0,0,0,0,0,0,0,0,0,1.03_Accelerator Systems (AS),1.03.06_AS Soft X-Ray Undulator (SXR) - SLAC,1.03.06.06_AS Soft X-Ray Undulator Procurement and Fabrication - SLAC,1.03.06.06.02_SXR Phase Shifter Manufacturing and Testing,AS_SXU_MANF_6018_Refurbish existing Phase Shifter  18,Mechanical,,SLAC,Labor
103061,1.03,1.03.06,1.03.06.06,1.03.06.06.02,1.03.06.06.02,SXR Phase Shifter Manufacturing and Testing,AS_SXU_MANF_6017,Refurbish existing Phase Shifter  17,5.0,4.0,4.0,4.0,06-26-24,07-02-24,"AS_SXU_MANF_3370: FS, AS_SXU_MANF_6016: FS, AS_SXU_INST_1702: FS","AS_SXU_MANF_6067: FS, AS_SXU_MANF_6018: FS",SLAC,0%,52198.52198_METSMANF (METSD Manufacturing),52198_METSMANF (METSD Manufacturing),Labor,0.0d,5.0,5.0,At Completion Units,1/4/2024,1/10/2024,0,0,0,0,0,0,0,0,0,0,1.03_Accelerator Systems (AS),1.03.06_AS Soft X-Ray Undulator (SXR) - SLAC,1.03.06.06_AS Soft X-Ray Undulator Procurement and Fabrication - SLAC,1.03.06.06.02_SXR Phase Shifter Manufacturing and Testing,AS_SXU_MANF_6017_Refurbish existing Phase Shifter  17,Manufacturing,,SLAC,Labor
103062,1.03,1.03.06,1.03.06.06,1.03.06.06.02,1.03.06.06.02,SXR Phase Shifter Manufacturing and Testing,AS_SXU_MANF_6017,Refurbish existing Phase Shifter  17,5.0,6.0,6.0,6.0,06-26-24,07-02-24,"AS_SXU_MANF_3370: FS, AS_SXU_MANF_6016: FS, AS_SXU_INST_1702: FS","AS_SXU_MANF_6067: FS, AS_SXU_MANF_6018: FS",SLAC,0%,52213.52213_EEDHW (Electronics & Engineering Div - HW Engr),52213_EEDHW (Electronics & Engineering Div - HW Engr),Labor,0.0d,5.0,5.0,At Completion Units,1/4/2024,1/10/2024,0,0,0,0,0,0,0,0,0,0,1.03_Accelerator Systems (AS),1.03.06_AS Soft X-Ray Undulator (SXR) - SLAC,1.03.06.06_AS Soft X-Ray Undulator Procurement and Fabrication - SLAC,1.03.06.06.02_SXR Phase Shifter Manufacturing and Testing,AS_SXU_MANF_6017_Refurbish existing Phase Shifter  17,Electrical,,SLAC,Labor
103063,1.03,1.03.06,1.03.06.06,1.03.06.06.02,1.03.06.06.02,SXR Phase Shifter Manufacturing and Testing,AS_SXU_MANF_6017,Refurbish existing Phase Shifter  17,5.0,32.0,32.0,32.0,06-26-24,07-02-24,"AS_SXU_MANF_3370: FS, AS_SXU_MANF_6016: FS, AS_SXU_INST_1702: FS","AS_SXU_MANF_6067: FS, AS_SXU_MANF_6018: FS",SLAC,0%,52191.52191_METSMET Metrology,52191_METSMET Metrology,Labor,0.0d,5.0,5.0,At Completion Units,1/4/2024,1/10/2024,0,0,0,0,0,0,0,0,0,0,1.03_Accelerator Systems (AS),1.03.06_AS Soft X-Ray Undulator (SXR) - SLAC,1.03.06.06_AS Soft X-Ray Undulator Procurement and Fabrication - SLAC,1.03.06.06.02_SXR Phase Shifter Manufacturing and Testing,AS_SXU_MANF_6017_Refurbish existing Phase Shifter  17,Metrology,,SLAC,Labor
103064,1.03,1.03.06,1.03.06.06,1.03.06.06.02,1.03.06.06.02,SXR Phase Shifter Manufacturing and Testing,AS_SXU_MANF_6017,Refurbish existing Phase Shifter  17,5.0,6.0,6.0,6.0,06-26-24,07-02-24,"AS_SXU_MANF_3370: FS, AS_SXU_MANF_6016: FS, AS_SXU_INST_1702: FS","AS_SXU_MANF_6067: FS, AS_SXU_MANF_6018: FS",SLAC,0%,52169.52169_METS Mechanical Engineer,52169_METS Mechanical Engineer,Labor,0.0d,5.0,5.0,At Completion Units,1/4/2024,1/10/2024,0,0,0,0,0,0,0,0,0,0,1.03_Accelerator Systems (AS),1.03.06_AS Soft X-Ray Undulator (SXR) - SLAC,1.03.06.06_AS Soft X-Ray Undulator Procurement and Fabrication - SLAC,1.03.06.06.02_SXR Phase Shifter Manufacturing and Testing,AS_SXU_MANF_6017_Refurbish existing Phase Shifter  17,Mechanical,,SLAC,Labor
103065,1.03,1.03.06,1.03.06.06,1.03.06.06.02,1.03.06.06.02,SXR Phase Shifter Manufacturing and Testing,AS_SXU_MANF_6016,Refurbish existing Phase Shifter  16,5.0,4.0,4.0,4.0,06-19-24,06-25-24,"AS_SXU_MANF_3370: FS, AS_SXU_MANF_6015: FS, AS_SXU_INST_1602: FS","AS_SXU_MANF_6066: FS, AS_SXU_MANF_6017: FS",SLAC,0%,52198.52198_METSMANF (METSD Manufacturing),52198_METSMANF (METSD Manufacturing),Labor,0.0d,5.0,5.0,At Completion Units,12/4/2023,12/11/2023,0,0,0,0,0,0,0,0,0,0,1.03_Accelerator Systems (AS),1.03.06_AS Soft X-Ray Undulator (SXR) - SLAC,1.03.06.06_AS Soft X-Ray Undulator Procurement and Fabrication - SLAC,1.03.06.06.02_SXR Phase Shifter Manufacturing and Testing,AS_SXU_MANF_6016_Refurbish existing Phase Shifter  16,Manufacturing,,SLAC,Labor
103066,1.03,1.03.06,1.03.06.06,1.03.06.06.02,1.03.06.06.02,SXR Phase Shifter Manufacturing and Testing,AS_SXU_MANF_6016,Refurbish existing Phase Shifter  16,5.0,6.0,6.0,6.0,06-19-24,06-25-24,"AS_SXU_MANF_3370: FS, AS_SXU_MANF_6015: FS, AS_SXU_INST_1602: FS","AS_SXU_MANF_6066: FS, AS_SXU_MANF_6017: FS",SLAC,0%,52213.52213_EEDHW (Electronics & Engineering Div - HW Engr),52213_EEDHW (Electronics & Engineering Div - HW Engr),Labor,0.0d,5.0,5.0,At Completion Units,12/4/2023,12/11/2023,0,0,0,0,0,0,0,0,0,0,1.03_Accelerator Systems (AS),1.03.06_AS Soft X-Ray Undulator (SXR) - SLAC,1.03.06.06_AS Soft X-Ray Undulator Procurement and Fabrication - SLAC,1.03.06.06.02_SXR Phase Shifter Manufacturing and Testing,AS_SXU_MANF_6016_Refurbish existing Phase Shifter  16,Electrical,,SLAC,Labor
103067,1.03,1.03.06,1.03.06.06,1.03.06.06.02,1.03.06.06.02,SXR Phase Shifter Manufacturing and Testing,AS_SXU_MANF_6016,Refurbish existing Phase Shifter  16,5.0,32.0,32.0,32.0,06-19-24,06-25-24,"AS_SXU_MANF_3370: FS, AS_SXU_MANF_6015: FS, AS_SXU_INST_1602: FS","AS_SXU_MANF_6066: FS, AS_SXU_MANF_6017: FS",SLAC,0%,52191.52191_METSMET Metrology,52191_METSMET Metrology,Labor,0.0d,5.0,5.0,At Completion Units,12/4/2023,12/11/2023,0,0,0,0,0,0,0,0,0,0,1.03_Accelerator Systems (AS),1.03.06_AS Soft X-Ray Undulator (SXR) - SLAC,1.03.06.06_AS Soft X-Ray Undulator Procurement and Fabrication - SLAC,1.03.06.06.02_SXR Phase Shifter Manufacturing and Testing,AS_SXU_MANF_6016_Refurbish existing Phase Shifter  16,Metrology,,SLAC,Labor
103068,1.03,1.03.06,1.03.06.06,1.03.06.06.02,1.03.06.06.02,SXR Phase Shifter Manufacturing and Testing,AS_SXU_MANF_6016,Refurbish existing Phase Shifter  16,5.0,6.0,6.0,6.0,06-19-24,06-25-24,"AS_SXU_MANF_3370: FS, AS_SXU_MANF_6015: FS, AS_SXU_INST_1602: FS","AS_SXU_MANF_6066: FS, AS_SXU_MANF_6017: FS",SLAC,0%,52169.52169_METS Mechanical Engineer,52169_METS Mechanical Engineer,Labor,0.0d,5.0,5.0,At Completion Units,12/4/2023,12/11/2023,0,0,0,0,0,0,0,0,0,0,1.03_Accelerator Systems (AS),1.03.06_AS Soft X-Ray Undulator (SXR) - SLAC,1.03.06.06_AS Soft X-Ray Undulator Procurement and Fabrication - SLAC,1.03.06.06.02_SXR Phase Shifter Manufacturing and Testing,AS_SXU_MANF_6016_Refurbish existing Phase Shifter  16,Mechanical,,SLAC,Labor
103069,1.03,1.03.06,1.03.06.06,1.03.06.06.02,1.03.06.06.02,SXR Phase Shifter Manufacturing and Testing,AS_SXU_MANF_6015,Refurbish existing Phase Shifter  15,5.0,4.0,4.0,4.0,06-12-24,06-18-24,"AS_SXU_MANF_3370: FS, AS_SXU_MANF_6014: FS, AS_SXU_INST_1502: FS","AS_SXU_MANF_6065: FS, AS_SXU_MANF_6016: FS",SLAC,0%,52198.52198_METSMANF (METSD Manufacturing),52198_METSMANF (METSD Manufacturing),Labor,0.0d,5.0,5.0,At Completion Units,11/27/2023,12/4/2023,0,0,0,0,0,0,0,0,0,0,1.03_Accelerator Systems (AS),1.03.06_AS Soft X-Ray Undulator (SXR) - SLAC,1.03.06.06_AS Soft X-Ray Undulator Procurement and Fabrication - SLAC,1.03.06.06.02_SXR Phase Shifter Manufacturing and Testing,AS_SXU_MANF_6015_Refurbish existing Phase Shifter  15,Manufacturing,,SLAC,Labor
103070,1.03,1.03.06,1.03.06.06,1.03.06.06.02,1.03.06.06.02,SXR Phase Shifter Manufacturing and Testing,AS_SXU_MANF_6015,Refurbish existing Phase Shifter  15,5.0,6.0,6.0,6.0,06-12-24,06-18-24,"AS_SXU_MANF_3370: FS, AS_SXU_MANF_6014: FS, AS_SXU_INST_1502: FS","AS_SXU_MANF_6065: FS, AS_SXU_MANF_6016: FS",SLAC,0%,52213.52213_EEDHW (Electronics & Engineering Div - HW Engr),52213_EEDHW (Electronics & Engineering Div - HW Engr),Labor,0.0d,5.0,5.0,At Completion Units,11/27/2023,12/4/2023,0,0,0,0,0,0,0,0,0,0,1.03_Accelerator Systems (AS),1.03.06_AS Soft X-Ray Undulator (SXR) - SLAC,1.03.06.06_AS Soft X-Ray Undulator Procurement and Fabrication - SLAC,1.03.06.06.02_SXR Phase Shifter Manufacturing and Testing,AS_SXU_MANF_6015_Refurbish existing Phase Shifter  15,Electrical,,SLAC,Labor
103071,1.03,1.03.06,1.03.06.06,1.03.06.06.02,1.03.06.06.02,SXR Phase Shifter Manufacturing and Testing,AS_SXU_MANF_6015,Refurbish existing Phase Shifter  15,5.0,32.0,32.0,32.0,06-12-24,06-18-24,"AS_SXU_MANF_3370: FS, AS_SXU_MANF_6014: FS, AS_SXU_INST_1502: FS","AS_SXU_MANF_6065: FS, AS_SXU_MANF_6016: FS",SLAC,0%,52191.52191_METSMET Metrology,52191_METSMET Metrology,Labor,0.0d,5.0,5.0,At Completion Units,11/27/2023,12/4/2023,0,0,0,0,0,0,0,0,0,0,1.03_Accelerator Systems (AS),1.03.06_AS Soft X-Ray Undulator (SXR) - SLAC,1.03.06.06_AS Soft X-Ray Undulator Procurement and Fabrication - SLAC,1.03.06.06.02_SXR Phase Shifter Manufacturing and Testing,AS_SXU_MANF_6015_Refurbish existing Phase Shifter  15,Metrology,,SLAC,Labor
103072,1.03,1.03.06,1.03.06.06,1.03.06.06.02,1.03.06.06.02,SXR Phase Shifter Manufacturing and Testing,AS_SXU_MANF_6015,Refurbish existing Phase Shifter  15,5.0,6.0,6.0,6.0,06-12-24,06-18-24,"AS_SXU_MANF_3370: FS, AS_SXU_MANF_6014: FS, AS_SXU_INST_1502: FS","AS_SXU_MANF_6065: FS, AS_SXU_MANF_6016: FS",SLAC,0%,52169.52169_METS Mechanical Engineer,52169_METS Mechanical Engineer,Labor,0.0d,5.0,5.0,At Completion Units,11/27/2023,12/4/2023,0,0,0,0,0,0,0,0,0,0,1.03_Accelerator Systems (AS),1.03.06_AS Soft X-Ray Undulator (SXR) - SLAC,1.03.06.06_AS Soft X-Ray Undulator Procurement and Fabrication - SLAC,1.03.06.06.02_SXR Phase Shifter Manufacturing and Testing,AS_SXU_MANF_6015_Refurbish existing Phase Shifter  15,Mechanical,,SLAC,Labor
103073,1.03,1.03.06,1.03.06.06,1.03.06.06.02,1.03.06.06.02,SXR Phase Shifter Manufacturing and Testing,AS_SXU_MANF_6014,Refurbish existing Phase Shifter  14,5.0,4.0,4.0,4.0,06-05-24,06-11-24,"AS_SXU_MANF_3370: FS, AS_SXU_MANF_6013: FS, AS_SXU_INST_1402: FS","AS_SXU_MANF_6064: FS, AS_SXU_MANF_6015: FS",SLAC,0%,52198.52198_METSMANF (METSD Manufacturing),52198_METSMANF (METSD Manufacturing),Labor,0.0d,5.0,5.0,At Completion Units,10/23/2023,10/30/2023,0,0,0,0,0,0,0,0,0,0,1.03_Accelerator Systems (AS),1.03.06_AS Soft X-Ray Undulator (SXR) - SLAC,1.03.06.06_AS Soft X-Ray Undulator Procurement and Fabrication - SLAC,1.03.06.06.02_SXR Phase Shifter Manufacturing and Testing,AS_SXU_MANF_6014_Refurbish existing Phase Shifter  14,Manufacturing,,SLAC,Labor
103074,1.03,1.03.06,1.03.06.06,1.03.06.06.02,1.03.06.06.02,SXR Phase Shifter Manufacturing and Testing,AS_SXU_MANF_6014,Refurbish existing Phase Shifter  14,5.0,6.0,6.0,6.0,06-05-24,06-11-24,"AS_SXU_MANF_3370: FS, AS_SXU_MANF_6013: FS, AS_SXU_INST_1402: FS","AS_SXU_MANF_6064: FS, AS_SXU_MANF_6015: FS",SLAC,0%,52213.52213_EEDHW (Electronics & Engineering Div - HW Engr),52213_EEDHW (Electronics & Engineering Div - HW Engr),Labor,0.0d,5.0,5.0,At Completion Units,10/23/2023,10/30/2023,0,0,0,0,0,0,0,0,0,0,1.03_Accelerator Systems (AS),1.03.06_AS Soft X-Ray Undulator (SXR) - SLAC,1.03.06.06_AS Soft X-Ray Undulator Procurement and Fabrication - SLAC,1.03.06.06.02_SXR Phase Shifter Manufacturing and Testing,AS_SXU_MANF_6014_Refurbish existing Phase Shifter  14,Electrical,,SLAC,Labor
103075,1.03,1.03.06,1.03.06.06,1.03.06.06.02,1.03.06.06.02,SXR Phase Shifter Manufacturing and Testing,AS_SXU_MANF_6014,Refurbish existing Phase Shifter  14,5.0,32.0,32.0,32.0,06-05-24,06-11-24,"AS_SXU_MANF_3370: FS, AS_SXU_MANF_6013: FS, AS_SXU_INST_1402: FS","AS_SXU_MANF_6064: FS, AS_SXU_MANF_6015: FS",SLAC,0%,52191.52191_METSMET Metrology,52191_METSMET Metrology,Labor,0.0d,5.0,5.0,At Completion Units,10/23/2023,10/30/2023,0,0,0,0,0,0,0,0,0,0,1.03_Accelerator Systems (AS),1.03.06_AS Soft X-Ray Undulator (SXR) - SLAC,1.03.06.06_AS Soft X-Ray Undulator Procurement and Fabrication - SLAC,1.03.06.06.02_SXR Phase Shifter Manufacturing and Testing,AS_SXU_MANF_6014_Refurbish existing Phase Shifter  14,Metrology,,SLAC,Labor
103076,1.03,1.03.06,1.03.06.06,1.03.06.06.02,1.03.06.06.02,SXR Phase Shifter Manufacturing and Testing,AS_SXU_MANF_6014,Refurbish existing Phase Shifter  14,5.0,6.0,6.0,6.0,06-05-24,06-11-24,"AS_SXU_MANF_3370: FS, AS_SXU_MANF_6013: FS, AS_SXU_INST_1402: FS","AS_SXU_MANF_6064: FS, AS_SXU_MANF_6015: FS",SLAC,0%,52169.52169_METS Mechanical Engineer,52169_METS Mechanical Engineer,Labor,0.0d,5.0,5.0,At Completion Units,10/23/2023,10/30/2023,0,0,0,0,0,0,0,0,0,0,1.03_Accelerator Systems (AS),1.03.06_AS Soft X-Ray Undulator (SXR) - SLAC,1.03.06.06_AS Soft X-Ray Undulator Procurement and Fabrication - SLAC,1.03.06.06.02_SXR Phase Shifter Manufacturing and Testing,AS_SXU_MANF_6014_Refurbish existing Phase Shifter  14,Mechanical,,SLAC,Labor
103077,1.03,1.03.06,1.03.06.06,1.03.06.06.02,1.03.06.06.02,SXR Phase Shifter Manufacturing and Testing,AS_SXU_MANF_6013,Refurbish existing Phase Shifter  13,5.0,4.0,4.0,4.0,05-29-24,06-04-24,"AS_SXU_MANF_3370: FS, AS_SXU_MANF_6012: FS, AS_SXU_INST_1302: FS","AS_SXU_MANF_6063: FS, AS_SXU_MANF_6014: FS",SLAC,0%,52198.52198_METSMANF (METSD Manufacturing),52198_METSMANF (METSD Manufacturing),Labor,0.0d,5.0,5.0,At Completion Units,10/16/2023,10/23/2023,0,0,0,0,0,0,0,0,0,0,1.03_Accelerator Systems (AS),1.03.06_AS Soft X-Ray Undulator (SXR) - SLAC,1.03.06.06_AS Soft X-Ray Undulator Procurement and Fabrication - SLAC,1.03.06.06.02_SXR Phase Shifter Manufacturing and Testing,AS_SXU_MANF_6013_Refurbish existing Phase Shifter  13,Manufacturing,,SLAC,Labor
103078,1.03,1.03.06,1.03.06.06,1.03.06.06.02,1.03.06.06.02,SXR Phase Shifter Manufacturing and Testing,AS_SXU_MANF_6013,Refurbish existing Phase Shifter  13,5.0,6.0,6.0,6.0,05-29-24,06-04-24,"AS_SXU_MANF_3370: FS, AS_SXU_MANF_6012: FS, AS_SXU_INST_1302: FS","AS_SXU_MANF_6063: FS, AS_SXU_MANF_6014: FS",SLAC,0%,52213.52213_EEDHW (Electronics & Engineering Div - HW Engr),52213_EEDHW (Electronics & Engineering Div - HW Engr),Labor,0.0d,5.0,5.0,At Completion Units,10/16/2023,10/23/2023,0,0,0,0,0,0,0,0,0,0,1.03_Accelerator Systems (AS),1.03.06_AS Soft X-Ray Undulator (SXR) - SLAC,1.03.06.06_AS Soft X-Ray Undulator Procurement and Fabrication - SLAC,1.03.06.06.02_SXR Phase Shifter Manufacturing and Testing,AS_SXU_MANF_6013_Refurbish existing Phase Shifter  13,Electrical,,SLAC,Labor
103079,1.03,1.03.06,1.03.06.06,1.03.06.06.02,1.03.06.06.02,SXR Phase Shifter Manufacturing and Testing,AS_SXU_MANF_6013,Refurbish existing Phase Shifter  13,5.0,32.0,32.0,32.0,05-29-24,06-04-24,"AS_SXU_MANF_3370: FS, AS_SXU_MANF_6012: FS, AS_SXU_INST_1302: FS","AS_SXU_MANF_6063: FS, AS_SXU_MANF_6014: FS",SLAC,0%,52191.52191_METSMET Metrology,52191_METSMET Metrology,Labor,0.0d,5.0,5.0,At Completion Units,10/16/2023,10/23/2023,0,0,0,0,0,0,0,0,0,0,1.03_Accelerator Systems (AS),1.03.06_AS Soft X-Ray Undulator (SXR) - SLAC,1.03.06.06_AS Soft X-Ray Undulator Procurement and Fabrication - SLAC,1.03.06.06.02_SXR Phase Shifter Manufacturing and Testing,AS_SXU_MANF_6013_Refurbish existing Phase Shifter  13,Metrology,,SLAC,Labor
103080,1.03,1.03.06,1.03.06.06,1.03.06.06.02,1.03.06.06.02,SXR Phase Shifter Manufacturing and Testing,AS_SXU_MANF_6013,Refurbish existing Phase Shifter  13,5.0,6.0,6.0,6.0,05-29-24,06-04-24,"AS_SXU_MANF_3370: FS, AS_SXU_MANF_6012: FS, AS_SXU_INST_1302: FS","AS_SXU_MANF_6063: FS, AS_SXU_MANF_6014: FS",SLAC,0%,52169.52169_METS Mechanical Engineer,52169_METS Mechanical Engineer,Labor,0.0d,5.0,5.0,At Completion Units,10/16/2023,10/23/2023,0,0,0,0,0,0,0,0,0,0,1.03_Accelerator Systems (AS),1.03.06_AS Soft X-Ray Undulator (SXR) - SLAC,1.03.06.06_AS Soft X-Ray Undulator Procurement and Fabrication - SLAC,1.03.06.06.02_SXR Phase Shifter Manufacturing and Testing,AS_SXU_MANF_6013_Refurbish existing Phase Shifter  13,Mechanical,,SLAC,Labor
103081,1.03,1.03.06,1.03.06.06,1.03.06.06.02,1.03.06.06.02,SXR Phase Shifter Manufacturing and Testing,AS_SXU_MANF_6012,Refurbish existing Phase Shifter  12,5.0,4.0,4.0,4.0,05-21-24,05-28-24,"AS_SXU_MANF_3370: FS, AS_SXU_MANF_6011: FS, AS_SXU_INST_1202: FS","AS_SXU_MANF_6062: FS, AS_SXU_MANF_6013: FS",SLAC,0%,52198.52198_METSMANF (METSD Manufacturing),52198_METSMANF (METSD Manufacturing),Labor,0.0d,5.0,5.0,At Completion Units,8/29/2023,9/5/2023,0,0,0,0,0,0,0,0,0,0,1.03_Accelerator Systems (AS),1.03.06_AS Soft X-Ray Undulator (SXR) - SLAC,1.03.06.06_AS Soft X-Ray Undulator Procurement and Fabrication - SLAC,1.03.06.06.02_SXR Phase Shifter Manufacturing and Testing,AS_SXU_MANF_6012_Refurbish existing Phase Shifter  12,Manufacturing,,SLAC,Labor
103082,1.03,1.03.06,1.03.06.06,1.03.06.06.02,1.03.06.06.02,SXR Phase Shifter Manufacturing and Testing,AS_SXU_MANF_6012,Refurbish existing Phase Shifter  12,5.0,6.0,6.0,6.0,05-21-24,05-28-24,"AS_SXU_MANF_3370: FS, AS_SXU_MANF_6011: FS, AS_SXU_INST_1202: FS","AS_SXU_MANF_6062: FS, AS_SXU_MANF_6013: FS",SLAC,0%,52213.52213_EEDHW (Electronics & Engineering Div - HW Engr),52213_EEDHW (Electronics & Engineering Div - HW Engr),Labor,0.0d,5.0,5.0,At Completion Units,8/29/2023,9/5/2023,0,0,0,0,0,0,0,0,0,0,1.03_Accelerator Systems (AS),1.03.06_AS Soft X-Ray Undulator (SXR) - SLAC,1.03.06.06_AS Soft X-Ray Undulator Procurement and Fabrication - SLAC,1.03.06.06.02_SXR Phase Shifter Manufacturing and Testing,AS_SXU_MANF_6012_Refurbish existing Phase Shifter  12,Electrical,,SLAC,Labor
103083,1.03,1.03.06,1.03.06.06,1.03.06.06.02,1.03.06.06.02,SXR Phase Shifter Manufacturing and Testing,AS_SXU_MANF_6012,Refurbish existing Phase Shifter  12,5.0,32.0,32.0,32.0,05-21-24,05-28-24,"AS_SXU_MANF_3370: FS, AS_SXU_MANF_6011: FS, AS_SXU_INST_1202: FS","AS_SXU_MANF_6062: FS, AS_SXU_MANF_6013: FS",SLAC,0%,52191.52191_METSMET Metrology,52191_METSMET Metrology,Labor,0.0d,5.0,5.0,At Completion Units,8/29/2023,9/5/2023,0,0,0,0,0,0,0,0,0,0,1.03_Accelerator Systems (AS),1.03.06_AS Soft X-Ray Undulator (SXR) - SLAC,1.03.06.06_AS Soft X-Ray Undulator Procurement and Fabrication - SLAC,1.03.06.06.02_SXR Phase Shifter Manufacturing and Testing,AS_SXU_MANF_6012_Refurbish existing Phase Shifter  12,Metrology,,SLAC,Labor
103084,1.03,1.03.06,1.03.06.06,1.03.06.06.02,1.03.06.06.02,SXR Phase Shifter Manufacturing and Testing,AS_SXU_MANF_6012,Refurbish existing Phase Shifter  12,5.0,6.0,6.0,6.0,05-21-24,05-28-24,"AS_SXU_MANF_3370: FS, AS_SXU_MANF_6011: FS, AS_SXU_INST_1202: FS","AS_SXU_MANF_6062: FS, AS_SXU_MANF_6013: FS",SLAC,0%,52169.52169_METS Mechanical Engineer,52169_METS Mechanical Engineer,Labor,0.0d,5.0,5.0,At Completion Units,8/29/2023,9/5/2023,0,0,0,0,0,0,0,0,0,0,1.03_Accelerator Systems (AS),1.03.06_AS Soft X-Ray Undulator (SXR) - SLAC,1.03.06.06_AS Soft X-Ray Undulator Procurement and Fabrication - SLAC,1.03.06.06.02_SXR Phase Shifter Manufacturing and Testing,AS_SXU_MANF_6012_Refurbish existing Phase Shifter  12,Mechanical,,SLAC,Labor
103085,1.03,1.03.06,1.03.06.06,1.03.06.06.02,1.03.06.06.02,SXR Phase Shifter Manufacturing and Testing,AS_SXU_MANF_6011,Refurbish existing Phase Shifter  11,5.0,4.0,4.0,4.0,05-14-24,05-20-24,"AS_SXU_MANF_3370: FS, AS_SXU_MANF_6010: FS, AS_SXU_INST_1102: FS","AS_SXU_MANF_6061: FS, AS_SXU_MANF_6012: FS",SLAC,0%,52198.52198_METSMANF (METSD Manufacturing),52198_METSMANF (METSD Manufacturing),Labor,0.0d,5.0,5.0,At Completion Units,8/22/2023,8/28/2023,0,0,0,0,0,0,0,0,0,0,1.03_Accelerator Systems (AS),1.03.06_AS Soft X-Ray Undulator (SXR) - SLAC,1.03.06.06_AS Soft X-Ray Undulator Procurement and Fabrication - SLAC,1.03.06.06.02_SXR Phase Shifter Manufacturing and Testing,AS_SXU_MANF_6011_Refurbish existing Phase Shifter  11,Manufacturing,,SLAC,Labor
103086,1.03,1.03.06,1.03.06.06,1.03.06.06.02,1.03.06.06.02,SXR Phase Shifter Manufacturing and Testing,AS_SXU_MANF_6011,Refurbish existing Phase Shifter  11,5.0,6.0,6.0,6.0,05-14-24,05-20-24,"AS_SXU_MANF_3370: FS, AS_SXU_MANF_6010: FS, AS_SXU_INST_1102: FS","AS_SXU_MANF_6061: FS, AS_SXU_MANF_6012: FS",SLAC,0%,52213.52213_EEDHW (Electronics & Engineering Div - HW Engr),52213_EEDHW (Electronics & Engineering Div - HW Engr),Labor,0.0d,5.0,5.0,At Completion Units,8/22/2023,8/28/2023,0,0,0,0,0,0,0,0,0,0,1.03_Accelerator Systems (AS),1.03.06_AS Soft X-Ray Undulator (SXR) - SLAC,1.03.06.06_AS Soft X-Ray Undulator Procurement and Fabrication - SLAC,1.03.06.06.02_SXR Phase Shifter Manufacturing and Testing,AS_SXU_MANF_6011_Refurbish existing Phase Shifter  11,Electrical,,SLAC,Labor
103087,1.03,1.03.06,1.03.06.06,1.03.06.06.02,1.03.06.06.02,SXR Phase Shifter Manufacturing and Testing,AS_SXU_MANF_6011,Refurbish existing Phase Shifter  11,5.0,32.0,32.0,32.0,05-14-24,05-20-24,"AS_SXU_MANF_3370: FS, AS_SXU_MANF_6010: FS, AS_SXU_INST_1102: FS","AS_SXU_MANF_6061: FS, AS_SXU_MANF_6012: FS",SLAC,0%,52191.52191_METSMET Metrology,52191_METSMET Metrology,Labor,0.0d,5.0,5.0,At Completion Units,8/22/2023,8/28/2023,0,0,0,0,0,0,0,0,0,0,1.03_Accelerator Systems (AS),1.03.06_AS Soft X-Ray Undulator (SXR) - SLAC,1.03.06.06_AS Soft X-Ray Undulator Procurement and Fabrication - SLAC,1.03.06.06.02_SXR Phase Shifter Manufacturing and Testing,AS_SXU_MANF_6011_Refurbish existing Phase Shifter  11,Metrology,,SLAC,Labor
103088,1.03,1.03.06,1.03.06.06,1.03.06.06.02,1.03.06.06.02,SXR Phase Shifter Manufacturing and Testing,AS_SXU_MANF_6011,Refurbish existing Phase Shifter  11,5.0,6.0,6.0,6.0,05-14-24,05-20-24,"AS_SXU_MANF_3370: FS, AS_SXU_MANF_6010: FS, AS_SXU_INST_1102: FS","AS_SXU_MANF_6061: FS, AS_SXU_MANF_6012: FS",SLAC,0%,52169.52169_METS Mechanical Engineer,52169_METS Mechanical Engineer,Labor,0.0d,5.0,5.0,At Completion Units,8/22/2023,8/28/2023,0,0,0,0,0,0,0,0,0,0,1.03_Accelerator Systems (AS),1.03.06_AS Soft X-Ray Undulator (SXR) - SLAC,1.03.06.06_AS Soft X-Ray Undulator Procurement and Fabrication - SLAC,1.03.06.06.02_SXR Phase Shifter Manufacturing and Testing,AS_SXU_MANF_6011_Refurbish existing Phase Shifter  11,Mechanical,,SLAC,Labor
103089,1.03,1.03.06,1.03.06.06,1.03.06.06.02,1.03.06.06.02,SXR Phase Shifter Manufacturing and Testing,AS_SXU_MANF_6010,Refurbish existing Phase Shifter  10,5.0,4.0,4.0,4.0,05-07-24,05-13-24,"AS_SXU_MANF_3370: FS, AS_SXU_INST_1002: FS","AS_SXU_MANF_6060: FS, AS_SXU_MANF_6011: FS",SLAC,0%,52198.52198_METSMANF (METSD Manufacturing),52198_METSMANF (METSD Manufacturing),Labor,0.0d,5.0,5.0,At Completion Units,8/15/2023,8/21/2023,0,0,0,0,0,0,0,0,0,0,1.03_Accelerator Systems (AS),1.03.06_AS Soft X-Ray Undulator (SXR) - SLAC,1.03.06.06_AS Soft X-Ray Undulator Procurement and Fabrication - SLAC,1.03.06.06.02_SXR Phase Shifter Manufacturing and Testing,AS_SXU_MANF_6010_Refurbish existing Phase Shifter  10,Manufacturing,,SLAC,Labor
103090,1.03,1.03.06,1.03.06.06,1.03.06.06.02,1.03.06.06.02,SXR Phase Shifter Manufacturing and Testing,AS_SXU_MANF_3370,QA and acceptance testing - Phase Shifter Magnets,20.0,80.0,80.0,80.0,04-09-24,05-06-24,AS_SXU_MANF_3380: FS,"AS_SXU_MANF_6010: FS, AS_SXU_MANF_6011: FS, AS_SXU_MANF_6012: FS, AS_SXU_MANF_6013: FS, AS_SXU_MANF_6014: FS, AS_SXU_MANF_6015: FS, AS_SXU_MANF_6016: FS, AS_SXU_MANF_6017: FS, AS_SXU_MANF_6018: FS, AS_SXU_MANF_6019: FS, AS_SXU_MANF_6020: FS, AS_SXU_MANF_6021: FS, AS_SXU_MANF_6022: FS, AS_SXU_MANF_6023: FS, AS_SXU_MANF_6024: FS, AS_SXU_MANF_6025: FS, AS_SXU_MANF_6026: FS, AS_SXU_MANF_6027: FS, AS_SXU_MANF_6028: FS, AS_SXU_MANF_6029: FS",SLAC,0%,52191.52191_METSMET Metrology,52191_METSMET Metrology,Labor,0.0d,20.0,20.0,At Completion Units,7/18/2023,8/14/2023,0,0,0,0,0,0,0,0,0,0,1.03_Accelerator Systems (AS),1.03.06_AS Soft X-Ray Undulator (SXR) - SLAC,1.03.06.06_AS Soft X-Ray Undulator Procurement and Fabrication - SLAC,1.03.06.06.02_SXR Phase Shifter Manufacturing and Testing,AS_SXU_MANF_3370_QA and acceptance testing - Phase Shifter Magnets,Metrology,,SLAC,Labor
103091,1.03,1.03.06,1.03.06.06,1.03.06.06.02,1.03.06.06.02,SXR Phase Shifter Manufacturing and Testing,AS_SXU_MANF_3370,QA and acceptance testing - Phase Shifter Magnets,20.0,20.0,20.0,20.0,04-09-24,05-06-24,AS_SXU_MANF_3380: FS,"AS_SXU_MANF_6010: FS, AS_SXU_MANF_6011: FS, AS_SXU_MANF_6012: FS, AS_SXU_MANF_6013: FS, AS_SXU_MANF_6014: FS, AS_SXU_MANF_6015: FS, AS_SXU_MANF_6016: FS, AS_SXU_MANF_6017: FS, AS_SXU_MANF_6018: FS, AS_SXU_MANF_6019: FS, AS_SXU_MANF_6020: FS, AS_SXU_MANF_6021: FS, AS_SXU_MANF_6022: FS, AS_SXU_MANF_6023: FS, AS_SXU_MANF_6024: FS, AS_SXU_MANF_6025: FS, AS_SXU_MANF_6026: FS, AS_SXU_MANF_6027: FS, AS_SXU_MANF_6028: FS, AS_SXU_MANF_6029: FS",SLAC,0%,52169.52169_METS Mechanical Engineer,52169_METS Mechanical Engineer,Labor,0.0d,20.0,20.0,At Completion Units,7/18/2023,8/14/2023,0,0,0,0,0,0,0,0,0,0,1.03_Accelerator Systems (AS),1.03.06_AS Soft X-Ray Undulator (SXR) - SLAC,1.03.06.06_AS Soft X-Ray Undulator Procurement and Fabrication - SLAC,1.03.06.06.02_SXR Phase Shifter Manufacturing and Testing,AS_SXU_MANF_3370_QA and acceptance testing - Phase Shifter Magnets,Mechanical,,SLAC,Labor
103092,1.03,1.03.06,1.03.06.06,1.03.06.06.02,1.03.06.06.02,SXR Phase Shifter Manufacturing and Testing,AS_SXU_MANF_3350,RCV: Phase Shifter Magnets,1.0,150363.0,150363.0,150363.0,04-08-24,04-08-24,AS_SXU_MANF_3330: FS,AS_SXU_MANF_3380: FS,SLAC,0%,SL_MSSC.SLAC M&S (<$500K) (gets G&A) (gets ESC),SLAC M&S (<$500K) (gets G&A) (gets ESC),Nonlabor,0.0d,1.0,1.0,At Completion Units,7/17/2023,7/17/2023,0,0,0,0,0,0,0,0,0,0,1.03_Accelerator Systems (AS),1.03.06_AS Soft X-Ray Undulator (SXR) - SLAC,1.03.06.06_AS Soft X-Ray Undulator Procurement and Fabrication - SLAC,1.03.06.06.02_SXR Phase Shifter Manufacturing and Testing,AS_SXU_MANF_3350_RCV: Phase Shifter Magnets,Material,,SLAC,M&S
103093,1.03,1.03.06,1.03.06.06,1.03.06.06.02,1.03.06.06.02,SXR Phase Shifter Manufacturing and Testing,AS_SXU_MANF_3340,RCV: Phase Shifters,1.0,250142.0,250142.0,250142.0,04-08-24,04-08-24,AS_SXU_MANF_3320: FS,AS_SXU_MANF_3380: FS,SLAC,0%,SL_MSSC.SLAC M&S (<$500K) (gets G&A) (gets ESC),SLAC M&S (<$500K) (gets G&A) (gets ESC),Nonlabor,0.0d,1.0,1.0,At Completion Units,7/17/2023,7/17/2023,0,0,0,0,0,0,0,0,0,0,1.03_Accelerator Systems (AS),1.03.06_AS Soft X-Ray Undulator (SXR) - SLAC,1.03.06.06_AS Soft X-Ray Undulator Procurement and Fabrication - SLAC,1.03.06.06.02_SXR Phase Shifter Manufacturing and Testing,AS_SXU_MANF_3340_RCV: Phase Shifters,Material,,SLAC,M&S
103094,1.03,1.03.06,1.03.06.06,1.03.06.06.02,1.03.06.06.02,SXR Phase Shifter Manufacturing and Testing,AS_SXU_MANF_3200,Prepare Requisition (Specs/SOW/ETC) - Phase Shifters,30.0,8.0,8.0,8.0,10-14-22,11-28-22,AS_SXU_MANF_3130: FS,AS_SXU_MANF_3210: FS,SLAC,0%,52190.52190_METSTP Tech Planning - Reinstated FY16,52190_METSTP Tech Planning - Reinstated FY16,Labor,0.0d,30.0,30.0,At Completion Units,3/28/2022,5/27/2022,0,0,0,0,0,0,0,0,0,0,1.03_Accelerator Systems (AS),1.03.06_AS Soft X-Ray Undulator (SXR) - SLAC,1.03.06.06_AS Soft X-Ray Undulator Procurement and Fabrication - SLAC,1.03.06.06.02_SXR Phase Shifter Manufacturing and Testing,AS_SXU_MANF_3200_Prepare Requisition (Specs/SOW/ETC) - Phase Shifters,METSTPT Tech Planning,Tech,SLAC,Labor
103095,1.03,1.03.06,1.03.06.06,1.03.06.06.02,1.03.06.06.02,SXR Phase Shifter Manufacturing and Testing,AS_SXU_MANF_3310,AWARD: Procurement - Phase Shifters,5.0,400505.0,400505.0,400505.0,10-02-23,10-06-23,"AS_SXU_MANF_3300: FS, AS_M4_3010: FS","AS_SXU_MANF_3320: FS, AS_SXU_MANF_3330: FS",SLAC,0%,AWARD_USE.AWARD - Use this AWARD,AWARD - Use this AWARD,Nonlabor,0.0d,5.0,5.0,At Completion Units,1/25/2023,1/31/2023,0,0,0,0,0,0,0,0,0,0,1.03_Accelerator Systems (AS),1.03.06_AS Soft X-Ray Undulator (SXR) - SLAC,1.03.06.06_AS Soft X-Ray Undulator Procurement and Fabrication - SLAC,1.03.06.06.02_SXR Phase Shifter Manufacturing and Testing,AS_SXU_MANF_3310_AWARD: Procurement - Phase Shifters,Material,,SLAC,M&S
103096,1.03,1.03.06,1.03.06.06,1.03.06.06.02,1.03.06.06.02,SXR Phase Shifter Manufacturing and Testing,AS_SXU_MANF_3210,RQN: Approval of Requisition - Phase Shifters,1.0,400505.0,400505.0,400505.0,11-29-22,11-29-22,AS_SXU_MANF_3200: FS,AS_SXU_MANF_3220: FS,SLAC,0%,REQ.Requisition,Requisition,Nonlabor,0.0d,1.0,1.0,At Completion Units,5/31/2022,5/31/2022,0,0,0,0,0,0,0,0,0,0,1.03_Accelerator Systems (AS),1.03.06_AS Soft X-Ray Undulator (SXR) - SLAC,1.03.06.06_AS Soft X-Ray Undulator Procurement and Fabrication - SLAC,1.03.06.06.02_SXR Phase Shifter Manufacturing and Testing,AS_SXU_MANF_3210_RQN: Approval of Requisition - Phase Shifters,Material,,SLAC,M&S
103097,1.03,1.03.06,1.03.06.06,1.03.06.06.02,1.03.06.06.02,SXR Phase Shifter Manufacturing and Testing,AS_SXU_MANF_3120,Respond to recommendations from Phase shifter PRR,5.0,16.0,16.0,16.0,10-07-22,10-13-22,AS_SXU_MANF_3110: FS,AS_SXU_MANF_3130: FF,SLAC,0%,52169.52169_METS Mechanical Engineer,52169_METS Mechanical Engineer,Labor,0.0d,5.0,5.0,At Completion Units,3/21/2022,3/25/2022,0,0,0,0,0,0,0,0,0,0,1.03_Accelerator Systems (AS),1.03.06_AS Soft X-Ray Undulator (SXR) - SLAC,1.03.06.06_AS Soft X-Ray Undulator Procurement and Fabrication - SLAC,1.03.06.06.02_SXR Phase Shifter Manufacturing and Testing,AS_SXU_MANF_3120_Respond to recommendations from Phase shifter PRR,Mechanical,,SLAC,Labor
103098,1.03,1.03.06,1.03.06.06,1.03.06.06.02,1.03.06.06.02,SXR Phase Shifter Manufacturing and Testing,AS_SXU_MANF_3100,Prepare for Phase shifter Procurement Readiness Review (PRR),40.0,40.0,40.0,40.0,08-10-22,10-05-22,AS_SXU_DE_1110: FS,AS_SXU_MANF_3110: FS,SLAC,0%,52169.52169_METS Mechanical Engineer,52169_METS Mechanical Engineer,Labor,0.0d,40.0,40.0,At Completion Units,2/3/2022,3/17/2022,0,0,0,0,0,0,0,0,0,0,1.03_Accelerator Systems (AS),1.03.06_AS Soft X-Ray Undulator (SXR) - SLAC,1.03.06.06_AS Soft X-Ray Undulator Procurement and Fabrication - SLAC,1.03.06.06.02_SXR Phase Shifter Manufacturing and Testing,AS_SXU_MANF_3100_Prepare for Phase shifter Procurement Readiness Review (PRR),Mechanical,,SLAC,Labor
103099,1.03,1.03.06,1.03.06.06,1.03.06.06.02,1.03.06.06.02,SXR Phase Shifter Manufacturing and Testing,AS_SXU_MANF_3110,R_PRR: Phase shifter,1.0,4.0,4.0,4.0,10-06-22,10-06-22,AS_SXU_MANF_3100: FS,AS_SXU_MANF_3120: FS,SLAC,0%,52190.52190_METSTP Tech Planning - Reinstated FY16,52190_METSTP Tech Planning - Reinstated FY16,Labor,0.0d,1.0,1.0,At Completion Units,3/18/2022,3/18/2022,Review,0,0,0,0,0,0,0,0,0,1.03_Accelerator Systems (AS),1.03.06_AS Soft X-Ray Undulator (SXR) - SLAC,1.03.06.06_AS Soft X-Ray Undulator Procurement and Fabrication - SLAC,1.03.06.06.02_SXR Phase Shifter Manufacturing and Testing,AS_SXU_MANF_3110_R_PRR: Phase shifter,METSTPT Tech Planning,Tech,SLAC,Labor
103100,1.03,1.03.06,1.03.06.06,1.03.06.06.02,1.03.06.06.02,SXR Phase Shifter Manufacturing and Testing,AS_SXU_MANF_3110,R_PRR: Phase shifter,1.0,4.0,4.0,4.0,10-06-22,10-06-22,AS_SXU_MANF_3100: FS,AS_SXU_MANF_3120: FS,SLAC,0%,52213.52213_EEDHW (Electronics & Engineering Div - HW Engr),52213_EEDHW (Electronics & Engineering Div - HW Engr),Labor,0.0d,1.0,1.0,At Completion Units,3/18/2022,3/18/2022,Review,0,0,0,0,0,0,0,0,0,1.03_Accelerator Systems (AS),1.03.06_AS Soft X-Ray Undulator (SXR) - SLAC,1.03.06.06_AS Soft X-Ray Undulator Procurement and Fabrication - SLAC,1.03.06.06.02_SXR Phase Shifter Manufacturing and Testing,AS_SXU_MANF_3110_R_PRR: Phase shifter,Electrical,,SLAC,Labor
103101,1.03,1.03.06,1.03.06.06,1.03.06.06.02,1.03.06.06.02,SXR Phase Shifter Manufacturing and Testing,AS_SXU_MANF_3110,R_PRR: Phase shifter,1.0,8.0,8.0,8.0,10-06-22,10-06-22,AS_SXU_MANF_3100: FS,AS_SXU_MANF_3120: FS,SLAC,0%,52191.52191_METSMET Metrology,52191_METSMET Metrology,Labor,0.0d,1.0,1.0,At Completion Units,3/18/2022,3/18/2022,Review,0,0,0,0,0,0,0,0,0,1.03_Accelerator Systems (AS),1.03.06_AS Soft X-Ray Undulator (SXR) - SLAC,1.03.06.06_AS Soft X-Ray Undulator Procurement and Fabrication - SLAC,1.03.06.06.02_SXR Phase Shifter Manufacturing and Testing,AS_SXU_MANF_3110_R_PRR: Phase shifter,Metrology,,SLAC,Labor
103102,1.03,1.03.06,1.03.06.06,1.03.06.06.02,1.03.06.06.02,SXR Phase Shifter Manufacturing and Testing,AS_SXU_MANF_3110,R_PRR: Phase shifter,1.0,4.0,4.0,4.0,10-06-22,10-06-22,AS_SXU_MANF_3100: FS,AS_SXU_MANF_3120: FS,SLAC,0%,0106.0106_Staff Scientist,0106_Staff Scientist,Labor,0.0d,1.0,1.0,At Completion Units,3/18/2022,3/18/2022,Review,0,0,0,0,0,0,0,0,0,1.03_Accelerator Systems (AS),1.03.06_AS Soft X-Ray Undulator (SXR) - SLAC,1.03.06.06_AS Soft X-Ray Undulator Procurement and Fabrication - SLAC,1.03.06.06.02_SXR Phase Shifter Manufacturing and Testing,AS_SXU_MANF_3110_R_PRR: Phase shifter,Scientist,,SLAC,Labor
103103,1.03,1.03.06,1.03.06.06,1.03.06.06.02,1.03.06.06.02,SXR Phase Shifter Manufacturing and Testing,AS_SXU_MANF_3110,R_PRR: Phase shifter,1.0,8.0,8.0,8.0,10-06-22,10-06-22,AS_SXU_MANF_3100: FS,AS_SXU_MANF_3120: FS,SLAC,0%,52169.52169_METS Mechanical Engineer,52169_METS Mechanical Engineer,Labor,0.0d,1.0,1.0,At Completion Units,3/18/2022,3/18/2022,Review,0,0,0,0,0,0,0,0,0,1.03_Accelerator Systems (AS),1.03.06_AS Soft X-Ray Undulator (SXR) - SLAC,1.03.06.06_AS Soft X-Ray Undulator Procurement and Fabrication - SLAC,1.03.06.06.02_SXR Phase Shifter Manufacturing and Testing,AS_SXU_MANF_3110_R_PRR: Phase shifter,Mechanical,,SLAC,Labor
103104,1.03,1.03.06,1.03.06.06,1.03.06.06.02,1.03.06.06.02,SXR Phase Shifter Manufacturing and Testing,AS_SXU_MANF_6010,Refurbish existing Phase Shifter  10,5.0,6.0,6.0,6.0,05-07-24,05-13-24,"AS_SXU_MANF_3370: FS, AS_SXU_INST_1002: FS","AS_SXU_MANF_6060: FS, AS_SXU_MANF_6011: FS",SLAC,0%,52213.52213_EEDHW (Electronics & Engineering Div - HW Engr),52213_EEDHW (Electronics & Engineering Div - HW Engr),Labor,0.0d,5.0,5.0,At Completion Units,8/15/2023,8/21/2023,0,0,0,0,0,0,0,0,0,0,1.03_Accelerator Systems (AS),1.03.06_AS Soft X-Ray Undulator (SXR) - SLAC,1.03.06.06_AS Soft X-Ray Undulator Procurement and Fabrication - SLAC,1.03.06.06.02_SXR Phase Shifter Manufacturing and Testing,AS_SXU_MANF_6010_Refurbish existing Phase Shifter  10,Electrical,,SLAC,Labor
103105,1.03,1.03.06,1.03.06.06,1.03.06.06.02,1.03.06.06.02,SXR Phase Shifter Manufacturing and Testing,AS_SXU_MANF_6010,Refurbish existing Phase Shifter  10,5.0,32.0,32.0,32.0,05-07-24,05-13-24,"AS_SXU_MANF_3370: FS, AS_SXU_INST_1002: FS","AS_SXU_MANF_6060: FS, AS_SXU_MANF_6011: FS",SLAC,0%,52191.52191_METSMET Metrology,52191_METSMET Metrology,Labor,0.0d,5.0,5.0,At Completion Units,8/15/2023,8/21/2023,0,0,0,0,0,0,0,0,0,0,1.03_Accelerator Systems (AS),1.03.06_AS Soft X-Ray Undulator (SXR) - SLAC,1.03.06.06_AS Soft X-Ray Undulator Procurement and Fabrication - SLAC,1.03.06.06.02_SXR Phase Shifter Manufacturing and Testing,AS_SXU_MANF_6010_Refurbish existing Phase Shifter  10,Metrology,,SLAC,Labor
103106,1.03,1.03.06,1.03.06.06,1.03.06.06.02,1.03.06.06.02,SXR Phase Shifter Manufacturing and Testing,AS_SXU_MANF_6010,Refurbish existing Phase Shifter  10,5.0,6.0,6.0,6.0,05-07-24,05-13-24,"AS_SXU_MANF_3370: FS, AS_SXU_INST_1002: FS","AS_SXU_MANF_6060: FS, AS_SXU_MANF_6011: FS",SLAC,0%,52169.52169_METS Mechanical Engineer,52169_METS Mechanical Engineer,Labor,0.0d,5.0,5.0,At Completion Units,8/15/2023,8/21/2023,0,0,0,0,0,0,0,0,0,0,1.03_Accelerator Systems (AS),1.03.06_AS Soft X-Ray Undulator (SXR) - SLAC,1.03.06.06_AS Soft X-Ray Undulator Procurement and Fabrication - SLAC,1.03.06.06.02_SXR Phase Shifter Manufacturing and Testing,AS_SXU_MANF_6010_Refurbish existing Phase Shifter  10,Mechanical,,SLAC,Labor
103107,1.03,1.03.06,1.03.06.06,1.03.06.06.02,1.03.06.06.02,SXR Phase Shifter Manufacturing and Testing,AS_SXU_MANF_3360,QA and acceptance testing - Phase Shifters,20.0,18.0,18.0,18.0,04-09-24,05-06-24,AS_SXU_MANF_3380: FS,"AS_SXU_MANF_6051: FS, AS_SXU_MANF_6052: FS, AS_SXU_MANF_6053: FS, AS_SXU_MANF_6054: FS, AS_SXU_MANF_6055: FS, AS_SXU_MANF_6056: FS, AS_SXU_MANF_6057: FS, AS_SXU_MANF_6058: FS, AS_SXU_MANF_6059: FS",SLAC,0%,52213.52213_EEDHW (Electronics & Engineering Div - HW Engr),52213_EEDHW (Electronics & Engineering Div - HW Engr),Labor,0.0d,20.0,20.0,At Completion Units,7/18/2023,8/14/2023,0,0,0,0,0,0,0,0,0,0,1.03_Accelerator Systems (AS),1.03.06_AS Soft X-Ray Undulator (SXR) - SLAC,1.03.06.06_AS Soft X-Ray Undulator Procurement and Fabrication - SLAC,1.03.06.06.02_SXR Phase Shifter Manufacturing and Testing,AS_SXU_MANF_3360_QA and acceptance testing - Phase Shifters,Electrical,,SLAC,Labor
103108,1.03,1.03.06,1.03.06.06,1.03.06.06.02,1.03.06.06.02,SXR Phase Shifter Manufacturing and Testing,AS_SXU_MANF_3360,QA and acceptance testing - Phase Shifters,20.0,76.0,76.0,76.0,04-09-24,05-06-24,AS_SXU_MANF_3380: FS,"AS_SXU_MANF_6051: FS, AS_SXU_MANF_6052: FS, AS_SXU_MANF_6053: FS, AS_SXU_MANF_6054: FS, AS_SXU_MANF_6055: FS, AS_SXU_MANF_6056: FS, AS_SXU_MANF_6057: FS, AS_SXU_MANF_6058: FS, AS_SXU_MANF_6059: FS",SLAC,0%,52191.52191_METSMET Metrology,52191_METSMET Metrology,Labor,0.0d,20.0,20.0,At Completion Units,7/18/2023,8/14/2023,0,0,0,0,0,0,0,0,0,0,1.03_Accelerator Systems (AS),1.03.06_AS Soft X-Ray Undulator (SXR) - SLAC,1.03.06.06_AS Soft X-Ray Undulator Procurement and Fabrication - SLAC,1.03.06.06.02_SXR Phase Shifter Manufacturing and Testing,AS_SXU_MANF_3360_QA and acceptance testing - Phase Shifters,Metrology,,SLAC,Labor
103109,1.03,1.03.06,1.03.06.06,1.03.06.06.02,1.03.06.06.02,SXR Phase Shifter Manufacturing and Testing,AS_SXU_MANF_3360,QA and acceptance testing - Phase Shifters,20.0,36.0,36.0,36.0,04-09-24,05-06-24,AS_SXU_MANF_3380: FS,"AS_SXU_MANF_6051: FS, AS_SXU_MANF_6052: FS, AS_SXU_MANF_6053: FS, AS_SXU_MANF_6054: FS, AS_SXU_MANF_6055: FS, AS_SXU_MANF_6056: FS, AS_SXU_MANF_6057: FS, AS_SXU_MANF_6058: FS, AS_SXU_MANF_6059: FS",SLAC,0%,52169.52169_METS Mechanical Engineer,52169_METS Mechanical Engineer,Labor,0.0d,20.0,20.0,At Completion Units,7/18/2023,8/14/2023,0,0,0,0,0,0,0,0,0,0,1.03_Accelerator Systems (AS),1.03.06_AS Soft X-Ray Undulator (SXR) - SLAC,1.03.06.06_AS Soft X-Ray Undulator Procurement and Fabrication - SLAC,1.03.06.06.02_SXR Phase Shifter Manufacturing and Testing,AS_SXU_MANF_3360_QA and acceptance testing - Phase Shifters,Mechanical,,SLAC,Labor
103429,1.03,1.03.06,1.03.06.06,1.03.06.06.03,1.03.06.06.03,SXR Undulator Integration and Testing,AS_SXU_MANF_1000,Pre-production Undulator Preparation and Training,20.0,480.0,480.0,480.0,05-04-22,06-01-22,AS_SXU_MANF_5060: FS,"AS_SXU_MANF_1021: FS, AS_LBL_INST_105: FS",SLAC,0%,52198.52198_METSMANF (METSD Manufacturing),52198_METSMANF (METSD Manufacturing),Labor,0.0d,20.0,20.0,At Completion Units,3/7/2022,4/4/2022,0,0,0,0,0,0,0,0,0,0,1.03_Accelerator Systems (AS),1.03.06_AS Soft X-Ray Undulator (SXR) - SLAC,1.03.06.06_AS Soft X-Ray Undulator Procurement and Fabrication - SLAC,1.03.06.06.03_SXR Undulator Integration and Testing,AS_SXU_MANF_1000_Pre-production Undulator Preparation and Training,Manufacturing,,SLAC,Labor
103430,1.03,1.03.06,1.03.06.06,1.03.06.06.03,1.03.06.06.03,SXR Undulator Integration and Testing,AS_SXU_MANF_1000,Pre-production Undulator Preparation and Training,20.0,160.0,160.0,160.0,05-04-22,06-01-22,AS_SXU_MANF_5060: FS,"AS_SXU_MANF_1021: FS, AS_LBL_INST_105: FS",SLAC,0%,52191.52191_METSMET Metrology,52191_METSMET Metrology,Labor,0.0d,20.0,20.0,At Completion Units,3/7/2022,4/4/2022,0,0,0,0,0,0,0,0,0,0,1.03_Accelerator Systems (AS),1.03.06_AS Soft X-Ray Undulator (SXR) - SLAC,1.03.06.06_AS Soft X-Ray Undulator Procurement and Fabrication - SLAC,1.03.06.06.03_SXR Undulator Integration and Testing,AS_SXU_MANF_1000_Pre-production Undulator Preparation and Training,Metrology,,SLAC,Labor
103431,1.03,1.03.06,1.03.06.06,1.03.06.06.03,1.03.06.06.03,SXR Undulator Integration and Testing,AS_SXU_MANF_1000,Pre-production Undulator Preparation and Training,20.0,120.0,120.0,120.0,05-04-22,06-01-22,AS_SXU_MANF_5060: FS,"AS_SXU_MANF_1021: FS, AS_LBL_INST_105: FS",SLAC,0%,52169.52169_METS Mechanical Engineer,52169_METS Mechanical Engineer,Labor,0.0d,20.0,20.0,At Completion Units,3/7/2022,4/4/2022,0,0,0,0,0,0,0,0,0,0,1.03_Accelerator Systems (AS),1.03.06_AS Soft X-Ray Undulator (SXR) - SLAC,1.03.06.06_AS Soft X-Ray Undulator Procurement and Fabrication - SLAC,1.03.06.06.03_SXR Undulator Integration and Testing,AS_SXU_MANF_1000_Pre-production Undulator Preparation and Training,Mechanical,,SLAC,Labor
103432,1.03,1.03.06,1.03.06.06,1.03.06.06.03,1.03.06.06.03,SXR Undulator Integration and Testing,AS_SXU_MANF_1000,Pre-production Undulator Preparation and Training,20.0,40.0,40.0,40.0,05-04-22,06-01-22,AS_SXU_MANF_5060: FS,"AS_SXU_MANF_1021: FS, AS_LBL_INST_105: FS",SLAC,0%,52152.52152_FAC Fleet,52152_FAC Fleet,Labor,0.0d,20.0,20.0,At Completion Units,3/7/2022,4/4/2022,0,0,0,0,0,0,0,0,0,0,1.03_Accelerator Systems (AS),1.03.06_AS Soft X-Ray Undulator (SXR) - SLAC,1.03.06.06_AS Soft X-Ray Undulator Procurement and Fabrication - SLAC,1.03.06.06.03_SXR Undulator Integration and Testing,AS_SXU_MANF_1000_Pre-production Undulator Preparation and Training,Support System,,SLAC,Labor
103433,1.03,1.03.06,1.03.06.06,1.03.06.06.03,1.03.06.06.03,SXR Undulator Integration and Testing,AS_SXU_MANF_1021,Retrofit SXU Preproduction Magnetic System - SXU_REFB_A,15.0,12.0,12.0,12.0,06-02-22,06-22-22,"AS_SXU_MANF_1011: FS, AS_SXU_MANF_1000: FS, AS_SXU_DE_4250: FS","AS_SXU_MANF_1031: FS, AS_LBL_INST_110: FS",SLAC,0%,52152.52152_FAC Fleet,52152_FAC Fleet,Labor,0.0d,15.0,15.0,At Completion Units,7/22/2022,8/11/2022,0,0,0,0,0,0,0,0,0,0,1.03_Accelerator Systems (AS),1.03.06_AS Soft X-Ray Undulator (SXR) - SLAC,1.03.06.06_AS Soft X-Ray Undulator Procurement and Fabrication - SLAC,1.03.06.06.03_SXR Undulator Integration and Testing,AS_SXU_MANF_1021_Retrofit SXU Preproduction Magnetic System - SXU_REFB_A,Support System,,SLAC,Labor
103434,1.03,1.03.06,1.03.06.06,1.03.06.06.03,1.03.06.06.03,SXR Undulator Integration and Testing,AS_SXU_MANF_0806,Receiving Inspection - SXU_HE_08,5.0,12.0,12.0,12.0,11-04-25,11-10-25,AS_SXU_MANF_0801: FS,"AS_SXU_MANF_0846: FS, AS_LBL_PROD_455: FS",SLAC,0%,52152.52152_FAC Fleet,52152_FAC Fleet,Labor,0.0d,5.0,5.0,At Completion Units,1/13/2025,1/17/2025,0,0,0,0,0,0,0,0,0,0,1.03_Accelerator Systems (AS),1.03.06_AS Soft X-Ray Undulator (SXR) - SLAC,1.03.06.06_AS Soft X-Ray Undulator Procurement and Fabrication - SLAC,1.03.06.06.03_SXR Undulator Integration and Testing,AS_SXU_MANF_0806_Receiving Inspection - SXU_HE_08,Support System,,SLAC,Labor
103435,1.03,1.03.06,1.03.06.06,1.03.06.06.03,1.03.06.06.03,SXR Undulator Integration and Testing,AS_SXU_MANF_0806,Receiving Inspection - SXU_HE_08,5.0,32.0,32.0,32.0,11-04-25,11-10-25,AS_SXU_MANF_0801: FS,"AS_SXU_MANF_0846: FS, AS_LBL_PROD_455: FS",SLAC,0%,52213.52213_EEDHW (Electronics & Engineering Div - HW Engr),52213_EEDHW (Electronics & Engineering Div - HW Engr),Labor,0.0d,5.0,5.0,At Completion Units,1/13/2025,1/17/2025,0,0,0,0,0,0,0,0,0,0,1.03_Accelerator Systems (AS),1.03.06_AS Soft X-Ray Undulator (SXR) - SLAC,1.03.06.06_AS Soft X-Ray Undulator Procurement and Fabrication - SLAC,1.03.06.06.03_SXR Undulator Integration and Testing,AS_SXU_MANF_0806_Receiving Inspection - SXU_HE_08,Electrical,,SLAC,Labor
103436,1.03,1.03.06,1.03.06.06,1.03.06.06.03,1.03.06.06.03,SXR Undulator Integration and Testing,AS_SXU_MANF_0806,Receiving Inspection - SXU_HE_08,5.0,32.0,32.0,32.0,11-04-25,11-10-25,AS_SXU_MANF_0801: FS,"AS_SXU_MANF_0846: FS, AS_LBL_PROD_455: FS",SLAC,0%,52169.52169_METS Mechanical Engineer,52169_METS Mechanical Engineer,Labor,0.0d,5.0,5.0,At Completion Units,1/13/2025,1/17/2025,0,0,0,0,0,0,0,0,0,0,1.03_Accelerator Systems (AS),1.03.06_AS Soft X-Ray Undulator (SXR) - SLAC,1.03.06.06_AS Soft X-Ray Undulator Procurement and Fabrication - SLAC,1.03.06.06.03_SXR Undulator Integration and Testing,AS_SXU_MANF_0806_Receiving Inspection - SXU_HE_08,Mechanical,,SLAC,Labor
103437,1.03,1.03.06,1.03.06.06,1.03.06.06.03,1.03.06.06.03,SXR Undulator Integration and Testing,AS_SXU_MANF_3021,Retrofit SXU Magnetic System SXU_REFB_U,15.0,48.0,48.0,48.0,01-20-26,02-09-26,"AS_SXU_MANF_3011: FS, AS_SXU_MANF_2921: FS, AS_SXU_INST_3000: FS",AS_SXU_MANF_3031: FS,SLAC,0%,52191.52191_METSMET Metrology,52191_METSMET Metrology,Labor,0.0d,15.0,15.0,At Completion Units,5/27/2025,6/16/2025,0,0,0,0,0,0,0,0,0,0,1.03_Accelerator Systems (AS),1.03.06_AS Soft X-Ray Undulator (SXR) - SLAC,1.03.06.06_AS Soft X-Ray Undulator Procurement and Fabrication - SLAC,1.03.06.06.03_SXR Undulator Integration and Testing,AS_SXU_MANF_3021_Retrofit SXU Magnetic System SXU_REFB_U,Metrology,,SLAC,Labor
103438,1.03,1.03.06,1.03.06.06,1.03.06.06.03,1.03.06.06.03,SXR Undulator Integration and Testing,AS_SXU_MANF_3046,Tune and Calibrate Undulator - SXU_HE_30,15.0,32.0,32.0,32.0,02-17-26,03-09-26,"AS_SXU_MANF_3041: FS, AS_SXU_MANF_2946: FS",AS_SXU_MANF_3056: FS,SLAC,0%,52213.52213_EEDHW (Electronics & Engineering Div - HW Engr),52213_EEDHW (Electronics & Engineering Div - HW Engr),Labor,0.0d,15.0,15.0,At Completion Units,6/23/2025,7/14/2025,0,0,0,0,0,0,0,0,0,0,1.03_Accelerator Systems (AS),1.03.06_AS Soft X-Ray Undulator (SXR) - SLAC,1.03.06.06_AS Soft X-Ray Undulator Procurement and Fabrication - SLAC,1.03.06.06.03_SXR Undulator Integration and Testing,AS_SXU_MANF_3046_Tune and Calibrate Undulator - SXU_HE_30,Electrical,,SLAC,Labor
103439,1.03,1.03.06,1.03.06.06,1.03.06.06.03,1.03.06.06.03,SXR Undulator Integration and Testing,AS_SXU_MANF_3046,Tune and Calibrate Undulator - SXU_HE_30,15.0,48.0,48.0,48.0,02-17-26,03-09-26,"AS_SXU_MANF_3041: FS, AS_SXU_MANF_2946: FS",AS_SXU_MANF_3056: FS,SLAC,0%,52198.52198_METSMANF (METSD Manufacturing),52198_METSMANF (METSD Manufacturing),Labor,0.0d,15.0,15.0,At Completion Units,6/23/2025,7/14/2025,0,0,0,0,0,0,0,0,0,0,1.03_Accelerator Systems (AS),1.03.06_AS Soft X-Ray Undulator (SXR) - SLAC,1.03.06.06_AS Soft X-Ray Undulator Procurement and Fabrication - SLAC,1.03.06.06.03_SXR Undulator Integration and Testing,AS_SXU_MANF_3046_Tune and Calibrate Undulator - SXU_HE_30,Manufacturing,,SLAC,Labor
103440,1.03,1.03.06,1.03.06.06,1.03.06.06.03,1.03.06.06.03,SXR Undulator Integration and Testing,AS_SXU_MANF_3046,Tune and Calibrate Undulator - SXU_HE_30,15.0,394.0,394.0,394.0,02-17-26,03-09-26,"AS_SXU_MANF_3041: FS, AS_SXU_MANF_2946: FS",AS_SXU_MANF_3056: FS,SLAC,0%,52191.52191_METSMET Metrology,52191_METSMET Metrology,Labor,0.0d,15.0,15.0,At Completion Units,6/23/2025,7/14/2025,0,0,0,0,0,0,0,0,0,0,1.03_Accelerator Systems (AS),1.03.06_AS Soft X-Ray Undulator (SXR) - SLAC,1.03.06.06_AS Soft X-Ray Undulator Procurement and Fabrication - SLAC,1.03.06.06.03_SXR Undulator Integration and Testing,AS_SXU_MANF_3046_Tune and Calibrate Undulator - SXU_HE_30,Metrology,,SLAC,Labor
103441,1.03,1.03.06,1.03.06.06,1.03.06.06.03,1.03.06.06.03,SXR Undulator Integration and Testing,AS_SXU_MANF_3046,Tune and Calibrate Undulator - SXU_HE_30,15.0,32.0,32.0,32.0,02-17-26,03-09-26,"AS_SXU_MANF_3041: FS, AS_SXU_MANF_2946: FS",AS_SXU_MANF_3056: FS,SLAC,0%,0106.0106_Staff Scientist,0106_Staff Scientist,Labor,0.0d,15.0,15.0,At Completion Units,6/23/2025,7/14/2025,0,0,0,0,0,0,0,0,0,0,1.03_Accelerator Systems (AS),1.03.06_AS Soft X-Ray Undulator (SXR) - SLAC,1.03.06.06_AS Soft X-Ray Undulator Procurement and Fabrication - SLAC,1.03.06.06.03_SXR Undulator Integration and Testing,AS_SXU_MANF_3046_Tune and Calibrate Undulator - SXU_HE_30,Scientist,,SLAC,Labor
103442,1.03,1.03.06,1.03.06.06,1.03.06.06.03,1.03.06.06.03,SXR Undulator Integration and Testing,AS_SXU_MANF_3046,Tune and Calibrate Undulator - SXU_HE_30,15.0,16.0,16.0,16.0,02-17-26,03-09-26,"AS_SXU_MANF_3041: FS, AS_SXU_MANF_2946: FS",AS_SXU_MANF_3056: FS,SLAC,0%,52169.52169_METS Mechanical Engineer,52169_METS Mechanical Engineer,Labor,0.0d,15.0,15.0,At Completion Units,6/23/2025,7/14/2025,0,0,0,0,0,0,0,0,0,0,1.03_Accelerator Systems (AS),1.03.06_AS Soft X-Ray Undulator (SXR) - SLAC,1.03.06.06_AS Soft X-Ray Undulator Procurement and Fabrication - SLAC,1.03.06.06.03_SXR Undulator Integration and Testing,AS_SXU_MANF_3046_Tune and Calibrate Undulator - SXU_HE_30,Mechanical,,SLAC,Labor
103443,1.03,1.03.06,1.03.06.06,1.03.06.06.03,1.03.06.06.03,SXR Undulator Integration and Testing,AS_SXU_MANF_3031,Post Retrofit Checkout - SXU_REFB_U,4.0,12.0,12.0,12.0,02-10-26,02-13-26,AS_SXU_MANF_3021: FS,AS_SXU_MANF_3041: FS,SLAC,0%,52152.52152_FAC Fleet,52152_FAC Fleet,Labor,0.0d,4.0,4.0,At Completion Units,6/17/2025,6/20/2025,0,0,0,0,0,0,0,0,0,0,1.03_Accelerator Systems (AS),1.03.06_AS Soft X-Ray Undulator (SXR) - SLAC,1.03.06.06_AS Soft X-Ray Undulator Procurement and Fabrication - SLAC,1.03.06.06.03_SXR Undulator Integration and Testing,AS_SXU_MANF_3031_Post Retrofit Checkout - SXU_REFB_U,Support System,,SLAC,Labor
103444,1.03,1.03.06,1.03.06.06,1.03.06.06.03,1.03.06.06.03,SXR Undulator Integration and Testing,AS_SXU_MANF_3011,Receiving Inspection - Magnet Modules - Magnet Modules - SXU_REFB_U,3.0,4.0,4.0,4.0,01-14-26,01-16-26,AS_SXU_MANF_3001: FS,"AS_SXU_MANF_3021: FS, AS_LBL_PROD_925: FS",SLAC,0%,52198.52198_METSMANF (METSD Manufacturing),52198_METSMANF (METSD Manufacturing),Labor,0.0d,3.0,3.0,At Completion Units,5/21/2025,5/23/2025,0,0,0,0,0,0,0,0,0,0,1.03_Accelerator Systems (AS),1.03.06_AS Soft X-Ray Undulator (SXR) - SLAC,1.03.06.06_AS Soft X-Ray Undulator Procurement and Fabrication - SLAC,1.03.06.06.03_SXR Undulator Integration and Testing,AS_SXU_MANF_3011_Receiving Inspection - Magnet Modules - Magnet Modules - SXU_REFB_U,Manufacturing,,SLAC,Labor
103445,1.03,1.03.06,1.03.06.06,1.03.06.06.03,1.03.06.06.03,SXR Undulator Integration and Testing,AS_SXU_MANF_3011,Receiving Inspection - Magnet Modules - Magnet Modules - SXU_REFB_U,3.0,12.0,12.0,12.0,01-14-26,01-16-26,AS_SXU_MANF_3001: FS,"AS_SXU_MANF_3021: FS, AS_LBL_PROD_925: FS",SLAC,0%,52191.52191_METSMET Metrology,52191_METSMET Metrology,Labor,0.0d,3.0,3.0,At Completion Units,5/21/2025,5/23/2025,0,0,0,0,0,0,0,0,0,0,1.03_Accelerator Systems (AS),1.03.06_AS Soft X-Ray Undulator (SXR) - SLAC,1.03.06.06_AS Soft X-Ray Undulator Procurement and Fabrication - SLAC,1.03.06.06.03_SXR Undulator Integration and Testing,AS_SXU_MANF_3011_Receiving Inspection - Magnet Modules - Magnet Modules - SXU_REFB_U,Metrology,,SLAC,Labor
103446,1.03,1.03.06,1.03.06.06,1.03.06.06.03,1.03.06.06.03,SXR Undulator Integration and Testing,AS_SXU_MANF_3031,Post Retrofit Checkout - SXU_REFB_U,4.0,32.0,32.0,32.0,02-10-26,02-13-26,AS_SXU_MANF_3021: FS,AS_SXU_MANF_3041: FS,SLAC,0%,52213.52213_EEDHW (Electronics & Engineering Div - HW Engr),52213_EEDHW (Electronics & Engineering Div - HW Engr),Labor,0.0d,4.0,4.0,At Completion Units,6/17/2025,6/20/2025,0,0,0,0,0,0,0,0,0,0,1.03_Accelerator Systems (AS),1.03.06_AS Soft X-Ray Undulator (SXR) - SLAC,1.03.06.06_AS Soft X-Ray Undulator Procurement and Fabrication - SLAC,1.03.06.06.03_SXR Undulator Integration and Testing,AS_SXU_MANF_3031_Post Retrofit Checkout - SXU_REFB_U,Electrical,,SLAC,Labor
103447,1.03,1.03.06,1.03.06.06,1.03.06.06.03,1.03.06.06.03,SXR Undulator Integration and Testing,AS_SXU_MANF_3031,Post Retrofit Checkout - SXU_REFB_U,4.0,32.0,32.0,32.0,02-10-26,02-13-26,AS_SXU_MANF_3021: FS,AS_SXU_MANF_3041: FS,SLAC,0%,52191.52191_METSMET Metrology,52191_METSMET Metrology,Labor,0.0d,4.0,4.0,At Completion Units,6/17/2025,6/20/2025,0,0,0,0,0,0,0,0,0,0,1.03_Accelerator Systems (AS),1.03.06_AS Soft X-Ray Undulator (SXR) - SLAC,1.03.06.06_AS Soft X-Ray Undulator Procurement and Fabrication - SLAC,1.03.06.06.03_SXR Undulator Integration and Testing,AS_SXU_MANF_3031_Post Retrofit Checkout - SXU_REFB_U,Metrology,,SLAC,Labor
103448,1.03,1.03.06,1.03.06.06,1.03.06.06.03,1.03.06.06.03,SXR Undulator Integration and Testing,AS_SXU_MANF_3031,Post Retrofit Checkout - SXU_REFB_U,4.0,16.0,16.0,16.0,02-10-26,02-13-26,AS_SXU_MANF_3021: FS,AS_SXU_MANF_3041: FS,SLAC,0%,0106.0106_Staff Scientist,0106_Staff Scientist,Labor,0.0d,4.0,4.0,At Completion Units,6/17/2025,6/20/2025,0,0,0,0,0,0,0,0,0,0,1.03_Accelerator Systems (AS),1.03.06_AS Soft X-Ray Undulator (SXR) - SLAC,1.03.06.06_AS Soft X-Ray Undulator Procurement and Fabrication - SLAC,1.03.06.06.03_SXR Undulator Integration and Testing,AS_SXU_MANF_3031_Post Retrofit Checkout - SXU_REFB_U,Scientist,,SLAC,Labor
103449,1.03,1.03.06,1.03.06.06,1.03.06.06.03,1.03.06.06.03,SXR Undulator Integration and Testing,AS_SXU_MANF_3031,Post Retrofit Checkout - SXU_REFB_U,4.0,4.0,4.0,4.0,02-10-26,02-13-26,AS_SXU_MANF_3021: FS,AS_SXU_MANF_3041: FS,SLAC,0%,52169.52169_METS Mechanical Engineer,52169_METS Mechanical Engineer,Labor,0.0d,4.0,4.0,At Completion Units,6/17/2025,6/20/2025,0,0,0,0,0,0,0,0,0,0,1.03_Accelerator Systems (AS),1.03.06_AS Soft X-Ray Undulator (SXR) - SLAC,1.03.06.06_AS Soft X-Ray Undulator Procurement and Fabrication - SLAC,1.03.06.06.03_SXR Undulator Integration and Testing,AS_SXU_MANF_3031_Post Retrofit Checkout - SXU_REFB_U,Mechanical,,SLAC,Labor
103450,1.03,1.03.06,1.03.06.06,1.03.06.06.03,1.03.06.06.03,SXR Undulator Integration and Testing,AS_SXU_MANF_3021,Retrofit SXU Magnetic System SXU_REFB_U,15.0,280.0,280.0,280.0,01-20-26,02-09-26,"AS_SXU_MANF_3011: FS, AS_SXU_MANF_2921: FS, AS_SXU_INST_3000: FS",AS_SXU_MANF_3031: FS,SLAC,0%,52198.52198_METSMANF (METSD Manufacturing),52198_METSMANF (METSD Manufacturing),Labor,0.0d,15.0,15.0,At Completion Units,5/27/2025,6/16/2025,0,0,0,0,0,0,0,0,0,0,1.03_Accelerator Systems (AS),1.03.06_AS Soft X-Ray Undulator (SXR) - SLAC,1.03.06.06_AS Soft X-Ray Undulator Procurement and Fabrication - SLAC,1.03.06.06.03_SXR Undulator Integration and Testing,AS_SXU_MANF_3021_Retrofit SXU Magnetic System SXU_REFB_U,Manufacturing,,SLAC,Labor
103451,1.03,1.03.06,1.03.06.06,1.03.06.06.03,1.03.06.06.03,SXR Undulator Integration and Testing,AS_SXU_MANF_3021,Retrofit SXU Magnetic System SXU_REFB_U,15.0,24.0,24.0,24.0,01-20-26,02-09-26,"AS_SXU_MANF_3011: FS, AS_SXU_MANF_2921: FS, AS_SXU_INST_3000: FS",AS_SXU_MANF_3031: FS,SLAC,0%,52213.52213_EEDHW (Electronics & Engineering Div - HW Engr),52213_EEDHW (Electronics & Engineering Div - HW Engr),Labor,0.0d,15.0,15.0,At Completion Units,5/27/2025,6/16/2025,0,0,0,0,0,0,0,0,0,0,1.03_Accelerator Systems (AS),1.03.06_AS Soft X-Ray Undulator (SXR) - SLAC,1.03.06.06_AS Soft X-Ray Undulator Procurement and Fabrication - SLAC,1.03.06.06.03_SXR Undulator Integration and Testing,AS_SXU_MANF_3021_Retrofit SXU Magnetic System SXU_REFB_U,Electrical,,SLAC,Labor
103452,1.03,1.03.06,1.03.06.06,1.03.06.06.03,1.03.06.06.03,SXR Undulator Integration and Testing,AS_SXU_MANF_3021,Retrofit SXU Magnetic System SXU_REFB_U,15.0,12.0,12.0,12.0,01-20-26,02-09-26,"AS_SXU_MANF_3011: FS, AS_SXU_MANF_2921: FS, AS_SXU_INST_3000: FS",AS_SXU_MANF_3031: FS,SLAC,0%,52169.52169_METS Mechanical Engineer,52169_METS Mechanical Engineer,Labor,0.0d,15.0,15.0,At Completion Units,5/27/2025,6/16/2025,0,0,0,0,0,0,0,0,0,0,1.03_Accelerator Systems (AS),1.03.06_AS Soft X-Ray Undulator (SXR) - SLAC,1.03.06.06_AS Soft X-Ray Undulator Procurement and Fabrication - SLAC,1.03.06.06.03_SXR Undulator Integration and Testing,AS_SXU_MANF_3021_Retrofit SXU Magnetic System SXU_REFB_U,Mechanical,,SLAC,Labor
103453,1.03,1.03.06,1.03.06.06,1.03.06.06.03,1.03.06.06.03,SXR Undulator Integration and Testing,AS_SXU_MANF_3011,Receiving Inspection - Magnet Modules - Magnet Modules - SXU_REFB_U,3.0,8.0,8.0,8.0,01-14-26,01-16-26,AS_SXU_MANF_3001: FS,"AS_SXU_MANF_3021: FS, AS_LBL_PROD_925: FS",SLAC,0%,52169.52169_METS Mechanical Engineer,52169_METS Mechanical Engineer,Labor,0.0d,3.0,3.0,At Completion Units,5/21/2025,5/23/2025,0,0,0,0,0,0,0,0,0,0,1.03_Accelerator Systems (AS),1.03.06_AS Soft X-Ray Undulator (SXR) - SLAC,1.03.06.06_AS Soft X-Ray Undulator Procurement and Fabrication - SLAC,1.03.06.06.03_SXR Undulator Integration and Testing,AS_SXU_MANF_3011_Receiving Inspection - Magnet Modules - Magnet Modules - SXU_REFB_U,Mechanical,,SLAC,Labor
103454,1.03,1.03.06,1.03.06.06,1.03.06.06.03,1.03.06.06.03,SXR Undulator Integration and Testing,AS_SXU_MANF_2921,Retrofit SXU Magnetic System SXU_REFB_T,15.0,48.0,48.0,48.0,12-15-25,01-16-26,"AS_SXU_MANF_2911: FS, AS_SXU_MANF_2821: FS, AS_SXU_INST_2900: FS","AS_SXU_MANF_2931: FS, AS_SXU_MANF_3021: FS",SLAC,0%,52191.52191_METSMET Metrology,52191_METSMET Metrology,Labor,0.0d,15.0,15.0,At Completion Units,5/5/2025,5/23/2025,0,0,0,0,0,0,0,0,0,0,1.03_Accelerator Systems (AS),1.03.06_AS Soft X-Ray Undulator (SXR) - SLAC,1.03.06.06_AS Soft X-Ray Undulator Procurement and Fabrication - SLAC,1.03.06.06.03_SXR Undulator Integration and Testing,AS_SXU_MANF_2921_Retrofit SXU Magnetic System SXU_REFB_T,Metrology,,SLAC,Labor
103455,1.03,1.03.06,1.03.06.06,1.03.06.06.03,1.03.06.06.03,SXR Undulator Integration and Testing,AS_SXU_MANF_2946,Tune and Calibrate Undulator - SXU_HE_29,15.0,32.0,32.0,32.0,01-26-26,02-13-26,"AS_SXU_MANF_2941: FS, AS_SXU_MANF_2846: FS","AS_SXU_MANF_2956: FS, AS_SXU_MANF_3046: FS",SLAC,0%,52213.52213_EEDHW (Electronics & Engineering Div - HW Engr),52213_EEDHW (Electronics & Engineering Div - HW Engr),Labor,0.0d,15.0,15.0,At Completion Units,6/2/2025,6/20/2025,0,0,0,0,0,0,0,0,0,0,1.03_Accelerator Systems (AS),1.03.06_AS Soft X-Ray Undulator (SXR) - SLAC,1.03.06.06_AS Soft X-Ray Undulator Procurement and Fabrication - SLAC,1.03.06.06.03_SXR Undulator Integration and Testing,AS_SXU_MANF_2946_Tune and Calibrate Undulator - SXU_HE_29,Electrical,,SLAC,Labor
103456,1.03,1.03.06,1.03.06.06,1.03.06.06.03,1.03.06.06.03,SXR Undulator Integration and Testing,AS_SXU_MANF_2946,Tune and Calibrate Undulator - SXU_HE_29,15.0,48.0,48.0,48.0,01-26-26,02-13-26,"AS_SXU_MANF_2941: FS, AS_SXU_MANF_2846: FS","AS_SXU_MANF_2956: FS, AS_SXU_MANF_3046: FS",SLAC,0%,52198.52198_METSMANF (METSD Manufacturing),52198_METSMANF (METSD Manufacturing),Labor,0.0d,15.0,15.0,At Completion Units,6/2/2025,6/20/2025,0,0,0,0,0,0,0,0,0,0,1.03_Accelerator Systems (AS),1.03.06_AS Soft X-Ray Undulator (SXR) - SLAC,1.03.06.06_AS Soft X-Ray Undulator Procurement and Fabrication - SLAC,1.03.06.06.03_SXR Undulator Integration and Testing,AS_SXU_MANF_2946_Tune and Calibrate Undulator - SXU_HE_29,Manufacturing,,SLAC,Labor
103457,1.03,1.03.06,1.03.06.06,1.03.06.06.03,1.03.06.06.03,SXR Undulator Integration and Testing,AS_SXU_MANF_2946,Tune and Calibrate Undulator - SXU_HE_29,15.0,394.0,394.0,394.0,01-26-26,02-13-26,"AS_SXU_MANF_2941: FS, AS_SXU_MANF_2846: FS","AS_SXU_MANF_2956: FS, AS_SXU_MANF_3046: FS",SLAC,0%,52191.52191_METSMET Metrology,52191_METSMET Metrology,Labor,0.0d,15.0,15.0,At Completion Units,6/2/2025,6/20/2025,0,0,0,0,0,0,0,0,0,0,1.03_Accelerator Systems (AS),1.03.06_AS Soft X-Ray Undulator (SXR) - SLAC,1.03.06.06_AS Soft X-Ray Undulator Procurement and Fabrication - SLAC,1.03.06.06.03_SXR Undulator Integration and Testing,AS_SXU_MANF_2946_Tune and Calibrate Undulator - SXU_HE_29,Metrology,,SLAC,Labor
103458,1.03,1.03.06,1.03.06.06,1.03.06.06.03,1.03.06.06.03,SXR Undulator Integration and Testing,AS_SXU_MANF_2946,Tune and Calibrate Undulator - SXU_HE_29,15.0,32.0,32.0,32.0,01-26-26,02-13-26,"AS_SXU_MANF_2941: FS, AS_SXU_MANF_2846: FS","AS_SXU_MANF_2956: FS, AS_SXU_MANF_3046: FS",SLAC,0%,0106.0106_Staff Scientist,0106_Staff Scientist,Labor,0.0d,15.0,15.0,At Completion Units,6/2/2025,6/20/2025,0,0,0,0,0,0,0,0,0,0,1.03_Accelerator Systems (AS),1.03.06_AS Soft X-Ray Undulator (SXR) - SLAC,1.03.06.06_AS Soft X-Ray Undulator Procurement and Fabrication - SLAC,1.03.06.06.03_SXR Undulator Integration and Testing,AS_SXU_MANF_2946_Tune and Calibrate Undulator - SXU_HE_29,Scientist,,SLAC,Labor
103459,1.03,1.03.06,1.03.06.06,1.03.06.06.03,1.03.06.06.03,SXR Undulator Integration and Testing,AS_SXU_MANF_2946,Tune and Calibrate Undulator - SXU_HE_29,15.0,16.0,16.0,16.0,01-26-26,02-13-26,"AS_SXU_MANF_2941: FS, AS_SXU_MANF_2846: FS","AS_SXU_MANF_2956: FS, AS_SXU_MANF_3046: FS",SLAC,0%,52169.52169_METS Mechanical Engineer,52169_METS Mechanical Engineer,Labor,0.0d,15.0,15.0,At Completion Units,6/2/2025,6/20/2025,0,0,0,0,0,0,0,0,0,0,1.03_Accelerator Systems (AS),1.03.06_AS Soft X-Ray Undulator (SXR) - SLAC,1.03.06.06_AS Soft X-Ray Undulator Procurement and Fabrication - SLAC,1.03.06.06.03_SXR Undulator Integration and Testing,AS_SXU_MANF_2946_Tune and Calibrate Undulator - SXU_HE_29,Mechanical,,SLAC,Labor
103460,1.03,1.03.06,1.03.06.06,1.03.06.06.03,1.03.06.06.03,SXR Undulator Integration and Testing,AS_SXU_MANF_2931,Post Retrofit Checkout - SXU_REFB_T,4.0,12.0,12.0,12.0,01-20-26,01-23-26,AS_SXU_MANF_2921: FS,AS_SXU_MANF_2941: FS,SLAC,0%,52152.52152_FAC Fleet,52152_FAC Fleet,Labor,0.0d,4.0,4.0,At Completion Units,5/27/2025,5/30/2025,0,0,0,0,0,0,0,0,0,0,1.03_Accelerator Systems (AS),1.03.06_AS Soft X-Ray Undulator (SXR) - SLAC,1.03.06.06_AS Soft X-Ray Undulator Procurement and Fabrication - SLAC,1.03.06.06.03_SXR Undulator Integration and Testing,AS_SXU_MANF_2931_Post Retrofit Checkout - SXU_REFB_T,Support System,,SLAC,Labor
103461,1.03,1.03.06,1.03.06.06,1.03.06.06.03,1.03.06.06.03,SXR Undulator Integration and Testing,AS_SXU_MANF_2911,Receiving Inspection - Magnet Modules - SXU_REFB_T,3.0,4.0,4.0,4.0,12-10-25,12-12-25,AS_SXU_MANF_2901: FS,"AS_SXU_MANF_2921: FS, AS_LBL_PROD_915: FS",SLAC,0%,52198.52198_METSMANF (METSD Manufacturing),52198_METSMANF (METSD Manufacturing),Labor,0.0d,3.0,3.0,At Completion Units,4/30/2025,5/2/2025,0,0,0,0,0,0,0,0,0,0,1.03_Accelerator Systems (AS),1.03.06_AS Soft X-Ray Undulator (SXR) - SLAC,1.03.06.06_AS Soft X-Ray Undulator Procurement and Fabrication - SLAC,1.03.06.06.03_SXR Undulator Integration and Testing,AS_SXU_MANF_2911_Receiving Inspection - Magnet Modules - SXU_REFB_T,Manufacturing,,SLAC,Labor
103462,1.03,1.03.06,1.03.06.06,1.03.06.06.03,1.03.06.06.03,SXR Undulator Integration and Testing,AS_SXU_MANF_2911,Receiving Inspection - Magnet Modules - SXU_REFB_T,3.0,12.0,12.0,12.0,12-10-25,12-12-25,AS_SXU_MANF_2901: FS,"AS_SXU_MANF_2921: FS, AS_LBL_PROD_915: FS",SLAC,0%,52191.52191_METSMET Metrology,52191_METSMET Metrology,Labor,0.0d,3.0,3.0,At Completion Units,4/30/2025,5/2/2025,0,0,0,0,0,0,0,0,0,0,1.03_Accelerator Systems (AS),1.03.06_AS Soft X-Ray Undulator (SXR) - SLAC,1.03.06.06_AS Soft X-Ray Undulator Procurement and Fabrication - SLAC,1.03.06.06.03_SXR Undulator Integration and Testing,AS_SXU_MANF_2911_Receiving Inspection - Magnet Modules - SXU_REFB_T,Metrology,,SLAC,Labor
103463,1.03,1.03.06,1.03.06.06,1.03.06.06.03,1.03.06.06.03,SXR Undulator Integration and Testing,AS_SXU_MANF_2931,Post Retrofit Checkout - SXU_REFB_T,4.0,32.0,32.0,32.0,01-20-26,01-23-26,AS_SXU_MANF_2921: FS,AS_SXU_MANF_2941: FS,SLAC,0%,52213.52213_EEDHW (Electronics & Engineering Div - HW Engr),52213_EEDHW (Electronics & Engineering Div - HW Engr),Labor,0.0d,4.0,4.0,At Completion Units,5/27/2025,5/30/2025,0,0,0,0,0,0,0,0,0,0,1.03_Accelerator Systems (AS),1.03.06_AS Soft X-Ray Undulator (SXR) - SLAC,1.03.06.06_AS Soft X-Ray Undulator Procurement and Fabrication - SLAC,1.03.06.06.03_SXR Undulator Integration and Testing,AS_SXU_MANF_2931_Post Retrofit Checkout - SXU_REFB_T,Electrical,,SLAC,Labor
103464,1.03,1.03.06,1.03.06.06,1.03.06.06.03,1.03.06.06.03,SXR Undulator Integration and Testing,AS_SXU_MANF_2931,Post Retrofit Checkout - SXU_REFB_T,4.0,32.0,32.0,32.0,01-20-26,01-23-26,AS_SXU_MANF_2921: FS,AS_SXU_MANF_2941: FS,SLAC,0%,52191.52191_METSMET Metrology,52191_METSMET Metrology,Labor,0.0d,4.0,4.0,At Completion Units,5/27/2025,5/30/2025,0,0,0,0,0,0,0,0,0,0,1.03_Accelerator Systems (AS),1.03.06_AS Soft X-Ray Undulator (SXR) - SLAC,1.03.06.06_AS Soft X-Ray Undulator Procurement and Fabrication - SLAC,1.03.06.06.03_SXR Undulator Integration and Testing,AS_SXU_MANF_2931_Post Retrofit Checkout - SXU_REFB_T,Metrology,,SLAC,Labor
103465,1.03,1.03.06,1.03.06.06,1.03.06.06.03,1.03.06.06.03,SXR Undulator Integration and Testing,AS_SXU_MANF_2931,Post Retrofit Checkout - SXU_REFB_T,4.0,16.0,16.0,16.0,01-20-26,01-23-26,AS_SXU_MANF_2921: FS,AS_SXU_MANF_2941: FS,SLAC,0%,0106.0106_Staff Scientist,0106_Staff Scientist,Labor,0.0d,4.0,4.0,At Completion Units,5/27/2025,5/30/2025,0,0,0,0,0,0,0,0,0,0,1.03_Accelerator Systems (AS),1.03.06_AS Soft X-Ray Undulator (SXR) - SLAC,1.03.06.06_AS Soft X-Ray Undulator Procurement and Fabrication - SLAC,1.03.06.06.03_SXR Undulator Integration and Testing,AS_SXU_MANF_2931_Post Retrofit Checkout - SXU_REFB_T,Scientist,,SLAC,Labor
103466,1.03,1.03.06,1.03.06.06,1.03.06.06.03,1.03.06.06.03,SXR Undulator Integration and Testing,AS_SXU_MANF_2931,Post Retrofit Checkout - SXU_REFB_T,4.0,4.0,4.0,4.0,01-20-26,01-23-26,AS_SXU_MANF_2921: FS,AS_SXU_MANF_2941: FS,SLAC,0%,52169.52169_METS Mechanical Engineer,52169_METS Mechanical Engineer,Labor,0.0d,4.0,4.0,At Completion Units,5/27/2025,5/30/2025,0,0,0,0,0,0,0,0,0,0,1.03_Accelerator Systems (AS),1.03.06_AS Soft X-Ray Undulator (SXR) - SLAC,1.03.06.06_AS Soft X-Ray Undulator Procurement and Fabrication - SLAC,1.03.06.06.03_SXR Undulator Integration and Testing,AS_SXU_MANF_2931_Post Retrofit Checkout - SXU_REFB_T,Mechanical,,SLAC,Labor
103467,1.03,1.03.06,1.03.06.06,1.03.06.06.03,1.03.06.06.03,SXR Undulator Integration and Testing,AS_SXU_MANF_2921,Retrofit SXU Magnetic System SXU_REFB_T,15.0,280.0,280.0,280.0,12-15-25,01-16-26,"AS_SXU_MANF_2911: FS, AS_SXU_MANF_2821: FS, AS_SXU_INST_2900: FS","AS_SXU_MANF_2931: FS, AS_SXU_MANF_3021: FS",SLAC,0%,52198.52198_METSMANF (METSD Manufacturing),52198_METSMANF (METSD Manufacturing),Labor,0.0d,15.0,15.0,At Completion Units,5/5/2025,5/23/2025,0,0,0,0,0,0,0,0,0,0,1.03_Accelerator Systems (AS),1.03.06_AS Soft X-Ray Undulator (SXR) - SLAC,1.03.06.06_AS Soft X-Ray Undulator Procurement and Fabrication - SLAC,1.03.06.06.03_SXR Undulator Integration and Testing,AS_SXU_MANF_2921_Retrofit SXU Magnetic System SXU_REFB_T,Manufacturing,,SLAC,Labor
103468,1.03,1.03.06,1.03.06.06,1.03.06.06.03,1.03.06.06.03,SXR Undulator Integration and Testing,AS_SXU_MANF_2921,Retrofit SXU Magnetic System SXU_REFB_T,15.0,24.0,24.0,24.0,12-15-25,01-16-26,"AS_SXU_MANF_2911: FS, AS_SXU_MANF_2821: FS, AS_SXU_INST_2900: FS","AS_SXU_MANF_2931: FS, AS_SXU_MANF_3021: FS",SLAC,0%,52213.52213_EEDHW (Electronics & Engineering Div - HW Engr),52213_EEDHW (Electronics & Engineering Div - HW Engr),Labor,0.0d,15.0,15.0,At Completion Units,5/5/2025,5/23/2025,0,0,0,0,0,0,0,0,0,0,1.03_Accelerator Systems (AS),1.03.06_AS Soft X-Ray Undulator (SXR) - SLAC,1.03.06.06_AS Soft X-Ray Undulator Procurement and Fabrication - SLAC,1.03.06.06.03_SXR Undulator Integration and Testing,AS_SXU_MANF_2921_Retrofit SXU Magnetic System SXU_REFB_T,Electrical,,SLAC,Labor
103469,1.03,1.03.06,1.03.06.06,1.03.06.06.03,1.03.06.06.03,SXR Undulator Integration and Testing,AS_SXU_MANF_2921,Retrofit SXU Magnetic System SXU_REFB_T,15.0,12.0,12.0,12.0,12-15-25,01-16-26,"AS_SXU_MANF_2911: FS, AS_SXU_MANF_2821: FS, AS_SXU_INST_2900: FS","AS_SXU_MANF_2931: FS, AS_SXU_MANF_3021: FS",SLAC,0%,52169.52169_METS Mechanical Engineer,52169_METS Mechanical Engineer,Labor,0.0d,15.0,15.0,At Completion Units,5/5/2025,5/23/2025,0,0,0,0,0,0,0,0,0,0,1.03_Accelerator Systems (AS),1.03.06_AS Soft X-Ray Undulator (SXR) - SLAC,1.03.06.06_AS Soft X-Ray Undulator Procurement and Fabrication - SLAC,1.03.06.06.03_SXR Undulator Integration and Testing,AS_SXU_MANF_2921_Retrofit SXU Magnetic System SXU_REFB_T,Mechanical,,SLAC,Labor
103470,1.03,1.03.06,1.03.06.06,1.03.06.06.03,1.03.06.06.03,SXR Undulator Integration and Testing,AS_SXU_MANF_2911,Receiving Inspection - Magnet Modules - SXU_REFB_T,3.0,8.0,8.0,8.0,12-10-25,12-12-25,AS_SXU_MANF_2901: FS,"AS_SXU_MANF_2921: FS, AS_LBL_PROD_915: FS",SLAC,0%,52169.52169_METS Mechanical Engineer,52169_METS Mechanical Engineer,Labor,0.0d,3.0,3.0,At Completion Units,4/30/2025,5/2/2025,0,0,0,0,0,0,0,0,0,0,1.03_Accelerator Systems (AS),1.03.06_AS Soft X-Ray Undulator (SXR) - SLAC,1.03.06.06_AS Soft X-Ray Undulator Procurement and Fabrication - SLAC,1.03.06.06.03_SXR Undulator Integration and Testing,AS_SXU_MANF_2911_Receiving Inspection - Magnet Modules - SXU_REFB_T,Mechanical,,SLAC,Labor
103471,1.03,1.03.06,1.03.06.06,1.03.06.06.03,1.03.06.06.03,SXR Undulator Integration and Testing,AS_SXU_MANF_2821,Retrofit SXU Magnetic System SXU_REFB_S,15.0,48.0,48.0,48.0,11-20-25,12-12-25,"AS_SXU_MANF_2811: FS, AS_SXU_MANF_2721: FS, AS_SXU_INST_2800: FS","AS_SXU_MANF_2831: FS, AS_SXU_MANF_2921: FS",SLAC,0%,52191.52191_METSMET Metrology,52191_METSMET Metrology,Labor,0.0d,15.0,15.0,At Completion Units,4/14/2025,5/2/2025,0,0,0,0,0,0,0,0,0,0,1.03_Accelerator Systems (AS),1.03.06_AS Soft X-Ray Undulator (SXR) - SLAC,1.03.06.06_AS Soft X-Ray Undulator Procurement and Fabrication - SLAC,1.03.06.06.03_SXR Undulator Integration and Testing,AS_SXU_MANF_2821_Retrofit SXU Magnetic System SXU_REFB_S,Metrology,,SLAC,Labor
103472,1.03,1.03.06,1.03.06.06,1.03.06.06.03,1.03.06.06.03,SXR Undulator Integration and Testing,AS_SXU_MANF_2846,Tune and Calibrate Undulator - SXU_HE_28,15.0,32.0,32.0,32.0,12-19-25,01-23-26,"AS_SXU_MANF_2841: FS, AS_SXU_MANF_2746: FS","AS_SXU_MANF_2856: FS, AS_SXU_MANF_2946: FS",SLAC,0%,52213.52213_EEDHW (Electronics & Engineering Div - HW Engr),52213_EEDHW (Electronics & Engineering Div - HW Engr),Labor,0.0d,15.0,15.0,At Completion Units,5/9/2025,5/30/2025,0,0,0,0,0,0,0,0,0,0,1.03_Accelerator Systems (AS),1.03.06_AS Soft X-Ray Undulator (SXR) - SLAC,1.03.06.06_AS Soft X-Ray Undulator Procurement and Fabrication - SLAC,1.03.06.06.03_SXR Undulator Integration and Testing,AS_SXU_MANF_2846_Tune and Calibrate Undulator - SXU_HE_28,Electrical,,SLAC,Labor
103473,1.03,1.03.06,1.03.06.06,1.03.06.06.03,1.03.06.06.03,SXR Undulator Integration and Testing,AS_SXU_MANF_2846,Tune and Calibrate Undulator - SXU_HE_28,15.0,48.0,48.0,48.0,12-19-25,01-23-26,"AS_SXU_MANF_2841: FS, AS_SXU_MANF_2746: FS","AS_SXU_MANF_2856: FS, AS_SXU_MANF_2946: FS",SLAC,0%,52198.52198_METSMANF (METSD Manufacturing),52198_METSMANF (METSD Manufacturing),Labor,0.0d,15.0,15.0,At Completion Units,5/9/2025,5/30/2025,0,0,0,0,0,0,0,0,0,0,1.03_Accelerator Systems (AS),1.03.06_AS Soft X-Ray Undulator (SXR) - SLAC,1.03.06.06_AS Soft X-Ray Undulator Procurement and Fabrication - SLAC,1.03.06.06.03_SXR Undulator Integration and Testing,AS_SXU_MANF_2846_Tune and Calibrate Undulator - SXU_HE_28,Manufacturing,,SLAC,Labor
103474,1.03,1.03.06,1.03.06.06,1.03.06.06.03,1.03.06.06.03,SXR Undulator Integration and Testing,AS_SXU_MANF_2846,Tune and Calibrate Undulator - SXU_HE_28,15.0,394.0,394.0,394.0,12-19-25,01-23-26,"AS_SXU_MANF_2841: FS, AS_SXU_MANF_2746: FS","AS_SXU_MANF_2856: FS, AS_SXU_MANF_2946: FS",SLAC,0%,52191.52191_METSMET Metrology,52191_METSMET Metrology,Labor,0.0d,15.0,15.0,At Completion Units,5/9/2025,5/30/2025,0,0,0,0,0,0,0,0,0,0,1.03_Accelerator Systems (AS),1.03.06_AS Soft X-Ray Undulator (SXR) - SLAC,1.03.06.06_AS Soft X-Ray Undulator Procurement and Fabrication - SLAC,1.03.06.06.03_SXR Undulator Integration and Testing,AS_SXU_MANF_2846_Tune and Calibrate Undulator - SXU_HE_28,Metrology,,SLAC,Labor
103475,1.03,1.03.06,1.03.06.06,1.03.06.06.03,1.03.06.06.03,SXR Undulator Integration and Testing,AS_SXU_MANF_2846,Tune and Calibrate Undulator - SXU_HE_28,15.0,32.0,32.0,32.0,12-19-25,01-23-26,"AS_SXU_MANF_2841: FS, AS_SXU_MANF_2746: FS","AS_SXU_MANF_2856: FS, AS_SXU_MANF_2946: FS",SLAC,0%,0106.0106_Staff Scientist,0106_Staff Scientist,Labor,0.0d,15.0,15.0,At Completion Units,5/9/2025,5/30/2025,0,0,0,0,0,0,0,0,0,0,1.03_Accelerator Systems (AS),1.03.06_AS Soft X-Ray Undulator (SXR) - SLAC,1.03.06.06_AS Soft X-Ray Undulator Procurement and Fabrication - SLAC,1.03.06.06.03_SXR Undulator Integration and Testing,AS_SXU_MANF_2846_Tune and Calibrate Undulator - SXU_HE_28,Scientist,,SLAC,Labor
103476,1.03,1.03.06,1.03.06.06,1.03.06.06.03,1.03.06.06.03,SXR Undulator Integration and Testing,AS_SXU_MANF_2846,Tune and Calibrate Undulator - SXU_HE_28,15.0,16.0,16.0,16.0,12-19-25,01-23-26,"AS_SXU_MANF_2841: FS, AS_SXU_MANF_2746: FS","AS_SXU_MANF_2856: FS, AS_SXU_MANF_2946: FS",SLAC,0%,52169.52169_METS Mechanical Engineer,52169_METS Mechanical Engineer,Labor,0.0d,15.0,15.0,At Completion Units,5/9/2025,5/30/2025,0,0,0,0,0,0,0,0,0,0,1.03_Accelerator Systems (AS),1.03.06_AS Soft X-Ray Undulator (SXR) - SLAC,1.03.06.06_AS Soft X-Ray Undulator Procurement and Fabrication - SLAC,1.03.06.06.03_SXR Undulator Integration and Testing,AS_SXU_MANF_2846_Tune and Calibrate Undulator - SXU_HE_28,Mechanical,,SLAC,Labor
103477,1.03,1.03.06,1.03.06.06,1.03.06.06.03,1.03.06.06.03,SXR Undulator Integration and Testing,AS_SXU_MANF_2831,Post Retrofit Checkout - SXU_REFB_S,4.0,12.0,12.0,12.0,12-15-25,12-18-25,AS_SXU_MANF_2821: FS,AS_SXU_MANF_2841: FS,SLAC,0%,52152.52152_FAC Fleet,52152_FAC Fleet,Labor,0.0d,4.0,4.0,At Completion Units,5/5/2025,5/8/2025,0,0,0,0,0,0,0,0,0,0,1.03_Accelerator Systems (AS),1.03.06_AS Soft X-Ray Undulator (SXR) - SLAC,1.03.06.06_AS Soft X-Ray Undulator Procurement and Fabrication - SLAC,1.03.06.06.03_SXR Undulator Integration and Testing,AS_SXU_MANF_2831_Post Retrofit Checkout - SXU_REFB_S,Support System,,SLAC,Labor
103478,1.03,1.03.06,1.03.06.06,1.03.06.06.03,1.03.06.06.03,SXR Undulator Integration and Testing,AS_SXU_MANF_2811,Receiving Inspection - Magnet Modules - SXU_REFB_S,3.0,4.0,4.0,4.0,11-17-25,11-19-25,AS_SXU_MANF_2801: FS,"AS_SXU_MANF_2821: FS, AS_LBL_PROD_905: FS",SLAC,0%,52198.52198_METSMANF (METSD Manufacturing),52198_METSMANF (METSD Manufacturing),Labor,0.0d,3.0,3.0,At Completion Units,4/9/2025,4/11/2025,0,0,0,0,0,0,0,0,0,0,1.03_Accelerator Systems (AS),1.03.06_AS Soft X-Ray Undulator (SXR) - SLAC,1.03.06.06_AS Soft X-Ray Undulator Procurement and Fabrication - SLAC,1.03.06.06.03_SXR Undulator Integration and Testing,AS_SXU_MANF_2811_Receiving Inspection - Magnet Modules - SXU_REFB_S,Manufacturing,,SLAC,Labor
103479,1.03,1.03.06,1.03.06.06,1.03.06.06.03,1.03.06.06.03,SXR Undulator Integration and Testing,AS_SXU_MANF_2811,Receiving Inspection - Magnet Modules - SXU_REFB_S,3.0,12.0,12.0,12.0,11-17-25,11-19-25,AS_SXU_MANF_2801: FS,"AS_SXU_MANF_2821: FS, AS_LBL_PROD_905: FS",SLAC,0%,52191.52191_METSMET Metrology,52191_METSMET Metrology,Labor,0.0d,3.0,3.0,At Completion Units,4/9/2025,4/11/2025,0,0,0,0,0,0,0,0,0,0,1.03_Accelerator Systems (AS),1.03.06_AS Soft X-Ray Undulator (SXR) - SLAC,1.03.06.06_AS Soft X-Ray Undulator Procurement and Fabrication - SLAC,1.03.06.06.03_SXR Undulator Integration and Testing,AS_SXU_MANF_2811_Receiving Inspection - Magnet Modules - SXU_REFB_S,Metrology,,SLAC,Labor
103480,1.03,1.03.06,1.03.06.06,1.03.06.06.03,1.03.06.06.03,SXR Undulator Integration and Testing,AS_SXU_MANF_2831,Post Retrofit Checkout - SXU_REFB_S,4.0,32.0,32.0,32.0,12-15-25,12-18-25,AS_SXU_MANF_2821: FS,AS_SXU_MANF_2841: FS,SLAC,0%,52213.52213_EEDHW (Electronics & Engineering Div - HW Engr),52213_EEDHW (Electronics & Engineering Div - HW Engr),Labor,0.0d,4.0,4.0,At Completion Units,5/5/2025,5/8/2025,0,0,0,0,0,0,0,0,0,0,1.03_Accelerator Systems (AS),1.03.06_AS Soft X-Ray Undulator (SXR) - SLAC,1.03.06.06_AS Soft X-Ray Undulator Procurement and Fabrication - SLAC,1.03.06.06.03_SXR Undulator Integration and Testing,AS_SXU_MANF_2831_Post Retrofit Checkout - SXU_REFB_S,Electrical,,SLAC,Labor
103481,1.03,1.03.06,1.03.06.06,1.03.06.06.03,1.03.06.06.03,SXR Undulator Integration and Testing,AS_SXU_MANF_2831,Post Retrofit Checkout - SXU_REFB_S,4.0,32.0,32.0,32.0,12-15-25,12-18-25,AS_SXU_MANF_2821: FS,AS_SXU_MANF_2841: FS,SLAC,0%,52191.52191_METSMET Metrology,52191_METSMET Metrology,Labor,0.0d,4.0,4.0,At Completion Units,5/5/2025,5/8/2025,0,0,0,0,0,0,0,0,0,0,1.03_Accelerator Systems (AS),1.03.06_AS Soft X-Ray Undulator (SXR) - SLAC,1.03.06.06_AS Soft X-Ray Undulator Procurement and Fabrication - SLAC,1.03.06.06.03_SXR Undulator Integration and Testing,AS_SXU_MANF_2831_Post Retrofit Checkout - SXU_REFB_S,Metrology,,SLAC,Labor
103482,1.03,1.03.06,1.03.06.06,1.03.06.06.03,1.03.06.06.03,SXR Undulator Integration and Testing,AS_SXU_MANF_2831,Post Retrofit Checkout - SXU_REFB_S,4.0,16.0,16.0,16.0,12-15-25,12-18-25,AS_SXU_MANF_2821: FS,AS_SXU_MANF_2841: FS,SLAC,0%,0106.0106_Staff Scientist,0106_Staff Scientist,Labor,0.0d,4.0,4.0,At Completion Units,5/5/2025,5/8/2025,0,0,0,0,0,0,0,0,0,0,1.03_Accelerator Systems (AS),1.03.06_AS Soft X-Ray Undulator (SXR) - SLAC,1.03.06.06_AS Soft X-Ray Undulator Procurement and Fabrication - SLAC,1.03.06.06.03_SXR Undulator Integration and Testing,AS_SXU_MANF_2831_Post Retrofit Checkout - SXU_REFB_S,Scientist,,SLAC,Labor
103483,1.03,1.03.06,1.03.06.06,1.03.06.06.03,1.03.06.06.03,SXR Undulator Integration and Testing,AS_SXU_MANF_2831,Post Retrofit Checkout - SXU_REFB_S,4.0,4.0,4.0,4.0,12-15-25,12-18-25,AS_SXU_MANF_2821: FS,AS_SXU_MANF_2841: FS,SLAC,0%,52169.52169_METS Mechanical Engineer,52169_METS Mechanical Engineer,Labor,0.0d,4.0,4.0,At Completion Units,5/5/2025,5/8/2025,0,0,0,0,0,0,0,0,0,0,1.03_Accelerator Systems (AS),1.03.06_AS Soft X-Ray Undulator (SXR) - SLAC,1.03.06.06_AS Soft X-Ray Undulator Procurement and Fabrication - SLAC,1.03.06.06.03_SXR Undulator Integration and Testing,AS_SXU_MANF_2831_Post Retrofit Checkout - SXU_REFB_S,Mechanical,,SLAC,Labor
103484,1.03,1.03.06,1.03.06.06,1.03.06.06.03,1.03.06.06.03,SXR Undulator Integration and Testing,AS_SXU_MANF_2821,Retrofit SXU Magnetic System SXU_REFB_S,15.0,280.0,280.0,280.0,11-20-25,12-12-25,"AS_SXU_MANF_2811: FS, AS_SXU_MANF_2721: FS, AS_SXU_INST_2800: FS","AS_SXU_MANF_2831: FS, AS_SXU_MANF_2921: FS",SLAC,0%,52198.52198_METSMANF (METSD Manufacturing),52198_METSMANF (METSD Manufacturing),Labor,0.0d,15.0,15.0,At Completion Units,4/14/2025,5/2/2025,0,0,0,0,0,0,0,0,0,0,1.03_Accelerator Systems (AS),1.03.06_AS Soft X-Ray Undulator (SXR) - SLAC,1.03.06.06_AS Soft X-Ray Undulator Procurement and Fabrication - SLAC,1.03.06.06.03_SXR Undulator Integration and Testing,AS_SXU_MANF_2821_Retrofit SXU Magnetic System SXU_REFB_S,Manufacturing,,SLAC,Labor
103485,1.03,1.03.06,1.03.06.06,1.03.06.06.03,1.03.06.06.03,SXR Undulator Integration and Testing,AS_SXU_MANF_2821,Retrofit SXU Magnetic System SXU_REFB_S,15.0,24.0,24.0,24.0,11-20-25,12-12-25,"AS_SXU_MANF_2811: FS, AS_SXU_MANF_2721: FS, AS_SXU_INST_2800: FS","AS_SXU_MANF_2831: FS, AS_SXU_MANF_2921: FS",SLAC,0%,52213.52213_EEDHW (Electronics & Engineering Div - HW Engr),52213_EEDHW (Electronics & Engineering Div - HW Engr),Labor,0.0d,15.0,15.0,At Completion Units,4/14/2025,5/2/2025,0,0,0,0,0,0,0,0,0,0,1.03_Accelerator Systems (AS),1.03.06_AS Soft X-Ray Undulator (SXR) - SLAC,1.03.06.06_AS Soft X-Ray Undulator Procurement and Fabrication - SLAC,1.03.06.06.03_SXR Undulator Integration and Testing,AS_SXU_MANF_2821_Retrofit SXU Magnetic System SXU_REFB_S,Electrical,,SLAC,Labor
103486,1.03,1.03.06,1.03.06.06,1.03.06.06.03,1.03.06.06.03,SXR Undulator Integration and Testing,AS_SXU_MANF_2821,Retrofit SXU Magnetic System SXU_REFB_S,15.0,12.0,12.0,12.0,11-20-25,12-12-25,"AS_SXU_MANF_2811: FS, AS_SXU_MANF_2721: FS, AS_SXU_INST_2800: FS","AS_SXU_MANF_2831: FS, AS_SXU_MANF_2921: FS",SLAC,0%,52169.52169_METS Mechanical Engineer,52169_METS Mechanical Engineer,Labor,0.0d,15.0,15.0,At Completion Units,4/14/2025,5/2/2025,0,0,0,0,0,0,0,0,0,0,1.03_Accelerator Systems (AS),1.03.06_AS Soft X-Ray Undulator (SXR) - SLAC,1.03.06.06_AS Soft X-Ray Undulator Procurement and Fabrication - SLAC,1.03.06.06.03_SXR Undulator Integration and Testing,AS_SXU_MANF_2821_Retrofit SXU Magnetic System SXU_REFB_S,Mechanical,,SLAC,Labor
103487,1.03,1.03.06,1.03.06.06,1.03.06.06.03,1.03.06.06.03,SXR Undulator Integration and Testing,AS_SXU_MANF_2811,Receiving Inspection - Magnet Modules - SXU_REFB_S,3.0,8.0,8.0,8.0,11-17-25,11-19-25,AS_SXU_MANF_2801: FS,"AS_SXU_MANF_2821: FS, AS_LBL_PROD_905: FS",SLAC,0%,52169.52169_METS Mechanical Engineer,52169_METS Mechanical Engineer,Labor,0.0d,3.0,3.0,At Completion Units,4/9/2025,4/11/2025,0,0,0,0,0,0,0,0,0,0,1.03_Accelerator Systems (AS),1.03.06_AS Soft X-Ray Undulator (SXR) - SLAC,1.03.06.06_AS Soft X-Ray Undulator Procurement and Fabrication - SLAC,1.03.06.06.03_SXR Undulator Integration and Testing,AS_SXU_MANF_2811_Receiving Inspection - Magnet Modules - SXU_REFB_S,Mechanical,,SLAC,Labor
103488,1.03,1.03.06,1.03.06.06,1.03.06.06.03,1.03.06.06.03,SXR Undulator Integration and Testing,AS_SXU_MANF_2721,Retrofit SXU Magnetic System  SXU_REFB_R,15.0,48.0,48.0,48.0,10-30-25,11-19-25,"AS_SXU_MANF_2711: FS, AS_SXU_MANF_2621: FS, AS_SXU_INST_2700: FS","AS_SXU_MANF_2731: FS, AS_SXU_MANF_2821: FS",SLAC,0%,52191.52191_METSMET Metrology,52191_METSMET Metrology,Labor,0.0d,15.0,15.0,At Completion Units,3/24/2025,4/11/2025,0,0,0,0,0,0,0,0,0,0,1.03_Accelerator Systems (AS),1.03.06_AS Soft X-Ray Undulator (SXR) - SLAC,1.03.06.06_AS Soft X-Ray Undulator Procurement and Fabrication - SLAC,1.03.06.06.03_SXR Undulator Integration and Testing,AS_SXU_MANF_2721_Retrofit SXU Magnetic System  SXU_REFB_R,Metrology,,SLAC,Labor
103489,1.03,1.03.06,1.03.06.06,1.03.06.06.03,1.03.06.06.03,SXR Undulator Integration and Testing,AS_SXU_MANF_2746,Tune and Calibrate Undulator - SXU_HE_27,15.0,32.0,32.0,32.0,11-26-25,12-18-25,"AS_SXU_MANF_2741: FS, AS_SXU_MANF_2646: FS","AS_SXU_MANF_2756: FS, AS_SXU_MANF_2846: FS",SLAC,0%,52213.52213_EEDHW (Electronics & Engineering Div - HW Engr),52213_EEDHW (Electronics & Engineering Div - HW Engr),Labor,0.0d,15.0,15.0,At Completion Units,4/18/2025,5/8/2025,0,0,0,0,0,0,0,0,0,0,1.03_Accelerator Systems (AS),1.03.06_AS Soft X-Ray Undulator (SXR) - SLAC,1.03.06.06_AS Soft X-Ray Undulator Procurement and Fabrication - SLAC,1.03.06.06.03_SXR Undulator Integration and Testing,AS_SXU_MANF_2746_Tune and Calibrate Undulator - SXU_HE_27,Electrical,,SLAC,Labor
103490,1.03,1.03.06,1.03.06.06,1.03.06.06.03,1.03.06.06.03,SXR Undulator Integration and Testing,AS_SXU_MANF_2746,Tune and Calibrate Undulator - SXU_HE_27,15.0,48.0,48.0,48.0,11-26-25,12-18-25,"AS_SXU_MANF_2741: FS, AS_SXU_MANF_2646: FS","AS_SXU_MANF_2756: FS, AS_SXU_MANF_2846: FS",SLAC,0%,52198.52198_METSMANF (METSD Manufacturing),52198_METSMANF (METSD Manufacturing),Labor,0.0d,15.0,15.0,At Completion Units,4/18/2025,5/8/2025,0,0,0,0,0,0,0,0,0,0,1.03_Accelerator Systems (AS),1.03.06_AS Soft X-Ray Undulator (SXR) - SLAC,1.03.06.06_AS Soft X-Ray Undulator Procurement and Fabrication - SLAC,1.03.06.06.03_SXR Undulator Integration and Testing,AS_SXU_MANF_2746_Tune and Calibrate Undulator - SXU_HE_27,Manufacturing,,SLAC,Labor
103491,1.03,1.03.06,1.03.06.06,1.03.06.06.03,1.03.06.06.03,SXR Undulator Integration and Testing,AS_SXU_MANF_2746,Tune and Calibrate Undulator - SXU_HE_27,15.0,394.0,394.0,394.0,11-26-25,12-18-25,"AS_SXU_MANF_2741: FS, AS_SXU_MANF_2646: FS","AS_SXU_MANF_2756: FS, AS_SXU_MANF_2846: FS",SLAC,0%,52191.52191_METSMET Metrology,52191_METSMET Metrology,Labor,0.0d,15.0,15.0,At Completion Units,4/18/2025,5/8/2025,0,0,0,0,0,0,0,0,0,0,1.03_Accelerator Systems (AS),1.03.06_AS Soft X-Ray Undulator (SXR) - SLAC,1.03.06.06_AS Soft X-Ray Undulator Procurement and Fabrication - SLAC,1.03.06.06.03_SXR Undulator Integration and Testing,AS_SXU_MANF_2746_Tune and Calibrate Undulator - SXU_HE_27,Metrology,,SLAC,Labor
103492,1.03,1.03.06,1.03.06.06,1.03.06.06.03,1.03.06.06.03,SXR Undulator Integration and Testing,AS_SXU_MANF_2746,Tune and Calibrate Undulator - SXU_HE_27,15.0,32.0,32.0,32.0,11-26-25,12-18-25,"AS_SXU_MANF_2741: FS, AS_SXU_MANF_2646: FS","AS_SXU_MANF_2756: FS, AS_SXU_MANF_2846: FS",SLAC,0%,0106.0106_Staff Scientist,0106_Staff Scientist,Labor,0.0d,15.0,15.0,At Completion Units,4/18/2025,5/8/2025,0,0,0,0,0,0,0,0,0,0,1.03_Accelerator Systems (AS),1.03.06_AS Soft X-Ray Undulator (SXR) - SLAC,1.03.06.06_AS Soft X-Ray Undulator Procurement and Fabrication - SLAC,1.03.06.06.03_SXR Undulator Integration and Testing,AS_SXU_MANF_2746_Tune and Calibrate Undulator - SXU_HE_27,Scientist,,SLAC,Labor
103493,1.03,1.03.06,1.03.06.06,1.03.06.06.03,1.03.06.06.03,SXR Undulator Integration and Testing,AS_SXU_MANF_2746,Tune and Calibrate Undulator - SXU_HE_27,15.0,16.0,16.0,16.0,11-26-25,12-18-25,"AS_SXU_MANF_2741: FS, AS_SXU_MANF_2646: FS","AS_SXU_MANF_2756: FS, AS_SXU_MANF_2846: FS",SLAC,0%,52169.52169_METS Mechanical Engineer,52169_METS Mechanical Engineer,Labor,0.0d,15.0,15.0,At Completion Units,4/18/2025,5/8/2025,0,0,0,0,0,0,0,0,0,0,1.03_Accelerator Systems (AS),1.03.06_AS Soft X-Ray Undulator (SXR) - SLAC,1.03.06.06_AS Soft X-Ray Undulator Procurement and Fabrication - SLAC,1.03.06.06.03_SXR Undulator Integration and Testing,AS_SXU_MANF_2746_Tune and Calibrate Undulator - SXU_HE_27,Mechanical,,SLAC,Labor
103494,1.03,1.03.06,1.03.06.06,1.03.06.06.03,1.03.06.06.03,SXR Undulator Integration and Testing,AS_SXU_MANF_2731,Post Retrofit Checkout - SXU_REFB_R,4.0,12.0,12.0,12.0,11-20-25,11-25-25,AS_SXU_MANF_2721: FS,AS_SXU_MANF_2741: FS,SLAC,0%,52152.52152_FAC Fleet,52152_FAC Fleet,Labor,0.0d,4.0,4.0,At Completion Units,4/14/2025,4/17/2025,0,0,0,0,0,0,0,0,0,0,1.03_Accelerator Systems (AS),1.03.06_AS Soft X-Ray Undulator (SXR) - SLAC,1.03.06.06_AS Soft X-Ray Undulator Procurement and Fabrication - SLAC,1.03.06.06.03_SXR Undulator Integration and Testing,AS_SXU_MANF_2731_Post Retrofit Checkout - SXU_REFB_R,Support System,,SLAC,Labor
103495,1.03,1.03.06,1.03.06.06,1.03.06.06.03,1.03.06.06.03,SXR Undulator Integration and Testing,AS_SXU_MANF_2711,Receiving Inspection - Magnet Modules - SXU_REFB_R,3.0,4.0,4.0,4.0,10-27-25,10-29-25,AS_SXU_MANF_2701: FS,"AS_SXU_MANF_2721: FS, AS_LBL_PROD_895: FS",SLAC,0%,52198.52198_METSMANF (METSD Manufacturing),52198_METSMANF (METSD Manufacturing),Labor,0.0d,3.0,3.0,At Completion Units,3/19/2025,3/21/2025,0,0,0,0,0,0,0,0,0,0,1.03_Accelerator Systems (AS),1.03.06_AS Soft X-Ray Undulator (SXR) - SLAC,1.03.06.06_AS Soft X-Ray Undulator Procurement and Fabrication - SLAC,1.03.06.06.03_SXR Undulator Integration and Testing,AS_SXU_MANF_2711_Receiving Inspection - Magnet Modules - SXU_REFB_R,Manufacturing,,SLAC,Labor
103496,1.03,1.03.06,1.03.06.06,1.03.06.06.03,1.03.06.06.03,SXR Undulator Integration and Testing,AS_SXU_MANF_2711,Receiving Inspection - Magnet Modules - SXU_REFB_R,3.0,12.0,12.0,12.0,10-27-25,10-29-25,AS_SXU_MANF_2701: FS,"AS_SXU_MANF_2721: FS, AS_LBL_PROD_895: FS",SLAC,0%,52191.52191_METSMET Metrology,52191_METSMET Metrology,Labor,0.0d,3.0,3.0,At Completion Units,3/19/2025,3/21/2025,0,0,0,0,0,0,0,0,0,0,1.03_Accelerator Systems (AS),1.03.06_AS Soft X-Ray Undulator (SXR) - SLAC,1.03.06.06_AS Soft X-Ray Undulator Procurement and Fabrication - SLAC,1.03.06.06.03_SXR Undulator Integration and Testing,AS_SXU_MANF_2711_Receiving Inspection - Magnet Modules - SXU_REFB_R,Metrology,,SLAC,Labor
103497,1.03,1.03.06,1.03.06.06,1.03.06.06.03,1.03.06.06.03,SXR Undulator Integration and Testing,AS_SXU_MANF_2731,Post Retrofit Checkout - SXU_REFB_R,4.0,32.0,32.0,32.0,11-20-25,11-25-25,AS_SXU_MANF_2721: FS,AS_SXU_MANF_2741: FS,SLAC,0%,52213.52213_EEDHW (Electronics & Engineering Div - HW Engr),52213_EEDHW (Electronics & Engineering Div - HW Engr),Labor,0.0d,4.0,4.0,At Completion Units,4/14/2025,4/17/2025,0,0,0,0,0,0,0,0,0,0,1.03_Accelerator Systems (AS),1.03.06_AS Soft X-Ray Undulator (SXR) - SLAC,1.03.06.06_AS Soft X-Ray Undulator Procurement and Fabrication - SLAC,1.03.06.06.03_SXR Undulator Integration and Testing,AS_SXU_MANF_2731_Post Retrofit Checkout - SXU_REFB_R,Electrical,,SLAC,Labor
103498,1.03,1.03.06,1.03.06.06,1.03.06.06.03,1.03.06.06.03,SXR Undulator Integration and Testing,AS_SXU_MANF_2731,Post Retrofit Checkout - SXU_REFB_R,4.0,32.0,32.0,32.0,11-20-25,11-25-25,AS_SXU_MANF_2721: FS,AS_SXU_MANF_2741: FS,SLAC,0%,52191.52191_METSMET Metrology,52191_METSMET Metrology,Labor,0.0d,4.0,4.0,At Completion Units,4/14/2025,4/17/2025,0,0,0,0,0,0,0,0,0,0,1.03_Accelerator Systems (AS),1.03.06_AS Soft X-Ray Undulator (SXR) - SLAC,1.03.06.06_AS Soft X-Ray Undulator Procurement and Fabrication - SLAC,1.03.06.06.03_SXR Undulator Integration and Testing,AS_SXU_MANF_2731_Post Retrofit Checkout - SXU_REFB_R,Metrology,,SLAC,Labor
103499,1.03,1.03.06,1.03.06.06,1.03.06.06.03,1.03.06.06.03,SXR Undulator Integration and Testing,AS_SXU_MANF_2731,Post Retrofit Checkout - SXU_REFB_R,4.0,16.0,16.0,16.0,11-20-25,11-25-25,AS_SXU_MANF_2721: FS,AS_SXU_MANF_2741: FS,SLAC,0%,0106.0106_Staff Scientist,0106_Staff Scientist,Labor,0.0d,4.0,4.0,At Completion Units,4/14/2025,4/17/2025,0,0,0,0,0,0,0,0,0,0,1.03_Accelerator Systems (AS),1.03.06_AS Soft X-Ray Undulator (SXR) - SLAC,1.03.06.06_AS Soft X-Ray Undulator Procurement and Fabrication - SLAC,1.03.06.06.03_SXR Undulator Integration and Testing,AS_SXU_MANF_2731_Post Retrofit Checkout - SXU_REFB_R,Scientist,,SLAC,Labor
103500,1.03,1.03.06,1.03.06.06,1.03.06.06.03,1.03.06.06.03,SXR Undulator Integration and Testing,AS_SXU_MANF_2731,Post Retrofit Checkout - SXU_REFB_R,4.0,4.0,4.0,4.0,11-20-25,11-25-25,AS_SXU_MANF_2721: FS,AS_SXU_MANF_2741: FS,SLAC,0%,52169.52169_METS Mechanical Engineer,52169_METS Mechanical Engineer,Labor,0.0d,4.0,4.0,At Completion Units,4/14/2025,4/17/2025,0,0,0,0,0,0,0,0,0,0,1.03_Accelerator Systems (AS),1.03.06_AS Soft X-Ray Undulator (SXR) - SLAC,1.03.06.06_AS Soft X-Ray Undulator Procurement and Fabrication - SLAC,1.03.06.06.03_SXR Undulator Integration and Testing,AS_SXU_MANF_2731_Post Retrofit Checkout - SXU_REFB_R,Mechanical,,SLAC,Labor
103501,1.03,1.03.06,1.03.06.06,1.03.06.06.03,1.03.06.06.03,SXR Undulator Integration and Testing,AS_SXU_MANF_2721,Retrofit SXU Magnetic System  SXU_REFB_R,15.0,280.0,280.0,280.0,10-30-25,11-19-25,"AS_SXU_MANF_2711: FS, AS_SXU_MANF_2621: FS, AS_SXU_INST_2700: FS","AS_SXU_MANF_2731: FS, AS_SXU_MANF_2821: FS",SLAC,0%,52198.52198_METSMANF (METSD Manufacturing),52198_METSMANF (METSD Manufacturing),Labor,0.0d,15.0,15.0,At Completion Units,3/24/2025,4/11/2025,0,0,0,0,0,0,0,0,0,0,1.03_Accelerator Systems (AS),1.03.06_AS Soft X-Ray Undulator (SXR) - SLAC,1.03.06.06_AS Soft X-Ray Undulator Procurement and Fabrication - SLAC,1.03.06.06.03_SXR Undulator Integration and Testing,AS_SXU_MANF_2721_Retrofit SXU Magnetic System  SXU_REFB_R,Manufacturing,,SLAC,Labor
103502,1.03,1.03.06,1.03.06.06,1.03.06.06.03,1.03.06.06.03,SXR Undulator Integration and Testing,AS_SXU_MANF_2721,Retrofit SXU Magnetic System  SXU_REFB_R,15.0,24.0,24.0,24.0,10-30-25,11-19-25,"AS_SXU_MANF_2711: FS, AS_SXU_MANF_2621: FS, AS_SXU_INST_2700: FS","AS_SXU_MANF_2731: FS, AS_SXU_MANF_2821: FS",SLAC,0%,52213.52213_EEDHW (Electronics & Engineering Div - HW Engr),52213_EEDHW (Electronics & Engineering Div - HW Engr),Labor,0.0d,15.0,15.0,At Completion Units,3/24/2025,4/11/2025,0,0,0,0,0,0,0,0,0,0,1.03_Accelerator Systems (AS),1.03.06_AS Soft X-Ray Undulator (SXR) - SLAC,1.03.06.06_AS Soft X-Ray Undulator Procurement and Fabrication - SLAC,1.03.06.06.03_SXR Undulator Integration and Testing,AS_SXU_MANF_2721_Retrofit SXU Magnetic System  SXU_REFB_R,Electrical,,SLAC,Labor
103503,1.03,1.03.06,1.03.06.06,1.03.06.06.03,1.03.06.06.03,SXR Undulator Integration and Testing,AS_SXU_MANF_2721,Retrofit SXU Magnetic System  SXU_REFB_R,15.0,12.0,12.0,12.0,10-30-25,11-19-25,"AS_SXU_MANF_2711: FS, AS_SXU_MANF_2621: FS, AS_SXU_INST_2700: FS","AS_SXU_MANF_2731: FS, AS_SXU_MANF_2821: FS",SLAC,0%,52169.52169_METS Mechanical Engineer,52169_METS Mechanical Engineer,Labor,0.0d,15.0,15.0,At Completion Units,3/24/2025,4/11/2025,0,0,0,0,0,0,0,0,0,0,1.03_Accelerator Systems (AS),1.03.06_AS Soft X-Ray Undulator (SXR) - SLAC,1.03.06.06_AS Soft X-Ray Undulator Procurement and Fabrication - SLAC,1.03.06.06.03_SXR Undulator Integration and Testing,AS_SXU_MANF_2721_Retrofit SXU Magnetic System  SXU_REFB_R,Mechanical,,SLAC,Labor
103504,1.03,1.03.06,1.03.06.06,1.03.06.06.03,1.03.06.06.03,SXR Undulator Integration and Testing,AS_SXU_MANF_2711,Receiving Inspection - Magnet Modules - SXU_REFB_R,3.0,8.0,8.0,8.0,10-27-25,10-29-25,AS_SXU_MANF_2701: FS,"AS_SXU_MANF_2721: FS, AS_LBL_PROD_895: FS",SLAC,0%,52169.52169_METS Mechanical Engineer,52169_METS Mechanical Engineer,Labor,0.0d,3.0,3.0,At Completion Units,3/19/2025,3/21/2025,0,0,0,0,0,0,0,0,0,0,1.03_Accelerator Systems (AS),1.03.06_AS Soft X-Ray Undulator (SXR) - SLAC,1.03.06.06_AS Soft X-Ray Undulator Procurement and Fabrication - SLAC,1.03.06.06.03_SXR Undulator Integration and Testing,AS_SXU_MANF_2711_Receiving Inspection - Magnet Modules - SXU_REFB_R,Mechanical,,SLAC,Labor
103505,1.03,1.03.06,1.03.06.06,1.03.06.06.03,1.03.06.06.03,SXR Undulator Integration and Testing,AS_SXU_MANF_2621,Retrofit SXU Magnetic System SXU_REFB_Q,15.0,48.0,48.0,48.0,10-09-25,10-29-25,"AS_SXU_MANF_2611: FS, AS_SXU_MANF_2521: FS, AS_SXU_INST_2600: FS","AS_SXU_MANF_2631: FS, AS_SXU_MANF_2721: FS",SLAC,0%,52191.52191_METSMET Metrology,52191_METSMET Metrology,Labor,0.0d,15.0,15.0,At Completion Units,3/3/2025,3/21/2025,0,0,0,0,0,0,0,0,0,0,1.03_Accelerator Systems (AS),1.03.06_AS Soft X-Ray Undulator (SXR) - SLAC,1.03.06.06_AS Soft X-Ray Undulator Procurement and Fabrication - SLAC,1.03.06.06.03_SXR Undulator Integration and Testing,AS_SXU_MANF_2621_Retrofit SXU Magnetic System SXU_REFB_Q,Metrology,,SLAC,Labor
103506,1.03,1.03.06,1.03.06.06,1.03.06.06.03,1.03.06.06.03,SXR Undulator Integration and Testing,AS_SXU_MANF_2646,Tune and Calibrate Undulator - SXU_HE_26,15.0,32.0,32.0,32.0,11-05-25,11-25-25,"AS_SXU_MANF_2641: FS, AS_SXU_MANF_2546: FS","AS_SXU_MANF_2656: FS, AS_SXU_MANF_2746: FS",SLAC,0%,52213.52213_EEDHW (Electronics & Engineering Div - HW Engr),52213_EEDHW (Electronics & Engineering Div - HW Engr),Labor,0.0d,15.0,15.0,At Completion Units,3/28/2025,4/17/2025,0,0,0,0,0,0,0,0,0,0,1.03_Accelerator Systems (AS),1.03.06_AS Soft X-Ray Undulator (SXR) - SLAC,1.03.06.06_AS Soft X-Ray Undulator Procurement and Fabrication - SLAC,1.03.06.06.03_SXR Undulator Integration and Testing,AS_SXU_MANF_2646_Tune and Calibrate Undulator - SXU_HE_26,Electrical,,SLAC,Labor
103507,1.03,1.03.06,1.03.06.06,1.03.06.06.03,1.03.06.06.03,SXR Undulator Integration and Testing,AS_SXU_MANF_2646,Tune and Calibrate Undulator - SXU_HE_26,15.0,48.0,48.0,48.0,11-05-25,11-25-25,"AS_SXU_MANF_2641: FS, AS_SXU_MANF_2546: FS","AS_SXU_MANF_2656: FS, AS_SXU_MANF_2746: FS",SLAC,0%,52198.52198_METSMANF (METSD Manufacturing),52198_METSMANF (METSD Manufacturing),Labor,0.0d,15.0,15.0,At Completion Units,3/28/2025,4/17/2025,0,0,0,0,0,0,0,0,0,0,1.03_Accelerator Systems (AS),1.03.06_AS Soft X-Ray Undulator (SXR) - SLAC,1.03.06.06_AS Soft X-Ray Undulator Procurement and Fabrication - SLAC,1.03.06.06.03_SXR Undulator Integration and Testing,AS_SXU_MANF_2646_Tune and Calibrate Undulator - SXU_HE_26,Manufacturing,,SLAC,Labor
103508,1.03,1.03.06,1.03.06.06,1.03.06.06.03,1.03.06.06.03,SXR Undulator Integration and Testing,AS_SXU_MANF_2646,Tune and Calibrate Undulator - SXU_HE_26,15.0,394.0,394.0,394.0,11-05-25,11-25-25,"AS_SXU_MANF_2641: FS, AS_SXU_MANF_2546: FS","AS_SXU_MANF_2656: FS, AS_SXU_MANF_2746: FS",SLAC,0%,52191.52191_METSMET Metrology,52191_METSMET Metrology,Labor,0.0d,15.0,15.0,At Completion Units,3/28/2025,4/17/2025,0,0,0,0,0,0,0,0,0,0,1.03_Accelerator Systems (AS),1.03.06_AS Soft X-Ray Undulator (SXR) - SLAC,1.03.06.06_AS Soft X-Ray Undulator Procurement and Fabrication - SLAC,1.03.06.06.03_SXR Undulator Integration and Testing,AS_SXU_MANF_2646_Tune and Calibrate Undulator - SXU_HE_26,Metrology,,SLAC,Labor
103509,1.03,1.03.06,1.03.06.06,1.03.06.06.03,1.03.06.06.03,SXR Undulator Integration and Testing,AS_SXU_MANF_2646,Tune and Calibrate Undulator - SXU_HE_26,15.0,32.0,32.0,32.0,11-05-25,11-25-25,"AS_SXU_MANF_2641: FS, AS_SXU_MANF_2546: FS","AS_SXU_MANF_2656: FS, AS_SXU_MANF_2746: FS",SLAC,0%,0106.0106_Staff Scientist,0106_Staff Scientist,Labor,0.0d,15.0,15.0,At Completion Units,3/28/2025,4/17/2025,0,0,0,0,0,0,0,0,0,0,1.03_Accelerator Systems (AS),1.03.06_AS Soft X-Ray Undulator (SXR) - SLAC,1.03.06.06_AS Soft X-Ray Undulator Procurement and Fabrication - SLAC,1.03.06.06.03_SXR Undulator Integration and Testing,AS_SXU_MANF_2646_Tune and Calibrate Undulator - SXU_HE_26,Scientist,,SLAC,Labor
103510,1.03,1.03.06,1.03.06.06,1.03.06.06.03,1.03.06.06.03,SXR Undulator Integration and Testing,AS_SXU_MANF_2646,Tune and Calibrate Undulator - SXU_HE_26,15.0,16.0,16.0,16.0,11-05-25,11-25-25,"AS_SXU_MANF_2641: FS, AS_SXU_MANF_2546: FS","AS_SXU_MANF_2656: FS, AS_SXU_MANF_2746: FS",SLAC,0%,52169.52169_METS Mechanical Engineer,52169_METS Mechanical Engineer,Labor,0.0d,15.0,15.0,At Completion Units,3/28/2025,4/17/2025,0,0,0,0,0,0,0,0,0,0,1.03_Accelerator Systems (AS),1.03.06_AS Soft X-Ray Undulator (SXR) - SLAC,1.03.06.06_AS Soft X-Ray Undulator Procurement and Fabrication - SLAC,1.03.06.06.03_SXR Undulator Integration and Testing,AS_SXU_MANF_2646_Tune and Calibrate Undulator - SXU_HE_26,Mechanical,,SLAC,Labor
103511,1.03,1.03.06,1.03.06.06,1.03.06.06.03,1.03.06.06.03,SXR Undulator Integration and Testing,AS_SXU_MANF_2631,Post Retrofit Checkout - SXU_REFB_Q,4.0,12.0,12.0,12.0,10-30-25,11-04-25,AS_SXU_MANF_2621: FS,AS_SXU_MANF_2641: FS,SLAC,0%,52152.52152_FAC Fleet,52152_FAC Fleet,Labor,0.0d,4.0,4.0,At Completion Units,3/24/2025,3/27/2025,0,0,0,0,0,0,0,0,0,0,1.03_Accelerator Systems (AS),1.03.06_AS Soft X-Ray Undulator (SXR) - SLAC,1.03.06.06_AS Soft X-Ray Undulator Procurement and Fabrication - SLAC,1.03.06.06.03_SXR Undulator Integration and Testing,AS_SXU_MANF_2631_Post Retrofit Checkout - SXU_REFB_Q,Support System,,SLAC,Labor
103512,1.03,1.03.06,1.03.06.06,1.03.06.06.03,1.03.06.06.03,SXR Undulator Integration and Testing,AS_SXU_MANF_2611,Receiving Inspection - Magnet Modules - SXU_REFB_Q,3.0,4.0,4.0,4.0,10-06-25,10-08-25,AS_SXU_MANF_2601: FS,"AS_SXU_MANF_2621: FS, AS_LBL_PROD_885: FS",SLAC,0%,52198.52198_METSMANF (METSD Manufacturing),52198_METSMANF (METSD Manufacturing),Labor,0.0d,3.0,3.0,At Completion Units,2/26/2025,2/28/2025,0,0,0,0,0,0,0,0,0,0,1.03_Accelerator Systems (AS),1.03.06_AS Soft X-Ray Undulator (SXR) - SLAC,1.03.06.06_AS Soft X-Ray Undulator Procurement and Fabrication - SLAC,1.03.06.06.03_SXR Undulator Integration and Testing,AS_SXU_MANF_2611_Receiving Inspection - Magnet Modules - SXU_REFB_Q,Manufacturing,,SLAC,Labor
103513,1.03,1.03.06,1.03.06.06,1.03.06.06.03,1.03.06.06.03,SXR Undulator Integration and Testing,AS_SXU_MANF_2611,Receiving Inspection - Magnet Modules - SXU_REFB_Q,3.0,12.0,12.0,12.0,10-06-25,10-08-25,AS_SXU_MANF_2601: FS,"AS_SXU_MANF_2621: FS, AS_LBL_PROD_885: FS",SLAC,0%,52191.52191_METSMET Metrology,52191_METSMET Metrology,Labor,0.0d,3.0,3.0,At Completion Units,2/26/2025,2/28/2025,0,0,0,0,0,0,0,0,0,0,1.03_Accelerator Systems (AS),1.03.06_AS Soft X-Ray Undulator (SXR) - SLAC,1.03.06.06_AS Soft X-Ray Undulator Procurement and Fabrication - SLAC,1.03.06.06.03_SXR Undulator Integration and Testing,AS_SXU_MANF_2611_Receiving Inspection - Magnet Modules - SXU_REFB_Q,Metrology,,SLAC,Labor
103514,1.03,1.03.06,1.03.06.06,1.03.06.06.03,1.03.06.06.03,SXR Undulator Integration and Testing,AS_SXU_MANF_2631,Post Retrofit Checkout - SXU_REFB_Q,4.0,32.0,32.0,32.0,10-30-25,11-04-25,AS_SXU_MANF_2621: FS,AS_SXU_MANF_2641: FS,SLAC,0%,52213.52213_EEDHW (Electronics & Engineering Div - HW Engr),52213_EEDHW (Electronics & Engineering Div - HW Engr),Labor,0.0d,4.0,4.0,At Completion Units,3/24/2025,3/27/2025,0,0,0,0,0,0,0,0,0,0,1.03_Accelerator Systems (AS),1.03.06_AS Soft X-Ray Undulator (SXR) - SLAC,1.03.06.06_AS Soft X-Ray Undulator Procurement and Fabrication - SLAC,1.03.06.06.03_SXR Undulator Integration and Testing,AS_SXU_MANF_2631_Post Retrofit Checkout - SXU_REFB_Q,Electrical,,SLAC,Labor
103515,1.03,1.03.06,1.03.06.06,1.03.06.06.03,1.03.06.06.03,SXR Undulator Integration and Testing,AS_SXU_MANF_2631,Post Retrofit Checkout - SXU_REFB_Q,4.0,32.0,32.0,32.0,10-30-25,11-04-25,AS_SXU_MANF_2621: FS,AS_SXU_MANF_2641: FS,SLAC,0%,52191.52191_METSMET Metrology,52191_METSMET Metrology,Labor,0.0d,4.0,4.0,At Completion Units,3/24/2025,3/27/2025,0,0,0,0,0,0,0,0,0,0,1.03_Accelerator Systems (AS),1.03.06_AS Soft X-Ray Undulator (SXR) - SLAC,1.03.06.06_AS Soft X-Ray Undulator Procurement and Fabrication - SLAC,1.03.06.06.03_SXR Undulator Integration and Testing,AS_SXU_MANF_2631_Post Retrofit Checkout - SXU_REFB_Q,Metrology,,SLAC,Labor
103516,1.03,1.03.06,1.03.06.06,1.03.06.06.03,1.03.06.06.03,SXR Undulator Integration and Testing,AS_SXU_MANF_2631,Post Retrofit Checkout - SXU_REFB_Q,4.0,16.0,16.0,16.0,10-30-25,11-04-25,AS_SXU_MANF_2621: FS,AS_SXU_MANF_2641: FS,SLAC,0%,0106.0106_Staff Scientist,0106_Staff Scientist,Labor,0.0d,4.0,4.0,At Completion Units,3/24/2025,3/27/2025,0,0,0,0,0,0,0,0,0,0,1.03_Accelerator Systems (AS),1.03.06_AS Soft X-Ray Undulator (SXR) - SLAC,1.03.06.06_AS Soft X-Ray Undulator Procurement and Fabrication - SLAC,1.03.06.06.03_SXR Undulator Integration and Testing,AS_SXU_MANF_2631_Post Retrofit Checkout - SXU_REFB_Q,Scientist,,SLAC,Labor
103517,1.03,1.03.06,1.03.06.06,1.03.06.06.03,1.03.06.06.03,SXR Undulator Integration and Testing,AS_SXU_MANF_2631,Post Retrofit Checkout - SXU_REFB_Q,4.0,4.0,4.0,4.0,10-30-25,11-04-25,AS_SXU_MANF_2621: FS,AS_SXU_MANF_2641: FS,SLAC,0%,52169.52169_METS Mechanical Engineer,52169_METS Mechanical Engineer,Labor,0.0d,4.0,4.0,At Completion Units,3/24/2025,3/27/2025,0,0,0,0,0,0,0,0,0,0,1.03_Accelerator Systems (AS),1.03.06_AS Soft X-Ray Undulator (SXR) - SLAC,1.03.06.06_AS Soft X-Ray Undulator Procurement and Fabrication - SLAC,1.03.06.06.03_SXR Undulator Integration and Testing,AS_SXU_MANF_2631_Post Retrofit Checkout - SXU_REFB_Q,Mechanical,,SLAC,Labor
103518,1.03,1.03.06,1.03.06.06,1.03.06.06.03,1.03.06.06.03,SXR Undulator Integration and Testing,AS_SXU_MANF_2621,Retrofit SXU Magnetic System SXU_REFB_Q,15.0,280.0,280.0,280.0,10-09-25,10-29-25,"AS_SXU_MANF_2611: FS, AS_SXU_MANF_2521: FS, AS_SXU_INST_2600: FS","AS_SXU_MANF_2631: FS, AS_SXU_MANF_2721: FS",SLAC,0%,52198.52198_METSMANF (METSD Manufacturing),52198_METSMANF (METSD Manufacturing),Labor,0.0d,15.0,15.0,At Completion Units,3/3/2025,3/21/2025,0,0,0,0,0,0,0,0,0,0,1.03_Accelerator Systems (AS),1.03.06_AS Soft X-Ray Undulator (SXR) - SLAC,1.03.06.06_AS Soft X-Ray Undulator Procurement and Fabrication - SLAC,1.03.06.06.03_SXR Undulator Integration and Testing,AS_SXU_MANF_2621_Retrofit SXU Magnetic System SXU_REFB_Q,Manufacturing,,SLAC,Labor
103519,1.03,1.03.06,1.03.06.06,1.03.06.06.03,1.03.06.06.03,SXR Undulator Integration and Testing,AS_SXU_MANF_2621,Retrofit SXU Magnetic System SXU_REFB_Q,15.0,24.0,24.0,24.0,10-09-25,10-29-25,"AS_SXU_MANF_2611: FS, AS_SXU_MANF_2521: FS, AS_SXU_INST_2600: FS","AS_SXU_MANF_2631: FS, AS_SXU_MANF_2721: FS",SLAC,0%,52213.52213_EEDHW (Electronics & Engineering Div - HW Engr),52213_EEDHW (Electronics & Engineering Div - HW Engr),Labor,0.0d,15.0,15.0,At Completion Units,3/3/2025,3/21/2025,0,0,0,0,0,0,0,0,0,0,1.03_Accelerator Systems (AS),1.03.06_AS Soft X-Ray Undulator (SXR) - SLAC,1.03.06.06_AS Soft X-Ray Undulator Procurement and Fabrication - SLAC,1.03.06.06.03_SXR Undulator Integration and Testing,AS_SXU_MANF_2621_Retrofit SXU Magnetic System SXU_REFB_Q,Electrical,,SLAC,Labor
103520,1.03,1.03.06,1.03.06.06,1.03.06.06.03,1.03.06.06.03,SXR Undulator Integration and Testing,AS_SXU_MANF_2621,Retrofit SXU Magnetic System SXU_REFB_Q,15.0,12.0,12.0,12.0,10-09-25,10-29-25,"AS_SXU_MANF_2611: FS, AS_SXU_MANF_2521: FS, AS_SXU_INST_2600: FS","AS_SXU_MANF_2631: FS, AS_SXU_MANF_2721: FS",SLAC,0%,52169.52169_METS Mechanical Engineer,52169_METS Mechanical Engineer,Labor,0.0d,15.0,15.0,At Completion Units,3/3/2025,3/21/2025,0,0,0,0,0,0,0,0,0,0,1.03_Accelerator Systems (AS),1.03.06_AS Soft X-Ray Undulator (SXR) - SLAC,1.03.06.06_AS Soft X-Ray Undulator Procurement and Fabrication - SLAC,1.03.06.06.03_SXR Undulator Integration and Testing,AS_SXU_MANF_2621_Retrofit SXU Magnetic System SXU_REFB_Q,Mechanical,,SLAC,Labor
103521,1.03,1.03.06,1.03.06.06,1.03.06.06.03,1.03.06.06.03,SXR Undulator Integration and Testing,AS_SXU_MANF_2611,Receiving Inspection - Magnet Modules - SXU_REFB_Q,3.0,8.0,8.0,8.0,10-06-25,10-08-25,AS_SXU_MANF_2601: FS,"AS_SXU_MANF_2621: FS, AS_LBL_PROD_885: FS",SLAC,0%,52169.52169_METS Mechanical Engineer,52169_METS Mechanical Engineer,Labor,0.0d,3.0,3.0,At Completion Units,2/26/2025,2/28/2025,0,0,0,0,0,0,0,0,0,0,1.03_Accelerator Systems (AS),1.03.06_AS Soft X-Ray Undulator (SXR) - SLAC,1.03.06.06_AS Soft X-Ray Undulator Procurement and Fabrication - SLAC,1.03.06.06.03_SXR Undulator Integration and Testing,AS_SXU_MANF_2611_Receiving Inspection - Magnet Modules - SXU_REFB_Q,Mechanical,,SLAC,Labor
103522,1.03,1.03.06,1.03.06.06,1.03.06.06.03,1.03.06.06.03,SXR Undulator Integration and Testing,AS_SXU_MANF_2521,Retrofit SXU Magnetic System SXU_REFB_P,15.0,48.0,48.0,48.0,09-18-25,10-08-25,"AS_SXU_MANF_2511: FS, AS_SXU_MANF_2421: FS, AS_SXU_INST_2500: FS","AS_SXU_MANF_2531: FS, AS_SXU_MANF_2621: FS",SLAC,0%,52191.52191_METSMET Metrology,52191_METSMET Metrology,Labor,0.0d,15.0,15.0,At Completion Units,2/7/2025,2/28/2025,0,0,0,0,0,0,0,0,0,0,1.03_Accelerator Systems (AS),1.03.06_AS Soft X-Ray Undulator (SXR) - SLAC,1.03.06.06_AS Soft X-Ray Undulator Procurement and Fabrication - SLAC,1.03.06.06.03_SXR Undulator Integration and Testing,AS_SXU_MANF_2521_Retrofit SXU Magnetic System SXU_REFB_P,Metrology,,SLAC,Labor
103523,1.03,1.03.06,1.03.06.06,1.03.06.06.03,1.03.06.06.03,SXR Undulator Integration and Testing,AS_SXU_MANF_2546,Tune and Calibrate Undulator - SXU_HE_25,15.0,32.0,32.0,32.0,10-15-25,11-04-25,"AS_SXU_MANF_2541: FS, AS_SXU_MANF_2446: FS","AS_SXU_MANF_2556: FS, AS_SXU_MANF_2646: FS",SLAC,0%,52213.52213_EEDHW (Electronics & Engineering Div - HW Engr),52213_EEDHW (Electronics & Engineering Div - HW Engr),Labor,0.0d,15.0,15.0,At Completion Units,3/7/2025,3/27/2025,0,0,0,0,0,0,0,0,0,0,1.03_Accelerator Systems (AS),1.03.06_AS Soft X-Ray Undulator (SXR) - SLAC,1.03.06.06_AS Soft X-Ray Undulator Procurement and Fabrication - SLAC,1.03.06.06.03_SXR Undulator Integration and Testing,AS_SXU_MANF_2546_Tune and Calibrate Undulator - SXU_HE_25,Electrical,,SLAC,Labor
103524,1.03,1.03.06,1.03.06.06,1.03.06.06.03,1.03.06.06.03,SXR Undulator Integration and Testing,AS_SXU_MANF_2546,Tune and Calibrate Undulator - SXU_HE_25,15.0,48.0,48.0,48.0,10-15-25,11-04-25,"AS_SXU_MANF_2541: FS, AS_SXU_MANF_2446: FS","AS_SXU_MANF_2556: FS, AS_SXU_MANF_2646: FS",SLAC,0%,52198.52198_METSMANF (METSD Manufacturing),52198_METSMANF (METSD Manufacturing),Labor,0.0d,15.0,15.0,At Completion Units,3/7/2025,3/27/2025,0,0,0,0,0,0,0,0,0,0,1.03_Accelerator Systems (AS),1.03.06_AS Soft X-Ray Undulator (SXR) - SLAC,1.03.06.06_AS Soft X-Ray Undulator Procurement and Fabrication - SLAC,1.03.06.06.03_SXR Undulator Integration and Testing,AS_SXU_MANF_2546_Tune and Calibrate Undulator - SXU_HE_25,Manufacturing,,SLAC,Labor
103525,1.03,1.03.06,1.03.06.06,1.03.06.06.03,1.03.06.06.03,SXR Undulator Integration and Testing,AS_SXU_MANF_2546,Tune and Calibrate Undulator - SXU_HE_25,15.0,394.0,394.0,394.0,10-15-25,11-04-25,"AS_SXU_MANF_2541: FS, AS_SXU_MANF_2446: FS","AS_SXU_MANF_2556: FS, AS_SXU_MANF_2646: FS",SLAC,0%,52191.52191_METSMET Metrology,52191_METSMET Metrology,Labor,0.0d,15.0,15.0,At Completion Units,3/7/2025,3/27/2025,0,0,0,0,0,0,0,0,0,0,1.03_Accelerator Systems (AS),1.03.06_AS Soft X-Ray Undulator (SXR) - SLAC,1.03.06.06_AS Soft X-Ray Undulator Procurement and Fabrication - SLAC,1.03.06.06.03_SXR Undulator Integration and Testing,AS_SXU_MANF_2546_Tune and Calibrate Undulator - SXU_HE_25,Metrology,,SLAC,Labor
103526,1.03,1.03.06,1.03.06.06,1.03.06.06.03,1.03.06.06.03,SXR Undulator Integration and Testing,AS_SXU_MANF_2546,Tune and Calibrate Undulator - SXU_HE_25,15.0,32.0,32.0,32.0,10-15-25,11-04-25,"AS_SXU_MANF_2541: FS, AS_SXU_MANF_2446: FS","AS_SXU_MANF_2556: FS, AS_SXU_MANF_2646: FS",SLAC,0%,0106.0106_Staff Scientist,0106_Staff Scientist,Labor,0.0d,15.0,15.0,At Completion Units,3/7/2025,3/27/2025,0,0,0,0,0,0,0,0,0,0,1.03_Accelerator Systems (AS),1.03.06_AS Soft X-Ray Undulator (SXR) - SLAC,1.03.06.06_AS Soft X-Ray Undulator Procurement and Fabrication - SLAC,1.03.06.06.03_SXR Undulator Integration and Testing,AS_SXU_MANF_2546_Tune and Calibrate Undulator - SXU_HE_25,Scientist,,SLAC,Labor
103527,1.03,1.03.06,1.03.06.06,1.03.06.06.03,1.03.06.06.03,SXR Undulator Integration and Testing,AS_SXU_MANF_2546,Tune and Calibrate Undulator - SXU_HE_25,15.0,16.0,16.0,16.0,10-15-25,11-04-25,"AS_SXU_MANF_2541: FS, AS_SXU_MANF_2446: FS","AS_SXU_MANF_2556: FS, AS_SXU_MANF_2646: FS",SLAC,0%,52169.52169_METS Mechanical Engineer,52169_METS Mechanical Engineer,Labor,0.0d,15.0,15.0,At Completion Units,3/7/2025,3/27/2025,0,0,0,0,0,0,0,0,0,0,1.03_Accelerator Systems (AS),1.03.06_AS Soft X-Ray Undulator (SXR) - SLAC,1.03.06.06_AS Soft X-Ray Undulator Procurement and Fabrication - SLAC,1.03.06.06.03_SXR Undulator Integration and Testing,AS_SXU_MANF_2546_Tune and Calibrate Undulator - SXU_HE_25,Mechanical,,SLAC,Labor
103528,1.03,1.03.06,1.03.06.06,1.03.06.06.03,1.03.06.06.03,SXR Undulator Integration and Testing,AS_SXU_MANF_2531,Post Retrofit Checkout - SXU_REFB_P,4.0,12.0,12.0,12.0,10-09-25,10-14-25,AS_SXU_MANF_2521: FS,AS_SXU_MANF_2541: FS,SLAC,0%,52152.52152_FAC Fleet,52152_FAC Fleet,Labor,0.0d,4.0,4.0,At Completion Units,3/3/2025,3/6/2025,0,0,0,0,0,0,0,0,0,0,1.03_Accelerator Systems (AS),1.03.06_AS Soft X-Ray Undulator (SXR) - SLAC,1.03.06.06_AS Soft X-Ray Undulator Procurement and Fabrication - SLAC,1.03.06.06.03_SXR Undulator Integration and Testing,AS_SXU_MANF_2531_Post Retrofit Checkout - SXU_REFB_P,Support System,,SLAC,Labor
103529,1.03,1.03.06,1.03.06.06,1.03.06.06.03,1.03.06.06.03,SXR Undulator Integration and Testing,AS_SXU_MANF_2511,Receiving Inspection - Magnet Modules - SXU_REFB_P,3.0,4.0,4.0,4.0,09-15-25,09-17-25,AS_SXU_MANF_2501: FS,"AS_SXU_MANF_2521: FS, AS_LBL_PROD_875: FS",SLAC,0%,52198.52198_METSMANF (METSD Manufacturing),52198_METSMANF (METSD Manufacturing),Labor,0.0d,3.0,3.0,At Completion Units,2/4/2025,2/6/2025,0,0,0,0,0,0,0,0,0,0,1.03_Accelerator Systems (AS),1.03.06_AS Soft X-Ray Undulator (SXR) - SLAC,1.03.06.06_AS Soft X-Ray Undulator Procurement and Fabrication - SLAC,1.03.06.06.03_SXR Undulator Integration and Testing,AS_SXU_MANF_2511_Receiving Inspection - Magnet Modules - SXU_REFB_P,Manufacturing,,SLAC,Labor
103530,1.03,1.03.06,1.03.06.06,1.03.06.06.03,1.03.06.06.03,SXR Undulator Integration and Testing,AS_SXU_MANF_2511,Receiving Inspection - Magnet Modules - SXU_REFB_P,3.0,12.0,12.0,12.0,09-15-25,09-17-25,AS_SXU_MANF_2501: FS,"AS_SXU_MANF_2521: FS, AS_LBL_PROD_875: FS",SLAC,0%,52191.52191_METSMET Metrology,52191_METSMET Metrology,Labor,0.0d,3.0,3.0,At Completion Units,2/4/2025,2/6/2025,0,0,0,0,0,0,0,0,0,0,1.03_Accelerator Systems (AS),1.03.06_AS Soft X-Ray Undulator (SXR) - SLAC,1.03.06.06_AS Soft X-Ray Undulator Procurement and Fabrication - SLAC,1.03.06.06.03_SXR Undulator Integration and Testing,AS_SXU_MANF_2511_Receiving Inspection - Magnet Modules - SXU_REFB_P,Metrology,,SLAC,Labor
103531,1.03,1.03.06,1.03.06.06,1.03.06.06.03,1.03.06.06.03,SXR Undulator Integration and Testing,AS_SXU_MANF_2531,Post Retrofit Checkout - SXU_REFB_P,4.0,32.0,32.0,32.0,10-09-25,10-14-25,AS_SXU_MANF_2521: FS,AS_SXU_MANF_2541: FS,SLAC,0%,52213.52213_EEDHW (Electronics & Engineering Div - HW Engr),52213_EEDHW (Electronics & Engineering Div - HW Engr),Labor,0.0d,4.0,4.0,At Completion Units,3/3/2025,3/6/2025,0,0,0,0,0,0,0,0,0,0,1.03_Accelerator Systems (AS),1.03.06_AS Soft X-Ray Undulator (SXR) - SLAC,1.03.06.06_AS Soft X-Ray Undulator Procurement and Fabrication - SLAC,1.03.06.06.03_SXR Undulator Integration and Testing,AS_SXU_MANF_2531_Post Retrofit Checkout - SXU_REFB_P,Electrical,,SLAC,Labor
103532,1.03,1.03.06,1.03.06.06,1.03.06.06.03,1.03.06.06.03,SXR Undulator Integration and Testing,AS_SXU_MANF_2531,Post Retrofit Checkout - SXU_REFB_P,4.0,32.0,32.0,32.0,10-09-25,10-14-25,AS_SXU_MANF_2521: FS,AS_SXU_MANF_2541: FS,SLAC,0%,52191.52191_METSMET Metrology,52191_METSMET Metrology,Labor,0.0d,4.0,4.0,At Completion Units,3/3/2025,3/6/2025,0,0,0,0,0,0,0,0,0,0,1.03_Accelerator Systems (AS),1.03.06_AS Soft X-Ray Undulator (SXR) - SLAC,1.03.06.06_AS Soft X-Ray Undulator Procurement and Fabrication - SLAC,1.03.06.06.03_SXR Undulator Integration and Testing,AS_SXU_MANF_2531_Post Retrofit Checkout - SXU_REFB_P,Metrology,,SLAC,Labor
103533,1.03,1.03.06,1.03.06.06,1.03.06.06.03,1.03.06.06.03,SXR Undulator Integration and Testing,AS_SXU_MANF_2531,Post Retrofit Checkout - SXU_REFB_P,4.0,16.0,16.0,16.0,10-09-25,10-14-25,AS_SXU_MANF_2521: FS,AS_SXU_MANF_2541: FS,SLAC,0%,0106.0106_Staff Scientist,0106_Staff Scientist,Labor,0.0d,4.0,4.0,At Completion Units,3/3/2025,3/6/2025,0,0,0,0,0,0,0,0,0,0,1.03_Accelerator Systems (AS),1.03.06_AS Soft X-Ray Undulator (SXR) - SLAC,1.03.06.06_AS Soft X-Ray Undulator Procurement and Fabrication - SLAC,1.03.06.06.03_SXR Undulator Integration and Testing,AS_SXU_MANF_2531_Post Retrofit Checkout - SXU_REFB_P,Scientist,,SLAC,Labor
103534,1.03,1.03.06,1.03.06.06,1.03.06.06.03,1.03.06.06.03,SXR Undulator Integration and Testing,AS_SXU_MANF_2531,Post Retrofit Checkout - SXU_REFB_P,4.0,4.0,4.0,4.0,10-09-25,10-14-25,AS_SXU_MANF_2521: FS,AS_SXU_MANF_2541: FS,SLAC,0%,52169.52169_METS Mechanical Engineer,52169_METS Mechanical Engineer,Labor,0.0d,4.0,4.0,At Completion Units,3/3/2025,3/6/2025,0,0,0,0,0,0,0,0,0,0,1.03_Accelerator Systems (AS),1.03.06_AS Soft X-Ray Undulator (SXR) - SLAC,1.03.06.06_AS Soft X-Ray Undulator Procurement and Fabrication - SLAC,1.03.06.06.03_SXR Undulator Integration and Testing,AS_SXU_MANF_2531_Post Retrofit Checkout - SXU_REFB_P,Mechanical,,SLAC,Labor
103535,1.03,1.03.06,1.03.06.06,1.03.06.06.03,1.03.06.06.03,SXR Undulator Integration and Testing,AS_SXU_MANF_2521,Retrofit SXU Magnetic System SXU_REFB_P,15.0,280.0,280.0,280.0,09-18-25,10-08-25,"AS_SXU_MANF_2511: FS, AS_SXU_MANF_2421: FS, AS_SXU_INST_2500: FS","AS_SXU_MANF_2531: FS, AS_SXU_MANF_2621: FS",SLAC,0%,52198.52198_METSMANF (METSD Manufacturing),52198_METSMANF (METSD Manufacturing),Labor,0.0d,15.0,15.0,At Completion Units,2/7/2025,2/28/2025,0,0,0,0,0,0,0,0,0,0,1.03_Accelerator Systems (AS),1.03.06_AS Soft X-Ray Undulator (SXR) - SLAC,1.03.06.06_AS Soft X-Ray Undulator Procurement and Fabrication - SLAC,1.03.06.06.03_SXR Undulator Integration and Testing,AS_SXU_MANF_2521_Retrofit SXU Magnetic System SXU_REFB_P,Manufacturing,,SLAC,Labor
103536,1.03,1.03.06,1.03.06.06,1.03.06.06.03,1.03.06.06.03,SXR Undulator Integration and Testing,AS_SXU_MANF_2521,Retrofit SXU Magnetic System SXU_REFB_P,15.0,24.0,24.0,24.0,09-18-25,10-08-25,"AS_SXU_MANF_2511: FS, AS_SXU_MANF_2421: FS, AS_SXU_INST_2500: FS","AS_SXU_MANF_2531: FS, AS_SXU_MANF_2621: FS",SLAC,0%,52213.52213_EEDHW (Electronics & Engineering Div - HW Engr),52213_EEDHW (Electronics & Engineering Div - HW Engr),Labor,0.0d,15.0,15.0,At Completion Units,2/7/2025,2/28/2025,0,0,0,0,0,0,0,0,0,0,1.03_Accelerator Systems (AS),1.03.06_AS Soft X-Ray Undulator (SXR) - SLAC,1.03.06.06_AS Soft X-Ray Undulator Procurement and Fabrication - SLAC,1.03.06.06.03_SXR Undulator Integration and Testing,AS_SXU_MANF_2521_Retrofit SXU Magnetic System SXU_REFB_P,Electrical,,SLAC,Labor
103537,1.03,1.03.06,1.03.06.06,1.03.06.06.03,1.03.06.06.03,SXR Undulator Integration and Testing,AS_SXU_MANF_2521,Retrofit SXU Magnetic System SXU_REFB_P,15.0,12.0,12.0,12.0,09-18-25,10-08-25,"AS_SXU_MANF_2511: FS, AS_SXU_MANF_2421: FS, AS_SXU_INST_2500: FS","AS_SXU_MANF_2531: FS, AS_SXU_MANF_2621: FS",SLAC,0%,52169.52169_METS Mechanical Engineer,52169_METS Mechanical Engineer,Labor,0.0d,15.0,15.0,At Completion Units,2/7/2025,2/28/2025,0,0,0,0,0,0,0,0,0,0,1.03_Accelerator Systems (AS),1.03.06_AS Soft X-Ray Undulator (SXR) - SLAC,1.03.06.06_AS Soft X-Ray Undulator Procurement and Fabrication - SLAC,1.03.06.06.03_SXR Undulator Integration and Testing,AS_SXU_MANF_2521_Retrofit SXU Magnetic System SXU_REFB_P,Mechanical,,SLAC,Labor
103538,1.03,1.03.06,1.03.06.06,1.03.06.06.03,1.03.06.06.03,SXR Undulator Integration and Testing,AS_SXU_MANF_2511,Receiving Inspection - Magnet Modules - SXU_REFB_P,3.0,8.0,8.0,8.0,09-15-25,09-17-25,AS_SXU_MANF_2501: FS,"AS_SXU_MANF_2521: FS, AS_LBL_PROD_875: FS",SLAC,0%,52169.52169_METS Mechanical Engineer,52169_METS Mechanical Engineer,Labor,0.0d,3.0,3.0,At Completion Units,2/4/2025,2/6/2025,0,0,0,0,0,0,0,0,0,0,1.03_Accelerator Systems (AS),1.03.06_AS Soft X-Ray Undulator (SXR) - SLAC,1.03.06.06_AS Soft X-Ray Undulator Procurement and Fabrication - SLAC,1.03.06.06.03_SXR Undulator Integration and Testing,AS_SXU_MANF_2511_Receiving Inspection - Magnet Modules - SXU_REFB_P,Mechanical,,SLAC,Labor
103539,1.03,1.03.06,1.03.06.06,1.03.06.06.03,1.03.06.06.03,SXR Undulator Integration and Testing,AS_SXU_MANF_2421,Retrofit SXU Magnetic System SXU_REFB_O,15.0,48.0,48.0,48.0,08-27-25,09-17-25,"AS_SXU_MANF_2411: FS, AS_SXU_MANF_2321: FS, AS_SXU_INST_2400: FS","AS_SXU_MANF_2431: FS, AS_SXU_MANF_2521: FS",SLAC,0%,52191.52191_METSMET Metrology,52191_METSMET Metrology,Labor,0.0d,15.0,15.0,At Completion Units,1/16/2025,2/6/2025,0,0,0,0,0,0,0,0,0,0,1.03_Accelerator Systems (AS),1.03.06_AS Soft X-Ray Undulator (SXR) - SLAC,1.03.06.06_AS Soft X-Ray Undulator Procurement and Fabrication - SLAC,1.03.06.06.03_SXR Undulator Integration and Testing,AS_SXU_MANF_2421_Retrofit SXU Magnetic System SXU_REFB_O,Metrology,,SLAC,Labor
103540,1.03,1.03.06,1.03.06.06,1.03.06.06.03,1.03.06.06.03,SXR Undulator Integration and Testing,AS_SXU_MANF_2446,Tune and Calibrate Undulator - SXU_HE_24,15.0,32.0,32.0,32.0,09-24-25,10-14-25,"AS_SXU_MANF_2441: FS, AS_SXU_MANF_2346: FS","AS_SXU_MANF_2456: FS, AS_SXU_MANF_2546: FS",SLAC,0%,52213.52213_EEDHW (Electronics & Engineering Div - HW Engr),52213_EEDHW (Electronics & Engineering Div - HW Engr),Labor,0.0d,15.0,15.0,At Completion Units,2/13/2025,3/6/2025,0,0,0,0,0,0,0,0,0,0,1.03_Accelerator Systems (AS),1.03.06_AS Soft X-Ray Undulator (SXR) - SLAC,1.03.06.06_AS Soft X-Ray Undulator Procurement and Fabrication - SLAC,1.03.06.06.03_SXR Undulator Integration and Testing,AS_SXU_MANF_2446_Tune and Calibrate Undulator - SXU_HE_24,Electrical,,SLAC,Labor
103541,1.03,1.03.06,1.03.06.06,1.03.06.06.03,1.03.06.06.03,SXR Undulator Integration and Testing,AS_SXU_MANF_2446,Tune and Calibrate Undulator - SXU_HE_24,15.0,48.0,48.0,48.0,09-24-25,10-14-25,"AS_SXU_MANF_2441: FS, AS_SXU_MANF_2346: FS","AS_SXU_MANF_2456: FS, AS_SXU_MANF_2546: FS",SLAC,0%,52198.52198_METSMANF (METSD Manufacturing),52198_METSMANF (METSD Manufacturing),Labor,0.0d,15.0,15.0,At Completion Units,2/13/2025,3/6/2025,0,0,0,0,0,0,0,0,0,0,1.03_Accelerator Systems (AS),1.03.06_AS Soft X-Ray Undulator (SXR) - SLAC,1.03.06.06_AS Soft X-Ray Undulator Procurement and Fabrication - SLAC,1.03.06.06.03_SXR Undulator Integration and Testing,AS_SXU_MANF_2446_Tune and Calibrate Undulator - SXU_HE_24,Manufacturing,,SLAC,Labor
103542,1.03,1.03.06,1.03.06.06,1.03.06.06.03,1.03.06.06.03,SXR Undulator Integration and Testing,AS_SXU_MANF_2446,Tune and Calibrate Undulator - SXU_HE_24,15.0,394.0,394.0,394.0,09-24-25,10-14-25,"AS_SXU_MANF_2441: FS, AS_SXU_MANF_2346: FS","AS_SXU_MANF_2456: FS, AS_SXU_MANF_2546: FS",SLAC,0%,52191.52191_METSMET Metrology,52191_METSMET Metrology,Labor,0.0d,15.0,15.0,At Completion Units,2/13/2025,3/6/2025,0,0,0,0,0,0,0,0,0,0,1.03_Accelerator Systems (AS),1.03.06_AS Soft X-Ray Undulator (SXR) - SLAC,1.03.06.06_AS Soft X-Ray Undulator Procurement and Fabrication - SLAC,1.03.06.06.03_SXR Undulator Integration and Testing,AS_SXU_MANF_2446_Tune and Calibrate Undulator - SXU_HE_24,Metrology,,SLAC,Labor
103543,1.03,1.03.06,1.03.06.06,1.03.06.06.03,1.03.06.06.03,SXR Undulator Integration and Testing,AS_SXU_MANF_2446,Tune and Calibrate Undulator - SXU_HE_24,15.0,32.0,32.0,32.0,09-24-25,10-14-25,"AS_SXU_MANF_2441: FS, AS_SXU_MANF_2346: FS","AS_SXU_MANF_2456: FS, AS_SXU_MANF_2546: FS",SLAC,0%,0106.0106_Staff Scientist,0106_Staff Scientist,Labor,0.0d,15.0,15.0,At Completion Units,2/13/2025,3/6/2025,0,0,0,0,0,0,0,0,0,0,1.03_Accelerator Systems (AS),1.03.06_AS Soft X-Ray Undulator (SXR) - SLAC,1.03.06.06_AS Soft X-Ray Undulator Procurement and Fabrication - SLAC,1.03.06.06.03_SXR Undulator Integration and Testing,AS_SXU_MANF_2446_Tune and Calibrate Undulator - SXU_HE_24,Scientist,,SLAC,Labor
103544,1.03,1.03.06,1.03.06.06,1.03.06.06.03,1.03.06.06.03,SXR Undulator Integration and Testing,AS_SXU_MANF_2446,Tune and Calibrate Undulator - SXU_HE_24,15.0,16.0,16.0,16.0,09-24-25,10-14-25,"AS_SXU_MANF_2441: FS, AS_SXU_MANF_2346: FS","AS_SXU_MANF_2456: FS, AS_SXU_MANF_2546: FS",SLAC,0%,52169.52169_METS Mechanical Engineer,52169_METS Mechanical Engineer,Labor,0.0d,15.0,15.0,At Completion Units,2/13/2025,3/6/2025,0,0,0,0,0,0,0,0,0,0,1.03_Accelerator Systems (AS),1.03.06_AS Soft X-Ray Undulator (SXR) - SLAC,1.03.06.06_AS Soft X-Ray Undulator Procurement and Fabrication - SLAC,1.03.06.06.03_SXR Undulator Integration and Testing,AS_SXU_MANF_2446_Tune and Calibrate Undulator - SXU_HE_24,Mechanical,,SLAC,Labor
103545,1.03,1.03.06,1.03.06.06,1.03.06.06.03,1.03.06.06.03,SXR Undulator Integration and Testing,AS_SXU_MANF_2431,Post Retrofit Checkout - SXU_REFB_O,4.0,12.0,12.0,12.0,09-18-25,09-23-25,AS_SXU_MANF_2421: FS,AS_SXU_MANF_2441: FS,SLAC,0%,52152.52152_FAC Fleet,52152_FAC Fleet,Labor,0.0d,4.0,4.0,At Completion Units,2/7/2025,2/12/2025,0,0,0,0,0,0,0,0,0,0,1.03_Accelerator Systems (AS),1.03.06_AS Soft X-Ray Undulator (SXR) - SLAC,1.03.06.06_AS Soft X-Ray Undulator Procurement and Fabrication - SLAC,1.03.06.06.03_SXR Undulator Integration and Testing,AS_SXU_MANF_2431_Post Retrofit Checkout - SXU_REFB_O,Support System,,SLAC,Labor
103546,1.03,1.03.06,1.03.06.06,1.03.06.06.03,1.03.06.06.03,SXR Undulator Integration and Testing,AS_SXU_MANF_2411,Receiving Inspection - Magnet Modules - SXU_REFB_O,3.0,4.0,4.0,4.0,08-22-25,08-26-25,AS_SXU_MANF_2401: FS,"AS_SXU_MANF_2421: FS, AS_LBL_PROD_865: FS",SLAC,0%,52198.52198_METSMANF (METSD Manufacturing),52198_METSMANF (METSD Manufacturing),Labor,0.0d,3.0,3.0,At Completion Units,1/13/2025,1/15/2025,0,0,0,0,0,0,0,0,0,0,1.03_Accelerator Systems (AS),1.03.06_AS Soft X-Ray Undulator (SXR) - SLAC,1.03.06.06_AS Soft X-Ray Undulator Procurement and Fabrication - SLAC,1.03.06.06.03_SXR Undulator Integration and Testing,AS_SXU_MANF_2411_Receiving Inspection - Magnet Modules - SXU_REFB_O,Manufacturing,,SLAC,Labor
103547,1.03,1.03.06,1.03.06.06,1.03.06.06.03,1.03.06.06.03,SXR Undulator Integration and Testing,AS_SXU_MANF_2411,Receiving Inspection - Magnet Modules - SXU_REFB_O,3.0,12.0,12.0,12.0,08-22-25,08-26-25,AS_SXU_MANF_2401: FS,"AS_SXU_MANF_2421: FS, AS_LBL_PROD_865: FS",SLAC,0%,52191.52191_METSMET Metrology,52191_METSMET Metrology,Labor,0.0d,3.0,3.0,At Completion Units,1/13/2025,1/15/2025,0,0,0,0,0,0,0,0,0,0,1.03_Accelerator Systems (AS),1.03.06_AS Soft X-Ray Undulator (SXR) - SLAC,1.03.06.06_AS Soft X-Ray Undulator Procurement and Fabrication - SLAC,1.03.06.06.03_SXR Undulator Integration and Testing,AS_SXU_MANF_2411_Receiving Inspection - Magnet Modules - SXU_REFB_O,Metrology,,SLAC,Labor
103548,1.03,1.03.06,1.03.06.06,1.03.06.06.03,1.03.06.06.03,SXR Undulator Integration and Testing,AS_SXU_MANF_2431,Post Retrofit Checkout - SXU_REFB_O,4.0,32.0,32.0,32.0,09-18-25,09-23-25,AS_SXU_MANF_2421: FS,AS_SXU_MANF_2441: FS,SLAC,0%,52213.52213_EEDHW (Electronics & Engineering Div - HW Engr),52213_EEDHW (Electronics & Engineering Div - HW Engr),Labor,0.0d,4.0,4.0,At Completion Units,2/7/2025,2/12/2025,0,0,0,0,0,0,0,0,0,0,1.03_Accelerator Systems (AS),1.03.06_AS Soft X-Ray Undulator (SXR) - SLAC,1.03.06.06_AS Soft X-Ray Undulator Procurement and Fabrication - SLAC,1.03.06.06.03_SXR Undulator Integration and Testing,AS_SXU_MANF_2431_Post Retrofit Checkout - SXU_REFB_O,Electrical,,SLAC,Labor
103549,1.03,1.03.06,1.03.06.06,1.03.06.06.03,1.03.06.06.03,SXR Undulator Integration and Testing,AS_SXU_MANF_2431,Post Retrofit Checkout - SXU_REFB_O,4.0,32.0,32.0,32.0,09-18-25,09-23-25,AS_SXU_MANF_2421: FS,AS_SXU_MANF_2441: FS,SLAC,0%,52191.52191_METSMET Metrology,52191_METSMET Metrology,Labor,0.0d,4.0,4.0,At Completion Units,2/7/2025,2/12/2025,0,0,0,0,0,0,0,0,0,0,1.03_Accelerator Systems (AS),1.03.06_AS Soft X-Ray Undulator (SXR) - SLAC,1.03.06.06_AS Soft X-Ray Undulator Procurement and Fabrication - SLAC,1.03.06.06.03_SXR Undulator Integration and Testing,AS_SXU_MANF_2431_Post Retrofit Checkout - SXU_REFB_O,Metrology,,SLAC,Labor
103550,1.03,1.03.06,1.03.06.06,1.03.06.06.03,1.03.06.06.03,SXR Undulator Integration and Testing,AS_SXU_MANF_2431,Post Retrofit Checkout - SXU_REFB_O,4.0,16.0,16.0,16.0,09-18-25,09-23-25,AS_SXU_MANF_2421: FS,AS_SXU_MANF_2441: FS,SLAC,0%,0106.0106_Staff Scientist,0106_Staff Scientist,Labor,0.0d,4.0,4.0,At Completion Units,2/7/2025,2/12/2025,0,0,0,0,0,0,0,0,0,0,1.03_Accelerator Systems (AS),1.03.06_AS Soft X-Ray Undulator (SXR) - SLAC,1.03.06.06_AS Soft X-Ray Undulator Procurement and Fabrication - SLAC,1.03.06.06.03_SXR Undulator Integration and Testing,AS_SXU_MANF_2431_Post Retrofit Checkout - SXU_REFB_O,Scientist,,SLAC,Labor
103551,1.03,1.03.06,1.03.06.06,1.03.06.06.03,1.03.06.06.03,SXR Undulator Integration and Testing,AS_SXU_MANF_2431,Post Retrofit Checkout - SXU_REFB_O,4.0,4.0,4.0,4.0,09-18-25,09-23-25,AS_SXU_MANF_2421: FS,AS_SXU_MANF_2441: FS,SLAC,0%,52169.52169_METS Mechanical Engineer,52169_METS Mechanical Engineer,Labor,0.0d,4.0,4.0,At Completion Units,2/7/2025,2/12/2025,0,0,0,0,0,0,0,0,0,0,1.03_Accelerator Systems (AS),1.03.06_AS Soft X-Ray Undulator (SXR) - SLAC,1.03.06.06_AS Soft X-Ray Undulator Procurement and Fabrication - SLAC,1.03.06.06.03_SXR Undulator Integration and Testing,AS_SXU_MANF_2431_Post Retrofit Checkout - SXU_REFB_O,Mechanical,,SLAC,Labor
103552,1.03,1.03.06,1.03.06.06,1.03.06.06.03,1.03.06.06.03,SXR Undulator Integration and Testing,AS_SXU_MANF_2421,Retrofit SXU Magnetic System SXU_REFB_O,15.0,280.0,280.0,280.0,08-27-25,09-17-25,"AS_SXU_MANF_2411: FS, AS_SXU_MANF_2321: FS, AS_SXU_INST_2400: FS","AS_SXU_MANF_2431: FS, AS_SXU_MANF_2521: FS",SLAC,0%,52198.52198_METSMANF (METSD Manufacturing),52198_METSMANF (METSD Manufacturing),Labor,0.0d,15.0,15.0,At Completion Units,1/16/2025,2/6/2025,0,0,0,0,0,0,0,0,0,0,1.03_Accelerator Systems (AS),1.03.06_AS Soft X-Ray Undulator (SXR) - SLAC,1.03.06.06_AS Soft X-Ray Undulator Procurement and Fabrication - SLAC,1.03.06.06.03_SXR Undulator Integration and Testing,AS_SXU_MANF_2421_Retrofit SXU Magnetic System SXU_REFB_O,Manufacturing,,SLAC,Labor
103553,1.03,1.03.06,1.03.06.06,1.03.06.06.03,1.03.06.06.03,SXR Undulator Integration and Testing,AS_SXU_MANF_2421,Retrofit SXU Magnetic System SXU_REFB_O,15.0,24.0,24.0,24.0,08-27-25,09-17-25,"AS_SXU_MANF_2411: FS, AS_SXU_MANF_2321: FS, AS_SXU_INST_2400: FS","AS_SXU_MANF_2431: FS, AS_SXU_MANF_2521: FS",SLAC,0%,52213.52213_EEDHW (Electronics & Engineering Div - HW Engr),52213_EEDHW (Electronics & Engineering Div - HW Engr),Labor,0.0d,15.0,15.0,At Completion Units,1/16/2025,2/6/2025,0,0,0,0,0,0,0,0,0,0,1.03_Accelerator Systems (AS),1.03.06_AS Soft X-Ray Undulator (SXR) - SLAC,1.03.06.06_AS Soft X-Ray Undulator Procurement and Fabrication - SLAC,1.03.06.06.03_SXR Undulator Integration and Testing,AS_SXU_MANF_2421_Retrofit SXU Magnetic System SXU_REFB_O,Electrical,,SLAC,Labor
103554,1.03,1.03.06,1.03.06.06,1.03.06.06.03,1.03.06.06.03,SXR Undulator Integration and Testing,AS_SXU_MANF_2421,Retrofit SXU Magnetic System SXU_REFB_O,15.0,12.0,12.0,12.0,08-27-25,09-17-25,"AS_SXU_MANF_2411: FS, AS_SXU_MANF_2321: FS, AS_SXU_INST_2400: FS","AS_SXU_MANF_2431: FS, AS_SXU_MANF_2521: FS",SLAC,0%,52169.52169_METS Mechanical Engineer,52169_METS Mechanical Engineer,Labor,0.0d,15.0,15.0,At Completion Units,1/16/2025,2/6/2025,0,0,0,0,0,0,0,0,0,0,1.03_Accelerator Systems (AS),1.03.06_AS Soft X-Ray Undulator (SXR) - SLAC,1.03.06.06_AS Soft X-Ray Undulator Procurement and Fabrication - SLAC,1.03.06.06.03_SXR Undulator Integration and Testing,AS_SXU_MANF_2421_Retrofit SXU Magnetic System SXU_REFB_O,Mechanical,,SLAC,Labor
103555,1.03,1.03.06,1.03.06.06,1.03.06.06.03,1.03.06.06.03,SXR Undulator Integration and Testing,AS_SXU_MANF_2411,Receiving Inspection - Magnet Modules - SXU_REFB_O,3.0,8.0,8.0,8.0,08-22-25,08-26-25,AS_SXU_MANF_2401: FS,"AS_SXU_MANF_2421: FS, AS_LBL_PROD_865: FS",SLAC,0%,52169.52169_METS Mechanical Engineer,52169_METS Mechanical Engineer,Labor,0.0d,3.0,3.0,At Completion Units,1/13/2025,1/15/2025,0,0,0,0,0,0,0,0,0,0,1.03_Accelerator Systems (AS),1.03.06_AS Soft X-Ray Undulator (SXR) - SLAC,1.03.06.06_AS Soft X-Ray Undulator Procurement and Fabrication - SLAC,1.03.06.06.03_SXR Undulator Integration and Testing,AS_SXU_MANF_2411_Receiving Inspection - Magnet Modules - SXU_REFB_O,Mechanical,,SLAC,Labor
103556,1.03,1.03.06,1.03.06.06,1.03.06.06.03,1.03.06.06.03,SXR Undulator Integration and Testing,AS_SXU_MANF_2321,Retrofit SXU Magnetic System SXU_REFB_N,15.0,48.0,48.0,48.0,08-06-25,08-26-25,"AS_SXU_MANF_2311: FS, AS_SXU_MANF_2221: FS, AS_SXU_INST_2300: FS","AS_SXU_MANF_2331: FS, AS_SXU_MANF_2421: FS",SLAC,0%,52191.52191_METSMET Metrology,52191_METSMET Metrology,Labor,0.0d,15.0,15.0,At Completion Units,12/12/2024,1/15/2025,0,0,0,0,0,0,0,0,0,0,1.03_Accelerator Systems (AS),1.03.06_AS Soft X-Ray Undulator (SXR) - SLAC,1.03.06.06_AS Soft X-Ray Undulator Procurement and Fabrication - SLAC,1.03.06.06.03_SXR Undulator Integration and Testing,AS_SXU_MANF_2321_Retrofit SXU Magnetic System SXU_REFB_N,Metrology,,SLAC,Labor
103557,1.03,1.03.06,1.03.06.06,1.03.06.06.03,1.03.06.06.03,SXR Undulator Integration and Testing,AS_SXU_MANF_2346,Tune and Calibrate Undulator - SXU_HE_23,15.0,32.0,32.0,32.0,09-03-25,09-23-25,"AS_SXU_MANF_2341: FS, AS_SXU_MANF_2246: FS","AS_SXU_MANF_2356: FS, AS_SXU_MANF_2446: FS",SLAC,0%,52213.52213_EEDHW (Electronics & Engineering Div - HW Engr),52213_EEDHW (Electronics & Engineering Div - HW Engr),Labor,0.0d,15.0,15.0,At Completion Units,1/23/2025,2/12/2025,0,0,0,0,0,0,0,0,0,0,1.03_Accelerator Systems (AS),1.03.06_AS Soft X-Ray Undulator (SXR) - SLAC,1.03.06.06_AS Soft X-Ray Undulator Procurement and Fabrication - SLAC,1.03.06.06.03_SXR Undulator Integration and Testing,AS_SXU_MANF_2346_Tune and Calibrate Undulator - SXU_HE_23,Electrical,,SLAC,Labor
103558,1.03,1.03.06,1.03.06.06,1.03.06.06.03,1.03.06.06.03,SXR Undulator Integration and Testing,AS_SXU_MANF_2346,Tune and Calibrate Undulator - SXU_HE_23,15.0,48.0,48.0,48.0,09-03-25,09-23-25,"AS_SXU_MANF_2341: FS, AS_SXU_MANF_2246: FS","AS_SXU_MANF_2356: FS, AS_SXU_MANF_2446: FS",SLAC,0%,52198.52198_METSMANF (METSD Manufacturing),52198_METSMANF (METSD Manufacturing),Labor,0.0d,15.0,15.0,At Completion Units,1/23/2025,2/12/2025,0,0,0,0,0,0,0,0,0,0,1.03_Accelerator Systems (AS),1.03.06_AS Soft X-Ray Undulator (SXR) - SLAC,1.03.06.06_AS Soft X-Ray Undulator Procurement and Fabrication - SLAC,1.03.06.06.03_SXR Undulator Integration and Testing,AS_SXU_MANF_2346_Tune and Calibrate Undulator - SXU_HE_23,Manufacturing,,SLAC,Labor
103559,1.03,1.03.06,1.03.06.06,1.03.06.06.03,1.03.06.06.03,SXR Undulator Integration and Testing,AS_SXU_MANF_2346,Tune and Calibrate Undulator - SXU_HE_23,15.0,394.0,394.0,394.0,09-03-25,09-23-25,"AS_SXU_MANF_2341: FS, AS_SXU_MANF_2246: FS","AS_SXU_MANF_2356: FS, AS_SXU_MANF_2446: FS",SLAC,0%,52191.52191_METSMET Metrology,52191_METSMET Metrology,Labor,0.0d,15.0,15.0,At Completion Units,1/23/2025,2/12/2025,0,0,0,0,0,0,0,0,0,0,1.03_Accelerator Systems (AS),1.03.06_AS Soft X-Ray Undulator (SXR) - SLAC,1.03.06.06_AS Soft X-Ray Undulator Procurement and Fabrication - SLAC,1.03.06.06.03_SXR Undulator Integration and Testing,AS_SXU_MANF_2346_Tune and Calibrate Undulator - SXU_HE_23,Metrology,,SLAC,Labor
103560,1.03,1.03.06,1.03.06.06,1.03.06.06.03,1.03.06.06.03,SXR Undulator Integration and Testing,AS_SXU_MANF_2346,Tune and Calibrate Undulator - SXU_HE_23,15.0,32.0,32.0,32.0,09-03-25,09-23-25,"AS_SXU_MANF_2341: FS, AS_SXU_MANF_2246: FS","AS_SXU_MANF_2356: FS, AS_SXU_MANF_2446: FS",SLAC,0%,0106.0106_Staff Scientist,0106_Staff Scientist,Labor,0.0d,15.0,15.0,At Completion Units,1/23/2025,2/12/2025,0,0,0,0,0,0,0,0,0,0,1.03_Accelerator Systems (AS),1.03.06_AS Soft X-Ray Undulator (SXR) - SLAC,1.03.06.06_AS Soft X-Ray Undulator Procurement and Fabrication - SLAC,1.03.06.06.03_SXR Undulator Integration and Testing,AS_SXU_MANF_2346_Tune and Calibrate Undulator - SXU_HE_23,Scientist,,SLAC,Labor
103561,1.03,1.03.06,1.03.06.06,1.03.06.06.03,1.03.06.06.03,SXR Undulator Integration and Testing,AS_SXU_MANF_2346,Tune and Calibrate Undulator - SXU_HE_23,15.0,16.0,16.0,16.0,09-03-25,09-23-25,"AS_SXU_MANF_2341: FS, AS_SXU_MANF_2246: FS","AS_SXU_MANF_2356: FS, AS_SXU_MANF_2446: FS",SLAC,0%,52169.52169_METS Mechanical Engineer,52169_METS Mechanical Engineer,Labor,0.0d,15.0,15.0,At Completion Units,1/23/2025,2/12/2025,0,0,0,0,0,0,0,0,0,0,1.03_Accelerator Systems (AS),1.03.06_AS Soft X-Ray Undulator (SXR) - SLAC,1.03.06.06_AS Soft X-Ray Undulator Procurement and Fabrication - SLAC,1.03.06.06.03_SXR Undulator Integration and Testing,AS_SXU_MANF_2346_Tune and Calibrate Undulator - SXU_HE_23,Mechanical,,SLAC,Labor
103562,1.03,1.03.06,1.03.06.06,1.03.06.06.03,1.03.06.06.03,SXR Undulator Integration and Testing,AS_SXU_MANF_2331,Post Retrofit Checkout - SXU_REFB_N,4.0,12.0,12.0,12.0,08-27-25,09-02-25,AS_SXU_MANF_2321: FS,AS_SXU_MANF_2341: FS,SLAC,0%,52152.52152_FAC Fleet,52152_FAC Fleet,Labor,0.0d,4.0,4.0,At Completion Units,1/16/2025,1/22/2025,0,0,0,0,0,0,0,0,0,0,1.03_Accelerator Systems (AS),1.03.06_AS Soft X-Ray Undulator (SXR) - SLAC,1.03.06.06_AS Soft X-Ray Undulator Procurement and Fabrication - SLAC,1.03.06.06.03_SXR Undulator Integration and Testing,AS_SXU_MANF_2331_Post Retrofit Checkout - SXU_REFB_N,Support System,,SLAC,Labor
103563,1.03,1.03.06,1.03.06.06,1.03.06.06.03,1.03.06.06.03,SXR Undulator Integration and Testing,AS_SXU_MANF_2311,Receiving Inspection - Magnet Modules - SXU_REFB_N,3.0,4.0,4.0,4.0,08-01-25,08-05-25,AS_SXU_MANF_2301: FS,"AS_SXU_MANF_2321: FS, AS_LBL_PROD_855: FS",SLAC,0%,52198.52198_METSMANF (METSD Manufacturing),52198_METSMANF (METSD Manufacturing),Labor,0.0d,3.0,3.0,At Completion Units,12/9/2024,12/11/2024,0,0,0,0,0,0,0,0,0,0,1.03_Accelerator Systems (AS),1.03.06_AS Soft X-Ray Undulator (SXR) - SLAC,1.03.06.06_AS Soft X-Ray Undulator Procurement and Fabrication - SLAC,1.03.06.06.03_SXR Undulator Integration and Testing,AS_SXU_MANF_2311_Receiving Inspection - Magnet Modules - SXU_REFB_N,Manufacturing,,SLAC,Labor
103564,1.03,1.03.06,1.03.06.06,1.03.06.06.03,1.03.06.06.03,SXR Undulator Integration and Testing,AS_SXU_MANF_2311,Receiving Inspection - Magnet Modules - SXU_REFB_N,3.0,12.0,12.0,12.0,08-01-25,08-05-25,AS_SXU_MANF_2301: FS,"AS_SXU_MANF_2321: FS, AS_LBL_PROD_855: FS",SLAC,0%,52191.52191_METSMET Metrology,52191_METSMET Metrology,Labor,0.0d,3.0,3.0,At Completion Units,12/9/2024,12/11/2024,0,0,0,0,0,0,0,0,0,0,1.03_Accelerator Systems (AS),1.03.06_AS Soft X-Ray Undulator (SXR) - SLAC,1.03.06.06_AS Soft X-Ray Undulator Procurement and Fabrication - SLAC,1.03.06.06.03_SXR Undulator Integration and Testing,AS_SXU_MANF_2311_Receiving Inspection - Magnet Modules - SXU_REFB_N,Metrology,,SLAC,Labor
103565,1.03,1.03.06,1.03.06.06,1.03.06.06.03,1.03.06.06.03,SXR Undulator Integration and Testing,AS_SXU_MANF_2331,Post Retrofit Checkout - SXU_REFB_N,4.0,32.0,32.0,32.0,08-27-25,09-02-25,AS_SXU_MANF_2321: FS,AS_SXU_MANF_2341: FS,SLAC,0%,52213.52213_EEDHW (Electronics & Engineering Div - HW Engr),52213_EEDHW (Electronics & Engineering Div - HW Engr),Labor,0.0d,4.0,4.0,At Completion Units,1/16/2025,1/22/2025,0,0,0,0,0,0,0,0,0,0,1.03_Accelerator Systems (AS),1.03.06_AS Soft X-Ray Undulator (SXR) - SLAC,1.03.06.06_AS Soft X-Ray Undulator Procurement and Fabrication - SLAC,1.03.06.06.03_SXR Undulator Integration and Testing,AS_SXU_MANF_2331_Post Retrofit Checkout - SXU_REFB_N,Electrical,,SLAC,Labor
103566,1.03,1.03.06,1.03.06.06,1.03.06.06.03,1.03.06.06.03,SXR Undulator Integration and Testing,AS_SXU_MANF_2331,Post Retrofit Checkout - SXU_REFB_N,4.0,32.0,32.0,32.0,08-27-25,09-02-25,AS_SXU_MANF_2321: FS,AS_SXU_MANF_2341: FS,SLAC,0%,52191.52191_METSMET Metrology,52191_METSMET Metrology,Labor,0.0d,4.0,4.0,At Completion Units,1/16/2025,1/22/2025,0,0,0,0,0,0,0,0,0,0,1.03_Accelerator Systems (AS),1.03.06_AS Soft X-Ray Undulator (SXR) - SLAC,1.03.06.06_AS Soft X-Ray Undulator Procurement and Fabrication - SLAC,1.03.06.06.03_SXR Undulator Integration and Testing,AS_SXU_MANF_2331_Post Retrofit Checkout - SXU_REFB_N,Metrology,,SLAC,Labor
103567,1.03,1.03.06,1.03.06.06,1.03.06.06.03,1.03.06.06.03,SXR Undulator Integration and Testing,AS_SXU_MANF_2331,Post Retrofit Checkout - SXU_REFB_N,4.0,16.0,16.0,16.0,08-27-25,09-02-25,AS_SXU_MANF_2321: FS,AS_SXU_MANF_2341: FS,SLAC,0%,0106.0106_Staff Scientist,0106_Staff Scientist,Labor,0.0d,4.0,4.0,At Completion Units,1/16/2025,1/22/2025,0,0,0,0,0,0,0,0,0,0,1.03_Accelerator Systems (AS),1.03.06_AS Soft X-Ray Undulator (SXR) - SLAC,1.03.06.06_AS Soft X-Ray Undulator Procurement and Fabrication - SLAC,1.03.06.06.03_SXR Undulator Integration and Testing,AS_SXU_MANF_2331_Post Retrofit Checkout - SXU_REFB_N,Scientist,,SLAC,Labor
103568,1.03,1.03.06,1.03.06.06,1.03.06.06.03,1.03.06.06.03,SXR Undulator Integration and Testing,AS_SXU_MANF_2331,Post Retrofit Checkout - SXU_REFB_N,4.0,4.0,4.0,4.0,08-27-25,09-02-25,AS_SXU_MANF_2321: FS,AS_SXU_MANF_2341: FS,SLAC,0%,52169.52169_METS Mechanical Engineer,52169_METS Mechanical Engineer,Labor,0.0d,4.0,4.0,At Completion Units,1/16/2025,1/22/2025,0,0,0,0,0,0,0,0,0,0,1.03_Accelerator Systems (AS),1.03.06_AS Soft X-Ray Undulator (SXR) - SLAC,1.03.06.06_AS Soft X-Ray Undulator Procurement and Fabrication - SLAC,1.03.06.06.03_SXR Undulator Integration and Testing,AS_SXU_MANF_2331_Post Retrofit Checkout - SXU_REFB_N,Mechanical,,SLAC,Labor
103569,1.03,1.03.06,1.03.06.06,1.03.06.06.03,1.03.06.06.03,SXR Undulator Integration and Testing,AS_SXU_MANF_2321,Retrofit SXU Magnetic System SXU_REFB_N,15.0,280.0,280.0,280.0,08-06-25,08-26-25,"AS_SXU_MANF_2311: FS, AS_SXU_MANF_2221: FS, AS_SXU_INST_2300: FS","AS_SXU_MANF_2331: FS, AS_SXU_MANF_2421: FS",SLAC,0%,52198.52198_METSMANF (METSD Manufacturing),52198_METSMANF (METSD Manufacturing),Labor,0.0d,15.0,15.0,At Completion Units,12/12/2024,1/15/2025,0,0,0,0,0,0,0,0,0,0,1.03_Accelerator Systems (AS),1.03.06_AS Soft X-Ray Undulator (SXR) - SLAC,1.03.06.06_AS Soft X-Ray Undulator Procurement and Fabrication - SLAC,1.03.06.06.03_SXR Undulator Integration and Testing,AS_SXU_MANF_2321_Retrofit SXU Magnetic System SXU_REFB_N,Manufacturing,,SLAC,Labor
103570,1.03,1.03.06,1.03.06.06,1.03.06.06.03,1.03.06.06.03,SXR Undulator Integration and Testing,AS_SXU_MANF_2321,Retrofit SXU Magnetic System SXU_REFB_N,15.0,24.0,24.0,24.0,08-06-25,08-26-25,"AS_SXU_MANF_2311: FS, AS_SXU_MANF_2221: FS, AS_SXU_INST_2300: FS","AS_SXU_MANF_2331: FS, AS_SXU_MANF_2421: FS",SLAC,0%,52213.52213_EEDHW (Electronics & Engineering Div - HW Engr),52213_EEDHW (Electronics & Engineering Div - HW Engr),Labor,0.0d,15.0,15.0,At Completion Units,12/12/2024,1/15/2025,0,0,0,0,0,0,0,0,0,0,1.03_Accelerator Systems (AS),1.03.06_AS Soft X-Ray Undulator (SXR) - SLAC,1.03.06.06_AS Soft X-Ray Undulator Procurement and Fabrication - SLAC,1.03.06.06.03_SXR Undulator Integration and Testing,AS_SXU_MANF_2321_Retrofit SXU Magnetic System SXU_REFB_N,Electrical,,SLAC,Labor
103571,1.03,1.03.06,1.03.06.06,1.03.06.06.03,1.03.06.06.03,SXR Undulator Integration and Testing,AS_SXU_MANF_2321,Retrofit SXU Magnetic System SXU_REFB_N,15.0,12.0,12.0,12.0,08-06-25,08-26-25,"AS_SXU_MANF_2311: FS, AS_SXU_MANF_2221: FS, AS_SXU_INST_2300: FS","AS_SXU_MANF_2331: FS, AS_SXU_MANF_2421: FS",SLAC,0%,52169.52169_METS Mechanical Engineer,52169_METS Mechanical Engineer,Labor,0.0d,15.0,15.0,At Completion Units,12/12/2024,1/15/2025,0,0,0,0,0,0,0,0,0,0,1.03_Accelerator Systems (AS),1.03.06_AS Soft X-Ray Undulator (SXR) - SLAC,1.03.06.06_AS Soft X-Ray Undulator Procurement and Fabrication - SLAC,1.03.06.06.03_SXR Undulator Integration and Testing,AS_SXU_MANF_2321_Retrofit SXU Magnetic System SXU_REFB_N,Mechanical,,SLAC,Labor
103572,1.03,1.03.06,1.03.06.06,1.03.06.06.03,1.03.06.06.03,SXR Undulator Integration and Testing,AS_SXU_MANF_2311,Receiving Inspection - Magnet Modules - SXU_REFB_N,3.0,8.0,8.0,8.0,08-01-25,08-05-25,AS_SXU_MANF_2301: FS,"AS_SXU_MANF_2321: FS, AS_LBL_PROD_855: FS",SLAC,0%,52169.52169_METS Mechanical Engineer,52169_METS Mechanical Engineer,Labor,0.0d,3.0,3.0,At Completion Units,12/9/2024,12/11/2024,0,0,0,0,0,0,0,0,0,0,1.03_Accelerator Systems (AS),1.03.06_AS Soft X-Ray Undulator (SXR) - SLAC,1.03.06.06_AS Soft X-Ray Undulator Procurement and Fabrication - SLAC,1.03.06.06.03_SXR Undulator Integration and Testing,AS_SXU_MANF_2311_Receiving Inspection - Magnet Modules - SXU_REFB_N,Mechanical,,SLAC,Labor
103573,1.03,1.03.06,1.03.06.06,1.03.06.06.03,1.03.06.06.03,SXR Undulator Integration and Testing,AS_SXU_MANF_2221,Retrofit SXU Magnetic System SXU_REFB_M,15.0,48.0,48.0,48.0,06-27-25,07-18-25,"AS_SXU_MANF_2211: FS, AS_SXU_MANF_2121: FS, AS_SXU_INST_2200: FS","AS_SXU_MANF_2231: FS, AS_SXU_MANF_2321: FS",SLAC,0%,52191.52191_METSMET Metrology,52191_METSMET Metrology,Labor,0.0d,15.0,15.0,At Completion Units,11/1/2024,11/21/2024,0,0,0,0,0,0,0,0,0,0,1.03_Accelerator Systems (AS),1.03.06_AS Soft X-Ray Undulator (SXR) - SLAC,1.03.06.06_AS Soft X-Ray Undulator Procurement and Fabrication - SLAC,1.03.06.06.03_SXR Undulator Integration and Testing,AS_SXU_MANF_2221_Retrofit SXU Magnetic System SXU_REFB_M,Metrology,,SLAC,Labor
103574,1.03,1.03.06,1.03.06.06,1.03.06.06.03,1.03.06.06.03,SXR Undulator Integration and Testing,AS_SXU_MANF_2246,Tune and Calibrate Undulator - SXU_HE_22,15.0,32.0,32.0,32.0,07-25-25,08-14-25,"AS_SXU_MANF_2241: FS, AS_SXU_MANF_2146: FS","AS_SXU_MANF_2256: FS, AS_SXU_MANF_2346: FS",SLAC,0%,52213.52213_EEDHW (Electronics & Engineering Div - HW Engr),52213_EEDHW (Electronics & Engineering Div - HW Engr),Labor,0.0d,15.0,15.0,At Completion Units,12/2/2024,12/20/2024,0,0,0,0,0,0,0,0,0,0,1.03_Accelerator Systems (AS),1.03.06_AS Soft X-Ray Undulator (SXR) - SLAC,1.03.06.06_AS Soft X-Ray Undulator Procurement and Fabrication - SLAC,1.03.06.06.03_SXR Undulator Integration and Testing,AS_SXU_MANF_2246_Tune and Calibrate Undulator - SXU_HE_22,Electrical,,SLAC,Labor
103575,1.03,1.03.06,1.03.06.06,1.03.06.06.03,1.03.06.06.03,SXR Undulator Integration and Testing,AS_SXU_MANF_2246,Tune and Calibrate Undulator - SXU_HE_22,15.0,48.0,48.0,48.0,07-25-25,08-14-25,"AS_SXU_MANF_2241: FS, AS_SXU_MANF_2146: FS","AS_SXU_MANF_2256: FS, AS_SXU_MANF_2346: FS",SLAC,0%,52198.52198_METSMANF (METSD Manufacturing),52198_METSMANF (METSD Manufacturing),Labor,0.0d,15.0,15.0,At Completion Units,12/2/2024,12/20/2024,0,0,0,0,0,0,0,0,0,0,1.03_Accelerator Systems (AS),1.03.06_AS Soft X-Ray Undulator (SXR) - SLAC,1.03.06.06_AS Soft X-Ray Undulator Procurement and Fabrication - SLAC,1.03.06.06.03_SXR Undulator Integration and Testing,AS_SXU_MANF_2246_Tune and Calibrate Undulator - SXU_HE_22,Manufacturing,,SLAC,Labor
103576,1.03,1.03.06,1.03.06.06,1.03.06.06.03,1.03.06.06.03,SXR Undulator Integration and Testing,AS_SXU_MANF_2246,Tune and Calibrate Undulator - SXU_HE_22,15.0,394.0,394.0,394.0,07-25-25,08-14-25,"AS_SXU_MANF_2241: FS, AS_SXU_MANF_2146: FS","AS_SXU_MANF_2256: FS, AS_SXU_MANF_2346: FS",SLAC,0%,52191.52191_METSMET Metrology,52191_METSMET Metrology,Labor,0.0d,15.0,15.0,At Completion Units,12/2/2024,12/20/2024,0,0,0,0,0,0,0,0,0,0,1.03_Accelerator Systems (AS),1.03.06_AS Soft X-Ray Undulator (SXR) - SLAC,1.03.06.06_AS Soft X-Ray Undulator Procurement and Fabrication - SLAC,1.03.06.06.03_SXR Undulator Integration and Testing,AS_SXU_MANF_2246_Tune and Calibrate Undulator - SXU_HE_22,Metrology,,SLAC,Labor
103577,1.03,1.03.06,1.03.06.06,1.03.06.06.03,1.03.06.06.03,SXR Undulator Integration and Testing,AS_SXU_MANF_2246,Tune and Calibrate Undulator - SXU_HE_22,15.0,32.0,32.0,32.0,07-25-25,08-14-25,"AS_SXU_MANF_2241: FS, AS_SXU_MANF_2146: FS","AS_SXU_MANF_2256: FS, AS_SXU_MANF_2346: FS",SLAC,0%,0106.0106_Staff Scientist,0106_Staff Scientist,Labor,0.0d,15.0,15.0,At Completion Units,12/2/2024,12/20/2024,0,0,0,0,0,0,0,0,0,0,1.03_Accelerator Systems (AS),1.03.06_AS Soft X-Ray Undulator (SXR) - SLAC,1.03.06.06_AS Soft X-Ray Undulator Procurement and Fabrication - SLAC,1.03.06.06.03_SXR Undulator Integration and Testing,AS_SXU_MANF_2246_Tune and Calibrate Undulator - SXU_HE_22,Scientist,,SLAC,Labor
103578,1.03,1.03.06,1.03.06.06,1.03.06.06.03,1.03.06.06.03,SXR Undulator Integration and Testing,AS_SXU_MANF_2246,Tune and Calibrate Undulator - SXU_HE_22,15.0,16.0,16.0,16.0,07-25-25,08-14-25,"AS_SXU_MANF_2241: FS, AS_SXU_MANF_2146: FS","AS_SXU_MANF_2256: FS, AS_SXU_MANF_2346: FS",SLAC,0%,52169.52169_METS Mechanical Engineer,52169_METS Mechanical Engineer,Labor,0.0d,15.0,15.0,At Completion Units,12/2/2024,12/20/2024,0,0,0,0,0,0,0,0,0,0,1.03_Accelerator Systems (AS),1.03.06_AS Soft X-Ray Undulator (SXR) - SLAC,1.03.06.06_AS Soft X-Ray Undulator Procurement and Fabrication - SLAC,1.03.06.06.03_SXR Undulator Integration and Testing,AS_SXU_MANF_2246_Tune and Calibrate Undulator - SXU_HE_22,Mechanical,,SLAC,Labor
103579,1.03,1.03.06,1.03.06.06,1.03.06.06.03,1.03.06.06.03,SXR Undulator Integration and Testing,AS_SXU_MANF_2231,Post Retrofit Checkout - SXU_REFB_M,4.0,12.0,12.0,12.0,07-21-25,07-24-25,AS_SXU_MANF_2221: FS,AS_SXU_MANF_2241: FS,SLAC,0%,52152.52152_FAC Fleet,52152_FAC Fleet,Labor,0.0d,4.0,4.0,At Completion Units,11/22/2024,11/27/2024,0,0,0,0,0,0,0,0,0,0,1.03_Accelerator Systems (AS),1.03.06_AS Soft X-Ray Undulator (SXR) - SLAC,1.03.06.06_AS Soft X-Ray Undulator Procurement and Fabrication - SLAC,1.03.06.06.03_SXR Undulator Integration and Testing,AS_SXU_MANF_2231_Post Retrofit Checkout - SXU_REFB_M,Support System,,SLAC,Labor
103580,1.03,1.03.06,1.03.06.06,1.03.06.06.03,1.03.06.06.03,SXR Undulator Integration and Testing,AS_SXU_MANF_2211,Receiving Inspection - Magnet Modules - SXU_REFB_M,3.0,4.0,4.0,4.0,06-24-25,06-26-25,AS_SXU_MANF_2201: FS,"AS_SXU_MANF_2221: FS, AS_LBL_PROD_835: FS",SLAC,0%,52198.52198_METSMANF (METSD Manufacturing),52198_METSMANF (METSD Manufacturing),Labor,0.0d,3.0,3.0,At Completion Units,10/29/2024,10/31/2024,0,0,0,0,0,0,0,0,0,0,1.03_Accelerator Systems (AS),1.03.06_AS Soft X-Ray Undulator (SXR) - SLAC,1.03.06.06_AS Soft X-Ray Undulator Procurement and Fabrication - SLAC,1.03.06.06.03_SXR Undulator Integration and Testing,AS_SXU_MANF_2211_Receiving Inspection - Magnet Modules - SXU_REFB_M,Manufacturing,,SLAC,Labor
103581,1.03,1.03.06,1.03.06.06,1.03.06.06.03,1.03.06.06.03,SXR Undulator Integration and Testing,AS_SXU_MANF_2211,Receiving Inspection - Magnet Modules - SXU_REFB_M,3.0,12.0,12.0,12.0,06-24-25,06-26-25,AS_SXU_MANF_2201: FS,"AS_SXU_MANF_2221: FS, AS_LBL_PROD_835: FS",SLAC,0%,52191.52191_METSMET Metrology,52191_METSMET Metrology,Labor,0.0d,3.0,3.0,At Completion Units,10/29/2024,10/31/2024,0,0,0,0,0,0,0,0,0,0,1.03_Accelerator Systems (AS),1.03.06_AS Soft X-Ray Undulator (SXR) - SLAC,1.03.06.06_AS Soft X-Ray Undulator Procurement and Fabrication - SLAC,1.03.06.06.03_SXR Undulator Integration and Testing,AS_SXU_MANF_2211_Receiving Inspection - Magnet Modules - SXU_REFB_M,Metrology,,SLAC,Labor
103582,1.03,1.03.06,1.03.06.06,1.03.06.06.03,1.03.06.06.03,SXR Undulator Integration and Testing,AS_SXU_MANF_2231,Post Retrofit Checkout - SXU_REFB_M,4.0,32.0,32.0,32.0,07-21-25,07-24-25,AS_SXU_MANF_2221: FS,AS_SXU_MANF_2241: FS,SLAC,0%,52213.52213_EEDHW (Electronics & Engineering Div - HW Engr),52213_EEDHW (Electronics & Engineering Div - HW Engr),Labor,0.0d,4.0,4.0,At Completion Units,11/22/2024,11/27/2024,0,0,0,0,0,0,0,0,0,0,1.03_Accelerator Systems (AS),1.03.06_AS Soft X-Ray Undulator (SXR) - SLAC,1.03.06.06_AS Soft X-Ray Undulator Procurement and Fabrication - SLAC,1.03.06.06.03_SXR Undulator Integration and Testing,AS_SXU_MANF_2231_Post Retrofit Checkout - SXU_REFB_M,Electrical,,SLAC,Labor
103583,1.03,1.03.06,1.03.06.06,1.03.06.06.03,1.03.06.06.03,SXR Undulator Integration and Testing,AS_SXU_MANF_2231,Post Retrofit Checkout - SXU_REFB_M,4.0,32.0,32.0,32.0,07-21-25,07-24-25,AS_SXU_MANF_2221: FS,AS_SXU_MANF_2241: FS,SLAC,0%,52191.52191_METSMET Metrology,52191_METSMET Metrology,Labor,0.0d,4.0,4.0,At Completion Units,11/22/2024,11/27/2024,0,0,0,0,0,0,0,0,0,0,1.03_Accelerator Systems (AS),1.03.06_AS Soft X-Ray Undulator (SXR) - SLAC,1.03.06.06_AS Soft X-Ray Undulator Procurement and Fabrication - SLAC,1.03.06.06.03_SXR Undulator Integration and Testing,AS_SXU_MANF_2231_Post Retrofit Checkout - SXU_REFB_M,Metrology,,SLAC,Labor
103584,1.03,1.03.06,1.03.06.06,1.03.06.06.03,1.03.06.06.03,SXR Undulator Integration and Testing,AS_SXU_MANF_2231,Post Retrofit Checkout - SXU_REFB_M,4.0,16.0,16.0,16.0,07-21-25,07-24-25,AS_SXU_MANF_2221: FS,AS_SXU_MANF_2241: FS,SLAC,0%,0106.0106_Staff Scientist,0106_Staff Scientist,Labor,0.0d,4.0,4.0,At Completion Units,11/22/2024,11/27/2024,0,0,0,0,0,0,0,0,0,0,1.03_Accelerator Systems (AS),1.03.06_AS Soft X-Ray Undulator (SXR) - SLAC,1.03.06.06_AS Soft X-Ray Undulator Procurement and Fabrication - SLAC,1.03.06.06.03_SXR Undulator Integration and Testing,AS_SXU_MANF_2231_Post Retrofit Checkout - SXU_REFB_M,Scientist,,SLAC,Labor
103585,1.03,1.03.06,1.03.06.06,1.03.06.06.03,1.03.06.06.03,SXR Undulator Integration and Testing,AS_SXU_MANF_2231,Post Retrofit Checkout - SXU_REFB_M,4.0,4.0,4.0,4.0,07-21-25,07-24-25,AS_SXU_MANF_2221: FS,AS_SXU_MANF_2241: FS,SLAC,0%,52169.52169_METS Mechanical Engineer,52169_METS Mechanical Engineer,Labor,0.0d,4.0,4.0,At Completion Units,11/22/2024,11/27/2024,0,0,0,0,0,0,0,0,0,0,1.03_Accelerator Systems (AS),1.03.06_AS Soft X-Ray Undulator (SXR) - SLAC,1.03.06.06_AS Soft X-Ray Undulator Procurement and Fabrication - SLAC,1.03.06.06.03_SXR Undulator Integration and Testing,AS_SXU_MANF_2231_Post Retrofit Checkout - SXU_REFB_M,Mechanical,,SLAC,Labor
103586,1.03,1.03.06,1.03.06.06,1.03.06.06.03,1.03.06.06.03,SXR Undulator Integration and Testing,AS_SXU_MANF_2221,Retrofit SXU Magnetic System SXU_REFB_M,15.0,280.0,280.0,280.0,06-27-25,07-18-25,"AS_SXU_MANF_2211: FS, AS_SXU_MANF_2121: FS, AS_SXU_INST_2200: FS","AS_SXU_MANF_2231: FS, AS_SXU_MANF_2321: FS",SLAC,0%,52198.52198_METSMANF (METSD Manufacturing),52198_METSMANF (METSD Manufacturing),Labor,0.0d,15.0,15.0,At Completion Units,11/1/2024,11/21/2024,0,0,0,0,0,0,0,0,0,0,1.03_Accelerator Systems (AS),1.03.06_AS Soft X-Ray Undulator (SXR) - SLAC,1.03.06.06_AS Soft X-Ray Undulator Procurement and Fabrication - SLAC,1.03.06.06.03_SXR Undulator Integration and Testing,AS_SXU_MANF_2221_Retrofit SXU Magnetic System SXU_REFB_M,Manufacturing,,SLAC,Labor
103587,1.03,1.03.06,1.03.06.06,1.03.06.06.03,1.03.06.06.03,SXR Undulator Integration and Testing,AS_SXU_MANF_2221,Retrofit SXU Magnetic System SXU_REFB_M,15.0,24.0,24.0,24.0,06-27-25,07-18-25,"AS_SXU_MANF_2211: FS, AS_SXU_MANF_2121: FS, AS_SXU_INST_2200: FS","AS_SXU_MANF_2231: FS, AS_SXU_MANF_2321: FS",SLAC,0%,52213.52213_EEDHW (Electronics & Engineering Div - HW Engr),52213_EEDHW (Electronics & Engineering Div - HW Engr),Labor,0.0d,15.0,15.0,At Completion Units,11/1/2024,11/21/2024,0,0,0,0,0,0,0,0,0,0,1.03_Accelerator Systems (AS),1.03.06_AS Soft X-Ray Undulator (SXR) - SLAC,1.03.06.06_AS Soft X-Ray Undulator Procurement and Fabrication - SLAC,1.03.06.06.03_SXR Undulator Integration and Testing,AS_SXU_MANF_2221_Retrofit SXU Magnetic System SXU_REFB_M,Electrical,,SLAC,Labor
103588,1.03,1.03.06,1.03.06.06,1.03.06.06.03,1.03.06.06.03,SXR Undulator Integration and Testing,AS_SXU_MANF_2221,Retrofit SXU Magnetic System SXU_REFB_M,15.0,12.0,12.0,12.0,06-27-25,07-18-25,"AS_SXU_MANF_2211: FS, AS_SXU_MANF_2121: FS, AS_SXU_INST_2200: FS","AS_SXU_MANF_2231: FS, AS_SXU_MANF_2321: FS",SLAC,0%,52169.52169_METS Mechanical Engineer,52169_METS Mechanical Engineer,Labor,0.0d,15.0,15.0,At Completion Units,11/1/2024,11/21/2024,0,0,0,0,0,0,0,0,0,0,1.03_Accelerator Systems (AS),1.03.06_AS Soft X-Ray Undulator (SXR) - SLAC,1.03.06.06_AS Soft X-Ray Undulator Procurement and Fabrication - SLAC,1.03.06.06.03_SXR Undulator Integration and Testing,AS_SXU_MANF_2221_Retrofit SXU Magnetic System SXU_REFB_M,Mechanical,,SLAC,Labor
103589,1.03,1.03.06,1.03.06.06,1.03.06.06.03,1.03.06.06.03,SXR Undulator Integration and Testing,AS_SXU_MANF_2211,Receiving Inspection - Magnet Modules - SXU_REFB_M,3.0,8.0,8.0,8.0,06-24-25,06-26-25,AS_SXU_MANF_2201: FS,"AS_SXU_MANF_2221: FS, AS_LBL_PROD_835: FS",SLAC,0%,52169.52169_METS Mechanical Engineer,52169_METS Mechanical Engineer,Labor,0.0d,3.0,3.0,At Completion Units,10/29/2024,10/31/2024,0,0,0,0,0,0,0,0,0,0,1.03_Accelerator Systems (AS),1.03.06_AS Soft X-Ray Undulator (SXR) - SLAC,1.03.06.06_AS Soft X-Ray Undulator Procurement and Fabrication - SLAC,1.03.06.06.03_SXR Undulator Integration and Testing,AS_SXU_MANF_2211_Receiving Inspection - Magnet Modules - SXU_REFB_M,Mechanical,,SLAC,Labor
103590,1.03,1.03.06,1.03.06.06,1.03.06.06.03,1.03.06.06.03,SXR Undulator Integration and Testing,AS_SXU_MANF_2121,Retrofit SXU Magnetic System SXU_REFB_L,15.0,48.0,48.0,48.0,05-20-25,06-10-25,"AS_SXU_MANF_2111: FS, AS_SXU_MANF_2021: FS, AS_SXU_INST_2100: FS","AS_SXU_MANF_2131: FS, AS_SXU_MANF_2221: FS",SLAC,0%,52191.52191_METSMET Metrology,52191_METSMET Metrology,Labor,0.0d,15.0,15.0,At Completion Units,9/25/2024,10/15/2024,0,0,0,0,0,0,0,0,0,0,1.03_Accelerator Systems (AS),1.03.06_AS Soft X-Ray Undulator (SXR) - SLAC,1.03.06.06_AS Soft X-Ray Undulator Procurement and Fabrication - SLAC,1.03.06.06.03_SXR Undulator Integration and Testing,AS_SXU_MANF_2121_Retrofit SXU Magnetic System SXU_REFB_L,Metrology,,SLAC,Labor
103591,1.03,1.03.06,1.03.06.06,1.03.06.06.03,1.03.06.06.03,SXR Undulator Integration and Testing,AS_SXU_MANF_2146,Tune and Calibrate Undulator - SXU_HE_21,15.0,32.0,32.0,32.0,06-17-25,07-08-25,"AS_SXU_MANF_2141: FS, AS_SXU_MANF_2046: FS","AS_SXU_MANF_2156: FS, AS_SXU_MANF_2246: FS",SLAC,0%,52213.52213_EEDHW (Electronics & Engineering Div - HW Engr),52213_EEDHW (Electronics & Engineering Div - HW Engr),Labor,0.0d,15.0,15.0,At Completion Units,10/22/2024,11/11/2024,0,0,0,0,0,0,0,0,0,0,1.03_Accelerator Systems (AS),1.03.06_AS Soft X-Ray Undulator (SXR) - SLAC,1.03.06.06_AS Soft X-Ray Undulator Procurement and Fabrication - SLAC,1.03.06.06.03_SXR Undulator Integration and Testing,AS_SXU_MANF_2146_Tune and Calibrate Undulator - SXU_HE_21,Electrical,,SLAC,Labor
103592,1.03,1.03.06,1.03.06.06,1.03.06.06.03,1.03.06.06.03,SXR Undulator Integration and Testing,AS_SXU_MANF_2146,Tune and Calibrate Undulator - SXU_HE_21,15.0,48.0,48.0,48.0,06-17-25,07-08-25,"AS_SXU_MANF_2141: FS, AS_SXU_MANF_2046: FS","AS_SXU_MANF_2156: FS, AS_SXU_MANF_2246: FS",SLAC,0%,52198.52198_METSMANF (METSD Manufacturing),52198_METSMANF (METSD Manufacturing),Labor,0.0d,15.0,15.0,At Completion Units,10/22/2024,11/11/2024,0,0,0,0,0,0,0,0,0,0,1.03_Accelerator Systems (AS),1.03.06_AS Soft X-Ray Undulator (SXR) - SLAC,1.03.06.06_AS Soft X-Ray Undulator Procurement and Fabrication - SLAC,1.03.06.06.03_SXR Undulator Integration and Testing,AS_SXU_MANF_2146_Tune and Calibrate Undulator - SXU_HE_21,Manufacturing,,SLAC,Labor
103593,1.03,1.03.06,1.03.06.06,1.03.06.06.03,1.03.06.06.03,SXR Undulator Integration and Testing,AS_SXU_MANF_2146,Tune and Calibrate Undulator - SXU_HE_21,15.0,394.0,394.0,394.0,06-17-25,07-08-25,"AS_SXU_MANF_2141: FS, AS_SXU_MANF_2046: FS","AS_SXU_MANF_2156: FS, AS_SXU_MANF_2246: FS",SLAC,0%,52191.52191_METSMET Metrology,52191_METSMET Metrology,Labor,0.0d,15.0,15.0,At Completion Units,10/22/2024,11/11/2024,0,0,0,0,0,0,0,0,0,0,1.03_Accelerator Systems (AS),1.03.06_AS Soft X-Ray Undulator (SXR) - SLAC,1.03.06.06_AS Soft X-Ray Undulator Procurement and Fabrication - SLAC,1.03.06.06.03_SXR Undulator Integration and Testing,AS_SXU_MANF_2146_Tune and Calibrate Undulator - SXU_HE_21,Metrology,,SLAC,Labor
103594,1.03,1.03.06,1.03.06.06,1.03.06.06.03,1.03.06.06.03,SXR Undulator Integration and Testing,AS_SXU_MANF_2146,Tune and Calibrate Undulator - SXU_HE_21,15.0,32.0,32.0,32.0,06-17-25,07-08-25,"AS_SXU_MANF_2141: FS, AS_SXU_MANF_2046: FS","AS_SXU_MANF_2156: FS, AS_SXU_MANF_2246: FS",SLAC,0%,0106.0106_Staff Scientist,0106_Staff Scientist,Labor,0.0d,15.0,15.0,At Completion Units,10/22/2024,11/11/2024,0,0,0,0,0,0,0,0,0,0,1.03_Accelerator Systems (AS),1.03.06_AS Soft X-Ray Undulator (SXR) - SLAC,1.03.06.06_AS Soft X-Ray Undulator Procurement and Fabrication - SLAC,1.03.06.06.03_SXR Undulator Integration and Testing,AS_SXU_MANF_2146_Tune and Calibrate Undulator - SXU_HE_21,Scientist,,SLAC,Labor
103595,1.03,1.03.06,1.03.06.06,1.03.06.06.03,1.03.06.06.03,SXR Undulator Integration and Testing,AS_SXU_MANF_2146,Tune and Calibrate Undulator - SXU_HE_21,15.0,16.0,16.0,16.0,06-17-25,07-08-25,"AS_SXU_MANF_2141: FS, AS_SXU_MANF_2046: FS","AS_SXU_MANF_2156: FS, AS_SXU_MANF_2246: FS",SLAC,0%,52169.52169_METS Mechanical Engineer,52169_METS Mechanical Engineer,Labor,0.0d,15.0,15.0,At Completion Units,10/22/2024,11/11/2024,0,0,0,0,0,0,0,0,0,0,1.03_Accelerator Systems (AS),1.03.06_AS Soft X-Ray Undulator (SXR) - SLAC,1.03.06.06_AS Soft X-Ray Undulator Procurement and Fabrication - SLAC,1.03.06.06.03_SXR Undulator Integration and Testing,AS_SXU_MANF_2146_Tune and Calibrate Undulator - SXU_HE_21,Mechanical,,SLAC,Labor
103596,1.03,1.03.06,1.03.06.06,1.03.06.06.03,1.03.06.06.03,SXR Undulator Integration and Testing,AS_SXU_MANF_2131,Post Retrofit Checkout - SXU_REFB_L,4.0,12.0,12.0,12.0,06-11-25,06-16-25,AS_SXU_MANF_2121: FS,AS_SXU_MANF_2141: FS,SLAC,0%,52152.52152_FAC Fleet,52152_FAC Fleet,Labor,0.0d,4.0,4.0,At Completion Units,10/16/2024,10/21/2024,0,0,0,0,0,0,0,0,0,0,1.03_Accelerator Systems (AS),1.03.06_AS Soft X-Ray Undulator (SXR) - SLAC,1.03.06.06_AS Soft X-Ray Undulator Procurement and Fabrication - SLAC,1.03.06.06.03_SXR Undulator Integration and Testing,AS_SXU_MANF_2131_Post Retrofit Checkout - SXU_REFB_L,Support System,,SLAC,Labor
103597,1.03,1.03.06,1.03.06.06,1.03.06.06.03,1.03.06.06.03,SXR Undulator Integration and Testing,AS_SXU_MANF_2111,Receiving Inspection - Magnet Modules - SXU_REFB_L,3.0,4.0,4.0,4.0,05-15-25,05-19-25,AS_SXU_MANF_2101: FS,"AS_SXU_MANF_2121: FS, AS_LBL_PROD_815: FS",SLAC,0%,52198.52198_METSMANF (METSD Manufacturing),52198_METSMANF (METSD Manufacturing),Labor,0.0d,3.0,3.0,At Completion Units,9/20/2024,9/24/2024,0,0,0,0,0,0,0,0,0,0,1.03_Accelerator Systems (AS),1.03.06_AS Soft X-Ray Undulator (SXR) - SLAC,1.03.06.06_AS Soft X-Ray Undulator Procurement and Fabrication - SLAC,1.03.06.06.03_SXR Undulator Integration and Testing,AS_SXU_MANF_2111_Receiving Inspection - Magnet Modules - SXU_REFB_L,Manufacturing,,SLAC,Labor
103598,1.03,1.03.06,1.03.06.06,1.03.06.06.03,1.03.06.06.03,SXR Undulator Integration and Testing,AS_SXU_MANF_2111,Receiving Inspection - Magnet Modules - SXU_REFB_L,3.0,12.0,12.0,12.0,05-15-25,05-19-25,AS_SXU_MANF_2101: FS,"AS_SXU_MANF_2121: FS, AS_LBL_PROD_815: FS",SLAC,0%,52191.52191_METSMET Metrology,52191_METSMET Metrology,Labor,0.0d,3.0,3.0,At Completion Units,9/20/2024,9/24/2024,0,0,0,0,0,0,0,0,0,0,1.03_Accelerator Systems (AS),1.03.06_AS Soft X-Ray Undulator (SXR) - SLAC,1.03.06.06_AS Soft X-Ray Undulator Procurement and Fabrication - SLAC,1.03.06.06.03_SXR Undulator Integration and Testing,AS_SXU_MANF_2111_Receiving Inspection - Magnet Modules - SXU_REFB_L,Metrology,,SLAC,Labor
103599,1.03,1.03.06,1.03.06.06,1.03.06.06.03,1.03.06.06.03,SXR Undulator Integration and Testing,AS_SXU_MANF_2131,Post Retrofit Checkout - SXU_REFB_L,4.0,32.0,32.0,32.0,06-11-25,06-16-25,AS_SXU_MANF_2121: FS,AS_SXU_MANF_2141: FS,SLAC,0%,52213.52213_EEDHW (Electronics & Engineering Div - HW Engr),52213_EEDHW (Electronics & Engineering Div - HW Engr),Labor,0.0d,4.0,4.0,At Completion Units,10/16/2024,10/21/2024,0,0,0,0,0,0,0,0,0,0,1.03_Accelerator Systems (AS),1.03.06_AS Soft X-Ray Undulator (SXR) - SLAC,1.03.06.06_AS Soft X-Ray Undulator Procurement and Fabrication - SLAC,1.03.06.06.03_SXR Undulator Integration and Testing,AS_SXU_MANF_2131_Post Retrofit Checkout - SXU_REFB_L,Electrical,,SLAC,Labor
103600,1.03,1.03.06,1.03.06.06,1.03.06.06.03,1.03.06.06.03,SXR Undulator Integration and Testing,AS_SXU_MANF_2131,Post Retrofit Checkout - SXU_REFB_L,4.0,32.0,32.0,32.0,06-11-25,06-16-25,AS_SXU_MANF_2121: FS,AS_SXU_MANF_2141: FS,SLAC,0%,52191.52191_METSMET Metrology,52191_METSMET Metrology,Labor,0.0d,4.0,4.0,At Completion Units,10/16/2024,10/21/2024,0,0,0,0,0,0,0,0,0,0,1.03_Accelerator Systems (AS),1.03.06_AS Soft X-Ray Undulator (SXR) - SLAC,1.03.06.06_AS Soft X-Ray Undulator Procurement and Fabrication - SLAC,1.03.06.06.03_SXR Undulator Integration and Testing,AS_SXU_MANF_2131_Post Retrofit Checkout - SXU_REFB_L,Metrology,,SLAC,Labor
103601,1.03,1.03.06,1.03.06.06,1.03.06.06.03,1.03.06.06.03,SXR Undulator Integration and Testing,AS_SXU_MANF_2131,Post Retrofit Checkout - SXU_REFB_L,4.0,16.0,16.0,16.0,06-11-25,06-16-25,AS_SXU_MANF_2121: FS,AS_SXU_MANF_2141: FS,SLAC,0%,0106.0106_Staff Scientist,0106_Staff Scientist,Labor,0.0d,4.0,4.0,At Completion Units,10/16/2024,10/21/2024,0,0,0,0,0,0,0,0,0,0,1.03_Accelerator Systems (AS),1.03.06_AS Soft X-Ray Undulator (SXR) - SLAC,1.03.06.06_AS Soft X-Ray Undulator Procurement and Fabrication - SLAC,1.03.06.06.03_SXR Undulator Integration and Testing,AS_SXU_MANF_2131_Post Retrofit Checkout - SXU_REFB_L,Scientist,,SLAC,Labor
103602,1.03,1.03.06,1.03.06.06,1.03.06.06.03,1.03.06.06.03,SXR Undulator Integration and Testing,AS_SXU_MANF_2131,Post Retrofit Checkout - SXU_REFB_L,4.0,4.0,4.0,4.0,06-11-25,06-16-25,AS_SXU_MANF_2121: FS,AS_SXU_MANF_2141: FS,SLAC,0%,52169.52169_METS Mechanical Engineer,52169_METS Mechanical Engineer,Labor,0.0d,4.0,4.0,At Completion Units,10/16/2024,10/21/2024,0,0,0,0,0,0,0,0,0,0,1.03_Accelerator Systems (AS),1.03.06_AS Soft X-Ray Undulator (SXR) - SLAC,1.03.06.06_AS Soft X-Ray Undulator Procurement and Fabrication - SLAC,1.03.06.06.03_SXR Undulator Integration and Testing,AS_SXU_MANF_2131_Post Retrofit Checkout - SXU_REFB_L,Mechanical,,SLAC,Labor
103603,1.03,1.03.06,1.03.06.06,1.03.06.06.03,1.03.06.06.03,SXR Undulator Integration and Testing,AS_SXU_MANF_2121,Retrofit SXU Magnetic System SXU_REFB_L,15.0,280.0,280.0,280.0,05-20-25,06-10-25,"AS_SXU_MANF_2111: FS, AS_SXU_MANF_2021: FS, AS_SXU_INST_2100: FS","AS_SXU_MANF_2131: FS, AS_SXU_MANF_2221: FS",SLAC,0%,52198.52198_METSMANF (METSD Manufacturing),52198_METSMANF (METSD Manufacturing),Labor,0.0d,15.0,15.0,At Completion Units,9/25/2024,10/15/2024,0,0,0,0,0,0,0,0,0,0,1.03_Accelerator Systems (AS),1.03.06_AS Soft X-Ray Undulator (SXR) - SLAC,1.03.06.06_AS Soft X-Ray Undulator Procurement and Fabrication - SLAC,1.03.06.06.03_SXR Undulator Integration and Testing,AS_SXU_MANF_2121_Retrofit SXU Magnetic System SXU_REFB_L,Manufacturing,,SLAC,Labor
103604,1.03,1.03.06,1.03.06.06,1.03.06.06.03,1.03.06.06.03,SXR Undulator Integration and Testing,AS_SXU_MANF_2121,Retrofit SXU Magnetic System SXU_REFB_L,15.0,24.0,24.0,24.0,05-20-25,06-10-25,"AS_SXU_MANF_2111: FS, AS_SXU_MANF_2021: FS, AS_SXU_INST_2100: FS","AS_SXU_MANF_2131: FS, AS_SXU_MANF_2221: FS",SLAC,0%,52213.52213_EEDHW (Electronics & Engineering Div - HW Engr),52213_EEDHW (Electronics & Engineering Div - HW Engr),Labor,0.0d,15.0,15.0,At Completion Units,9/25/2024,10/15/2024,0,0,0,0,0,0,0,0,0,0,1.03_Accelerator Systems (AS),1.03.06_AS Soft X-Ray Undulator (SXR) - SLAC,1.03.06.06_AS Soft X-Ray Undulator Procurement and Fabrication - SLAC,1.03.06.06.03_SXR Undulator Integration and Testing,AS_SXU_MANF_2121_Retrofit SXU Magnetic System SXU_REFB_L,Electrical,,SLAC,Labor
103605,1.03,1.03.06,1.03.06.06,1.03.06.06.03,1.03.06.06.03,SXR Undulator Integration and Testing,AS_SXU_MANF_2121,Retrofit SXU Magnetic System SXU_REFB_L,15.0,12.0,12.0,12.0,05-20-25,06-10-25,"AS_SXU_MANF_2111: FS, AS_SXU_MANF_2021: FS, AS_SXU_INST_2100: FS","AS_SXU_MANF_2131: FS, AS_SXU_MANF_2221: FS",SLAC,0%,52169.52169_METS Mechanical Engineer,52169_METS Mechanical Engineer,Labor,0.0d,15.0,15.0,At Completion Units,9/25/2024,10/15/2024,0,0,0,0,0,0,0,0,0,0,1.03_Accelerator Systems (AS),1.03.06_AS Soft X-Ray Undulator (SXR) - SLAC,1.03.06.06_AS Soft X-Ray Undulator Procurement and Fabrication - SLAC,1.03.06.06.03_SXR Undulator Integration and Testing,AS_SXU_MANF_2121_Retrofit SXU Magnetic System SXU_REFB_L,Mechanical,,SLAC,Labor
103606,1.03,1.03.06,1.03.06.06,1.03.06.06.03,1.03.06.06.03,SXR Undulator Integration and Testing,AS_SXU_MANF_2111,Receiving Inspection - Magnet Modules - SXU_REFB_L,3.0,8.0,8.0,8.0,05-15-25,05-19-25,AS_SXU_MANF_2101: FS,"AS_SXU_MANF_2121: FS, AS_LBL_PROD_815: FS",SLAC,0%,52169.52169_METS Mechanical Engineer,52169_METS Mechanical Engineer,Labor,0.0d,3.0,3.0,At Completion Units,9/20/2024,9/24/2024,0,0,0,0,0,0,0,0,0,0,1.03_Accelerator Systems (AS),1.03.06_AS Soft X-Ray Undulator (SXR) - SLAC,1.03.06.06_AS Soft X-Ray Undulator Procurement and Fabrication - SLAC,1.03.06.06.03_SXR Undulator Integration and Testing,AS_SXU_MANF_2111_Receiving Inspection - Magnet Modules - SXU_REFB_L,Mechanical,,SLAC,Labor
103607,1.03,1.03.06,1.03.06.06,1.03.06.06.03,1.03.06.06.03,SXR Undulator Integration and Testing,AS_SXU_MANF_2021,Retrofit SXU Magnetic System  SXU_REFB_K,15.0,48.0,48.0,48.0,04-11-25,05-01-25,"AS_SXU_MANF_2011: FS, AS_SXU_INST_2000: FS","AS_SXU_MANF_2031: FS, AS_SXU_MANF_2121: FS",SLAC,0%,52191.52191_METSMET Metrology,52191_METSMET Metrology,Labor,0.0d,15.0,15.0,At Completion Units,8/16/2024,9/6/2024,0,0,0,0,0,0,0,0,0,0,1.03_Accelerator Systems (AS),1.03.06_AS Soft X-Ray Undulator (SXR) - SLAC,1.03.06.06_AS Soft X-Ray Undulator Procurement and Fabrication - SLAC,1.03.06.06.03_SXR Undulator Integration and Testing,AS_SXU_MANF_2021_Retrofit SXU Magnetic System  SXU_REFB_K,Metrology,,SLAC,Labor
103608,1.03,1.03.06,1.03.06.06,1.03.06.06.03,1.03.06.06.03,SXR Undulator Integration and Testing,AS_SXU_MANF_2046,Tune and Calibrate Undulator - SXU_HE_20,15.0,32.0,32.0,32.0,05-08-25,05-29-25,"AS_SXU_MANF_2041: FS, AS_SXU_MANF_1946: FS","AS_SXU_MANF_2056: FS, AS_SXU_MANF_2146: FS",SLAC,0%,52213.52213_EEDHW (Electronics & Engineering Div - HW Engr),52213_EEDHW (Electronics & Engineering Div - HW Engr),Labor,0.0d,15.0,15.0,At Completion Units,9/13/2024,10/3/2024,0,0,0,0,0,0,0,0,0,0,1.03_Accelerator Systems (AS),1.03.06_AS Soft X-Ray Undulator (SXR) - SLAC,1.03.06.06_AS Soft X-Ray Undulator Procurement and Fabrication - SLAC,1.03.06.06.03_SXR Undulator Integration and Testing,AS_SXU_MANF_2046_Tune and Calibrate Undulator - SXU_HE_20,Electrical,,SLAC,Labor
103609,1.03,1.03.06,1.03.06.06,1.03.06.06.03,1.03.06.06.03,SXR Undulator Integration and Testing,AS_SXU_MANF_2046,Tune and Calibrate Undulator - SXU_HE_20,15.0,48.0,48.0,48.0,05-08-25,05-29-25,"AS_SXU_MANF_2041: FS, AS_SXU_MANF_1946: FS","AS_SXU_MANF_2056: FS, AS_SXU_MANF_2146: FS",SLAC,0%,52198.52198_METSMANF (METSD Manufacturing),52198_METSMANF (METSD Manufacturing),Labor,0.0d,15.0,15.0,At Completion Units,9/13/2024,10/3/2024,0,0,0,0,0,0,0,0,0,0,1.03_Accelerator Systems (AS),1.03.06_AS Soft X-Ray Undulator (SXR) - SLAC,1.03.06.06_AS Soft X-Ray Undulator Procurement and Fabrication - SLAC,1.03.06.06.03_SXR Undulator Integration and Testing,AS_SXU_MANF_2046_Tune and Calibrate Undulator - SXU_HE_20,Manufacturing,,SLAC,Labor
103610,1.03,1.03.06,1.03.06.06,1.03.06.06.03,1.03.06.06.03,SXR Undulator Integration and Testing,AS_SXU_MANF_2046,Tune and Calibrate Undulator - SXU_HE_20,15.0,394.0,394.0,394.0,05-08-25,05-29-25,"AS_SXU_MANF_2041: FS, AS_SXU_MANF_1946: FS","AS_SXU_MANF_2056: FS, AS_SXU_MANF_2146: FS",SLAC,0%,52191.52191_METSMET Metrology,52191_METSMET Metrology,Labor,0.0d,15.0,15.0,At Completion Units,9/13/2024,10/3/2024,0,0,0,0,0,0,0,0,0,0,1.03_Accelerator Systems (AS),1.03.06_AS Soft X-Ray Undulator (SXR) - SLAC,1.03.06.06_AS Soft X-Ray Undulator Procurement and Fabrication - SLAC,1.03.06.06.03_SXR Undulator Integration and Testing,AS_SXU_MANF_2046_Tune and Calibrate Undulator - SXU_HE_20,Metrology,,SLAC,Labor
103611,1.03,1.03.06,1.03.06.06,1.03.06.06.03,1.03.06.06.03,SXR Undulator Integration and Testing,AS_SXU_MANF_2046,Tune and Calibrate Undulator - SXU_HE_20,15.0,32.0,32.0,32.0,05-08-25,05-29-25,"AS_SXU_MANF_2041: FS, AS_SXU_MANF_1946: FS","AS_SXU_MANF_2056: FS, AS_SXU_MANF_2146: FS",SLAC,0%,0106.0106_Staff Scientist,0106_Staff Scientist,Labor,0.0d,15.0,15.0,At Completion Units,9/13/2024,10/3/2024,0,0,0,0,0,0,0,0,0,0,1.03_Accelerator Systems (AS),1.03.06_AS Soft X-Ray Undulator (SXR) - SLAC,1.03.06.06_AS Soft X-Ray Undulator Procurement and Fabrication - SLAC,1.03.06.06.03_SXR Undulator Integration and Testing,AS_SXU_MANF_2046_Tune and Calibrate Undulator - SXU_HE_20,Scientist,,SLAC,Labor
103612,1.03,1.03.06,1.03.06.06,1.03.06.06.03,1.03.06.06.03,SXR Undulator Integration and Testing,AS_SXU_MANF_2046,Tune and Calibrate Undulator - SXU_HE_20,15.0,16.0,16.0,16.0,05-08-25,05-29-25,"AS_SXU_MANF_2041: FS, AS_SXU_MANF_1946: FS","AS_SXU_MANF_2056: FS, AS_SXU_MANF_2146: FS",SLAC,0%,52169.52169_METS Mechanical Engineer,52169_METS Mechanical Engineer,Labor,0.0d,15.0,15.0,At Completion Units,9/13/2024,10/3/2024,0,0,0,0,0,0,0,0,0,0,1.03_Accelerator Systems (AS),1.03.06_AS Soft X-Ray Undulator (SXR) - SLAC,1.03.06.06_AS Soft X-Ray Undulator Procurement and Fabrication - SLAC,1.03.06.06.03_SXR Undulator Integration and Testing,AS_SXU_MANF_2046_Tune and Calibrate Undulator - SXU_HE_20,Mechanical,,SLAC,Labor
103613,1.03,1.03.06,1.03.06.06,1.03.06.06.03,1.03.06.06.03,SXR Undulator Integration and Testing,AS_SXU_MANF_2031,Post Retrofit Checkout - SXU_REFB_K,4.0,12.0,12.0,12.0,05-02-25,05-07-25,AS_SXU_MANF_2021: FS,AS_SXU_MANF_2041: FS,SLAC,0%,52152.52152_FAC Fleet,52152_FAC Fleet,Labor,0.0d,4.0,4.0,At Completion Units,9/9/2024,9/12/2024,0,0,0,0,0,0,0,0,0,0,1.03_Accelerator Systems (AS),1.03.06_AS Soft X-Ray Undulator (SXR) - SLAC,1.03.06.06_AS Soft X-Ray Undulator Procurement and Fabrication - SLAC,1.03.06.06.03_SXR Undulator Integration and Testing,AS_SXU_MANF_2031_Post Retrofit Checkout - SXU_REFB_K,Support System,,SLAC,Labor
103614,1.03,1.03.06,1.03.06.06,1.03.06.06.03,1.03.06.06.03,SXR Undulator Integration and Testing,AS_SXU_MANF_2011,Receiving Inspection - Magnet Modules - SXU_REFB_K,3.0,4.0,4.0,4.0,04-08-25,04-10-25,AS_SXU_MANF_2001: FS,"AS_SXU_MANF_2021: FS, AS_LBL_PROD_795: FS",SLAC,0%,52198.52198_METSMANF (METSD Manufacturing),52198_METSMANF (METSD Manufacturing),Labor,0.0d,3.0,3.0,At Completion Units,8/13/2024,8/15/2024,0,0,0,0,0,0,0,0,0,0,1.03_Accelerator Systems (AS),1.03.06_AS Soft X-Ray Undulator (SXR) - SLAC,1.03.06.06_AS Soft X-Ray Undulator Procurement and Fabrication - SLAC,1.03.06.06.03_SXR Undulator Integration and Testing,AS_SXU_MANF_2011_Receiving Inspection - Magnet Modules - SXU_REFB_K,Manufacturing,,SLAC,Labor
103615,1.03,1.03.06,1.03.06.06,1.03.06.06.03,1.03.06.06.03,SXR Undulator Integration and Testing,AS_SXU_MANF_2011,Receiving Inspection - Magnet Modules - SXU_REFB_K,3.0,12.0,12.0,12.0,04-08-25,04-10-25,AS_SXU_MANF_2001: FS,"AS_SXU_MANF_2021: FS, AS_LBL_PROD_795: FS",SLAC,0%,52191.52191_METSMET Metrology,52191_METSMET Metrology,Labor,0.0d,3.0,3.0,At Completion Units,8/13/2024,8/15/2024,0,0,0,0,0,0,0,0,0,0,1.03_Accelerator Systems (AS),1.03.06_AS Soft X-Ray Undulator (SXR) - SLAC,1.03.06.06_AS Soft X-Ray Undulator Procurement and Fabrication - SLAC,1.03.06.06.03_SXR Undulator Integration and Testing,AS_SXU_MANF_2011_Receiving Inspection - Magnet Modules - SXU_REFB_K,Metrology,,SLAC,Labor
103616,1.03,1.03.06,1.03.06.06,1.03.06.06.03,1.03.06.06.03,SXR Undulator Integration and Testing,AS_SXU_MANF_2031,Post Retrofit Checkout - SXU_REFB_K,4.0,32.0,32.0,32.0,05-02-25,05-07-25,AS_SXU_MANF_2021: FS,AS_SXU_MANF_2041: FS,SLAC,0%,52213.52213_EEDHW (Electronics & Engineering Div - HW Engr),52213_EEDHW (Electronics & Engineering Div - HW Engr),Labor,0.0d,4.0,4.0,At Completion Units,9/9/2024,9/12/2024,0,0,0,0,0,0,0,0,0,0,1.03_Accelerator Systems (AS),1.03.06_AS Soft X-Ray Undulator (SXR) - SLAC,1.03.06.06_AS Soft X-Ray Undulator Procurement and Fabrication - SLAC,1.03.06.06.03_SXR Undulator Integration and Testing,AS_SXU_MANF_2031_Post Retrofit Checkout - SXU_REFB_K,Electrical,,SLAC,Labor
103617,1.03,1.03.06,1.03.06.06,1.03.06.06.03,1.03.06.06.03,SXR Undulator Integration and Testing,AS_SXU_MANF_2031,Post Retrofit Checkout - SXU_REFB_K,4.0,32.0,32.0,32.0,05-02-25,05-07-25,AS_SXU_MANF_2021: FS,AS_SXU_MANF_2041: FS,SLAC,0%,52191.52191_METSMET Metrology,52191_METSMET Metrology,Labor,0.0d,4.0,4.0,At Completion Units,9/9/2024,9/12/2024,0,0,0,0,0,0,0,0,0,0,1.03_Accelerator Systems (AS),1.03.06_AS Soft X-Ray Undulator (SXR) - SLAC,1.03.06.06_AS Soft X-Ray Undulator Procurement and Fabrication - SLAC,1.03.06.06.03_SXR Undulator Integration and Testing,AS_SXU_MANF_2031_Post Retrofit Checkout - SXU_REFB_K,Metrology,,SLAC,Labor
103618,1.03,1.03.06,1.03.06.06,1.03.06.06.03,1.03.06.06.03,SXR Undulator Integration and Testing,AS_SXU_MANF_2031,Post Retrofit Checkout - SXU_REFB_K,4.0,16.0,16.0,16.0,05-02-25,05-07-25,AS_SXU_MANF_2021: FS,AS_SXU_MANF_2041: FS,SLAC,0%,0106.0106_Staff Scientist,0106_Staff Scientist,Labor,0.0d,4.0,4.0,At Completion Units,9/9/2024,9/12/2024,0,0,0,0,0,0,0,0,0,0,1.03_Accelerator Systems (AS),1.03.06_AS Soft X-Ray Undulator (SXR) - SLAC,1.03.06.06_AS Soft X-Ray Undulator Procurement and Fabrication - SLAC,1.03.06.06.03_SXR Undulator Integration and Testing,AS_SXU_MANF_2031_Post Retrofit Checkout - SXU_REFB_K,Scientist,,SLAC,Labor
103619,1.03,1.03.06,1.03.06.06,1.03.06.06.03,1.03.06.06.03,SXR Undulator Integration and Testing,AS_SXU_MANF_2031,Post Retrofit Checkout - SXU_REFB_K,4.0,4.0,4.0,4.0,05-02-25,05-07-25,AS_SXU_MANF_2021: FS,AS_SXU_MANF_2041: FS,SLAC,0%,52169.52169_METS Mechanical Engineer,52169_METS Mechanical Engineer,Labor,0.0d,4.0,4.0,At Completion Units,9/9/2024,9/12/2024,0,0,0,0,0,0,0,0,0,0,1.03_Accelerator Systems (AS),1.03.06_AS Soft X-Ray Undulator (SXR) - SLAC,1.03.06.06_AS Soft X-Ray Undulator Procurement and Fabrication - SLAC,1.03.06.06.03_SXR Undulator Integration and Testing,AS_SXU_MANF_2031_Post Retrofit Checkout - SXU_REFB_K,Mechanical,,SLAC,Labor
103620,1.03,1.03.06,1.03.06.06,1.03.06.06.03,1.03.06.06.03,SXR Undulator Integration and Testing,AS_SXU_MANF_2021,Retrofit SXU Magnetic System  SXU_REFB_K,15.0,280.0,280.0,280.0,04-11-25,05-01-25,"AS_SXU_MANF_2011: FS, AS_SXU_INST_2000: FS","AS_SXU_MANF_2031: FS, AS_SXU_MANF_2121: FS",SLAC,0%,52198.52198_METSMANF (METSD Manufacturing),52198_METSMANF (METSD Manufacturing),Labor,0.0d,15.0,15.0,At Completion Units,8/16/2024,9/6/2024,0,0,0,0,0,0,0,0,0,0,1.03_Accelerator Systems (AS),1.03.06_AS Soft X-Ray Undulator (SXR) - SLAC,1.03.06.06_AS Soft X-Ray Undulator Procurement and Fabrication - SLAC,1.03.06.06.03_SXR Undulator Integration and Testing,AS_SXU_MANF_2021_Retrofit SXU Magnetic System  SXU_REFB_K,Manufacturing,,SLAC,Labor
103621,1.03,1.03.06,1.03.06.06,1.03.06.06.03,1.03.06.06.03,SXR Undulator Integration and Testing,AS_SXU_MANF_2021,Retrofit SXU Magnetic System  SXU_REFB_K,15.0,24.0,24.0,24.0,04-11-25,05-01-25,"AS_SXU_MANF_2011: FS, AS_SXU_INST_2000: FS","AS_SXU_MANF_2031: FS, AS_SXU_MANF_2121: FS",SLAC,0%,52213.52213_EEDHW (Electronics & Engineering Div - HW Engr),52213_EEDHW (Electronics & Engineering Div - HW Engr),Labor,0.0d,15.0,15.0,At Completion Units,8/16/2024,9/6/2024,0,0,0,0,0,0,0,0,0,0,1.03_Accelerator Systems (AS),1.03.06_AS Soft X-Ray Undulator (SXR) - SLAC,1.03.06.06_AS Soft X-Ray Undulator Procurement and Fabrication - SLAC,1.03.06.06.03_SXR Undulator Integration and Testing,AS_SXU_MANF_2021_Retrofit SXU Magnetic System  SXU_REFB_K,Electrical,,SLAC,Labor
103622,1.03,1.03.06,1.03.06.06,1.03.06.06.03,1.03.06.06.03,SXR Undulator Integration and Testing,AS_SXU_MANF_2021,Retrofit SXU Magnetic System  SXU_REFB_K,15.0,12.0,12.0,12.0,04-11-25,05-01-25,"AS_SXU_MANF_2011: FS, AS_SXU_INST_2000: FS","AS_SXU_MANF_2031: FS, AS_SXU_MANF_2121: FS",SLAC,0%,52169.52169_METS Mechanical Engineer,52169_METS Mechanical Engineer,Labor,0.0d,15.0,15.0,At Completion Units,8/16/2024,9/6/2024,0,0,0,0,0,0,0,0,0,0,1.03_Accelerator Systems (AS),1.03.06_AS Soft X-Ray Undulator (SXR) - SLAC,1.03.06.06_AS Soft X-Ray Undulator Procurement and Fabrication - SLAC,1.03.06.06.03_SXR Undulator Integration and Testing,AS_SXU_MANF_2021_Retrofit SXU Magnetic System  SXU_REFB_K,Mechanical,,SLAC,Labor
103623,1.03,1.03.06,1.03.06.06,1.03.06.06.03,1.03.06.06.03,SXR Undulator Integration and Testing,AS_SXU_MANF_2011,Receiving Inspection - Magnet Modules - SXU_REFB_K,3.0,8.0,8.0,8.0,04-08-25,04-10-25,AS_SXU_MANF_2001: FS,"AS_SXU_MANF_2021: FS, AS_LBL_PROD_795: FS",SLAC,0%,52169.52169_METS Mechanical Engineer,52169_METS Mechanical Engineer,Labor,0.0d,3.0,3.0,At Completion Units,8/13/2024,8/15/2024,0,0,0,0,0,0,0,0,0,0,1.03_Accelerator Systems (AS),1.03.06_AS Soft X-Ray Undulator (SXR) - SLAC,1.03.06.06_AS Soft X-Ray Undulator Procurement and Fabrication - SLAC,1.03.06.06.03_SXR Undulator Integration and Testing,AS_SXU_MANF_2011_Receiving Inspection - Magnet Modules - SXU_REFB_K,Mechanical,,SLAC,Labor
103624,1.03,1.03.06,1.03.06.06,1.03.06.06.03,1.03.06.06.03,SXR Undulator Integration and Testing,AS_SXU_MANF_1921,Retrofit SXU Magnetic System  SXU_REFB_J,15.0,48.0,48.0,48.0,03-05-25,03-25-25,"AS_SXU_MANF_1911: FS, AS_SXU_INST_1900: FS",AS_SXU_MANF_1931: FS,SLAC,0%,52191.52191_METSMET Metrology,52191_METSMET Metrology,Labor,0.0d,15.0,15.0,At Completion Units,7/10/2024,7/30/2024,0,0,0,0,0,0,0,0,0,0,1.03_Accelerator Systems (AS),1.03.06_AS Soft X-Ray Undulator (SXR) - SLAC,1.03.06.06_AS Soft X-Ray Undulator Procurement and Fabrication - SLAC,1.03.06.06.03_SXR Undulator Integration and Testing,AS_SXU_MANF_1921_Retrofit SXU Magnetic System  SXU_REFB_J,Metrology,,SLAC,Labor
103625,1.03,1.03.06,1.03.06.06,1.03.06.06.03,1.03.06.06.03,SXR Undulator Integration and Testing,AS_SXU_MANF_1946,Tune and Calibrate Undulator - SXU_HE_19,15.0,32.0,32.0,32.0,04-01-25,04-21-25,"AS_SXU_MANF_1941: FS, AS_SXU_MANF_1846: FS","AS_SXU_MANF_1956: FS, AS_SXU_MANF_2046: FS",SLAC,0%,52213.52213_EEDHW (Electronics & Engineering Div - HW Engr),52213_EEDHW (Electronics & Engineering Div - HW Engr),Labor,0.0d,15.0,15.0,At Completion Units,8/6/2024,8/26/2024,0,0,0,0,0,0,0,0,0,0,1.03_Accelerator Systems (AS),1.03.06_AS Soft X-Ray Undulator (SXR) - SLAC,1.03.06.06_AS Soft X-Ray Undulator Procurement and Fabrication - SLAC,1.03.06.06.03_SXR Undulator Integration and Testing,AS_SXU_MANF_1946_Tune and Calibrate Undulator - SXU_HE_19,Electrical,,SLAC,Labor
103626,1.03,1.03.06,1.03.06.06,1.03.06.06.03,1.03.06.06.03,SXR Undulator Integration and Testing,AS_SXU_MANF_1946,Tune and Calibrate Undulator - SXU_HE_19,15.0,48.0,48.0,48.0,04-01-25,04-21-25,"AS_SXU_MANF_1941: FS, AS_SXU_MANF_1846: FS","AS_SXU_MANF_1956: FS, AS_SXU_MANF_2046: FS",SLAC,0%,52198.52198_METSMANF (METSD Manufacturing),52198_METSMANF (METSD Manufacturing),Labor,0.0d,15.0,15.0,At Completion Units,8/6/2024,8/26/2024,0,0,0,0,0,0,0,0,0,0,1.03_Accelerator Systems (AS),1.03.06_AS Soft X-Ray Undulator (SXR) - SLAC,1.03.06.06_AS Soft X-Ray Undulator Procurement and Fabrication - SLAC,1.03.06.06.03_SXR Undulator Integration and Testing,AS_SXU_MANF_1946_Tune and Calibrate Undulator - SXU_HE_19,Manufacturing,,SLAC,Labor
103627,1.03,1.03.06,1.03.06.06,1.03.06.06.03,1.03.06.06.03,SXR Undulator Integration and Testing,AS_SXU_MANF_1946,Tune and Calibrate Undulator - SXU_HE_19,15.0,394.0,394.0,394.0,04-01-25,04-21-25,"AS_SXU_MANF_1941: FS, AS_SXU_MANF_1846: FS","AS_SXU_MANF_1956: FS, AS_SXU_MANF_2046: FS",SLAC,0%,52191.52191_METSMET Metrology,52191_METSMET Metrology,Labor,0.0d,15.0,15.0,At Completion Units,8/6/2024,8/26/2024,0,0,0,0,0,0,0,0,0,0,1.03_Accelerator Systems (AS),1.03.06_AS Soft X-Ray Undulator (SXR) - SLAC,1.03.06.06_AS Soft X-Ray Undulator Procurement and Fabrication - SLAC,1.03.06.06.03_SXR Undulator Integration and Testing,AS_SXU_MANF_1946_Tune and Calibrate Undulator - SXU_HE_19,Metrology,,SLAC,Labor
103628,1.03,1.03.06,1.03.06.06,1.03.06.06.03,1.03.06.06.03,SXR Undulator Integration and Testing,AS_SXU_MANF_1946,Tune and Calibrate Undulator - SXU_HE_19,15.0,32.0,32.0,32.0,04-01-25,04-21-25,"AS_SXU_MANF_1941: FS, AS_SXU_MANF_1846: FS","AS_SXU_MANF_1956: FS, AS_SXU_MANF_2046: FS",SLAC,0%,0106.0106_Staff Scientist,0106_Staff Scientist,Labor,0.0d,15.0,15.0,At Completion Units,8/6/2024,8/26/2024,0,0,0,0,0,0,0,0,0,0,1.03_Accelerator Systems (AS),1.03.06_AS Soft X-Ray Undulator (SXR) - SLAC,1.03.06.06_AS Soft X-Ray Undulator Procurement and Fabrication - SLAC,1.03.06.06.03_SXR Undulator Integration and Testing,AS_SXU_MANF_1946_Tune and Calibrate Undulator - SXU_HE_19,Scientist,,SLAC,Labor
103629,1.03,1.03.06,1.03.06.06,1.03.06.06.03,1.03.06.06.03,SXR Undulator Integration and Testing,AS_SXU_MANF_1946,Tune and Calibrate Undulator - SXU_HE_19,15.0,16.0,16.0,16.0,04-01-25,04-21-25,"AS_SXU_MANF_1941: FS, AS_SXU_MANF_1846: FS","AS_SXU_MANF_1956: FS, AS_SXU_MANF_2046: FS",SLAC,0%,52169.52169_METS Mechanical Engineer,52169_METS Mechanical Engineer,Labor,0.0d,15.0,15.0,At Completion Units,8/6/2024,8/26/2024,0,0,0,0,0,0,0,0,0,0,1.03_Accelerator Systems (AS),1.03.06_AS Soft X-Ray Undulator (SXR) - SLAC,1.03.06.06_AS Soft X-Ray Undulator Procurement and Fabrication - SLAC,1.03.06.06.03_SXR Undulator Integration and Testing,AS_SXU_MANF_1946_Tune and Calibrate Undulator - SXU_HE_19,Mechanical,,SLAC,Labor
103630,1.03,1.03.06,1.03.06.06,1.03.06.06.03,1.03.06.06.03,SXR Undulator Integration and Testing,AS_SXU_MANF_1931,Post Retrofit Checkout - SXU_REFB_J,4.0,12.0,12.0,12.0,03-26-25,03-31-25,AS_SXU_MANF_1921: FS,AS_SXU_MANF_1941: FS,SLAC,0%,52152.52152_FAC Fleet,52152_FAC Fleet,Labor,0.0d,4.0,4.0,At Completion Units,7/31/2024,8/5/2024,0,0,0,0,0,0,0,0,0,0,1.03_Accelerator Systems (AS),1.03.06_AS Soft X-Ray Undulator (SXR) - SLAC,1.03.06.06_AS Soft X-Ray Undulator Procurement and Fabrication - SLAC,1.03.06.06.03_SXR Undulator Integration and Testing,AS_SXU_MANF_1931_Post Retrofit Checkout - SXU_REFB_J,Support System,,SLAC,Labor
103631,1.03,1.03.06,1.03.06.06,1.03.06.06.03,1.03.06.06.03,SXR Undulator Integration and Testing,AS_SXU_MANF_1911,Receiving Inspection - Magnet Modules - SXU_REFB_J,3.0,4.0,4.0,4.0,02-28-25,03-04-25,AS_SXU_MANF_1901: FS,"AS_SXU_MANF_1921: FS, AS_LBL_PROD_775: FS",SLAC,0%,52198.52198_METSMANF (METSD Manufacturing),52198_METSMANF (METSD Manufacturing),Labor,0.0d,3.0,3.0,At Completion Units,7/5/2024,7/9/2024,0,0,0,0,0,0,0,0,0,0,1.03_Accelerator Systems (AS),1.03.06_AS Soft X-Ray Undulator (SXR) - SLAC,1.03.06.06_AS Soft X-Ray Undulator Procurement and Fabrication - SLAC,1.03.06.06.03_SXR Undulator Integration and Testing,AS_SXU_MANF_1911_Receiving Inspection - Magnet Modules - SXU_REFB_J,Manufacturing,,SLAC,Labor
103632,1.03,1.03.06,1.03.06.06,1.03.06.06.03,1.03.06.06.03,SXR Undulator Integration and Testing,AS_SXU_MANF_1911,Receiving Inspection - Magnet Modules - SXU_REFB_J,3.0,12.0,12.0,12.0,02-28-25,03-04-25,AS_SXU_MANF_1901: FS,"AS_SXU_MANF_1921: FS, AS_LBL_PROD_775: FS",SLAC,0%,52191.52191_METSMET Metrology,52191_METSMET Metrology,Labor,0.0d,3.0,3.0,At Completion Units,7/5/2024,7/9/2024,0,0,0,0,0,0,0,0,0,0,1.03_Accelerator Systems (AS),1.03.06_AS Soft X-Ray Undulator (SXR) - SLAC,1.03.06.06_AS Soft X-Ray Undulator Procurement and Fabrication - SLAC,1.03.06.06.03_SXR Undulator Integration and Testing,AS_SXU_MANF_1911_Receiving Inspection - Magnet Modules - SXU_REFB_J,Metrology,,SLAC,Labor
103633,1.03,1.03.06,1.03.06.06,1.03.06.06.03,1.03.06.06.03,SXR Undulator Integration and Testing,AS_SXU_MANF_1931,Post Retrofit Checkout - SXU_REFB_J,4.0,32.0,32.0,32.0,03-26-25,03-31-25,AS_SXU_MANF_1921: FS,AS_SXU_MANF_1941: FS,SLAC,0%,52213.52213_EEDHW (Electronics & Engineering Div - HW Engr),52213_EEDHW (Electronics & Engineering Div - HW Engr),Labor,0.0d,4.0,4.0,At Completion Units,7/31/2024,8/5/2024,0,0,0,0,0,0,0,0,0,0,1.03_Accelerator Systems (AS),1.03.06_AS Soft X-Ray Undulator (SXR) - SLAC,1.03.06.06_AS Soft X-Ray Undulator Procurement and Fabrication - SLAC,1.03.06.06.03_SXR Undulator Integration and Testing,AS_SXU_MANF_1931_Post Retrofit Checkout - SXU_REFB_J,Electrical,,SLAC,Labor
103634,1.03,1.03.06,1.03.06.06,1.03.06.06.03,1.03.06.06.03,SXR Undulator Integration and Testing,AS_SXU_MANF_1931,Post Retrofit Checkout - SXU_REFB_J,4.0,32.0,32.0,32.0,03-26-25,03-31-25,AS_SXU_MANF_1921: FS,AS_SXU_MANF_1941: FS,SLAC,0%,52191.52191_METSMET Metrology,52191_METSMET Metrology,Labor,0.0d,4.0,4.0,At Completion Units,7/31/2024,8/5/2024,0,0,0,0,0,0,0,0,0,0,1.03_Accelerator Systems (AS),1.03.06_AS Soft X-Ray Undulator (SXR) - SLAC,1.03.06.06_AS Soft X-Ray Undulator Procurement and Fabrication - SLAC,1.03.06.06.03_SXR Undulator Integration and Testing,AS_SXU_MANF_1931_Post Retrofit Checkout - SXU_REFB_J,Metrology,,SLAC,Labor
103635,1.03,1.03.06,1.03.06.06,1.03.06.06.03,1.03.06.06.03,SXR Undulator Integration and Testing,AS_SXU_MANF_1931,Post Retrofit Checkout - SXU_REFB_J,4.0,16.0,16.0,16.0,03-26-25,03-31-25,AS_SXU_MANF_1921: FS,AS_SXU_MANF_1941: FS,SLAC,0%,0106.0106_Staff Scientist,0106_Staff Scientist,Labor,0.0d,4.0,4.0,At Completion Units,7/31/2024,8/5/2024,0,0,0,0,0,0,0,0,0,0,1.03_Accelerator Systems (AS),1.03.06_AS Soft X-Ray Undulator (SXR) - SLAC,1.03.06.06_AS Soft X-Ray Undulator Procurement and Fabrication - SLAC,1.03.06.06.03_SXR Undulator Integration and Testing,AS_SXU_MANF_1931_Post Retrofit Checkout - SXU_REFB_J,Scientist,,SLAC,Labor
103636,1.03,1.03.06,1.03.06.06,1.03.06.06.03,1.03.06.06.03,SXR Undulator Integration and Testing,AS_SXU_MANF_1931,Post Retrofit Checkout - SXU_REFB_J,4.0,4.0,4.0,4.0,03-26-25,03-31-25,AS_SXU_MANF_1921: FS,AS_SXU_MANF_1941: FS,SLAC,0%,52169.52169_METS Mechanical Engineer,52169_METS Mechanical Engineer,Labor,0.0d,4.0,4.0,At Completion Units,7/31/2024,8/5/2024,0,0,0,0,0,0,0,0,0,0,1.03_Accelerator Systems (AS),1.03.06_AS Soft X-Ray Undulator (SXR) - SLAC,1.03.06.06_AS Soft X-Ray Undulator Procurement and Fabrication - SLAC,1.03.06.06.03_SXR Undulator Integration and Testing,AS_SXU_MANF_1931_Post Retrofit Checkout - SXU_REFB_J,Mechanical,,SLAC,Labor
103637,1.03,1.03.06,1.03.06.06,1.03.06.06.03,1.03.06.06.03,SXR Undulator Integration and Testing,AS_SXU_MANF_1921,Retrofit SXU Magnetic System  SXU_REFB_J,15.0,280.0,280.0,280.0,03-05-25,03-25-25,"AS_SXU_MANF_1911: FS, AS_SXU_INST_1900: FS",AS_SXU_MANF_1931: FS,SLAC,0%,52198.52198_METSMANF (METSD Manufacturing),52198_METSMANF (METSD Manufacturing),Labor,0.0d,15.0,15.0,At Completion Units,7/10/2024,7/30/2024,0,0,0,0,0,0,0,0,0,0,1.03_Accelerator Systems (AS),1.03.06_AS Soft X-Ray Undulator (SXR) - SLAC,1.03.06.06_AS Soft X-Ray Undulator Procurement and Fabrication - SLAC,1.03.06.06.03_SXR Undulator Integration and Testing,AS_SXU_MANF_1921_Retrofit SXU Magnetic System  SXU_REFB_J,Manufacturing,,SLAC,Labor
103638,1.03,1.03.06,1.03.06.06,1.03.06.06.03,1.03.06.06.03,SXR Undulator Integration and Testing,AS_SXU_MANF_1921,Retrofit SXU Magnetic System  SXU_REFB_J,15.0,24.0,24.0,24.0,03-05-25,03-25-25,"AS_SXU_MANF_1911: FS, AS_SXU_INST_1900: FS",AS_SXU_MANF_1931: FS,SLAC,0%,52213.52213_EEDHW (Electronics & Engineering Div - HW Engr),52213_EEDHW (Electronics & Engineering Div - HW Engr),Labor,0.0d,15.0,15.0,At Completion Units,7/10/2024,7/30/2024,0,0,0,0,0,0,0,0,0,0,1.03_Accelerator Systems (AS),1.03.06_AS Soft X-Ray Undulator (SXR) - SLAC,1.03.06.06_AS Soft X-Ray Undulator Procurement and Fabrication - SLAC,1.03.06.06.03_SXR Undulator Integration and Testing,AS_SXU_MANF_1921_Retrofit SXU Magnetic System  SXU_REFB_J,Electrical,,SLAC,Labor
103639,1.03,1.03.06,1.03.06.06,1.03.06.06.03,1.03.06.06.03,SXR Undulator Integration and Testing,AS_SXU_MANF_1921,Retrofit SXU Magnetic System  SXU_REFB_J,15.0,12.0,12.0,12.0,03-05-25,03-25-25,"AS_SXU_MANF_1911: FS, AS_SXU_INST_1900: FS",AS_SXU_MANF_1931: FS,SLAC,0%,52169.52169_METS Mechanical Engineer,52169_METS Mechanical Engineer,Labor,0.0d,15.0,15.0,At Completion Units,7/10/2024,7/30/2024,0,0,0,0,0,0,0,0,0,0,1.03_Accelerator Systems (AS),1.03.06_AS Soft X-Ray Undulator (SXR) - SLAC,1.03.06.06_AS Soft X-Ray Undulator Procurement and Fabrication - SLAC,1.03.06.06.03_SXR Undulator Integration and Testing,AS_SXU_MANF_1921_Retrofit SXU Magnetic System  SXU_REFB_J,Mechanical,,SLAC,Labor
103640,1.03,1.03.06,1.03.06.06,1.03.06.06.03,1.03.06.06.03,SXR Undulator Integration and Testing,AS_SXU_MANF_1911,Receiving Inspection - Magnet Modules - SXU_REFB_J,3.0,8.0,8.0,8.0,02-28-25,03-04-25,AS_SXU_MANF_1901: FS,"AS_SXU_MANF_1921: FS, AS_LBL_PROD_775: FS",SLAC,0%,52169.52169_METS Mechanical Engineer,52169_METS Mechanical Engineer,Labor,0.0d,3.0,3.0,At Completion Units,7/5/2024,7/9/2024,0,0,0,0,0,0,0,0,0,0,1.03_Accelerator Systems (AS),1.03.06_AS Soft X-Ray Undulator (SXR) - SLAC,1.03.06.06_AS Soft X-Ray Undulator Procurement and Fabrication - SLAC,1.03.06.06.03_SXR Undulator Integration and Testing,AS_SXU_MANF_1911_Receiving Inspection - Magnet Modules - SXU_REFB_J,Mechanical,,SLAC,Labor
103641,1.03,1.03.06,1.03.06.06,1.03.06.06.03,1.03.06.06.03,SXR Undulator Integration and Testing,AS_SXU_MANF_1821,Retrofit SXU Magnetic System  SXU_REFB_I,15.0,48.0,48.0,48.0,01-24-25,02-13-25,"AS_SXU_MANF_1811: FS, AS_SXU_INST_1800: FS",AS_SXU_MANF_1831: FS,SLAC,0%,52191.52191_METSMET Metrology,52191_METSMET Metrology,Labor,0.0d,15.0,15.0,At Completion Units,5/31/2024,6/20/2024,0,0,0,0,0,0,0,0,0,0,1.03_Accelerator Systems (AS),1.03.06_AS Soft X-Ray Undulator (SXR) - SLAC,1.03.06.06_AS Soft X-Ray Undulator Procurement and Fabrication - SLAC,1.03.06.06.03_SXR Undulator Integration and Testing,AS_SXU_MANF_1821_Retrofit SXU Magnetic System  SXU_REFB_I,Metrology,,SLAC,Labor
103642,1.03,1.03.06,1.03.06.06,1.03.06.06.03,1.03.06.06.03,SXR Undulator Integration and Testing,AS_SXU_MANF_1846,Tune and Calibrate Undulator - SXU_HE_18,15.0,32.0,32.0,32.0,02-21-25,03-13-25,"AS_SXU_MANF_1841: FS, AS_SXU_MANF_1746: FS","AS_SXU_MANF_1856: FS, AS_SXU_MANF_1946: FS",SLAC,0%,52213.52213_EEDHW (Electronics & Engineering Div - HW Engr),52213_EEDHW (Electronics & Engineering Div - HW Engr),Labor,0.0d,15.0,15.0,At Completion Units,6/27/2024,7/18/2024,0,0,0,0,0,0,0,0,0,0,1.03_Accelerator Systems (AS),1.03.06_AS Soft X-Ray Undulator (SXR) - SLAC,1.03.06.06_AS Soft X-Ray Undulator Procurement and Fabrication - SLAC,1.03.06.06.03_SXR Undulator Integration and Testing,AS_SXU_MANF_1846_Tune and Calibrate Undulator - SXU_HE_18,Electrical,,SLAC,Labor
103643,1.03,1.03.06,1.03.06.06,1.03.06.06.03,1.03.06.06.03,SXR Undulator Integration and Testing,AS_SXU_MANF_1846,Tune and Calibrate Undulator - SXU_HE_18,15.0,48.0,48.0,48.0,02-21-25,03-13-25,"AS_SXU_MANF_1841: FS, AS_SXU_MANF_1746: FS","AS_SXU_MANF_1856: FS, AS_SXU_MANF_1946: FS",SLAC,0%,52198.52198_METSMANF (METSD Manufacturing),52198_METSMANF (METSD Manufacturing),Labor,0.0d,15.0,15.0,At Completion Units,6/27/2024,7/18/2024,0,0,0,0,0,0,0,0,0,0,1.03_Accelerator Systems (AS),1.03.06_AS Soft X-Ray Undulator (SXR) - SLAC,1.03.06.06_AS Soft X-Ray Undulator Procurement and Fabrication - SLAC,1.03.06.06.03_SXR Undulator Integration and Testing,AS_SXU_MANF_1846_Tune and Calibrate Undulator - SXU_HE_18,Manufacturing,,SLAC,Labor
103644,1.03,1.03.06,1.03.06.06,1.03.06.06.03,1.03.06.06.03,SXR Undulator Integration and Testing,AS_SXU_MANF_1846,Tune and Calibrate Undulator - SXU_HE_18,15.0,394.0,394.0,394.0,02-21-25,03-13-25,"AS_SXU_MANF_1841: FS, AS_SXU_MANF_1746: FS","AS_SXU_MANF_1856: FS, AS_SXU_MANF_1946: FS",SLAC,0%,52191.52191_METSMET Metrology,52191_METSMET Metrology,Labor,0.0d,15.0,15.0,At Completion Units,6/27/2024,7/18/2024,0,0,0,0,0,0,0,0,0,0,1.03_Accelerator Systems (AS),1.03.06_AS Soft X-Ray Undulator (SXR) - SLAC,1.03.06.06_AS Soft X-Ray Undulator Procurement and Fabrication - SLAC,1.03.06.06.03_SXR Undulator Integration and Testing,AS_SXU_MANF_1846_Tune and Calibrate Undulator - SXU_HE_18,Metrology,,SLAC,Labor
103645,1.03,1.03.06,1.03.06.06,1.03.06.06.03,1.03.06.06.03,SXR Undulator Integration and Testing,AS_SXU_MANF_1846,Tune and Calibrate Undulator - SXU_HE_18,15.0,32.0,32.0,32.0,02-21-25,03-13-25,"AS_SXU_MANF_1841: FS, AS_SXU_MANF_1746: FS","AS_SXU_MANF_1856: FS, AS_SXU_MANF_1946: FS",SLAC,0%,0106.0106_Staff Scientist,0106_Staff Scientist,Labor,0.0d,15.0,15.0,At Completion Units,6/27/2024,7/18/2024,0,0,0,0,0,0,0,0,0,0,1.03_Accelerator Systems (AS),1.03.06_AS Soft X-Ray Undulator (SXR) - SLAC,1.03.06.06_AS Soft X-Ray Undulator Procurement and Fabrication - SLAC,1.03.06.06.03_SXR Undulator Integration and Testing,AS_SXU_MANF_1846_Tune and Calibrate Undulator - SXU_HE_18,Scientist,,SLAC,Labor
103646,1.03,1.03.06,1.03.06.06,1.03.06.06.03,1.03.06.06.03,SXR Undulator Integration and Testing,AS_SXU_MANF_1846,Tune and Calibrate Undulator - SXU_HE_18,15.0,16.0,16.0,16.0,02-21-25,03-13-25,"AS_SXU_MANF_1841: FS, AS_SXU_MANF_1746: FS","AS_SXU_MANF_1856: FS, AS_SXU_MANF_1946: FS",SLAC,0%,52169.52169_METS Mechanical Engineer,52169_METS Mechanical Engineer,Labor,0.0d,15.0,15.0,At Completion Units,6/27/2024,7/18/2024,0,0,0,0,0,0,0,0,0,0,1.03_Accelerator Systems (AS),1.03.06_AS Soft X-Ray Undulator (SXR) - SLAC,1.03.06.06_AS Soft X-Ray Undulator Procurement and Fabrication - SLAC,1.03.06.06.03_SXR Undulator Integration and Testing,AS_SXU_MANF_1846_Tune and Calibrate Undulator - SXU_HE_18,Mechanical,,SLAC,Labor
103647,1.03,1.03.06,1.03.06.06,1.03.06.06.03,1.03.06.06.03,SXR Undulator Integration and Testing,AS_SXU_MANF_1831,Post Retrofit Checkout - SXU_REFB_I,4.0,12.0,12.0,12.0,02-14-25,02-20-25,AS_SXU_MANF_1821: FS,AS_SXU_MANF_1841: FS,SLAC,0%,52152.52152_FAC Fleet,52152_FAC Fleet,Labor,0.0d,4.0,4.0,At Completion Units,6/21/2024,6/26/2024,0,0,0,0,0,0,0,0,0,0,1.03_Accelerator Systems (AS),1.03.06_AS Soft X-Ray Undulator (SXR) - SLAC,1.03.06.06_AS Soft X-Ray Undulator Procurement and Fabrication - SLAC,1.03.06.06.03_SXR Undulator Integration and Testing,AS_SXU_MANF_1831_Post Retrofit Checkout - SXU_REFB_I,Support System,,SLAC,Labor
103648,1.03,1.03.06,1.03.06.06,1.03.06.06.03,1.03.06.06.03,SXR Undulator Integration and Testing,AS_SXU_MANF_1811,Receiving Inspection - Magnet Modules - SXU_REFB_I,3.0,4.0,4.0,4.0,01-21-25,01-23-25,AS_SXU_MANF_1801: FS,"AS_SXU_MANF_1821: FS, AS_LBL_PROD_755: FS",SLAC,0%,52198.52198_METSMANF (METSD Manufacturing),52198_METSMANF (METSD Manufacturing),Labor,0.0d,3.0,3.0,At Completion Units,5/28/2024,5/30/2024,0,0,0,0,0,0,0,0,0,0,1.03_Accelerator Systems (AS),1.03.06_AS Soft X-Ray Undulator (SXR) - SLAC,1.03.06.06_AS Soft X-Ray Undulator Procurement and Fabrication - SLAC,1.03.06.06.03_SXR Undulator Integration and Testing,AS_SXU_MANF_1811_Receiving Inspection - Magnet Modules - SXU_REFB_I,Manufacturing,,SLAC,Labor
103649,1.03,1.03.06,1.03.06.06,1.03.06.06.03,1.03.06.06.03,SXR Undulator Integration and Testing,AS_SXU_MANF_1811,Receiving Inspection - Magnet Modules - SXU_REFB_I,3.0,12.0,12.0,12.0,01-21-25,01-23-25,AS_SXU_MANF_1801: FS,"AS_SXU_MANF_1821: FS, AS_LBL_PROD_755: FS",SLAC,0%,52191.52191_METSMET Metrology,52191_METSMET Metrology,Labor,0.0d,3.0,3.0,At Completion Units,5/28/2024,5/30/2024,0,0,0,0,0,0,0,0,0,0,1.03_Accelerator Systems (AS),1.03.06_AS Soft X-Ray Undulator (SXR) - SLAC,1.03.06.06_AS Soft X-Ray Undulator Procurement and Fabrication - SLAC,1.03.06.06.03_SXR Undulator Integration and Testing,AS_SXU_MANF_1811_Receiving Inspection - Magnet Modules - SXU_REFB_I,Metrology,,SLAC,Labor
103650,1.03,1.03.06,1.03.06.06,1.03.06.06.03,1.03.06.06.03,SXR Undulator Integration and Testing,AS_SXU_MANF_1831,Post Retrofit Checkout - SXU_REFB_I,4.0,32.0,32.0,32.0,02-14-25,02-20-25,AS_SXU_MANF_1821: FS,AS_SXU_MANF_1841: FS,SLAC,0%,52213.52213_EEDHW (Electronics & Engineering Div - HW Engr),52213_EEDHW (Electronics & Engineering Div - HW Engr),Labor,0.0d,4.0,4.0,At Completion Units,6/21/2024,6/26/2024,0,0,0,0,0,0,0,0,0,0,1.03_Accelerator Systems (AS),1.03.06_AS Soft X-Ray Undulator (SXR) - SLAC,1.03.06.06_AS Soft X-Ray Undulator Procurement and Fabrication - SLAC,1.03.06.06.03_SXR Undulator Integration and Testing,AS_SXU_MANF_1831_Post Retrofit Checkout - SXU_REFB_I,Electrical,,SLAC,Labor
103651,1.03,1.03.06,1.03.06.06,1.03.06.06.03,1.03.06.06.03,SXR Undulator Integration and Testing,AS_SXU_MANF_1831,Post Retrofit Checkout - SXU_REFB_I,4.0,32.0,32.0,32.0,02-14-25,02-20-25,AS_SXU_MANF_1821: FS,AS_SXU_MANF_1841: FS,SLAC,0%,52191.52191_METSMET Metrology,52191_METSMET Metrology,Labor,0.0d,4.0,4.0,At Completion Units,6/21/2024,6/26/2024,0,0,0,0,0,0,0,0,0,0,1.03_Accelerator Systems (AS),1.03.06_AS Soft X-Ray Undulator (SXR) - SLAC,1.03.06.06_AS Soft X-Ray Undulator Procurement and Fabrication - SLAC,1.03.06.06.03_SXR Undulator Integration and Testing,AS_SXU_MANF_1831_Post Retrofit Checkout - SXU_REFB_I,Metrology,,SLAC,Labor
103652,1.03,1.03.06,1.03.06.06,1.03.06.06.03,1.03.06.06.03,SXR Undulator Integration and Testing,AS_SXU_MANF_1831,Post Retrofit Checkout - SXU_REFB_I,4.0,16.0,16.0,16.0,02-14-25,02-20-25,AS_SXU_MANF_1821: FS,AS_SXU_MANF_1841: FS,SLAC,0%,0106.0106_Staff Scientist,0106_Staff Scientist,Labor,0.0d,4.0,4.0,At Completion Units,6/21/2024,6/26/2024,0,0,0,0,0,0,0,0,0,0,1.03_Accelerator Systems (AS),1.03.06_AS Soft X-Ray Undulator (SXR) - SLAC,1.03.06.06_AS Soft X-Ray Undulator Procurement and Fabrication - SLAC,1.03.06.06.03_SXR Undulator Integration and Testing,AS_SXU_MANF_1831_Post Retrofit Checkout - SXU_REFB_I,Scientist,,SLAC,Labor
103653,1.03,1.03.06,1.03.06.06,1.03.06.06.03,1.03.06.06.03,SXR Undulator Integration and Testing,AS_SXU_MANF_1831,Post Retrofit Checkout - SXU_REFB_I,4.0,4.0,4.0,4.0,02-14-25,02-20-25,AS_SXU_MANF_1821: FS,AS_SXU_MANF_1841: FS,SLAC,0%,52169.52169_METS Mechanical Engineer,52169_METS Mechanical Engineer,Labor,0.0d,4.0,4.0,At Completion Units,6/21/2024,6/26/2024,0,0,0,0,0,0,0,0,0,0,1.03_Accelerator Systems (AS),1.03.06_AS Soft X-Ray Undulator (SXR) - SLAC,1.03.06.06_AS Soft X-Ray Undulator Procurement and Fabrication - SLAC,1.03.06.06.03_SXR Undulator Integration and Testing,AS_SXU_MANF_1831_Post Retrofit Checkout - SXU_REFB_I,Mechanical,,SLAC,Labor
103654,1.03,1.03.06,1.03.06.06,1.03.06.06.03,1.03.06.06.03,SXR Undulator Integration and Testing,AS_SXU_MANF_1821,Retrofit SXU Magnetic System  SXU_REFB_I,15.0,280.0,280.0,280.0,01-24-25,02-13-25,"AS_SXU_MANF_1811: FS, AS_SXU_INST_1800: FS",AS_SXU_MANF_1831: FS,SLAC,0%,52198.52198_METSMANF (METSD Manufacturing),52198_METSMANF (METSD Manufacturing),Labor,0.0d,15.0,15.0,At Completion Units,5/31/2024,6/20/2024,0,0,0,0,0,0,0,0,0,0,1.03_Accelerator Systems (AS),1.03.06_AS Soft X-Ray Undulator (SXR) - SLAC,1.03.06.06_AS Soft X-Ray Undulator Procurement and Fabrication - SLAC,1.03.06.06.03_SXR Undulator Integration and Testing,AS_SXU_MANF_1821_Retrofit SXU Magnetic System  SXU_REFB_I,Manufacturing,,SLAC,Labor
103655,1.03,1.03.06,1.03.06.06,1.03.06.06.03,1.03.06.06.03,SXR Undulator Integration and Testing,AS_SXU_MANF_1821,Retrofit SXU Magnetic System  SXU_REFB_I,15.0,24.0,24.0,24.0,01-24-25,02-13-25,"AS_SXU_MANF_1811: FS, AS_SXU_INST_1800: FS",AS_SXU_MANF_1831: FS,SLAC,0%,52213.52213_EEDHW (Electronics & Engineering Div - HW Engr),52213_EEDHW (Electronics & Engineering Div - HW Engr),Labor,0.0d,15.0,15.0,At Completion Units,5/31/2024,6/20/2024,0,0,0,0,0,0,0,0,0,0,1.03_Accelerator Systems (AS),1.03.06_AS Soft X-Ray Undulator (SXR) - SLAC,1.03.06.06_AS Soft X-Ray Undulator Procurement and Fabrication - SLAC,1.03.06.06.03_SXR Undulator Integration and Testing,AS_SXU_MANF_1821_Retrofit SXU Magnetic System  SXU_REFB_I,Electrical,,SLAC,Labor
103656,1.03,1.03.06,1.03.06.06,1.03.06.06.03,1.03.06.06.03,SXR Undulator Integration and Testing,AS_SXU_MANF_1821,Retrofit SXU Magnetic System  SXU_REFB_I,15.0,12.0,12.0,12.0,01-24-25,02-13-25,"AS_SXU_MANF_1811: FS, AS_SXU_INST_1800: FS",AS_SXU_MANF_1831: FS,SLAC,0%,52169.52169_METS Mechanical Engineer,52169_METS Mechanical Engineer,Labor,0.0d,15.0,15.0,At Completion Units,5/31/2024,6/20/2024,0,0,0,0,0,0,0,0,0,0,1.03_Accelerator Systems (AS),1.03.06_AS Soft X-Ray Undulator (SXR) - SLAC,1.03.06.06_AS Soft X-Ray Undulator Procurement and Fabrication - SLAC,1.03.06.06.03_SXR Undulator Integration and Testing,AS_SXU_MANF_1821_Retrofit SXU Magnetic System  SXU_REFB_I,Mechanical,,SLAC,Labor
103657,1.03,1.03.06,1.03.06.06,1.03.06.06.03,1.03.06.06.03,SXR Undulator Integration and Testing,AS_SXU_MANF_1811,Receiving Inspection - Magnet Modules - SXU_REFB_I,3.0,8.0,8.0,8.0,01-21-25,01-23-25,AS_SXU_MANF_1801: FS,"AS_SXU_MANF_1821: FS, AS_LBL_PROD_755: FS",SLAC,0%,52169.52169_METS Mechanical Engineer,52169_METS Mechanical Engineer,Labor,0.0d,3.0,3.0,At Completion Units,5/28/2024,5/30/2024,0,0,0,0,0,0,0,0,0,0,1.03_Accelerator Systems (AS),1.03.06_AS Soft X-Ray Undulator (SXR) - SLAC,1.03.06.06_AS Soft X-Ray Undulator Procurement and Fabrication - SLAC,1.03.06.06.03_SXR Undulator Integration and Testing,AS_SXU_MANF_1811_Receiving Inspection - Magnet Modules - SXU_REFB_I,Mechanical,,SLAC,Labor
103658,1.03,1.03.06,1.03.06.06,1.03.06.06.03,1.03.06.06.03,SXR Undulator Integration and Testing,AS_SXU_MANF_1721,Retrofit SXU Magnetic System SXU_REFB_H,15.0,48.0,48.0,48.0,12-03-24,01-06-25,"AS_SXU_MANF_1711: FS, AS_SXU_INST_1700: FS",AS_SXU_MANF_1731: FS,SLAC,0%,52191.52191_METSMET Metrology,52191_METSMET Metrology,Labor,0.0d,15.0,15.0,At Completion Units,4/23/2024,5/13/2024,0,0,0,0,0,0,0,0,0,0,1.03_Accelerator Systems (AS),1.03.06_AS Soft X-Ray Undulator (SXR) - SLAC,1.03.06.06_AS Soft X-Ray Undulator Procurement and Fabrication - SLAC,1.03.06.06.03_SXR Undulator Integration and Testing,AS_SXU_MANF_1721_Retrofit SXU Magnetic System SXU_REFB_H,Metrology,,SLAC,Labor
103659,1.03,1.03.06,1.03.06.06,1.03.06.06.03,1.03.06.06.03,SXR Undulator Integration and Testing,AS_SXU_MANF_1746,Tune and Calibrate Undulator - SXU_HE_17,15.0,32.0,32.0,32.0,01-13-25,02-03-25,"AS_SXU_MANF_1741: FS, AS_SXU_MANF_1646: FS","AS_SXU_MANF_1756: FS, AS_SXU_MANF_1846: FS",SLAC,0%,52213.52213_EEDHW (Electronics & Engineering Div - HW Engr),52213_EEDHW (Electronics & Engineering Div - HW Engr),Labor,0.0d,15.0,15.0,At Completion Units,5/20/2024,6/10/2024,0,0,0,0,0,0,0,0,0,0,1.03_Accelerator Systems (AS),1.03.06_AS Soft X-Ray Undulator (SXR) - SLAC,1.03.06.06_AS Soft X-Ray Undulator Procurement and Fabrication - SLAC,1.03.06.06.03_SXR Undulator Integration and Testing,AS_SXU_MANF_1746_Tune and Calibrate Undulator - SXU_HE_17,Electrical,,SLAC,Labor
103660,1.03,1.03.06,1.03.06.06,1.03.06.06.03,1.03.06.06.03,SXR Undulator Integration and Testing,AS_SXU_MANF_1746,Tune and Calibrate Undulator - SXU_HE_17,15.0,48.0,48.0,48.0,01-13-25,02-03-25,"AS_SXU_MANF_1741: FS, AS_SXU_MANF_1646: FS","AS_SXU_MANF_1756: FS, AS_SXU_MANF_1846: FS",SLAC,0%,52198.52198_METSMANF (METSD Manufacturing),52198_METSMANF (METSD Manufacturing),Labor,0.0d,15.0,15.0,At Completion Units,5/20/2024,6/10/2024,0,0,0,0,0,0,0,0,0,0,1.03_Accelerator Systems (AS),1.03.06_AS Soft X-Ray Undulator (SXR) - SLAC,1.03.06.06_AS Soft X-Ray Undulator Procurement and Fabrication - SLAC,1.03.06.06.03_SXR Undulator Integration and Testing,AS_SXU_MANF_1746_Tune and Calibrate Undulator - SXU_HE_17,Manufacturing,,SLAC,Labor
103661,1.03,1.03.06,1.03.06.06,1.03.06.06.03,1.03.06.06.03,SXR Undulator Integration and Testing,AS_SXU_MANF_1746,Tune and Calibrate Undulator - SXU_HE_17,15.0,394.0,394.0,394.0,01-13-25,02-03-25,"AS_SXU_MANF_1741: FS, AS_SXU_MANF_1646: FS","AS_SXU_MANF_1756: FS, AS_SXU_MANF_1846: FS",SLAC,0%,52191.52191_METSMET Metrology,52191_METSMET Metrology,Labor,0.0d,15.0,15.0,At Completion Units,5/20/2024,6/10/2024,0,0,0,0,0,0,0,0,0,0,1.03_Accelerator Systems (AS),1.03.06_AS Soft X-Ray Undulator (SXR) - SLAC,1.03.06.06_AS Soft X-Ray Undulator Procurement and Fabrication - SLAC,1.03.06.06.03_SXR Undulator Integration and Testing,AS_SXU_MANF_1746_Tune and Calibrate Undulator - SXU_HE_17,Metrology,,SLAC,Labor
103662,1.03,1.03.06,1.03.06.06,1.03.06.06.03,1.03.06.06.03,SXR Undulator Integration and Testing,AS_SXU_MANF_1746,Tune and Calibrate Undulator - SXU_HE_17,15.0,32.0,32.0,32.0,01-13-25,02-03-25,"AS_SXU_MANF_1741: FS, AS_SXU_MANF_1646: FS","AS_SXU_MANF_1756: FS, AS_SXU_MANF_1846: FS",SLAC,0%,0106.0106_Staff Scientist,0106_Staff Scientist,Labor,0.0d,15.0,15.0,At Completion Units,5/20/2024,6/10/2024,0,0,0,0,0,0,0,0,0,0,1.03_Accelerator Systems (AS),1.03.06_AS Soft X-Ray Undulator (SXR) - SLAC,1.03.06.06_AS Soft X-Ray Undulator Procurement and Fabrication - SLAC,1.03.06.06.03_SXR Undulator Integration and Testing,AS_SXU_MANF_1746_Tune and Calibrate Undulator - SXU_HE_17,Scientist,,SLAC,Labor
103663,1.03,1.03.06,1.03.06.06,1.03.06.06.03,1.03.06.06.03,SXR Undulator Integration and Testing,AS_SXU_MANF_1746,Tune and Calibrate Undulator - SXU_HE_17,15.0,16.0,16.0,16.0,01-13-25,02-03-25,"AS_SXU_MANF_1741: FS, AS_SXU_MANF_1646: FS","AS_SXU_MANF_1756: FS, AS_SXU_MANF_1846: FS",SLAC,0%,52169.52169_METS Mechanical Engineer,52169_METS Mechanical Engineer,Labor,0.0d,15.0,15.0,At Completion Units,5/20/2024,6/10/2024,0,0,0,0,0,0,0,0,0,0,1.03_Accelerator Systems (AS),1.03.06_AS Soft X-Ray Undulator (SXR) - SLAC,1.03.06.06_AS Soft X-Ray Undulator Procurement and Fabrication - SLAC,1.03.06.06.03_SXR Undulator Integration and Testing,AS_SXU_MANF_1746_Tune and Calibrate Undulator - SXU_HE_17,Mechanical,,SLAC,Labor
103664,1.03,1.03.06,1.03.06.06,1.03.06.06.03,1.03.06.06.03,SXR Undulator Integration and Testing,AS_SXU_MANF_1731,Post Retrofit Checkout - SXU_REFB_H,4.0,12.0,12.0,12.0,01-07-25,01-10-25,AS_SXU_MANF_1721: FS,AS_SXU_MANF_1741: FS,SLAC,0%,52152.52152_FAC Fleet,52152_FAC Fleet,Labor,0.0d,4.0,4.0,At Completion Units,5/14/2024,5/17/2024,0,0,0,0,0,0,0,0,0,0,1.03_Accelerator Systems (AS),1.03.06_AS Soft X-Ray Undulator (SXR) - SLAC,1.03.06.06_AS Soft X-Ray Undulator Procurement and Fabrication - SLAC,1.03.06.06.03_SXR Undulator Integration and Testing,AS_SXU_MANF_1731_Post Retrofit Checkout - SXU_REFB_H,Support System,,SLAC,Labor
103665,1.03,1.03.06,1.03.06.06,1.03.06.06.03,1.03.06.06.03,SXR Undulator Integration and Testing,AS_SXU_MANF_1711,Receiving Inspection - Magnet Modules  - SXU_REFB_H,3.0,4.0,4.0,4.0,11-26-24,12-02-24,AS_SXU_MANF_1701: FS,"AS_SXU_MANF_1721: FS, AS_LBL_PROD_735: FS",SLAC,0%,52198.52198_METSMANF (METSD Manufacturing),52198_METSMANF (METSD Manufacturing),Labor,0.0d,3.0,3.0,At Completion Units,4/18/2024,4/22/2024,0,0,0,0,0,0,0,0,0,0,1.03_Accelerator Systems (AS),1.03.06_AS Soft X-Ray Undulator (SXR) - SLAC,1.03.06.06_AS Soft X-Ray Undulator Procurement and Fabrication - SLAC,1.03.06.06.03_SXR Undulator Integration and Testing,AS_SXU_MANF_1711_Receiving Inspection - Magnet Modules  - SXU_REFB_H,Manufacturing,,SLAC,Labor
103666,1.03,1.03.06,1.03.06.06,1.03.06.06.03,1.03.06.06.03,SXR Undulator Integration and Testing,AS_SXU_MANF_1711,Receiving Inspection - Magnet Modules  - SXU_REFB_H,3.0,12.0,12.0,12.0,11-26-24,12-02-24,AS_SXU_MANF_1701: FS,"AS_SXU_MANF_1721: FS, AS_LBL_PROD_735: FS",SLAC,0%,52191.52191_METSMET Metrology,52191_METSMET Metrology,Labor,0.0d,3.0,3.0,At Completion Units,4/18/2024,4/22/2024,0,0,0,0,0,0,0,0,0,0,1.03_Accelerator Systems (AS),1.03.06_AS Soft X-Ray Undulator (SXR) - SLAC,1.03.06.06_AS Soft X-Ray Undulator Procurement and Fabrication - SLAC,1.03.06.06.03_SXR Undulator Integration and Testing,AS_SXU_MANF_1711_Receiving Inspection - Magnet Modules  - SXU_REFB_H,Metrology,,SLAC,Labor
103667,1.03,1.03.06,1.03.06.06,1.03.06.06.03,1.03.06.06.03,SXR Undulator Integration and Testing,AS_SXU_MANF_1731,Post Retrofit Checkout - SXU_REFB_H,4.0,32.0,32.0,32.0,01-07-25,01-10-25,AS_SXU_MANF_1721: FS,AS_SXU_MANF_1741: FS,SLAC,0%,52213.52213_EEDHW (Electronics & Engineering Div - HW Engr),52213_EEDHW (Electronics & Engineering Div - HW Engr),Labor,0.0d,4.0,4.0,At Completion Units,5/14/2024,5/17/2024,0,0,0,0,0,0,0,0,0,0,1.03_Accelerator Systems (AS),1.03.06_AS Soft X-Ray Undulator (SXR) - SLAC,1.03.06.06_AS Soft X-Ray Undulator Procurement and Fabrication - SLAC,1.03.06.06.03_SXR Undulator Integration and Testing,AS_SXU_MANF_1731_Post Retrofit Checkout - SXU_REFB_H,Electrical,,SLAC,Labor
103668,1.03,1.03.06,1.03.06.06,1.03.06.06.03,1.03.06.06.03,SXR Undulator Integration and Testing,AS_SXU_MANF_1731,Post Retrofit Checkout - SXU_REFB_H,4.0,32.0,32.0,32.0,01-07-25,01-10-25,AS_SXU_MANF_1721: FS,AS_SXU_MANF_1741: FS,SLAC,0%,52191.52191_METSMET Metrology,52191_METSMET Metrology,Labor,0.0d,4.0,4.0,At Completion Units,5/14/2024,5/17/2024,0,0,0,0,0,0,0,0,0,0,1.03_Accelerator Systems (AS),1.03.06_AS Soft X-Ray Undulator (SXR) - SLAC,1.03.06.06_AS Soft X-Ray Undulator Procurement and Fabrication - SLAC,1.03.06.06.03_SXR Undulator Integration and Testing,AS_SXU_MANF_1731_Post Retrofit Checkout - SXU_REFB_H,Metrology,,SLAC,Labor
103669,1.03,1.03.06,1.03.06.06,1.03.06.06.03,1.03.06.06.03,SXR Undulator Integration and Testing,AS_SXU_MANF_1731,Post Retrofit Checkout - SXU_REFB_H,4.0,16.0,16.0,16.0,01-07-25,01-10-25,AS_SXU_MANF_1721: FS,AS_SXU_MANF_1741: FS,SLAC,0%,0106.0106_Staff Scientist,0106_Staff Scientist,Labor,0.0d,4.0,4.0,At Completion Units,5/14/2024,5/17/2024,0,0,0,0,0,0,0,0,0,0,1.03_Accelerator Systems (AS),1.03.06_AS Soft X-Ray Undulator (SXR) - SLAC,1.03.06.06_AS Soft X-Ray Undulator Procurement and Fabrication - SLAC,1.03.06.06.03_SXR Undulator Integration and Testing,AS_SXU_MANF_1731_Post Retrofit Checkout - SXU_REFB_H,Scientist,,SLAC,Labor
103670,1.03,1.03.06,1.03.06.06,1.03.06.06.03,1.03.06.06.03,SXR Undulator Integration and Testing,AS_SXU_MANF_1731,Post Retrofit Checkout - SXU_REFB_H,4.0,4.0,4.0,4.0,01-07-25,01-10-25,AS_SXU_MANF_1721: FS,AS_SXU_MANF_1741: FS,SLAC,0%,52169.52169_METS Mechanical Engineer,52169_METS Mechanical Engineer,Labor,0.0d,4.0,4.0,At Completion Units,5/14/2024,5/17/2024,0,0,0,0,0,0,0,0,0,0,1.03_Accelerator Systems (AS),1.03.06_AS Soft X-Ray Undulator (SXR) - SLAC,1.03.06.06_AS Soft X-Ray Undulator Procurement and Fabrication - SLAC,1.03.06.06.03_SXR Undulator Integration and Testing,AS_SXU_MANF_1731_Post Retrofit Checkout - SXU_REFB_H,Mechanical,,SLAC,Labor
103671,1.03,1.03.06,1.03.06.06,1.03.06.06.03,1.03.06.06.03,SXR Undulator Integration and Testing,AS_SXU_MANF_1721,Retrofit SXU Magnetic System SXU_REFB_H,15.0,280.0,280.0,280.0,12-03-24,01-06-25,"AS_SXU_MANF_1711: FS, AS_SXU_INST_1700: FS",AS_SXU_MANF_1731: FS,SLAC,0%,52198.52198_METSMANF (METSD Manufacturing),52198_METSMANF (METSD Manufacturing),Labor,0.0d,15.0,15.0,At Completion Units,4/23/2024,5/13/2024,0,0,0,0,0,0,0,0,0,0,1.03_Accelerator Systems (AS),1.03.06_AS Soft X-Ray Undulator (SXR) - SLAC,1.03.06.06_AS Soft X-Ray Undulator Procurement and Fabrication - SLAC,1.03.06.06.03_SXR Undulator Integration and Testing,AS_SXU_MANF_1721_Retrofit SXU Magnetic System SXU_REFB_H,Manufacturing,,SLAC,Labor
103672,1.03,1.03.06,1.03.06.06,1.03.06.06.03,1.03.06.06.03,SXR Undulator Integration and Testing,AS_SXU_MANF_1721,Retrofit SXU Magnetic System SXU_REFB_H,15.0,24.0,24.0,24.0,12-03-24,01-06-25,"AS_SXU_MANF_1711: FS, AS_SXU_INST_1700: FS",AS_SXU_MANF_1731: FS,SLAC,0%,52213.52213_EEDHW (Electronics & Engineering Div - HW Engr),52213_EEDHW (Electronics & Engineering Div - HW Engr),Labor,0.0d,15.0,15.0,At Completion Units,4/23/2024,5/13/2024,0,0,0,0,0,0,0,0,0,0,1.03_Accelerator Systems (AS),1.03.06_AS Soft X-Ray Undulator (SXR) - SLAC,1.03.06.06_AS Soft X-Ray Undulator Procurement and Fabrication - SLAC,1.03.06.06.03_SXR Undulator Integration and Testing,AS_SXU_MANF_1721_Retrofit SXU Magnetic System SXU_REFB_H,Electrical,,SLAC,Labor
103673,1.03,1.03.06,1.03.06.06,1.03.06.06.03,1.03.06.06.03,SXR Undulator Integration and Testing,AS_SXU_MANF_1721,Retrofit SXU Magnetic System SXU_REFB_H,15.0,12.0,12.0,12.0,12-03-24,01-06-25,"AS_SXU_MANF_1711: FS, AS_SXU_INST_1700: FS",AS_SXU_MANF_1731: FS,SLAC,0%,52169.52169_METS Mechanical Engineer,52169_METS Mechanical Engineer,Labor,0.0d,15.0,15.0,At Completion Units,4/23/2024,5/13/2024,0,0,0,0,0,0,0,0,0,0,1.03_Accelerator Systems (AS),1.03.06_AS Soft X-Ray Undulator (SXR) - SLAC,1.03.06.06_AS Soft X-Ray Undulator Procurement and Fabrication - SLAC,1.03.06.06.03_SXR Undulator Integration and Testing,AS_SXU_MANF_1721_Retrofit SXU Magnetic System SXU_REFB_H,Mechanical,,SLAC,Labor
103674,1.03,1.03.06,1.03.06.06,1.03.06.06.03,1.03.06.06.03,SXR Undulator Integration and Testing,AS_SXU_MANF_1711,Receiving Inspection - Magnet Modules  - SXU_REFB_H,3.0,8.0,8.0,8.0,11-26-24,12-02-24,AS_SXU_MANF_1701: FS,"AS_SXU_MANF_1721: FS, AS_LBL_PROD_735: FS",SLAC,0%,52169.52169_METS Mechanical Engineer,52169_METS Mechanical Engineer,Labor,0.0d,3.0,3.0,At Completion Units,4/18/2024,4/22/2024,0,0,0,0,0,0,0,0,0,0,1.03_Accelerator Systems (AS),1.03.06_AS Soft X-Ray Undulator (SXR) - SLAC,1.03.06.06_AS Soft X-Ray Undulator Procurement and Fabrication - SLAC,1.03.06.06.03_SXR Undulator Integration and Testing,AS_SXU_MANF_1711_Receiving Inspection - Magnet Modules  - SXU_REFB_H,Mechanical,,SLAC,Labor
103675,1.03,1.03.06,1.03.06.06,1.03.06.06.03,1.03.06.06.03,SXR Undulator Integration and Testing,AS_SXU_MANF_1621,Retrofit SXU Magnetic System SXU_REFB_G,15.0,48.0,48.0,48.0,10-23-24,11-12-24,"AS_SXU_INST_1600: FS, AS_SXU_MANF_1611: FS",AS_SXU_MANF_1631: FS,SLAC,0%,52191.52191_METSMET Metrology,52191_METSMET Metrology,Labor,0.0d,15.0,15.0,At Completion Units,3/15/2024,4/4/2024,0,0,0,0,0,0,0,0,0,0,1.03_Accelerator Systems (AS),1.03.06_AS Soft X-Ray Undulator (SXR) - SLAC,1.03.06.06_AS Soft X-Ray Undulator Procurement and Fabrication - SLAC,1.03.06.06.03_SXR Undulator Integration and Testing,AS_SXU_MANF_1621_Retrofit SXU Magnetic System SXU_REFB_G,Metrology,,SLAC,Labor
103676,1.03,1.03.06,1.03.06.06,1.03.06.06.03,1.03.06.06.03,SXR Undulator Integration and Testing,AS_SXU_MANF_1646,Tune and Calibrate Undulator - SXU_HE_16,15.0,32.0,32.0,32.0,11-19-24,12-11-24,"AS_SXU_MANF_1641: FS, AS_SXU_MANF_1546: FS","AS_SXU_MANF_1656: FS, AS_SXU_MANF_1746: FS",SLAC,0%,52213.52213_EEDHW (Electronics & Engineering Div - HW Engr),52213_EEDHW (Electronics & Engineering Div - HW Engr),Labor,0.0d,15.0,15.0,At Completion Units,4/11/2024,5/1/2024,0,0,0,0,0,0,0,0,0,0,1.03_Accelerator Systems (AS),1.03.06_AS Soft X-Ray Undulator (SXR) - SLAC,1.03.06.06_AS Soft X-Ray Undulator Procurement and Fabrication - SLAC,1.03.06.06.03_SXR Undulator Integration and Testing,AS_SXU_MANF_1646_Tune and Calibrate Undulator - SXU_HE_16,Electrical,,SLAC,Labor
103677,1.03,1.03.06,1.03.06.06,1.03.06.06.03,1.03.06.06.03,SXR Undulator Integration and Testing,AS_SXU_MANF_1646,Tune and Calibrate Undulator - SXU_HE_16,15.0,48.0,48.0,48.0,11-19-24,12-11-24,"AS_SXU_MANF_1641: FS, AS_SXU_MANF_1546: FS","AS_SXU_MANF_1656: FS, AS_SXU_MANF_1746: FS",SLAC,0%,52198.52198_METSMANF (METSD Manufacturing),52198_METSMANF (METSD Manufacturing),Labor,0.0d,15.0,15.0,At Completion Units,4/11/2024,5/1/2024,0,0,0,0,0,0,0,0,0,0,1.03_Accelerator Systems (AS),1.03.06_AS Soft X-Ray Undulator (SXR) - SLAC,1.03.06.06_AS Soft X-Ray Undulator Procurement and Fabrication - SLAC,1.03.06.06.03_SXR Undulator Integration and Testing,AS_SXU_MANF_1646_Tune and Calibrate Undulator - SXU_HE_16,Manufacturing,,SLAC,Labor
103678,1.03,1.03.06,1.03.06.06,1.03.06.06.03,1.03.06.06.03,SXR Undulator Integration and Testing,AS_SXU_MANF_1646,Tune and Calibrate Undulator - SXU_HE_16,15.0,394.0,394.0,394.0,11-19-24,12-11-24,"AS_SXU_MANF_1641: FS, AS_SXU_MANF_1546: FS","AS_SXU_MANF_1656: FS, AS_SXU_MANF_1746: FS",SLAC,0%,52191.52191_METSMET Metrology,52191_METSMET Metrology,Labor,0.0d,15.0,15.0,At Completion Units,4/11/2024,5/1/2024,0,0,0,0,0,0,0,0,0,0,1.03_Accelerator Systems (AS),1.03.06_AS Soft X-Ray Undulator (SXR) - SLAC,1.03.06.06_AS Soft X-Ray Undulator Procurement and Fabrication - SLAC,1.03.06.06.03_SXR Undulator Integration and Testing,AS_SXU_MANF_1646_Tune and Calibrate Undulator - SXU_HE_16,Metrology,,SLAC,Labor
103679,1.03,1.03.06,1.03.06.06,1.03.06.06.03,1.03.06.06.03,SXR Undulator Integration and Testing,AS_SXU_MANF_1646,Tune and Calibrate Undulator - SXU_HE_16,15.0,32.0,32.0,32.0,11-19-24,12-11-24,"AS_SXU_MANF_1641: FS, AS_SXU_MANF_1546: FS","AS_SXU_MANF_1656: FS, AS_SXU_MANF_1746: FS",SLAC,0%,0106.0106_Staff Scientist,0106_Staff Scientist,Labor,0.0d,15.0,15.0,At Completion Units,4/11/2024,5/1/2024,0,0,0,0,0,0,0,0,0,0,1.03_Accelerator Systems (AS),1.03.06_AS Soft X-Ray Undulator (SXR) - SLAC,1.03.06.06_AS Soft X-Ray Undulator Procurement and Fabrication - SLAC,1.03.06.06.03_SXR Undulator Integration and Testing,AS_SXU_MANF_1646_Tune and Calibrate Undulator - SXU_HE_16,Scientist,,SLAC,Labor
103680,1.03,1.03.06,1.03.06.06,1.03.06.06.03,1.03.06.06.03,SXR Undulator Integration and Testing,AS_SXU_MANF_1646,Tune and Calibrate Undulator - SXU_HE_16,15.0,16.0,16.0,16.0,11-19-24,12-11-24,"AS_SXU_MANF_1641: FS, AS_SXU_MANF_1546: FS","AS_SXU_MANF_1656: FS, AS_SXU_MANF_1746: FS",SLAC,0%,52169.52169_METS Mechanical Engineer,52169_METS Mechanical Engineer,Labor,0.0d,15.0,15.0,At Completion Units,4/11/2024,5/1/2024,0,0,0,0,0,0,0,0,0,0,1.03_Accelerator Systems (AS),1.03.06_AS Soft X-Ray Undulator (SXR) - SLAC,1.03.06.06_AS Soft X-Ray Undulator Procurement and Fabrication - SLAC,1.03.06.06.03_SXR Undulator Integration and Testing,AS_SXU_MANF_1646_Tune and Calibrate Undulator - SXU_HE_16,Mechanical,,SLAC,Labor
103681,1.03,1.03.06,1.03.06.06,1.03.06.06.03,1.03.06.06.03,SXR Undulator Integration and Testing,AS_SXU_MANF_1631,Post Retrofit Checkout - SXU_REFB_G,4.0,12.0,12.0,12.0,11-13-24,11-18-24,AS_SXU_MANF_1621: FS,AS_SXU_MANF_1641: FS,SLAC,0%,52152.52152_FAC Fleet,52152_FAC Fleet,Labor,0.0d,4.0,4.0,At Completion Units,4/5/2024,4/10/2024,0,0,0,0,0,0,0,0,0,0,1.03_Accelerator Systems (AS),1.03.06_AS Soft X-Ray Undulator (SXR) - SLAC,1.03.06.06_AS Soft X-Ray Undulator Procurement and Fabrication - SLAC,1.03.06.06.03_SXR Undulator Integration and Testing,AS_SXU_MANF_1631_Post Retrofit Checkout - SXU_REFB_G,Support System,,SLAC,Labor
103682,1.03,1.03.06,1.03.06.06,1.03.06.06.03,1.03.06.06.03,SXR Undulator Integration and Testing,AS_SXU_MANF_1611,Receiving Inspection - Magnet Modules - SXU_REFB_G,3.0,4.0,4.0,4.0,10-18-24,10-22-24,AS_SXU_MANF_1601: FS,"AS_LBL_PROD_715: FS, AS_SXU_MANF_1621: FS",SLAC,0%,52198.52198_METSMANF (METSD Manufacturing),52198_METSMANF (METSD Manufacturing),Labor,0.0d,3.0,3.0,At Completion Units,3/12/2024,3/14/2024,0,0,0,0,0,0,0,0,0,0,1.03_Accelerator Systems (AS),1.03.06_AS Soft X-Ray Undulator (SXR) - SLAC,1.03.06.06_AS Soft X-Ray Undulator Procurement and Fabrication - SLAC,1.03.06.06.03_SXR Undulator Integration and Testing,AS_SXU_MANF_1611_Receiving Inspection - Magnet Modules - SXU_REFB_G,Manufacturing,,SLAC,Labor
103683,1.03,1.03.06,1.03.06.06,1.03.06.06.03,1.03.06.06.03,SXR Undulator Integration and Testing,AS_SXU_MANF_1611,Receiving Inspection - Magnet Modules - SXU_REFB_G,3.0,12.0,12.0,12.0,10-18-24,10-22-24,AS_SXU_MANF_1601: FS,"AS_LBL_PROD_715: FS, AS_SXU_MANF_1621: FS",SLAC,0%,52191.52191_METSMET Metrology,52191_METSMET Metrology,Labor,0.0d,3.0,3.0,At Completion Units,3/12/2024,3/14/2024,0,0,0,0,0,0,0,0,0,0,1.03_Accelerator Systems (AS),1.03.06_AS Soft X-Ray Undulator (SXR) - SLAC,1.03.06.06_AS Soft X-Ray Undulator Procurement and Fabrication - SLAC,1.03.06.06.03_SXR Undulator Integration and Testing,AS_SXU_MANF_1611_Receiving Inspection - Magnet Modules - SXU_REFB_G,Metrology,,SLAC,Labor
103684,1.03,1.03.06,1.03.06.06,1.03.06.06.03,1.03.06.06.03,SXR Undulator Integration and Testing,AS_SXU_MANF_1631,Post Retrofit Checkout - SXU_REFB_G,4.0,32.0,32.0,32.0,11-13-24,11-18-24,AS_SXU_MANF_1621: FS,AS_SXU_MANF_1641: FS,SLAC,0%,52213.52213_EEDHW (Electronics & Engineering Div - HW Engr),52213_EEDHW (Electronics & Engineering Div - HW Engr),Labor,0.0d,4.0,4.0,At Completion Units,4/5/2024,4/10/2024,0,0,0,0,0,0,0,0,0,0,1.03_Accelerator Systems (AS),1.03.06_AS Soft X-Ray Undulator (SXR) - SLAC,1.03.06.06_AS Soft X-Ray Undulator Procurement and Fabrication - SLAC,1.03.06.06.03_SXR Undulator Integration and Testing,AS_SXU_MANF_1631_Post Retrofit Checkout - SXU_REFB_G,Electrical,,SLAC,Labor
103685,1.03,1.03.06,1.03.06.06,1.03.06.06.03,1.03.06.06.03,SXR Undulator Integration and Testing,AS_SXU_MANF_1631,Post Retrofit Checkout - SXU_REFB_G,4.0,32.0,32.0,32.0,11-13-24,11-18-24,AS_SXU_MANF_1621: FS,AS_SXU_MANF_1641: FS,SLAC,0%,52191.52191_METSMET Metrology,52191_METSMET Metrology,Labor,0.0d,4.0,4.0,At Completion Units,4/5/2024,4/10/2024,0,0,0,0,0,0,0,0,0,0,1.03_Accelerator Systems (AS),1.03.06_AS Soft X-Ray Undulator (SXR) - SLAC,1.03.06.06_AS Soft X-Ray Undulator Procurement and Fabrication - SLAC,1.03.06.06.03_SXR Undulator Integration and Testing,AS_SXU_MANF_1631_Post Retrofit Checkout - SXU_REFB_G,Metrology,,SLAC,Labor
103686,1.03,1.03.06,1.03.06.06,1.03.06.06.03,1.03.06.06.03,SXR Undulator Integration and Testing,AS_SXU_MANF_1631,Post Retrofit Checkout - SXU_REFB_G,4.0,16.0,16.0,16.0,11-13-24,11-18-24,AS_SXU_MANF_1621: FS,AS_SXU_MANF_1641: FS,SLAC,0%,0106.0106_Staff Scientist,0106_Staff Scientist,Labor,0.0d,4.0,4.0,At Completion Units,4/5/2024,4/10/2024,0,0,0,0,0,0,0,0,0,0,1.03_Accelerator Systems (AS),1.03.06_AS Soft X-Ray Undulator (SXR) - SLAC,1.03.06.06_AS Soft X-Ray Undulator Procurement and Fabrication - SLAC,1.03.06.06.03_SXR Undulator Integration and Testing,AS_SXU_MANF_1631_Post Retrofit Checkout - SXU_REFB_G,Scientist,,SLAC,Labor
103687,1.03,1.03.06,1.03.06.06,1.03.06.06.03,1.03.06.06.03,SXR Undulator Integration and Testing,AS_SXU_MANF_1631,Post Retrofit Checkout - SXU_REFB_G,4.0,4.0,4.0,4.0,11-13-24,11-18-24,AS_SXU_MANF_1621: FS,AS_SXU_MANF_1641: FS,SLAC,0%,52169.52169_METS Mechanical Engineer,52169_METS Mechanical Engineer,Labor,0.0d,4.0,4.0,At Completion Units,4/5/2024,4/10/2024,0,0,0,0,0,0,0,0,0,0,1.03_Accelerator Systems (AS),1.03.06_AS Soft X-Ray Undulator (SXR) - SLAC,1.03.06.06_AS Soft X-Ray Undulator Procurement and Fabrication - SLAC,1.03.06.06.03_SXR Undulator Integration and Testing,AS_SXU_MANF_1631_Post Retrofit Checkout - SXU_REFB_G,Mechanical,,SLAC,Labor
103688,1.03,1.03.06,1.03.06.06,1.03.06.06.03,1.03.06.06.03,SXR Undulator Integration and Testing,AS_SXU_MANF_1621,Retrofit SXU Magnetic System SXU_REFB_G,15.0,280.0,280.0,280.0,10-23-24,11-12-24,"AS_SXU_INST_1600: FS, AS_SXU_MANF_1611: FS",AS_SXU_MANF_1631: FS,SLAC,0%,52198.52198_METSMANF (METSD Manufacturing),52198_METSMANF (METSD Manufacturing),Labor,0.0d,15.0,15.0,At Completion Units,3/15/2024,4/4/2024,0,0,0,0,0,0,0,0,0,0,1.03_Accelerator Systems (AS),1.03.06_AS Soft X-Ray Undulator (SXR) - SLAC,1.03.06.06_AS Soft X-Ray Undulator Procurement and Fabrication - SLAC,1.03.06.06.03_SXR Undulator Integration and Testing,AS_SXU_MANF_1621_Retrofit SXU Magnetic System SXU_REFB_G,Manufacturing,,SLAC,Labor
103689,1.03,1.03.06,1.03.06.06,1.03.06.06.03,1.03.06.06.03,SXR Undulator Integration and Testing,AS_SXU_MANF_1621,Retrofit SXU Magnetic System SXU_REFB_G,15.0,24.0,24.0,24.0,10-23-24,11-12-24,"AS_SXU_INST_1600: FS, AS_SXU_MANF_1611: FS",AS_SXU_MANF_1631: FS,SLAC,0%,52213.52213_EEDHW (Electronics & Engineering Div - HW Engr),52213_EEDHW (Electronics & Engineering Div - HW Engr),Labor,0.0d,15.0,15.0,At Completion Units,3/15/2024,4/4/2024,0,0,0,0,0,0,0,0,0,0,1.03_Accelerator Systems (AS),1.03.06_AS Soft X-Ray Undulator (SXR) - SLAC,1.03.06.06_AS Soft X-Ray Undulator Procurement and Fabrication - SLAC,1.03.06.06.03_SXR Undulator Integration and Testing,AS_SXU_MANF_1621_Retrofit SXU Magnetic System SXU_REFB_G,Electrical,,SLAC,Labor
103690,1.03,1.03.06,1.03.06.06,1.03.06.06.03,1.03.06.06.03,SXR Undulator Integration and Testing,AS_SXU_MANF_1621,Retrofit SXU Magnetic System SXU_REFB_G,15.0,12.0,12.0,12.0,10-23-24,11-12-24,"AS_SXU_INST_1600: FS, AS_SXU_MANF_1611: FS",AS_SXU_MANF_1631: FS,SLAC,0%,52169.52169_METS Mechanical Engineer,52169_METS Mechanical Engineer,Labor,0.0d,15.0,15.0,At Completion Units,3/15/2024,4/4/2024,0,0,0,0,0,0,0,0,0,0,1.03_Accelerator Systems (AS),1.03.06_AS Soft X-Ray Undulator (SXR) - SLAC,1.03.06.06_AS Soft X-Ray Undulator Procurement and Fabrication - SLAC,1.03.06.06.03_SXR Undulator Integration and Testing,AS_SXU_MANF_1621_Retrofit SXU Magnetic System SXU_REFB_G,Mechanical,,SLAC,Labor
103691,1.03,1.03.06,1.03.06.06,1.03.06.06.03,1.03.06.06.03,SXR Undulator Integration and Testing,AS_SXU_MANF_1611,Receiving Inspection - Magnet Modules - SXU_REFB_G,3.0,8.0,8.0,8.0,10-18-24,10-22-24,AS_SXU_MANF_1601: FS,"AS_LBL_PROD_715: FS, AS_SXU_MANF_1621: FS",SLAC,0%,52169.52169_METS Mechanical Engineer,52169_METS Mechanical Engineer,Labor,0.0d,3.0,3.0,At Completion Units,3/12/2024,3/14/2024,0,0,0,0,0,0,0,0,0,0,1.03_Accelerator Systems (AS),1.03.06_AS Soft X-Ray Undulator (SXR) - SLAC,1.03.06.06_AS Soft X-Ray Undulator Procurement and Fabrication - SLAC,1.03.06.06.03_SXR Undulator Integration and Testing,AS_SXU_MANF_1611_Receiving Inspection - Magnet Modules - SXU_REFB_G,Mechanical,,SLAC,Labor
103692,1.03,1.03.06,1.03.06.06,1.03.06.06.03,1.03.06.06.03,SXR Undulator Integration and Testing,AS_SXU_MANF_1521,Retrofit SXU Magnetic System SXU_REFB_F,15.0,48.0,48.0,48.0,09-16-24,10-04-24,"AS_SXU_MANF_1511: FS, AS_SXU_INST_1500: FS",AS_SXU_MANF_1531: FS,SLAC,0%,52191.52191_METSMET Metrology,52191_METSMET Metrology,Labor,0.0d,15.0,15.0,At Completion Units,2/6/2024,2/27/2024,0,0,0,0,0,0,0,0,0,0,1.03_Accelerator Systems (AS),1.03.06_AS Soft X-Ray Undulator (SXR) - SLAC,1.03.06.06_AS Soft X-Ray Undulator Procurement and Fabrication - SLAC,1.03.06.06.03_SXR Undulator Integration and Testing,AS_SXU_MANF_1521_Retrofit SXU Magnetic System SXU_REFB_F,Metrology,,SLAC,Labor
103693,1.03,1.03.06,1.03.06.06,1.03.06.06.03,1.03.06.06.03,SXR Undulator Integration and Testing,AS_SXU_MANF_1546,Tune and Calibrate Undulator - SXU_HE_15,15.0,32.0,32.0,32.0,10-11-24,10-31-24,"AS_SXU_MANF_1541: FS, AS_SXU_MANF_1446: FS","AS_SXU_MANF_1556: FS, AS_SXU_MANF_1646: FS",SLAC,0%,52213.52213_EEDHW (Electronics & Engineering Div - HW Engr),52213_EEDHW (Electronics & Engineering Div - HW Engr),Labor,0.0d,15.0,15.0,At Completion Units,3/5/2024,3/25/2024,0,0,0,0,0,0,0,0,0,0,1.03_Accelerator Systems (AS),1.03.06_AS Soft X-Ray Undulator (SXR) - SLAC,1.03.06.06_AS Soft X-Ray Undulator Procurement and Fabrication - SLAC,1.03.06.06.03_SXR Undulator Integration and Testing,AS_SXU_MANF_1546_Tune and Calibrate Undulator - SXU_HE_15,Electrical,,SLAC,Labor
103694,1.03,1.03.06,1.03.06.06,1.03.06.06.03,1.03.06.06.03,SXR Undulator Integration and Testing,AS_SXU_MANF_1546,Tune and Calibrate Undulator - SXU_HE_15,15.0,48.0,48.0,48.0,10-11-24,10-31-24,"AS_SXU_MANF_1541: FS, AS_SXU_MANF_1446: FS","AS_SXU_MANF_1556: FS, AS_SXU_MANF_1646: FS",SLAC,0%,52198.52198_METSMANF (METSD Manufacturing),52198_METSMANF (METSD Manufacturing),Labor,0.0d,15.0,15.0,At Completion Units,3/5/2024,3/25/2024,0,0,0,0,0,0,0,0,0,0,1.03_Accelerator Systems (AS),1.03.06_AS Soft X-Ray Undulator (SXR) - SLAC,1.03.06.06_AS Soft X-Ray Undulator Procurement and Fabrication - SLAC,1.03.06.06.03_SXR Undulator Integration and Testing,AS_SXU_MANF_1546_Tune and Calibrate Undulator - SXU_HE_15,Manufacturing,,SLAC,Labor
103695,1.03,1.03.06,1.03.06.06,1.03.06.06.03,1.03.06.06.03,SXR Undulator Integration and Testing,AS_SXU_MANF_1546,Tune and Calibrate Undulator - SXU_HE_15,15.0,394.0,394.0,394.0,10-11-24,10-31-24,"AS_SXU_MANF_1541: FS, AS_SXU_MANF_1446: FS","AS_SXU_MANF_1556: FS, AS_SXU_MANF_1646: FS",SLAC,0%,52191.52191_METSMET Metrology,52191_METSMET Metrology,Labor,0.0d,15.0,15.0,At Completion Units,3/5/2024,3/25/2024,0,0,0,0,0,0,0,0,0,0,1.03_Accelerator Systems (AS),1.03.06_AS Soft X-Ray Undulator (SXR) - SLAC,1.03.06.06_AS Soft X-Ray Undulator Procurement and Fabrication - SLAC,1.03.06.06.03_SXR Undulator Integration and Testing,AS_SXU_MANF_1546_Tune and Calibrate Undulator - SXU_HE_15,Metrology,,SLAC,Labor
103696,1.03,1.03.06,1.03.06.06,1.03.06.06.03,1.03.06.06.03,SXR Undulator Integration and Testing,AS_SXU_MANF_1546,Tune and Calibrate Undulator - SXU_HE_15,15.0,32.0,32.0,32.0,10-11-24,10-31-24,"AS_SXU_MANF_1541: FS, AS_SXU_MANF_1446: FS","AS_SXU_MANF_1556: FS, AS_SXU_MANF_1646: FS",SLAC,0%,0106.0106_Staff Scientist,0106_Staff Scientist,Labor,0.0d,15.0,15.0,At Completion Units,3/5/2024,3/25/2024,0,0,0,0,0,0,0,0,0,0,1.03_Accelerator Systems (AS),1.03.06_AS Soft X-Ray Undulator (SXR) - SLAC,1.03.06.06_AS Soft X-Ray Undulator Procurement and Fabrication - SLAC,1.03.06.06.03_SXR Undulator Integration and Testing,AS_SXU_MANF_1546_Tune and Calibrate Undulator - SXU_HE_15,Scientist,,SLAC,Labor
103697,1.03,1.03.06,1.03.06.06,1.03.06.06.03,1.03.06.06.03,SXR Undulator Integration and Testing,AS_SXU_MANF_1546,Tune and Calibrate Undulator - SXU_HE_15,15.0,16.0,16.0,16.0,10-11-24,10-31-24,"AS_SXU_MANF_1541: FS, AS_SXU_MANF_1446: FS","AS_SXU_MANF_1556: FS, AS_SXU_MANF_1646: FS",SLAC,0%,52169.52169_METS Mechanical Engineer,52169_METS Mechanical Engineer,Labor,0.0d,15.0,15.0,At Completion Units,3/5/2024,3/25/2024,0,0,0,0,0,0,0,0,0,0,1.03_Accelerator Systems (AS),1.03.06_AS Soft X-Ray Undulator (SXR) - SLAC,1.03.06.06_AS Soft X-Ray Undulator Procurement and Fabrication - SLAC,1.03.06.06.03_SXR Undulator Integration and Testing,AS_SXU_MANF_1546_Tune and Calibrate Undulator - SXU_HE_15,Mechanical,,SLAC,Labor
103698,1.03,1.03.06,1.03.06.06,1.03.06.06.03,1.03.06.06.03,SXR Undulator Integration and Testing,AS_SXU_MANF_1531,Post Retrofit Checkout - SXU_REFB_F,4.0,12.0,12.0,12.0,10-07-24,10-10-24,AS_SXU_MANF_1521: FS,AS_SXU_MANF_1541: FS,SLAC,0%,52152.52152_FAC Fleet,52152_FAC Fleet,Labor,0.0d,4.0,4.0,At Completion Units,2/28/2024,3/4/2024,0,0,0,0,0,0,0,0,0,0,1.03_Accelerator Systems (AS),1.03.06_AS Soft X-Ray Undulator (SXR) - SLAC,1.03.06.06_AS Soft X-Ray Undulator Procurement and Fabrication - SLAC,1.03.06.06.03_SXR Undulator Integration and Testing,AS_SXU_MANF_1531_Post Retrofit Checkout - SXU_REFB_F,Support System,,SLAC,Labor
103699,1.03,1.03.06,1.03.06.06,1.03.06.06.03,1.03.06.06.03,SXR Undulator Integration and Testing,AS_SXU_MANF_1511,Receiving Inspection - Magnet Modules - SXU_REFB_F,3.0,4.0,4.0,4.0,09-11-24,09-13-24,AS_SXU_MANF_1501: FS,"AS_SXU_MANF_1521: FS, AS_LBL_PROD_695: FS",SLAC,0%,52198.52198_METSMANF (METSD Manufacturing),52198_METSMANF (METSD Manufacturing),Labor,0.0d,3.0,3.0,At Completion Units,2/1/2024,2/5/2024,0,0,0,0,0,0,0,0,0,0,1.03_Accelerator Systems (AS),1.03.06_AS Soft X-Ray Undulator (SXR) - SLAC,1.03.06.06_AS Soft X-Ray Undulator Procurement and Fabrication - SLAC,1.03.06.06.03_SXR Undulator Integration and Testing,AS_SXU_MANF_1511_Receiving Inspection - Magnet Modules - SXU_REFB_F,Manufacturing,,SLAC,Labor
103700,1.03,1.03.06,1.03.06.06,1.03.06.06.03,1.03.06.06.03,SXR Undulator Integration and Testing,AS_SXU_MANF_1511,Receiving Inspection - Magnet Modules - SXU_REFB_F,3.0,12.0,12.0,12.0,09-11-24,09-13-24,AS_SXU_MANF_1501: FS,"AS_SXU_MANF_1521: FS, AS_LBL_PROD_695: FS",SLAC,0%,52191.52191_METSMET Metrology,52191_METSMET Metrology,Labor,0.0d,3.0,3.0,At Completion Units,2/1/2024,2/5/2024,0,0,0,0,0,0,0,0,0,0,1.03_Accelerator Systems (AS),1.03.06_AS Soft X-Ray Undulator (SXR) - SLAC,1.03.06.06_AS Soft X-Ray Undulator Procurement and Fabrication - SLAC,1.03.06.06.03_SXR Undulator Integration and Testing,AS_SXU_MANF_1511_Receiving Inspection - Magnet Modules - SXU_REFB_F,Metrology,,SLAC,Labor
103701,1.03,1.03.06,1.03.06.06,1.03.06.06.03,1.03.06.06.03,SXR Undulator Integration and Testing,AS_SXU_MANF_1531,Post Retrofit Checkout - SXU_REFB_F,4.0,32.0,32.0,32.0,10-07-24,10-10-24,AS_SXU_MANF_1521: FS,AS_SXU_MANF_1541: FS,SLAC,0%,52213.52213_EEDHW (Electronics & Engineering Div - HW Engr),52213_EEDHW (Electronics & Engineering Div - HW Engr),Labor,0.0d,4.0,4.0,At Completion Units,2/28/2024,3/4/2024,0,0,0,0,0,0,0,0,0,0,1.03_Accelerator Systems (AS),1.03.06_AS Soft X-Ray Undulator (SXR) - SLAC,1.03.06.06_AS Soft X-Ray Undulator Procurement and Fabrication - SLAC,1.03.06.06.03_SXR Undulator Integration and Testing,AS_SXU_MANF_1531_Post Retrofit Checkout - SXU_REFB_F,Electrical,,SLAC,Labor
103702,1.03,1.03.06,1.03.06.06,1.03.06.06.03,1.03.06.06.03,SXR Undulator Integration and Testing,AS_SXU_MANF_1531,Post Retrofit Checkout - SXU_REFB_F,4.0,32.0,32.0,32.0,10-07-24,10-10-24,AS_SXU_MANF_1521: FS,AS_SXU_MANF_1541: FS,SLAC,0%,52191.52191_METSMET Metrology,52191_METSMET Metrology,Labor,0.0d,4.0,4.0,At Completion Units,2/28/2024,3/4/2024,0,0,0,0,0,0,0,0,0,0,1.03_Accelerator Systems (AS),1.03.06_AS Soft X-Ray Undulator (SXR) - SLAC,1.03.06.06_AS Soft X-Ray Undulator Procurement and Fabrication - SLAC,1.03.06.06.03_SXR Undulator Integration and Testing,AS_SXU_MANF_1531_Post Retrofit Checkout - SXU_REFB_F,Metrology,,SLAC,Labor
103703,1.03,1.03.06,1.03.06.06,1.03.06.06.03,1.03.06.06.03,SXR Undulator Integration and Testing,AS_SXU_MANF_1531,Post Retrofit Checkout - SXU_REFB_F,4.0,16.0,16.0,16.0,10-07-24,10-10-24,AS_SXU_MANF_1521: FS,AS_SXU_MANF_1541: FS,SLAC,0%,0106.0106_Staff Scientist,0106_Staff Scientist,Labor,0.0d,4.0,4.0,At Completion Units,2/28/2024,3/4/2024,0,0,0,0,0,0,0,0,0,0,1.03_Accelerator Systems (AS),1.03.06_AS Soft X-Ray Undulator (SXR) - SLAC,1.03.06.06_AS Soft X-Ray Undulator Procurement and Fabrication - SLAC,1.03.06.06.03_SXR Undulator Integration and Testing,AS_SXU_MANF_1531_Post Retrofit Checkout - SXU_REFB_F,Scientist,,SLAC,Labor
103704,1.03,1.03.06,1.03.06.06,1.03.06.06.03,1.03.06.06.03,SXR Undulator Integration and Testing,AS_SXU_MANF_1531,Post Retrofit Checkout - SXU_REFB_F,4.0,4.0,4.0,4.0,10-07-24,10-10-24,AS_SXU_MANF_1521: FS,AS_SXU_MANF_1541: FS,SLAC,0%,52169.52169_METS Mechanical Engineer,52169_METS Mechanical Engineer,Labor,0.0d,4.0,4.0,At Completion Units,2/28/2024,3/4/2024,0,0,0,0,0,0,0,0,0,0,1.03_Accelerator Systems (AS),1.03.06_AS Soft X-Ray Undulator (SXR) - SLAC,1.03.06.06_AS Soft X-Ray Undulator Procurement and Fabrication - SLAC,1.03.06.06.03_SXR Undulator Integration and Testing,AS_SXU_MANF_1531_Post Retrofit Checkout - SXU_REFB_F,Mechanical,,SLAC,Labor
103705,1.03,1.03.06,1.03.06.06,1.03.06.06.03,1.03.06.06.03,SXR Undulator Integration and Testing,AS_SXU_MANF_1521,Retrofit SXU Magnetic System SXU_REFB_F,15.0,280.0,280.0,280.0,09-16-24,10-04-24,"AS_SXU_MANF_1511: FS, AS_SXU_INST_1500: FS",AS_SXU_MANF_1531: FS,SLAC,0%,52198.52198_METSMANF (METSD Manufacturing),52198_METSMANF (METSD Manufacturing),Labor,0.0d,15.0,15.0,At Completion Units,2/6/2024,2/27/2024,0,0,0,0,0,0,0,0,0,0,1.03_Accelerator Systems (AS),1.03.06_AS Soft X-Ray Undulator (SXR) - SLAC,1.03.06.06_AS Soft X-Ray Undulator Procurement and Fabrication - SLAC,1.03.06.06.03_SXR Undulator Integration and Testing,AS_SXU_MANF_1521_Retrofit SXU Magnetic System SXU_REFB_F,Manufacturing,,SLAC,Labor
103706,1.03,1.03.06,1.03.06.06,1.03.06.06.03,1.03.06.06.03,SXR Undulator Integration and Testing,AS_SXU_MANF_1521,Retrofit SXU Magnetic System SXU_REFB_F,15.0,24.0,24.0,24.0,09-16-24,10-04-24,"AS_SXU_MANF_1511: FS, AS_SXU_INST_1500: FS",AS_SXU_MANF_1531: FS,SLAC,0%,52213.52213_EEDHW (Electronics & Engineering Div - HW Engr),52213_EEDHW (Electronics & Engineering Div - HW Engr),Labor,0.0d,15.0,15.0,At Completion Units,2/6/2024,2/27/2024,0,0,0,0,0,0,0,0,0,0,1.03_Accelerator Systems (AS),1.03.06_AS Soft X-Ray Undulator (SXR) - SLAC,1.03.06.06_AS Soft X-Ray Undulator Procurement and Fabrication - SLAC,1.03.06.06.03_SXR Undulator Integration and Testing,AS_SXU_MANF_1521_Retrofit SXU Magnetic System SXU_REFB_F,Electrical,,SLAC,Labor
103707,1.03,1.03.06,1.03.06.06,1.03.06.06.03,1.03.06.06.03,SXR Undulator Integration and Testing,AS_SXU_MANF_1521,Retrofit SXU Magnetic System SXU_REFB_F,15.0,12.0,12.0,12.0,09-16-24,10-04-24,"AS_SXU_MANF_1511: FS, AS_SXU_INST_1500: FS",AS_SXU_MANF_1531: FS,SLAC,0%,52169.52169_METS Mechanical Engineer,52169_METS Mechanical Engineer,Labor,0.0d,15.0,15.0,At Completion Units,2/6/2024,2/27/2024,0,0,0,0,0,0,0,0,0,0,1.03_Accelerator Systems (AS),1.03.06_AS Soft X-Ray Undulator (SXR) - SLAC,1.03.06.06_AS Soft X-Ray Undulator Procurement and Fabrication - SLAC,1.03.06.06.03_SXR Undulator Integration and Testing,AS_SXU_MANF_1521_Retrofit SXU Magnetic System SXU_REFB_F,Mechanical,,SLAC,Labor
103708,1.03,1.03.06,1.03.06.06,1.03.06.06.03,1.03.06.06.03,SXR Undulator Integration and Testing,AS_SXU_MANF_1511,Receiving Inspection - Magnet Modules - SXU_REFB_F,3.0,8.0,8.0,8.0,09-11-24,09-13-24,AS_SXU_MANF_1501: FS,"AS_SXU_MANF_1521: FS, AS_LBL_PROD_695: FS",SLAC,0%,52169.52169_METS Mechanical Engineer,52169_METS Mechanical Engineer,Labor,0.0d,3.0,3.0,At Completion Units,2/1/2024,2/5/2024,0,0,0,0,0,0,0,0,0,0,1.03_Accelerator Systems (AS),1.03.06_AS Soft X-Ray Undulator (SXR) - SLAC,1.03.06.06_AS Soft X-Ray Undulator Procurement and Fabrication - SLAC,1.03.06.06.03_SXR Undulator Integration and Testing,AS_SXU_MANF_1511_Receiving Inspection - Magnet Modules - SXU_REFB_F,Mechanical,,SLAC,Labor
103709,1.03,1.03.06,1.03.06.06,1.03.06.06.03,1.03.06.06.03,SXR Undulator Integration and Testing,AS_SXU_MANF_1421,Retrofit SXU Magnetic System  SXU_REFB_E,15.0,48.0,48.0,48.0,08-07-24,08-27-24,"AS_SXU_MANF_1411: FS, AS_SXU_INST_1400: FS",AS_SXU_MANF_1431: FS,SLAC,0%,52191.52191_METSMET Metrology,52191_METSMET Metrology,Labor,0.0d,15.0,15.0,At Completion Units,12/13/2023,1/18/2024,0,0,0,0,0,0,0,0,0,0,1.03_Accelerator Systems (AS),1.03.06_AS Soft X-Ray Undulator (SXR) - SLAC,1.03.06.06_AS Soft X-Ray Undulator Procurement and Fabrication - SLAC,1.03.06.06.03_SXR Undulator Integration and Testing,AS_SXU_MANF_1421_Retrofit SXU Magnetic System  SXU_REFB_E,Metrology,,SLAC,Labor
103710,1.03,1.03.06,1.03.06.06,1.03.06.06.03,1.03.06.06.03,SXR Undulator Integration and Testing,AS_SXU_MANF_1446,Tune and Calibrate Undulator - SXU_HE_14,15.0,32.0,32.0,32.0,09-18-24,10-08-24,"AS_SXU_MANF_1441: FS, AS_SXU_MANF_1346: FS","AS_SXU_MANF_1456: FS, AS_SXU_MANF_1546: FS",SLAC,0%,52213.52213_EEDHW (Electronics & Engineering Div - HW Engr),52213_EEDHW (Electronics & Engineering Div - HW Engr),Labor,0.0d,15.0,15.0,At Completion Units,2/8/2024,2/29/2024,0,0,0,0,0,0,0,0,0,0,1.03_Accelerator Systems (AS),1.03.06_AS Soft X-Ray Undulator (SXR) - SLAC,1.03.06.06_AS Soft X-Ray Undulator Procurement and Fabrication - SLAC,1.03.06.06.03_SXR Undulator Integration and Testing,AS_SXU_MANF_1446_Tune and Calibrate Undulator - SXU_HE_14,Electrical,,SLAC,Labor
103711,1.03,1.03.06,1.03.06.06,1.03.06.06.03,1.03.06.06.03,SXR Undulator Integration and Testing,AS_SXU_MANF_1446,Tune and Calibrate Undulator - SXU_HE_14,15.0,48.0,48.0,48.0,09-18-24,10-08-24,"AS_SXU_MANF_1441: FS, AS_SXU_MANF_1346: FS","AS_SXU_MANF_1456: FS, AS_SXU_MANF_1546: FS",SLAC,0%,52198.52198_METSMANF (METSD Manufacturing),52198_METSMANF (METSD Manufacturing),Labor,0.0d,15.0,15.0,At Completion Units,2/8/2024,2/29/2024,0,0,0,0,0,0,0,0,0,0,1.03_Accelerator Systems (AS),1.03.06_AS Soft X-Ray Undulator (SXR) - SLAC,1.03.06.06_AS Soft X-Ray Undulator Procurement and Fabrication - SLAC,1.03.06.06.03_SXR Undulator Integration and Testing,AS_SXU_MANF_1446_Tune and Calibrate Undulator - SXU_HE_14,Manufacturing,,SLAC,Labor
103712,1.03,1.03.06,1.03.06.06,1.03.06.06.03,1.03.06.06.03,SXR Undulator Integration and Testing,AS_SXU_MANF_1446,Tune and Calibrate Undulator - SXU_HE_14,15.0,394.0,394.0,394.0,09-18-24,10-08-24,"AS_SXU_MANF_1441: FS, AS_SXU_MANF_1346: FS","AS_SXU_MANF_1456: FS, AS_SXU_MANF_1546: FS",SLAC,0%,52191.52191_METSMET Metrology,52191_METSMET Metrology,Labor,0.0d,15.0,15.0,At Completion Units,2/8/2024,2/29/2024,0,0,0,0,0,0,0,0,0,0,1.03_Accelerator Systems (AS),1.03.06_AS Soft X-Ray Undulator (SXR) - SLAC,1.03.06.06_AS Soft X-Ray Undulator Procurement and Fabrication - SLAC,1.03.06.06.03_SXR Undulator Integration and Testing,AS_SXU_MANF_1446_Tune and Calibrate Undulator - SXU_HE_14,Metrology,,SLAC,Labor
103713,1.03,1.03.06,1.03.06.06,1.03.06.06.03,1.03.06.06.03,SXR Undulator Integration and Testing,AS_SXU_MANF_1446,Tune and Calibrate Undulator - SXU_HE_14,15.0,32.0,32.0,32.0,09-18-24,10-08-24,"AS_SXU_MANF_1441: FS, AS_SXU_MANF_1346: FS","AS_SXU_MANF_1456: FS, AS_SXU_MANF_1546: FS",SLAC,0%,0106.0106_Staff Scientist,0106_Staff Scientist,Labor,0.0d,15.0,15.0,At Completion Units,2/8/2024,2/29/2024,0,0,0,0,0,0,0,0,0,0,1.03_Accelerator Systems (AS),1.03.06_AS Soft X-Ray Undulator (SXR) - SLAC,1.03.06.06_AS Soft X-Ray Undulator Procurement and Fabrication - SLAC,1.03.06.06.03_SXR Undulator Integration and Testing,AS_SXU_MANF_1446_Tune and Calibrate Undulator - SXU_HE_14,Scientist,,SLAC,Labor
103714,1.03,1.03.06,1.03.06.06,1.03.06.06.03,1.03.06.06.03,SXR Undulator Integration and Testing,AS_SXU_MANF_1446,Tune and Calibrate Undulator - SXU_HE_14,15.0,16.0,16.0,16.0,09-18-24,10-08-24,"AS_SXU_MANF_1441: FS, AS_SXU_MANF_1346: FS","AS_SXU_MANF_1456: FS, AS_SXU_MANF_1546: FS",SLAC,0%,52169.52169_METS Mechanical Engineer,52169_METS Mechanical Engineer,Labor,0.0d,15.0,15.0,At Completion Units,2/8/2024,2/29/2024,0,0,0,0,0,0,0,0,0,0,1.03_Accelerator Systems (AS),1.03.06_AS Soft X-Ray Undulator (SXR) - SLAC,1.03.06.06_AS Soft X-Ray Undulator Procurement and Fabrication - SLAC,1.03.06.06.03_SXR Undulator Integration and Testing,AS_SXU_MANF_1446_Tune and Calibrate Undulator - SXU_HE_14,Mechanical,,SLAC,Labor
103715,1.03,1.03.06,1.03.06.06,1.03.06.06.03,1.03.06.06.03,SXR Undulator Integration and Testing,AS_SXU_MANF_1431,Post Retrofit Checkout - SXU_REFB_E,4.0,12.0,12.0,12.0,08-28-24,09-03-24,AS_SXU_MANF_1421: FS,AS_SXU_MANF_1441: FS,SLAC,0%,52152.52152_FAC Fleet,52152_FAC Fleet,Labor,0.0d,4.0,4.0,At Completion Units,1/19/2024,1/24/2024,0,0,0,0,0,0,0,0,0,0,1.03_Accelerator Systems (AS),1.03.06_AS Soft X-Ray Undulator (SXR) - SLAC,1.03.06.06_AS Soft X-Ray Undulator Procurement and Fabrication - SLAC,1.03.06.06.03_SXR Undulator Integration and Testing,AS_SXU_MANF_1431_Post Retrofit Checkout - SXU_REFB_E,Support System,,SLAC,Labor
103716,1.03,1.03.06,1.03.06.06,1.03.06.06.03,1.03.06.06.03,SXR Undulator Integration and Testing,AS_SXU_MANF_1411,Receiving Inspection - Magnet Modules - SXU_REFB_E,3.0,4.0,4.0,4.0,08-02-24,08-06-24,AS_SXU_MANF_1401: FS,"AS_SXU_MANF_1421: FS, AS_LBL_PROD_675: FS",SLAC,0%,52198.52198_METSMANF (METSD Manufacturing),52198_METSMANF (METSD Manufacturing),Labor,0.0d,3.0,3.0,At Completion Units,12/8/2023,12/12/2023,0,0,0,0,0,0,0,0,0,0,1.03_Accelerator Systems (AS),1.03.06_AS Soft X-Ray Undulator (SXR) - SLAC,1.03.06.06_AS Soft X-Ray Undulator Procurement and Fabrication - SLAC,1.03.06.06.03_SXR Undulator Integration and Testing,AS_SXU_MANF_1411_Receiving Inspection - Magnet Modules - SXU_REFB_E,Manufacturing,,SLAC,Labor
103717,1.03,1.03.06,1.03.06.06,1.03.06.06.03,1.03.06.06.03,SXR Undulator Integration and Testing,AS_SXU_MANF_1411,Receiving Inspection - Magnet Modules - SXU_REFB_E,3.0,12.0,12.0,12.0,08-02-24,08-06-24,AS_SXU_MANF_1401: FS,"AS_SXU_MANF_1421: FS, AS_LBL_PROD_675: FS",SLAC,0%,52191.52191_METSMET Metrology,52191_METSMET Metrology,Labor,0.0d,3.0,3.0,At Completion Units,12/8/2023,12/12/2023,0,0,0,0,0,0,0,0,0,0,1.03_Accelerator Systems (AS),1.03.06_AS Soft X-Ray Undulator (SXR) - SLAC,1.03.06.06_AS Soft X-Ray Undulator Procurement and Fabrication - SLAC,1.03.06.06.03_SXR Undulator Integration and Testing,AS_SXU_MANF_1411_Receiving Inspection - Magnet Modules - SXU_REFB_E,Metrology,,SLAC,Labor
103718,1.03,1.03.06,1.03.06.06,1.03.06.06.03,1.03.06.06.03,SXR Undulator Integration and Testing,AS_SXU_MANF_1431,Post Retrofit Checkout - SXU_REFB_E,4.0,32.0,32.0,32.0,08-28-24,09-03-24,AS_SXU_MANF_1421: FS,AS_SXU_MANF_1441: FS,SLAC,0%,52213.52213_EEDHW (Electronics & Engineering Div - HW Engr),52213_EEDHW (Electronics & Engineering Div - HW Engr),Labor,0.0d,4.0,4.0,At Completion Units,1/19/2024,1/24/2024,0,0,0,0,0,0,0,0,0,0,1.03_Accelerator Systems (AS),1.03.06_AS Soft X-Ray Undulator (SXR) - SLAC,1.03.06.06_AS Soft X-Ray Undulator Procurement and Fabrication - SLAC,1.03.06.06.03_SXR Undulator Integration and Testing,AS_SXU_MANF_1431_Post Retrofit Checkout - SXU_REFB_E,Electrical,,SLAC,Labor
103719,1.03,1.03.06,1.03.06.06,1.03.06.06.03,1.03.06.06.03,SXR Undulator Integration and Testing,AS_SXU_MANF_1431,Post Retrofit Checkout - SXU_REFB_E,4.0,32.0,32.0,32.0,08-28-24,09-03-24,AS_SXU_MANF_1421: FS,AS_SXU_MANF_1441: FS,SLAC,0%,52191.52191_METSMET Metrology,52191_METSMET Metrology,Labor,0.0d,4.0,4.0,At Completion Units,1/19/2024,1/24/2024,0,0,0,0,0,0,0,0,0,0,1.03_Accelerator Systems (AS),1.03.06_AS Soft X-Ray Undulator (SXR) - SLAC,1.03.06.06_AS Soft X-Ray Undulator Procurement and Fabrication - SLAC,1.03.06.06.03_SXR Undulator Integration and Testing,AS_SXU_MANF_1431_Post Retrofit Checkout - SXU_REFB_E,Metrology,,SLAC,Labor
103720,1.03,1.03.06,1.03.06.06,1.03.06.06.03,1.03.06.06.03,SXR Undulator Integration and Testing,AS_SXU_MANF_1431,Post Retrofit Checkout - SXU_REFB_E,4.0,16.0,16.0,16.0,08-28-24,09-03-24,AS_SXU_MANF_1421: FS,AS_SXU_MANF_1441: FS,SLAC,0%,0106.0106_Staff Scientist,0106_Staff Scientist,Labor,0.0d,4.0,4.0,At Completion Units,1/19/2024,1/24/2024,0,0,0,0,0,0,0,0,0,0,1.03_Accelerator Systems (AS),1.03.06_AS Soft X-Ray Undulator (SXR) - SLAC,1.03.06.06_AS Soft X-Ray Undulator Procurement and Fabrication - SLAC,1.03.06.06.03_SXR Undulator Integration and Testing,AS_SXU_MANF_1431_Post Retrofit Checkout - SXU_REFB_E,Scientist,,SLAC,Labor
103721,1.03,1.03.06,1.03.06.06,1.03.06.06.03,1.03.06.06.03,SXR Undulator Integration and Testing,AS_SXU_MANF_1431,Post Retrofit Checkout - SXU_REFB_E,4.0,4.0,4.0,4.0,08-28-24,09-03-24,AS_SXU_MANF_1421: FS,AS_SXU_MANF_1441: FS,SLAC,0%,52169.52169_METS Mechanical Engineer,52169_METS Mechanical Engineer,Labor,0.0d,4.0,4.0,At Completion Units,1/19/2024,1/24/2024,0,0,0,0,0,0,0,0,0,0,1.03_Accelerator Systems (AS),1.03.06_AS Soft X-Ray Undulator (SXR) - SLAC,1.03.06.06_AS Soft X-Ray Undulator Procurement and Fabrication - SLAC,1.03.06.06.03_SXR Undulator Integration and Testing,AS_SXU_MANF_1431_Post Retrofit Checkout - SXU_REFB_E,Mechanical,,SLAC,Labor
103722,1.03,1.03.06,1.03.06.06,1.03.06.06.03,1.03.06.06.03,SXR Undulator Integration and Testing,AS_SXU_MANF_1421,Retrofit SXU Magnetic System  SXU_REFB_E,15.0,280.0,280.0,280.0,08-07-24,08-27-24,"AS_SXU_MANF_1411: FS, AS_SXU_INST_1400: FS",AS_SXU_MANF_1431: FS,SLAC,0%,52198.52198_METSMANF (METSD Manufacturing),52198_METSMANF (METSD Manufacturing),Labor,0.0d,15.0,15.0,At Completion Units,12/13/2023,1/18/2024,0,0,0,0,0,0,0,0,0,0,1.03_Accelerator Systems (AS),1.03.06_AS Soft X-Ray Undulator (SXR) - SLAC,1.03.06.06_AS Soft X-Ray Undulator Procurement and Fabrication - SLAC,1.03.06.06.03_SXR Undulator Integration and Testing,AS_SXU_MANF_1421_Retrofit SXU Magnetic System  SXU_REFB_E,Manufacturing,,SLAC,Labor
103723,1.03,1.03.06,1.03.06.06,1.03.06.06.03,1.03.06.06.03,SXR Undulator Integration and Testing,AS_SXU_MANF_1421,Retrofit SXU Magnetic System  SXU_REFB_E,15.0,24.0,24.0,24.0,08-07-24,08-27-24,"AS_SXU_MANF_1411: FS, AS_SXU_INST_1400: FS",AS_SXU_MANF_1431: FS,SLAC,0%,52213.52213_EEDHW (Electronics & Engineering Div - HW Engr),52213_EEDHW (Electronics & Engineering Div - HW Engr),Labor,0.0d,15.0,15.0,At Completion Units,12/13/2023,1/18/2024,0,0,0,0,0,0,0,0,0,0,1.03_Accelerator Systems (AS),1.03.06_AS Soft X-Ray Undulator (SXR) - SLAC,1.03.06.06_AS Soft X-Ray Undulator Procurement and Fabrication - SLAC,1.03.06.06.03_SXR Undulator Integration and Testing,AS_SXU_MANF_1421_Retrofit SXU Magnetic System  SXU_REFB_E,Electrical,,SLAC,Labor
103724,1.03,1.03.06,1.03.06.06,1.03.06.06.03,1.03.06.06.03,SXR Undulator Integration and Testing,AS_SXU_MANF_1421,Retrofit SXU Magnetic System  SXU_REFB_E,15.0,12.0,12.0,12.0,08-07-24,08-27-24,"AS_SXU_MANF_1411: FS, AS_SXU_INST_1400: FS",AS_SXU_MANF_1431: FS,SLAC,0%,52169.52169_METS Mechanical Engineer,52169_METS Mechanical Engineer,Labor,0.0d,15.0,15.0,At Completion Units,12/13/2023,1/18/2024,0,0,0,0,0,0,0,0,0,0,1.03_Accelerator Systems (AS),1.03.06_AS Soft X-Ray Undulator (SXR) - SLAC,1.03.06.06_AS Soft X-Ray Undulator Procurement and Fabrication - SLAC,1.03.06.06.03_SXR Undulator Integration and Testing,AS_SXU_MANF_1421_Retrofit SXU Magnetic System  SXU_REFB_E,Mechanical,,SLAC,Labor
103725,1.03,1.03.06,1.03.06.06,1.03.06.06.03,1.03.06.06.03,SXR Undulator Integration and Testing,AS_SXU_MANF_1411,Receiving Inspection - Magnet Modules - SXU_REFB_E,3.0,8.0,8.0,8.0,08-02-24,08-06-24,AS_SXU_MANF_1401: FS,"AS_SXU_MANF_1421: FS, AS_LBL_PROD_675: FS",SLAC,0%,52169.52169_METS Mechanical Engineer,52169_METS Mechanical Engineer,Labor,0.0d,3.0,3.0,At Completion Units,12/8/2023,12/12/2023,0,0,0,0,0,0,0,0,0,0,1.03_Accelerator Systems (AS),1.03.06_AS Soft X-Ray Undulator (SXR) - SLAC,1.03.06.06_AS Soft X-Ray Undulator Procurement and Fabrication - SLAC,1.03.06.06.03_SXR Undulator Integration and Testing,AS_SXU_MANF_1411_Receiving Inspection - Magnet Modules - SXU_REFB_E,Mechanical,,SLAC,Labor
103726,1.03,1.03.06,1.03.06.06,1.03.06.06.03,1.03.06.06.03,SXR Undulator Integration and Testing,AS_SXU_MANF_1321,Retrofit SXU Magnetic System  SXU_REFB_D,15.0,48.0,48.0,48.0,07-31-24,08-20-24,"AS_SXU_MANF_1311: FS, AS_SXU_INST_1300: FS",AS_SXU_MANF_1331: FS,SLAC,0%,52191.52191_METSMET Metrology,52191_METSMET Metrology,Labor,0.0d,15.0,15.0,At Completion Units,12/6/2023,1/10/2024,0,0,0,0,0,0,0,0,0,0,1.03_Accelerator Systems (AS),1.03.06_AS Soft X-Ray Undulator (SXR) - SLAC,1.03.06.06_AS Soft X-Ray Undulator Procurement and Fabrication - SLAC,1.03.06.06.03_SXR Undulator Integration and Testing,AS_SXU_MANF_1321_Retrofit SXU Magnetic System  SXU_REFB_D,Metrology,,SLAC,Labor
103727,1.03,1.03.06,1.03.06.06,1.03.06.06.03,1.03.06.06.03,SXR Undulator Integration and Testing,AS_SXU_MANF_1346,Tune and Calibrate Undulator - SXU_HE_13,15.0,32.0,32.0,32.0,08-27-24,09-17-24,"AS_SXU_MANF_1341: FS, AS_SXU_MANF_1246: FS","AS_SXU_MANF_1356: FS, AS_SXU_MANF_1446: FS",SLAC,0%,52213.52213_EEDHW (Electronics & Engineering Div - HW Engr),52213_EEDHW (Electronics & Engineering Div - HW Engr),Labor,0.0d,15.0,15.0,At Completion Units,1/18/2024,2/7/2024,0,0,0,0,0,0,0,0,0,0,1.03_Accelerator Systems (AS),1.03.06_AS Soft X-Ray Undulator (SXR) - SLAC,1.03.06.06_AS Soft X-Ray Undulator Procurement and Fabrication - SLAC,1.03.06.06.03_SXR Undulator Integration and Testing,AS_SXU_MANF_1346_Tune and Calibrate Undulator - SXU_HE_13,Electrical,,SLAC,Labor
103728,1.03,1.03.06,1.03.06.06,1.03.06.06.03,1.03.06.06.03,SXR Undulator Integration and Testing,AS_SXU_MANF_1346,Tune and Calibrate Undulator - SXU_HE_13,15.0,48.0,48.0,48.0,08-27-24,09-17-24,"AS_SXU_MANF_1341: FS, AS_SXU_MANF_1246: FS","AS_SXU_MANF_1356: FS, AS_SXU_MANF_1446: FS",SLAC,0%,52198.52198_METSMANF (METSD Manufacturing),52198_METSMANF (METSD Manufacturing),Labor,0.0d,15.0,15.0,At Completion Units,1/18/2024,2/7/2024,0,0,0,0,0,0,0,0,0,0,1.03_Accelerator Systems (AS),1.03.06_AS Soft X-Ray Undulator (SXR) - SLAC,1.03.06.06_AS Soft X-Ray Undulator Procurement and Fabrication - SLAC,1.03.06.06.03_SXR Undulator Integration and Testing,AS_SXU_MANF_1346_Tune and Calibrate Undulator - SXU_HE_13,Manufacturing,,SLAC,Labor
103729,1.03,1.03.06,1.03.06.06,1.03.06.06.03,1.03.06.06.03,SXR Undulator Integration and Testing,AS_SXU_MANF_1346,Tune and Calibrate Undulator - SXU_HE_13,15.0,394.0,394.0,394.0,08-27-24,09-17-24,"AS_SXU_MANF_1341: FS, AS_SXU_MANF_1246: FS","AS_SXU_MANF_1356: FS, AS_SXU_MANF_1446: FS",SLAC,0%,52191.52191_METSMET Metrology,52191_METSMET Metrology,Labor,0.0d,15.0,15.0,At Completion Units,1/18/2024,2/7/2024,0,0,0,0,0,0,0,0,0,0,1.03_Accelerator Systems (AS),1.03.06_AS Soft X-Ray Undulator (SXR) - SLAC,1.03.06.06_AS Soft X-Ray Undulator Procurement and Fabrication - SLAC,1.03.06.06.03_SXR Undulator Integration and Testing,AS_SXU_MANF_1346_Tune and Calibrate Undulator - SXU_HE_13,Metrology,,SLAC,Labor
103730,1.03,1.03.06,1.03.06.06,1.03.06.06.03,1.03.06.06.03,SXR Undulator Integration and Testing,AS_SXU_MANF_1346,Tune and Calibrate Undulator - SXU_HE_13,15.0,32.0,32.0,32.0,08-27-24,09-17-24,"AS_SXU_MANF_1341: FS, AS_SXU_MANF_1246: FS","AS_SXU_MANF_1356: FS, AS_SXU_MANF_1446: FS",SLAC,0%,0106.0106_Staff Scientist,0106_Staff Scientist,Labor,0.0d,15.0,15.0,At Completion Units,1/18/2024,2/7/2024,0,0,0,0,0,0,0,0,0,0,1.03_Accelerator Systems (AS),1.03.06_AS Soft X-Ray Undulator (SXR) - SLAC,1.03.06.06_AS Soft X-Ray Undulator Procurement and Fabrication - SLAC,1.03.06.06.03_SXR Undulator Integration and Testing,AS_SXU_MANF_1346_Tune and Calibrate Undulator - SXU_HE_13,Scientist,,SLAC,Labor
103731,1.03,1.03.06,1.03.06.06,1.03.06.06.03,1.03.06.06.03,SXR Undulator Integration and Testing,AS_SXU_MANF_1346,Tune and Calibrate Undulator - SXU_HE_13,15.0,16.0,16.0,16.0,08-27-24,09-17-24,"AS_SXU_MANF_1341: FS, AS_SXU_MANF_1246: FS","AS_SXU_MANF_1356: FS, AS_SXU_MANF_1446: FS",SLAC,0%,52169.52169_METS Mechanical Engineer,52169_METS Mechanical Engineer,Labor,0.0d,15.0,15.0,At Completion Units,1/18/2024,2/7/2024,0,0,0,0,0,0,0,0,0,0,1.03_Accelerator Systems (AS),1.03.06_AS Soft X-Ray Undulator (SXR) - SLAC,1.03.06.06_AS Soft X-Ray Undulator Procurement and Fabrication - SLAC,1.03.06.06.03_SXR Undulator Integration and Testing,AS_SXU_MANF_1346_Tune and Calibrate Undulator - SXU_HE_13,Mechanical,,SLAC,Labor
103732,1.03,1.03.06,1.03.06.06,1.03.06.06.03,1.03.06.06.03,SXR Undulator Integration and Testing,AS_SXU_MANF_1331,Post Retrofit Checkout - SXU_REFB_D,4.0,12.0,12.0,12.0,08-21-24,08-26-24,AS_SXU_MANF_1321: FS,AS_SXU_MANF_1341: FS,SLAC,0%,52152.52152_FAC Fleet,52152_FAC Fleet,Labor,0.0d,4.0,4.0,At Completion Units,1/11/2024,1/17/2024,0,0,0,0,0,0,0,0,0,0,1.03_Accelerator Systems (AS),1.03.06_AS Soft X-Ray Undulator (SXR) - SLAC,1.03.06.06_AS Soft X-Ray Undulator Procurement and Fabrication - SLAC,1.03.06.06.03_SXR Undulator Integration and Testing,AS_SXU_MANF_1331_Post Retrofit Checkout - SXU_REFB_D,Support System,,SLAC,Labor
103733,1.03,1.03.06,1.03.06.06,1.03.06.06.03,1.03.06.06.03,SXR Undulator Integration and Testing,AS_SXU_MANF_1311,Receiving Inspection - Magnet Modules - SXU_REFB_D,3.0,4.0,4.0,4.0,07-26-24,07-30-24,AS_SXU_MANF_1301: FS,AS_SXU_MANF_1321: FS,SLAC,0%,52198.52198_METSMANF (METSD Manufacturing),52198_METSMANF (METSD Manufacturing),Labor,0.0d,3.0,3.0,At Completion Units,12/1/2023,12/5/2023,0,0,0,0,0,0,0,0,0,0,1.03_Accelerator Systems (AS),1.03.06_AS Soft X-Ray Undulator (SXR) - SLAC,1.03.06.06_AS Soft X-Ray Undulator Procurement and Fabrication - SLAC,1.03.06.06.03_SXR Undulator Integration and Testing,AS_SXU_MANF_1311_Receiving Inspection - Magnet Modules - SXU_REFB_D,Manufacturing,,SLAC,Labor
103734,1.03,1.03.06,1.03.06.06,1.03.06.06.03,1.03.06.06.03,SXR Undulator Integration and Testing,AS_SXU_MANF_1311,Receiving Inspection - Magnet Modules - SXU_REFB_D,3.0,12.0,12.0,12.0,07-26-24,07-30-24,AS_SXU_MANF_1301: FS,AS_SXU_MANF_1321: FS,SLAC,0%,52191.52191_METSMET Metrology,52191_METSMET Metrology,Labor,0.0d,3.0,3.0,At Completion Units,12/1/2023,12/5/2023,0,0,0,0,0,0,0,0,0,0,1.03_Accelerator Systems (AS),1.03.06_AS Soft X-Ray Undulator (SXR) - SLAC,1.03.06.06_AS Soft X-Ray Undulator Procurement and Fabrication - SLAC,1.03.06.06.03_SXR Undulator Integration and Testing,AS_SXU_MANF_1311_Receiving Inspection - Magnet Modules - SXU_REFB_D,Metrology,,SLAC,Labor
103735,1.03,1.03.06,1.03.06.06,1.03.06.06.03,1.03.06.06.03,SXR Undulator Integration and Testing,AS_SXU_MANF_1331,Post Retrofit Checkout - SXU_REFB_D,4.0,32.0,32.0,32.0,08-21-24,08-26-24,AS_SXU_MANF_1321: FS,AS_SXU_MANF_1341: FS,SLAC,0%,52213.52213_EEDHW (Electronics & Engineering Div - HW Engr),52213_EEDHW (Electronics & Engineering Div - HW Engr),Labor,0.0d,4.0,4.0,At Completion Units,1/11/2024,1/17/2024,0,0,0,0,0,0,0,0,0,0,1.03_Accelerator Systems (AS),1.03.06_AS Soft X-Ray Undulator (SXR) - SLAC,1.03.06.06_AS Soft X-Ray Undulator Procurement and Fabrication - SLAC,1.03.06.06.03_SXR Undulator Integration and Testing,AS_SXU_MANF_1331_Post Retrofit Checkout - SXU_REFB_D,Electrical,,SLAC,Labor
103736,1.03,1.03.06,1.03.06.06,1.03.06.06.03,1.03.06.06.03,SXR Undulator Integration and Testing,AS_SXU_MANF_1331,Post Retrofit Checkout - SXU_REFB_D,4.0,32.0,32.0,32.0,08-21-24,08-26-24,AS_SXU_MANF_1321: FS,AS_SXU_MANF_1341: FS,SLAC,0%,52191.52191_METSMET Metrology,52191_METSMET Metrology,Labor,0.0d,4.0,4.0,At Completion Units,1/11/2024,1/17/2024,0,0,0,0,0,0,0,0,0,0,1.03_Accelerator Systems (AS),1.03.06_AS Soft X-Ray Undulator (SXR) - SLAC,1.03.06.06_AS Soft X-Ray Undulator Procurement and Fabrication - SLAC,1.03.06.06.03_SXR Undulator Integration and Testing,AS_SXU_MANF_1331_Post Retrofit Checkout - SXU_REFB_D,Metrology,,SLAC,Labor
103737,1.03,1.03.06,1.03.06.06,1.03.06.06.03,1.03.06.06.03,SXR Undulator Integration and Testing,AS_SXU_MANF_1331,Post Retrofit Checkout - SXU_REFB_D,4.0,16.0,16.0,16.0,08-21-24,08-26-24,AS_SXU_MANF_1321: FS,AS_SXU_MANF_1341: FS,SLAC,0%,0106.0106_Staff Scientist,0106_Staff Scientist,Labor,0.0d,4.0,4.0,At Completion Units,1/11/2024,1/17/2024,0,0,0,0,0,0,0,0,0,0,1.03_Accelerator Systems (AS),1.03.06_AS Soft X-Ray Undulator (SXR) - SLAC,1.03.06.06_AS Soft X-Ray Undulator Procurement and Fabrication - SLAC,1.03.06.06.03_SXR Undulator Integration and Testing,AS_SXU_MANF_1331_Post Retrofit Checkout - SXU_REFB_D,Scientist,,SLAC,Labor
103738,1.03,1.03.06,1.03.06.06,1.03.06.06.03,1.03.06.06.03,SXR Undulator Integration and Testing,AS_SXU_MANF_1331,Post Retrofit Checkout - SXU_REFB_D,4.0,4.0,4.0,4.0,08-21-24,08-26-24,AS_SXU_MANF_1321: FS,AS_SXU_MANF_1341: FS,SLAC,0%,52169.52169_METS Mechanical Engineer,52169_METS Mechanical Engineer,Labor,0.0d,4.0,4.0,At Completion Units,1/11/2024,1/17/2024,0,0,0,0,0,0,0,0,0,0,1.03_Accelerator Systems (AS),1.03.06_AS Soft X-Ray Undulator (SXR) - SLAC,1.03.06.06_AS Soft X-Ray Undulator Procurement and Fabrication - SLAC,1.03.06.06.03_SXR Undulator Integration and Testing,AS_SXU_MANF_1331_Post Retrofit Checkout - SXU_REFB_D,Mechanical,,SLAC,Labor
103739,1.03,1.03.06,1.03.06.06,1.03.06.06.03,1.03.06.06.03,SXR Undulator Integration and Testing,AS_SXU_MANF_1321,Retrofit SXU Magnetic System  SXU_REFB_D,15.0,280.0,280.0,280.0,07-31-24,08-20-24,"AS_SXU_MANF_1311: FS, AS_SXU_INST_1300: FS",AS_SXU_MANF_1331: FS,SLAC,0%,52198.52198_METSMANF (METSD Manufacturing),52198_METSMANF (METSD Manufacturing),Labor,0.0d,15.0,15.0,At Completion Units,12/6/2023,1/10/2024,0,0,0,0,0,0,0,0,0,0,1.03_Accelerator Systems (AS),1.03.06_AS Soft X-Ray Undulator (SXR) - SLAC,1.03.06.06_AS Soft X-Ray Undulator Procurement and Fabrication - SLAC,1.03.06.06.03_SXR Undulator Integration and Testing,AS_SXU_MANF_1321_Retrofit SXU Magnetic System  SXU_REFB_D,Manufacturing,,SLAC,Labor
103740,1.03,1.03.06,1.03.06.06,1.03.06.06.03,1.03.06.06.03,SXR Undulator Integration and Testing,AS_SXU_MANF_1321,Retrofit SXU Magnetic System  SXU_REFB_D,15.0,24.0,24.0,24.0,07-31-24,08-20-24,"AS_SXU_MANF_1311: FS, AS_SXU_INST_1300: FS",AS_SXU_MANF_1331: FS,SLAC,0%,52213.52213_EEDHW (Electronics & Engineering Div - HW Engr),52213_EEDHW (Electronics & Engineering Div - HW Engr),Labor,0.0d,15.0,15.0,At Completion Units,12/6/2023,1/10/2024,0,0,0,0,0,0,0,0,0,0,1.03_Accelerator Systems (AS),1.03.06_AS Soft X-Ray Undulator (SXR) - SLAC,1.03.06.06_AS Soft X-Ray Undulator Procurement and Fabrication - SLAC,1.03.06.06.03_SXR Undulator Integration and Testing,AS_SXU_MANF_1321_Retrofit SXU Magnetic System  SXU_REFB_D,Electrical,,SLAC,Labor
103741,1.03,1.03.06,1.03.06.06,1.03.06.06.03,1.03.06.06.03,SXR Undulator Integration and Testing,AS_SXU_MANF_1321,Retrofit SXU Magnetic System  SXU_REFB_D,15.0,12.0,12.0,12.0,07-31-24,08-20-24,"AS_SXU_MANF_1311: FS, AS_SXU_INST_1300: FS",AS_SXU_MANF_1331: FS,SLAC,0%,52169.52169_METS Mechanical Engineer,52169_METS Mechanical Engineer,Labor,0.0d,15.0,15.0,At Completion Units,12/6/2023,1/10/2024,0,0,0,0,0,0,0,0,0,0,1.03_Accelerator Systems (AS),1.03.06_AS Soft X-Ray Undulator (SXR) - SLAC,1.03.06.06_AS Soft X-Ray Undulator Procurement and Fabrication - SLAC,1.03.06.06.03_SXR Undulator Integration and Testing,AS_SXU_MANF_1321_Retrofit SXU Magnetic System  SXU_REFB_D,Mechanical,,SLAC,Labor
103742,1.03,1.03.06,1.03.06.06,1.03.06.06.03,1.03.06.06.03,SXR Undulator Integration and Testing,AS_SXU_MANF_1311,Receiving Inspection - Magnet Modules - SXU_REFB_D,3.0,8.0,8.0,8.0,07-26-24,07-30-24,AS_SXU_MANF_1301: FS,AS_SXU_MANF_1321: FS,SLAC,0%,52169.52169_METS Mechanical Engineer,52169_METS Mechanical Engineer,Labor,0.0d,3.0,3.0,At Completion Units,12/1/2023,12/5/2023,0,0,0,0,0,0,0,0,0,0,1.03_Accelerator Systems (AS),1.03.06_AS Soft X-Ray Undulator (SXR) - SLAC,1.03.06.06_AS Soft X-Ray Undulator Procurement and Fabrication - SLAC,1.03.06.06.03_SXR Undulator Integration and Testing,AS_SXU_MANF_1311_Receiving Inspection - Magnet Modules - SXU_REFB_D,Mechanical,,SLAC,Labor
103743,1.03,1.03.06,1.03.06.06,1.03.06.06.03,1.03.06.06.03,SXR Undulator Integration and Testing,AS_SXU_MANF_1221,Retrofit SXU Magnetic System  SXU_REFB_C,15.0,48.0,48.0,48.0,06-25-24,07-16-24,"AS_SXU_MANF_1211: FS, AS_SXU_INST_1200: FS",AS_SXU_MANF_1231: FS,SLAC,0%,52191.52191_METSMET Metrology,52191_METSMET Metrology,Labor,0.0d,15.0,15.0,At Completion Units,10/30/2023,11/17/2023,0,0,0,0,0,0,0,0,0,0,1.03_Accelerator Systems (AS),1.03.06_AS Soft X-Ray Undulator (SXR) - SLAC,1.03.06.06_AS Soft X-Ray Undulator Procurement and Fabrication - SLAC,1.03.06.06.03_SXR Undulator Integration and Testing,AS_SXU_MANF_1221_Retrofit SXU Magnetic System  SXU_REFB_C,Metrology,,SLAC,Labor
103744,1.03,1.03.06,1.03.06.06,1.03.06.06.03,1.03.06.06.03,SXR Undulator Integration and Testing,AS_SXU_MANF_1246,Tune and Calibrate Undulator - SXU_HE_12,15.0,32.0,32.0,32.0,08-01-24,08-21-24,"AS_SXU_MANF_1241: FS, AS_SXU_MANF_1146: FS","AS_SXU_MANF_1256: FS, AS_SXU_MANF_1346: FS",SLAC,0%,52213.52213_EEDHW (Electronics & Engineering Div - HW Engr),52213_EEDHW (Electronics & Engineering Div - HW Engr),Labor,0.0d,15.0,15.0,At Completion Units,12/7/2023,1/11/2024,0,0,0,0,0,0,0,0,0,0,1.03_Accelerator Systems (AS),1.03.06_AS Soft X-Ray Undulator (SXR) - SLAC,1.03.06.06_AS Soft X-Ray Undulator Procurement and Fabrication - SLAC,1.03.06.06.03_SXR Undulator Integration and Testing,AS_SXU_MANF_1246_Tune and Calibrate Undulator - SXU_HE_12,Electrical,,SLAC,Labor
103745,1.03,1.03.06,1.03.06.06,1.03.06.06.03,1.03.06.06.03,SXR Undulator Integration and Testing,AS_SXU_MANF_1246,Tune and Calibrate Undulator - SXU_HE_12,15.0,48.0,48.0,48.0,08-01-24,08-21-24,"AS_SXU_MANF_1241: FS, AS_SXU_MANF_1146: FS","AS_SXU_MANF_1256: FS, AS_SXU_MANF_1346: FS",SLAC,0%,52198.52198_METSMANF (METSD Manufacturing),52198_METSMANF (METSD Manufacturing),Labor,0.0d,15.0,15.0,At Completion Units,12/7/2023,1/11/2024,0,0,0,0,0,0,0,0,0,0,1.03_Accelerator Systems (AS),1.03.06_AS Soft X-Ray Undulator (SXR) - SLAC,1.03.06.06_AS Soft X-Ray Undulator Procurement and Fabrication - SLAC,1.03.06.06.03_SXR Undulator Integration and Testing,AS_SXU_MANF_1246_Tune and Calibrate Undulator - SXU_HE_12,Manufacturing,,SLAC,Labor
103746,1.03,1.03.06,1.03.06.06,1.03.06.06.03,1.03.06.06.03,SXR Undulator Integration and Testing,AS_SXU_MANF_1246,Tune and Calibrate Undulator - SXU_HE_12,15.0,394.0,394.0,394.0,08-01-24,08-21-24,"AS_SXU_MANF_1241: FS, AS_SXU_MANF_1146: FS","AS_SXU_MANF_1256: FS, AS_SXU_MANF_1346: FS",SLAC,0%,52191.52191_METSMET Metrology,52191_METSMET Metrology,Labor,0.0d,15.0,15.0,At Completion Units,12/7/2023,1/11/2024,0,0,0,0,0,0,0,0,0,0,1.03_Accelerator Systems (AS),1.03.06_AS Soft X-Ray Undulator (SXR) - SLAC,1.03.06.06_AS Soft X-Ray Undulator Procurement and Fabrication - SLAC,1.03.06.06.03_SXR Undulator Integration and Testing,AS_SXU_MANF_1246_Tune and Calibrate Undulator - SXU_HE_12,Metrology,,SLAC,Labor
103747,1.03,1.03.06,1.03.06.06,1.03.06.06.03,1.03.06.06.03,SXR Undulator Integration and Testing,AS_SXU_MANF_1246,Tune and Calibrate Undulator - SXU_HE_12,15.0,32.0,32.0,32.0,08-01-24,08-21-24,"AS_SXU_MANF_1241: FS, AS_SXU_MANF_1146: FS","AS_SXU_MANF_1256: FS, AS_SXU_MANF_1346: FS",SLAC,0%,0106.0106_Staff Scientist,0106_Staff Scientist,Labor,0.0d,15.0,15.0,At Completion Units,12/7/2023,1/11/2024,0,0,0,0,0,0,0,0,0,0,1.03_Accelerator Systems (AS),1.03.06_AS Soft X-Ray Undulator (SXR) - SLAC,1.03.06.06_AS Soft X-Ray Undulator Procurement and Fabrication - SLAC,1.03.06.06.03_SXR Undulator Integration and Testing,AS_SXU_MANF_1246_Tune and Calibrate Undulator - SXU_HE_12,Scientist,,SLAC,Labor
103748,1.03,1.03.06,1.03.06.06,1.03.06.06.03,1.03.06.06.03,SXR Undulator Integration and Testing,AS_SXU_MANF_1246,Tune and Calibrate Undulator - SXU_HE_12,15.0,16.0,16.0,16.0,08-01-24,08-21-24,"AS_SXU_MANF_1241: FS, AS_SXU_MANF_1146: FS","AS_SXU_MANF_1256: FS, AS_SXU_MANF_1346: FS",SLAC,0%,52169.52169_METS Mechanical Engineer,52169_METS Mechanical Engineer,Labor,0.0d,15.0,15.0,At Completion Units,12/7/2023,1/11/2024,0,0,0,0,0,0,0,0,0,0,1.03_Accelerator Systems (AS),1.03.06_AS Soft X-Ray Undulator (SXR) - SLAC,1.03.06.06_AS Soft X-Ray Undulator Procurement and Fabrication - SLAC,1.03.06.06.03_SXR Undulator Integration and Testing,AS_SXU_MANF_1246_Tune and Calibrate Undulator - SXU_HE_12,Mechanical,,SLAC,Labor
103749,1.03,1.03.06,1.03.06.06,1.03.06.06.03,1.03.06.06.03,SXR Undulator Integration and Testing,AS_SXU_MANF_1231,Post Retrofit Checkout - SXU_REFB_C,4.0,12.0,12.0,12.0,07-17-24,07-22-24,AS_SXU_MANF_1221: FS,AS_SXU_MANF_1241: FS,SLAC,0%,52152.52152_FAC Fleet,52152_FAC Fleet,Labor,0.0d,4.0,4.0,At Completion Units,11/20/2023,11/27/2023,0,0,0,0,0,0,0,0,0,0,1.03_Accelerator Systems (AS),1.03.06_AS Soft X-Ray Undulator (SXR) - SLAC,1.03.06.06_AS Soft X-Ray Undulator Procurement and Fabrication - SLAC,1.03.06.06.03_SXR Undulator Integration and Testing,AS_SXU_MANF_1231_Post Retrofit Checkout - SXU_REFB_C,Support System,,SLAC,Labor
103750,1.03,1.03.06,1.03.06.06,1.03.06.06.03,1.03.06.06.03,SXR Undulator Integration and Testing,AS_SXU_MANF_1211,Receiving Inspection - Magnet Modules - SXU_REFB_C,3.0,4.0,4.0,4.0,06-20-24,06-24-24,AS_SXU_MANF_1201: FS,AS_SXU_MANF_1221: FS,SLAC,0%,52198.52198_METSMANF (METSD Manufacturing),52198_METSMANF (METSD Manufacturing),Labor,0.0d,3.0,3.0,At Completion Units,10/25/2023,10/27/2023,0,0,0,0,0,0,0,0,0,0,1.03_Accelerator Systems (AS),1.03.06_AS Soft X-Ray Undulator (SXR) - SLAC,1.03.06.06_AS Soft X-Ray Undulator Procurement and Fabrication - SLAC,1.03.06.06.03_SXR Undulator Integration and Testing,AS_SXU_MANF_1211_Receiving Inspection - Magnet Modules - SXU_REFB_C,Manufacturing,,SLAC,Labor
103751,1.03,1.03.06,1.03.06.06,1.03.06.06.03,1.03.06.06.03,SXR Undulator Integration and Testing,AS_SXU_MANF_1211,Receiving Inspection - Magnet Modules - SXU_REFB_C,3.0,12.0,12.0,12.0,06-20-24,06-24-24,AS_SXU_MANF_1201: FS,AS_SXU_MANF_1221: FS,SLAC,0%,52191.52191_METSMET Metrology,52191_METSMET Metrology,Labor,0.0d,3.0,3.0,At Completion Units,10/25/2023,10/27/2023,0,0,0,0,0,0,0,0,0,0,1.03_Accelerator Systems (AS),1.03.06_AS Soft X-Ray Undulator (SXR) - SLAC,1.03.06.06_AS Soft X-Ray Undulator Procurement and Fabrication - SLAC,1.03.06.06.03_SXR Undulator Integration and Testing,AS_SXU_MANF_1211_Receiving Inspection - Magnet Modules - SXU_REFB_C,Metrology,,SLAC,Labor
103752,1.03,1.03.06,1.03.06.06,1.03.06.06.03,1.03.06.06.03,SXR Undulator Integration and Testing,AS_SXU_MANF_1231,Post Retrofit Checkout - SXU_REFB_C,4.0,32.0,32.0,32.0,07-17-24,07-22-24,AS_SXU_MANF_1221: FS,AS_SXU_MANF_1241: FS,SLAC,0%,52213.52213_EEDHW (Electronics & Engineering Div - HW Engr),52213_EEDHW (Electronics & Engineering Div - HW Engr),Labor,0.0d,4.0,4.0,At Completion Units,11/20/2023,11/27/2023,0,0,0,0,0,0,0,0,0,0,1.03_Accelerator Systems (AS),1.03.06_AS Soft X-Ray Undulator (SXR) - SLAC,1.03.06.06_AS Soft X-Ray Undulator Procurement and Fabrication - SLAC,1.03.06.06.03_SXR Undulator Integration and Testing,AS_SXU_MANF_1231_Post Retrofit Checkout - SXU_REFB_C,Electrical,,SLAC,Labor
103753,1.03,1.03.06,1.03.06.06,1.03.06.06.03,1.03.06.06.03,SXR Undulator Integration and Testing,AS_SXU_MANF_1231,Post Retrofit Checkout - SXU_REFB_C,4.0,32.0,32.0,32.0,07-17-24,07-22-24,AS_SXU_MANF_1221: FS,AS_SXU_MANF_1241: FS,SLAC,0%,52191.52191_METSMET Metrology,52191_METSMET Metrology,Labor,0.0d,4.0,4.0,At Completion Units,11/20/2023,11/27/2023,0,0,0,0,0,0,0,0,0,0,1.03_Accelerator Systems (AS),1.03.06_AS Soft X-Ray Undulator (SXR) - SLAC,1.03.06.06_AS Soft X-Ray Undulator Procurement and Fabrication - SLAC,1.03.06.06.03_SXR Undulator Integration and Testing,AS_SXU_MANF_1231_Post Retrofit Checkout - SXU_REFB_C,Metrology,,SLAC,Labor
103754,1.03,1.03.06,1.03.06.06,1.03.06.06.03,1.03.06.06.03,SXR Undulator Integration and Testing,AS_SXU_MANF_1231,Post Retrofit Checkout - SXU_REFB_C,4.0,16.0,16.0,16.0,07-17-24,07-22-24,AS_SXU_MANF_1221: FS,AS_SXU_MANF_1241: FS,SLAC,0%,0106.0106_Staff Scientist,0106_Staff Scientist,Labor,0.0d,4.0,4.0,At Completion Units,11/20/2023,11/27/2023,0,0,0,0,0,0,0,0,0,0,1.03_Accelerator Systems (AS),1.03.06_AS Soft X-Ray Undulator (SXR) - SLAC,1.03.06.06_AS Soft X-Ray Undulator Procurement and Fabrication - SLAC,1.03.06.06.03_SXR Undulator Integration and Testing,AS_SXU_MANF_1231_Post Retrofit Checkout - SXU_REFB_C,Scientist,,SLAC,Labor
103755,1.03,1.03.06,1.03.06.06,1.03.06.06.03,1.03.06.06.03,SXR Undulator Integration and Testing,AS_SXU_MANF_1231,Post Retrofit Checkout - SXU_REFB_C,4.0,4.0,4.0,4.0,07-17-24,07-22-24,AS_SXU_MANF_1221: FS,AS_SXU_MANF_1241: FS,SLAC,0%,52169.52169_METS Mechanical Engineer,52169_METS Mechanical Engineer,Labor,0.0d,4.0,4.0,At Completion Units,11/20/2023,11/27/2023,0,0,0,0,0,0,0,0,0,0,1.03_Accelerator Systems (AS),1.03.06_AS Soft X-Ray Undulator (SXR) - SLAC,1.03.06.06_AS Soft X-Ray Undulator Procurement and Fabrication - SLAC,1.03.06.06.03_SXR Undulator Integration and Testing,AS_SXU_MANF_1231_Post Retrofit Checkout - SXU_REFB_C,Mechanical,,SLAC,Labor
103756,1.03,1.03.06,1.03.06.06,1.03.06.06.03,1.03.06.06.03,SXR Undulator Integration and Testing,AS_SXU_MANF_1221,Retrofit SXU Magnetic System  SXU_REFB_C,15.0,280.0,280.0,280.0,06-25-24,07-16-24,"AS_SXU_MANF_1211: FS, AS_SXU_INST_1200: FS",AS_SXU_MANF_1231: FS,SLAC,0%,52198.52198_METSMANF (METSD Manufacturing),52198_METSMANF (METSD Manufacturing),Labor,0.0d,15.0,15.0,At Completion Units,10/30/2023,11/17/2023,0,0,0,0,0,0,0,0,0,0,1.03_Accelerator Systems (AS),1.03.06_AS Soft X-Ray Undulator (SXR) - SLAC,1.03.06.06_AS Soft X-Ray Undulator Procurement and Fabrication - SLAC,1.03.06.06.03_SXR Undulator Integration and Testing,AS_SXU_MANF_1221_Retrofit SXU Magnetic System  SXU_REFB_C,Manufacturing,,SLAC,Labor
103757,1.03,1.03.06,1.03.06.06,1.03.06.06.03,1.03.06.06.03,SXR Undulator Integration and Testing,AS_SXU_MANF_1221,Retrofit SXU Magnetic System  SXU_REFB_C,15.0,24.0,24.0,24.0,06-25-24,07-16-24,"AS_SXU_MANF_1211: FS, AS_SXU_INST_1200: FS",AS_SXU_MANF_1231: FS,SLAC,0%,52213.52213_EEDHW (Electronics & Engineering Div - HW Engr),52213_EEDHW (Electronics & Engineering Div - HW Engr),Labor,0.0d,15.0,15.0,At Completion Units,10/30/2023,11/17/2023,0,0,0,0,0,0,0,0,0,0,1.03_Accelerator Systems (AS),1.03.06_AS Soft X-Ray Undulator (SXR) - SLAC,1.03.06.06_AS Soft X-Ray Undulator Procurement and Fabrication - SLAC,1.03.06.06.03_SXR Undulator Integration and Testing,AS_SXU_MANF_1221_Retrofit SXU Magnetic System  SXU_REFB_C,Electrical,,SLAC,Labor
103758,1.03,1.03.06,1.03.06.06,1.03.06.06.03,1.03.06.06.03,SXR Undulator Integration and Testing,AS_SXU_MANF_1221,Retrofit SXU Magnetic System  SXU_REFB_C,15.0,12.0,12.0,12.0,06-25-24,07-16-24,"AS_SXU_MANF_1211: FS, AS_SXU_INST_1200: FS",AS_SXU_MANF_1231: FS,SLAC,0%,52169.52169_METS Mechanical Engineer,52169_METS Mechanical Engineer,Labor,0.0d,15.0,15.0,At Completion Units,10/30/2023,11/17/2023,0,0,0,0,0,0,0,0,0,0,1.03_Accelerator Systems (AS),1.03.06_AS Soft X-Ray Undulator (SXR) - SLAC,1.03.06.06_AS Soft X-Ray Undulator Procurement and Fabrication - SLAC,1.03.06.06.03_SXR Undulator Integration and Testing,AS_SXU_MANF_1221_Retrofit SXU Magnetic System  SXU_REFB_C,Mechanical,,SLAC,Labor
103759,1.03,1.03.06,1.03.06.06,1.03.06.06.03,1.03.06.06.03,SXR Undulator Integration and Testing,AS_SXU_MANF_1211,Receiving Inspection - Magnet Modules - SXU_REFB_C,3.0,8.0,8.0,8.0,06-20-24,06-24-24,AS_SXU_MANF_1201: FS,AS_SXU_MANF_1221: FS,SLAC,0%,52169.52169_METS Mechanical Engineer,52169_METS Mechanical Engineer,Labor,0.0d,3.0,3.0,At Completion Units,10/25/2023,10/27/2023,0,0,0,0,0,0,0,0,0,0,1.03_Accelerator Systems (AS),1.03.06_AS Soft X-Ray Undulator (SXR) - SLAC,1.03.06.06_AS Soft X-Ray Undulator Procurement and Fabrication - SLAC,1.03.06.06.03_SXR Undulator Integration and Testing,AS_SXU_MANF_1211_Receiving Inspection - Magnet Modules - SXU_REFB_C,Mechanical,,SLAC,Labor
103760,1.03,1.03.06,1.03.06.06,1.03.06.06.03,1.03.06.06.03,SXR Undulator Integration and Testing,AS_SXU_MANF_1021,Retrofit SXU Preproduction Magnetic System - SXU_REFB_A,15.0,148.0,148.0,148.0,06-02-22,06-22-22,"AS_SXU_MANF_1011: FS, AS_SXU_MANF_1000: FS, AS_SXU_DE_4250: FS","AS_SXU_MANF_1031: FS, AS_LBL_INST_110: FS",SLAC,0%,52191.52191_METSMET Metrology,52191_METSMET Metrology,Labor,0.0d,15.0,15.0,At Completion Units,7/22/2022,8/11/2022,0,0,0,0,0,0,0,0,0,0,1.03_Accelerator Systems (AS),1.03.06_AS Soft X-Ray Undulator (SXR) - SLAC,1.03.06.06_AS Soft X-Ray Undulator Procurement and Fabrication - SLAC,1.03.06.06.03_SXR Undulator Integration and Testing,AS_SXU_MANF_1021_Retrofit SXU Preproduction Magnetic System - SXU_REFB_A,Metrology,,SLAC,Labor
103761,1.03,1.03.06,1.03.06.06,1.03.06.06.03,1.03.06.06.03,SXR Undulator Integration and Testing,AS_SXU_MANF_1046,Tune and Calibrate Pre-production Undulator - SXU_HE_10,15.0,48.0,48.0,48.0,06-29-22,07-20-22,AS_SXU_MANF_1041: FS,"AS_SXU_MANF_1146: FS, AS_SXU_MANF_5750: FS",SLAC,0%,52213.52213_EEDHW (Electronics & Engineering Div - HW Engr),52213_EEDHW (Electronics & Engineering Div - HW Engr),Labor,0.0d,15.0,15.0,At Completion Units,8/18/2022,9/8/2022,0,0,0,0,0,0,0,0,0,0,1.03_Accelerator Systems (AS),1.03.06_AS Soft X-Ray Undulator (SXR) - SLAC,1.03.06.06_AS Soft X-Ray Undulator Procurement and Fabrication - SLAC,1.03.06.06.03_SXR Undulator Integration and Testing,AS_SXU_MANF_1046_Tune and Calibrate Pre-production Undulator - SXU_HE_10,Electrical,,SLAC,Labor
103762,1.03,1.03.06,1.03.06.06,1.03.06.06.03,1.03.06.06.03,SXR Undulator Integration and Testing,AS_SXU_MANF_1046,Tune and Calibrate Pre-production Undulator - SXU_HE_10,15.0,48.0,48.0,48.0,06-29-22,07-20-22,AS_SXU_MANF_1041: FS,"AS_SXU_MANF_1146: FS, AS_SXU_MANF_5750: FS",SLAC,0%,52198.52198_METSMANF (METSD Manufacturing),52198_METSMANF (METSD Manufacturing),Labor,0.0d,15.0,15.0,At Completion Units,8/18/2022,9/8/2022,0,0,0,0,0,0,0,0,0,0,1.03_Accelerator Systems (AS),1.03.06_AS Soft X-Ray Undulator (SXR) - SLAC,1.03.06.06_AS Soft X-Ray Undulator Procurement and Fabrication - SLAC,1.03.06.06.03_SXR Undulator Integration and Testing,AS_SXU_MANF_1046_Tune and Calibrate Pre-production Undulator - SXU_HE_10,Manufacturing,,SLAC,Labor
103763,1.03,1.03.06,1.03.06.06,1.03.06.06.03,1.03.06.06.03,SXR Undulator Integration and Testing,AS_SXU_MANF_1046,Tune and Calibrate Pre-production Undulator - SXU_HE_10,15.0,634.0,634.0,634.0,06-29-22,07-20-22,AS_SXU_MANF_1041: FS,"AS_SXU_MANF_1146: FS, AS_SXU_MANF_5750: FS",SLAC,0%,52191.52191_METSMET Metrology,52191_METSMET Metrology,Labor,0.0d,15.0,15.0,At Completion Units,8/18/2022,9/8/2022,0,0,0,0,0,0,0,0,0,0,1.03_Accelerator Systems (AS),1.03.06_AS Soft X-Ray Undulator (SXR) - SLAC,1.03.06.06_AS Soft X-Ray Undulator Procurement and Fabrication - SLAC,1.03.06.06.03_SXR Undulator Integration and Testing,AS_SXU_MANF_1046_Tune and Calibrate Pre-production Undulator - SXU_HE_10,Metrology,,SLAC,Labor
103764,1.03,1.03.06,1.03.06.06,1.03.06.06.03,1.03.06.06.03,SXR Undulator Integration and Testing,AS_SXU_MANF_1046,Tune and Calibrate Pre-production Undulator - SXU_HE_10,15.0,32.0,32.0,32.0,06-29-22,07-20-22,AS_SXU_MANF_1041: FS,"AS_SXU_MANF_1146: FS, AS_SXU_MANF_5750: FS",SLAC,0%,0106.0106_Staff Scientist,0106_Staff Scientist,Labor,0.0d,15.0,15.0,At Completion Units,8/18/2022,9/8/2022,0,0,0,0,0,0,0,0,0,0,1.03_Accelerator Systems (AS),1.03.06_AS Soft X-Ray Undulator (SXR) - SLAC,1.03.06.06_AS Soft X-Ray Undulator Procurement and Fabrication - SLAC,1.03.06.06.03_SXR Undulator Integration and Testing,AS_SXU_MANF_1046_Tune and Calibrate Pre-production Undulator - SXU_HE_10,Scientist,,SLAC,Labor
103765,1.03,1.03.06,1.03.06.06,1.03.06.06.03,1.03.06.06.03,SXR Undulator Integration and Testing,AS_SXU_MANF_1046,Tune and Calibrate Pre-production Undulator - SXU_HE_10,15.0,16.0,16.0,16.0,06-29-22,07-20-22,AS_SXU_MANF_1041: FS,"AS_SXU_MANF_1146: FS, AS_SXU_MANF_5750: FS",SLAC,0%,52169.52169_METS Mechanical Engineer,52169_METS Mechanical Engineer,Labor,0.0d,15.0,15.0,At Completion Units,8/18/2022,9/8/2022,0,0,0,0,0,0,0,0,0,0,1.03_Accelerator Systems (AS),1.03.06_AS Soft X-Ray Undulator (SXR) - SLAC,1.03.06.06_AS Soft X-Ray Undulator Procurement and Fabrication - SLAC,1.03.06.06.03_SXR Undulator Integration and Testing,AS_SXU_MANF_1046_Tune and Calibrate Pre-production Undulator - SXU_HE_10,Mechanical,,SLAC,Labor
103766,1.03,1.03.06,1.03.06.06,1.03.06.06.03,1.03.06.06.03,SXR Undulator Integration and Testing,AS_SXU_MANF_1031,Post Retrofit Checkout - SXU_REFB_A (Pre-production),4.0,12.0,12.0,12.0,06-23-22,06-28-22,AS_SXU_MANF_1021: FS,AS_SXU_MANF_1041: FS,SLAC,0%,52152.52152_FAC Fleet,52152_FAC Fleet,Labor,0.0d,4.0,4.0,At Completion Units,8/12/2022,8/17/2022,0,0,0,0,0,0,0,0,0,0,1.03_Accelerator Systems (AS),1.03.06_AS Soft X-Ray Undulator (SXR) - SLAC,1.03.06.06_AS Soft X-Ray Undulator Procurement and Fabrication - SLAC,1.03.06.06.03_SXR Undulator Integration and Testing,AS_SXU_MANF_1031_Post Retrofit Checkout - SXU_REFB_A (Pre-production),Support System,,SLAC,Labor
103767,1.03,1.03.06,1.03.06.06,1.03.06.06.03,1.03.06.06.03,SXR Undulator Integration and Testing,AS_SXU_MANF_1011,Receiving Inspection - Pre-production Magnet Modules - SXU_REFB_A,3.0,4.0,4.0,4.0,04-26-22,04-28-22,AS_SXU_MANF_1001: FS,AS_SXU_MANF_1021: FS,SLAC,0%,52198.52198_METSMANF (METSD Manufacturing),52198_METSMANF (METSD Manufacturing),Labor,0.0d,3.0,3.0,At Completion Units,5/4/2022,5/6/2022,0,0,0,0,0,0,0,0,0,0,1.03_Accelerator Systems (AS),1.03.06_AS Soft X-Ray Undulator (SXR) - SLAC,1.03.06.06_AS Soft X-Ray Undulator Procurement and Fabrication - SLAC,1.03.06.06.03_SXR Undulator Integration and Testing,AS_SXU_MANF_1011_Receiving Inspection - Pre-production Magnet Modules - SXU_REFB_A,Manufacturing,,SLAC,Labor
103768,1.03,1.03.06,1.03.06.06,1.03.06.06.03,1.03.06.06.03,SXR Undulator Integration and Testing,AS_SXU_MANF_1011,Receiving Inspection - Pre-production Magnet Modules - SXU_REFB_A,3.0,12.0,12.0,12.0,04-26-22,04-28-22,AS_SXU_MANF_1001: FS,AS_SXU_MANF_1021: FS,SLAC,0%,52191.52191_METSMET Metrology,52191_METSMET Metrology,Labor,0.0d,3.0,3.0,At Completion Units,5/4/2022,5/6/2022,0,0,0,0,0,0,0,0,0,0,1.03_Accelerator Systems (AS),1.03.06_AS Soft X-Ray Undulator (SXR) - SLAC,1.03.06.06_AS Soft X-Ray Undulator Procurement and Fabrication - SLAC,1.03.06.06.03_SXR Undulator Integration and Testing,AS_SXU_MANF_1011_Receiving Inspection - Pre-production Magnet Modules - SXU_REFB_A,Metrology,,SLAC,Labor
103769,1.03,1.03.06,1.03.06.06,1.03.06.06.03,1.03.06.06.03,SXR Undulator Integration and Testing,AS_SXU_MANF_1031,Post Retrofit Checkout - SXU_REFB_A (Pre-production),4.0,48.0,48.0,48.0,06-23-22,06-28-22,AS_SXU_MANF_1021: FS,AS_SXU_MANF_1041: FS,SLAC,0%,52213.52213_EEDHW (Electronics & Engineering Div - HW Engr),52213_EEDHW (Electronics & Engineering Div - HW Engr),Labor,0.0d,4.0,4.0,At Completion Units,8/12/2022,8/17/2022,0,0,0,0,0,0,0,0,0,0,1.03_Accelerator Systems (AS),1.03.06_AS Soft X-Ray Undulator (SXR) - SLAC,1.03.06.06_AS Soft X-Ray Undulator Procurement and Fabrication - SLAC,1.03.06.06.03_SXR Undulator Integration and Testing,AS_SXU_MANF_1031_Post Retrofit Checkout - SXU_REFB_A (Pre-production),Electrical,,SLAC,Labor
103770,1.03,1.03.06,1.03.06.06,1.03.06.06.03,1.03.06.06.03,SXR Undulator Integration and Testing,AS_SXU_MANF_1031,Post Retrofit Checkout - SXU_REFB_A (Pre-production),4.0,32.0,32.0,32.0,06-23-22,06-28-22,AS_SXU_MANF_1021: FS,AS_SXU_MANF_1041: FS,SLAC,0%,52191.52191_METSMET Metrology,52191_METSMET Metrology,Labor,0.0d,4.0,4.0,At Completion Units,8/12/2022,8/17/2022,0,0,0,0,0,0,0,0,0,0,1.03_Accelerator Systems (AS),1.03.06_AS Soft X-Ray Undulator (SXR) - SLAC,1.03.06.06_AS Soft X-Ray Undulator Procurement and Fabrication - SLAC,1.03.06.06.03_SXR Undulator Integration and Testing,AS_SXU_MANF_1031_Post Retrofit Checkout - SXU_REFB_A (Pre-production),Metrology,,SLAC,Labor
103771,1.03,1.03.06,1.03.06.06,1.03.06.06.03,1.03.06.06.03,SXR Undulator Integration and Testing,AS_SXU_MANF_1031,Post Retrofit Checkout - SXU_REFB_A (Pre-production),4.0,16.0,16.0,16.0,06-23-22,06-28-22,AS_SXU_MANF_1021: FS,AS_SXU_MANF_1041: FS,SLAC,0%,0106.0106_Staff Scientist,0106_Staff Scientist,Labor,0.0d,4.0,4.0,At Completion Units,8/12/2022,8/17/2022,0,0,0,0,0,0,0,0,0,0,1.03_Accelerator Systems (AS),1.03.06_AS Soft X-Ray Undulator (SXR) - SLAC,1.03.06.06_AS Soft X-Ray Undulator Procurement and Fabrication - SLAC,1.03.06.06.03_SXR Undulator Integration and Testing,AS_SXU_MANF_1031_Post Retrofit Checkout - SXU_REFB_A (Pre-production),Scientist,,SLAC,Labor
103772,1.03,1.03.06,1.03.06.06,1.03.06.06.03,1.03.06.06.03,SXR Undulator Integration and Testing,AS_SXU_MANF_1031,Post Retrofit Checkout - SXU_REFB_A (Pre-production),4.0,16.0,16.0,16.0,06-23-22,06-28-22,AS_SXU_MANF_1021: FS,AS_SXU_MANF_1041: FS,SLAC,0%,52169.52169_METS Mechanical Engineer,52169_METS Mechanical Engineer,Labor,0.0d,4.0,4.0,At Completion Units,8/12/2022,8/17/2022,0,0,0,0,0,0,0,0,0,0,1.03_Accelerator Systems (AS),1.03.06_AS Soft X-Ray Undulator (SXR) - SLAC,1.03.06.06_AS Soft X-Ray Undulator Procurement and Fabrication - SLAC,1.03.06.06.03_SXR Undulator Integration and Testing,AS_SXU_MANF_1031_Post Retrofit Checkout - SXU_REFB_A (Pre-production),Mechanical,,SLAC,Labor
103773,1.03,1.03.06,1.03.06.06,1.03.06.06.03,1.03.06.06.03,SXR Undulator Integration and Testing,AS_SXU_MANF_1021,Retrofit SXU Preproduction Magnetic System - SXU_REFB_A,15.0,310.0,310.0,310.0,06-02-22,06-22-22,"AS_SXU_MANF_1011: FS, AS_SXU_MANF_1000: FS, AS_SXU_DE_4250: FS","AS_SXU_MANF_1031: FS, AS_LBL_INST_110: FS",SLAC,0%,52198.52198_METSMANF (METSD Manufacturing),52198_METSMANF (METSD Manufacturing),Labor,0.0d,15.0,15.0,At Completion Units,7/22/2022,8/11/2022,0,0,0,0,0,0,0,0,0,0,1.03_Accelerator Systems (AS),1.03.06_AS Soft X-Ray Undulator (SXR) - SLAC,1.03.06.06_AS Soft X-Ray Undulator Procurement and Fabrication - SLAC,1.03.06.06.03_SXR Undulator Integration and Testing,AS_SXU_MANF_1021_Retrofit SXU Preproduction Magnetic System - SXU_REFB_A,Manufacturing,,SLAC,Labor
103774,1.03,1.03.06,1.03.06.06,1.03.06.06.03,1.03.06.06.03,SXR Undulator Integration and Testing,AS_SXU_MANF_1021,Retrofit SXU Preproduction Magnetic System - SXU_REFB_A,15.0,32.0,32.0,32.0,06-02-22,06-22-22,"AS_SXU_MANF_1011: FS, AS_SXU_MANF_1000: FS, AS_SXU_DE_4250: FS","AS_SXU_MANF_1031: FS, AS_LBL_INST_110: FS",SLAC,0%,52213.52213_EEDHW (Electronics & Engineering Div - HW Engr),52213_EEDHW (Electronics & Engineering Div - HW Engr),Labor,0.0d,15.0,15.0,At Completion Units,7/22/2022,8/11/2022,0,0,0,0,0,0,0,0,0,0,1.03_Accelerator Systems (AS),1.03.06_AS Soft X-Ray Undulator (SXR) - SLAC,1.03.06.06_AS Soft X-Ray Undulator Procurement and Fabrication - SLAC,1.03.06.06.03_SXR Undulator Integration and Testing,AS_SXU_MANF_1021_Retrofit SXU Preproduction Magnetic System - SXU_REFB_A,Electrical,,SLAC,Labor
103775,1.03,1.03.06,1.03.06.06,1.03.06.06.03,1.03.06.06.03,SXR Undulator Integration and Testing,AS_SXU_MANF_1021,Retrofit SXU Preproduction Magnetic System - SXU_REFB_A,15.0,40.0,40.0,40.0,06-02-22,06-22-22,"AS_SXU_MANF_1011: FS, AS_SXU_MANF_1000: FS, AS_SXU_DE_4250: FS","AS_SXU_MANF_1031: FS, AS_LBL_INST_110: FS",SLAC,0%,52169.52169_METS Mechanical Engineer,52169_METS Mechanical Engineer,Labor,0.0d,15.0,15.0,At Completion Units,7/22/2022,8/11/2022,0,0,0,0,0,0,0,0,0,0,1.03_Accelerator Systems (AS),1.03.06_AS Soft X-Ray Undulator (SXR) - SLAC,1.03.06.06_AS Soft X-Ray Undulator Procurement and Fabrication - SLAC,1.03.06.06.03_SXR Undulator Integration and Testing,AS_SXU_MANF_1021_Retrofit SXU Preproduction Magnetic System - SXU_REFB_A,Mechanical,,SLAC,Labor
103776,1.03,1.03.06,1.03.06.06,1.03.06.06.03,1.03.06.06.03,SXR Undulator Integration and Testing,AS_SXU_MANF_1011,Receiving Inspection - Pre-production Magnet Modules - SXU_REFB_A,3.0,8.0,8.0,8.0,04-26-22,04-28-22,AS_SXU_MANF_1001: FS,AS_SXU_MANF_1021: FS,SLAC,0%,52169.52169_METS Mechanical Engineer,52169_METS Mechanical Engineer,Labor,0.0d,3.0,3.0,At Completion Units,5/4/2022,5/6/2022,0,0,0,0,0,0,0,0,0,0,1.03_Accelerator Systems (AS),1.03.06_AS Soft X-Ray Undulator (SXR) - SLAC,1.03.06.06_AS Soft X-Ray Undulator Procurement and Fabrication - SLAC,1.03.06.06.03_SXR Undulator Integration and Testing,AS_SXU_MANF_1011_Receiving Inspection - Pre-production Magnet Modules - SXU_REFB_A,Mechanical,,SLAC,Labor
103777,1.03,1.03.06,1.03.06.06,1.03.06.06.03,1.03.06.06.03,SXR Undulator Integration and Testing,AS_SXU_MANF_1121,Retrofit SXU Magnetic System - SXU_REFB_B,15.0,48.0,48.0,48.0,06-13-24,07-03-24,"AS_SXU_MANF_1111: FS, AS_SXU_INST_1100: FS",AS_SXU_MANF_1131: FS,SLAC,0%,52191.52191_METSMET Metrology,52191_METSMET Metrology,Labor,0.0d,15.0,15.0,At Completion Units,10/18/2023,11/7/2023,0,0,0,0,0,0,0,0,0,0,1.03_Accelerator Systems (AS),1.03.06_AS Soft X-Ray Undulator (SXR) - SLAC,1.03.06.06_AS Soft X-Ray Undulator Procurement and Fabrication - SLAC,1.03.06.06.03_SXR Undulator Integration and Testing,AS_SXU_MANF_1121_Retrofit SXU Magnetic System - SXU_REFB_B,Metrology,,SLAC,Labor
103778,1.03,1.03.06,1.03.06.06,1.03.06.06.03,1.03.06.06.03,SXR Undulator Integration and Testing,AS_SXU_MANF_1146,Tune and Calibrate Undulator -  SXU_HE_11,15.0,32.0,32.0,32.0,07-11-24,07-31-24,"AS_SXU_MANF_1141: FS, AS_SXU_MANF_1046: FS","AS_SXU_MANF_1156: FS, AS_SXU_MANF_1246: FS",SLAC,0%,52213.52213_EEDHW (Electronics & Engineering Div - HW Engr),52213_EEDHW (Electronics & Engineering Div - HW Engr),Labor,0.0d,15.0,15.0,At Completion Units,11/14/2023,12/6/2023,0,0,0,0,0,0,0,0,0,0,1.03_Accelerator Systems (AS),1.03.06_AS Soft X-Ray Undulator (SXR) - SLAC,1.03.06.06_AS Soft X-Ray Undulator Procurement and Fabrication - SLAC,1.03.06.06.03_SXR Undulator Integration and Testing,AS_SXU_MANF_1146_Tune and Calibrate Undulator -  SXU_HE_11,Electrical,,SLAC,Labor
103779,1.03,1.03.06,1.03.06.06,1.03.06.06.03,1.03.06.06.03,SXR Undulator Integration and Testing,AS_SXU_MANF_1146,Tune and Calibrate Undulator -  SXU_HE_11,15.0,48.0,48.0,48.0,07-11-24,07-31-24,"AS_SXU_MANF_1141: FS, AS_SXU_MANF_1046: FS","AS_SXU_MANF_1156: FS, AS_SXU_MANF_1246: FS",SLAC,0%,52198.52198_METSMANF (METSD Manufacturing),52198_METSMANF (METSD Manufacturing),Labor,0.0d,15.0,15.0,At Completion Units,11/14/2023,12/6/2023,0,0,0,0,0,0,0,0,0,0,1.03_Accelerator Systems (AS),1.03.06_AS Soft X-Ray Undulator (SXR) - SLAC,1.03.06.06_AS Soft X-Ray Undulator Procurement and Fabrication - SLAC,1.03.06.06.03_SXR Undulator Integration and Testing,AS_SXU_MANF_1146_Tune and Calibrate Undulator -  SXU_HE_11,Manufacturing,,SLAC,Labor
103780,1.03,1.03.06,1.03.06.06,1.03.06.06.03,1.03.06.06.03,SXR Undulator Integration and Testing,AS_SXU_MANF_1146,Tune and Calibrate Undulator -  SXU_HE_11,15.0,394.0,394.0,394.0,07-11-24,07-31-24,"AS_SXU_MANF_1141: FS, AS_SXU_MANF_1046: FS","AS_SXU_MANF_1156: FS, AS_SXU_MANF_1246: FS",SLAC,0%,52191.52191_METSMET Metrology,52191_METSMET Metrology,Labor,0.0d,15.0,15.0,At Completion Units,11/14/2023,12/6/2023,0,0,0,0,0,0,0,0,0,0,1.03_Accelerator Systems (AS),1.03.06_AS Soft X-Ray Undulator (SXR) - SLAC,1.03.06.06_AS Soft X-Ray Undulator Procurement and Fabrication - SLAC,1.03.06.06.03_SXR Undulator Integration and Testing,AS_SXU_MANF_1146_Tune and Calibrate Undulator -  SXU_HE_11,Metrology,,SLAC,Labor
103781,1.03,1.03.06,1.03.06.06,1.03.06.06.03,1.03.06.06.03,SXR Undulator Integration and Testing,AS_SXU_MANF_1146,Tune and Calibrate Undulator -  SXU_HE_11,15.0,32.0,32.0,32.0,07-11-24,07-31-24,"AS_SXU_MANF_1141: FS, AS_SXU_MANF_1046: FS","AS_SXU_MANF_1156: FS, AS_SXU_MANF_1246: FS",SLAC,0%,0106.0106_Staff Scientist,0106_Staff Scientist,Labor,0.0d,15.0,15.0,At Completion Units,11/14/2023,12/6/2023,0,0,0,0,0,0,0,0,0,0,1.03_Accelerator Systems (AS),1.03.06_AS Soft X-Ray Undulator (SXR) - SLAC,1.03.06.06_AS Soft X-Ray Undulator Procurement and Fabrication - SLAC,1.03.06.06.03_SXR Undulator Integration and Testing,AS_SXU_MANF_1146_Tune and Calibrate Undulator -  SXU_HE_11,Scientist,,SLAC,Labor
103782,1.03,1.03.06,1.03.06.06,1.03.06.06.03,1.03.06.06.03,SXR Undulator Integration and Testing,AS_SXU_MANF_1146,Tune and Calibrate Undulator -  SXU_HE_11,15.0,16.0,16.0,16.0,07-11-24,07-31-24,"AS_SXU_MANF_1141: FS, AS_SXU_MANF_1046: FS","AS_SXU_MANF_1156: FS, AS_SXU_MANF_1246: FS",SLAC,0%,52169.52169_METS Mechanical Engineer,52169_METS Mechanical Engineer,Labor,0.0d,15.0,15.0,At Completion Units,11/14/2023,12/6/2023,0,0,0,0,0,0,0,0,0,0,1.03_Accelerator Systems (AS),1.03.06_AS Soft X-Ray Undulator (SXR) - SLAC,1.03.06.06_AS Soft X-Ray Undulator Procurement and Fabrication - SLAC,1.03.06.06.03_SXR Undulator Integration and Testing,AS_SXU_MANF_1146_Tune and Calibrate Undulator -  SXU_HE_11,Mechanical,,SLAC,Labor
103783,1.03,1.03.06,1.03.06.06,1.03.06.06.03,1.03.06.06.03,SXR Undulator Integration and Testing,AS_SXU_MANF_1131,Post Retrofit Checkout - SXU_REFB_B,4.0,12.0,12.0,12.0,07-05-24,07-10-24,AS_SXU_MANF_1121: FS,AS_SXU_MANF_1141: FS,SLAC,0%,52152.52152_FAC Fleet,52152_FAC Fleet,Labor,0.0d,4.0,4.0,At Completion Units,11/8/2023,11/13/2023,0,0,0,0,0,0,0,0,0,0,1.03_Accelerator Systems (AS),1.03.06_AS Soft X-Ray Undulator (SXR) - SLAC,1.03.06.06_AS Soft X-Ray Undulator Procurement and Fabrication - SLAC,1.03.06.06.03_SXR Undulator Integration and Testing,AS_SXU_MANF_1131_Post Retrofit Checkout - SXU_REFB_B,Support System,,SLAC,Labor
103784,1.03,1.03.06,1.03.06.06,1.03.06.06.03,1.03.06.06.03,SXR Undulator Integration and Testing,AS_SXU_MANF_1111,Receiving Inspection - Magnet Modules - SXU_REFB_B,3.0,4.0,4.0,4.0,06-10-24,06-12-24,AS_SXU_MANF_1101: FS,AS_SXU_MANF_1121: FS,SLAC,0%,52198.52198_METSMANF (METSD Manufacturing),52198_METSMANF (METSD Manufacturing),Labor,0.0d,3.0,3.0,At Completion Units,10/13/2023,10/17/2023,0,0,0,0,0,0,0,0,0,0,1.03_Accelerator Systems (AS),1.03.06_AS Soft X-Ray Undulator (SXR) - SLAC,1.03.06.06_AS Soft X-Ray Undulator Procurement and Fabrication - SLAC,1.03.06.06.03_SXR Undulator Integration and Testing,AS_SXU_MANF_1111_Receiving Inspection - Magnet Modules - SXU_REFB_B,Manufacturing,,SLAC,Labor
103785,1.03,1.03.06,1.03.06.06,1.03.06.06.03,1.03.06.06.03,SXR Undulator Integration and Testing,AS_SXU_MANF_1111,Receiving Inspection - Magnet Modules - SXU_REFB_B,3.0,12.0,12.0,12.0,06-10-24,06-12-24,AS_SXU_MANF_1101: FS,AS_SXU_MANF_1121: FS,SLAC,0%,52191.52191_METSMET Metrology,52191_METSMET Metrology,Labor,0.0d,3.0,3.0,At Completion Units,10/13/2023,10/17/2023,0,0,0,0,0,0,0,0,0,0,1.03_Accelerator Systems (AS),1.03.06_AS Soft X-Ray Undulator (SXR) - SLAC,1.03.06.06_AS Soft X-Ray Undulator Procurement and Fabrication - SLAC,1.03.06.06.03_SXR Undulator Integration and Testing,AS_SXU_MANF_1111_Receiving Inspection - Magnet Modules - SXU_REFB_B,Metrology,,SLAC,Labor
103786,1.03,1.03.06,1.03.06.06,1.03.06.06.03,1.03.06.06.03,SXR Undulator Integration and Testing,AS_SXU_MANF_1131,Post Retrofit Checkout - SXU_REFB_B,4.0,32.0,32.0,32.0,07-05-24,07-10-24,AS_SXU_MANF_1121: FS,AS_SXU_MANF_1141: FS,SLAC,0%,52213.52213_EEDHW (Electronics & Engineering Div - HW Engr),52213_EEDHW (Electronics & Engineering Div - HW Engr),Labor,0.0d,4.0,4.0,At Completion Units,11/8/2023,11/13/2023,0,0,0,0,0,0,0,0,0,0,1.03_Accelerator Systems (AS),1.03.06_AS Soft X-Ray Undulator (SXR) - SLAC,1.03.06.06_AS Soft X-Ray Undulator Procurement and Fabrication - SLAC,1.03.06.06.03_SXR Undulator Integration and Testing,AS_SXU_MANF_1131_Post Retrofit Checkout - SXU_REFB_B,Electrical,,SLAC,Labor
103787,1.03,1.03.06,1.03.06.06,1.03.06.06.03,1.03.06.06.03,SXR Undulator Integration and Testing,AS_SXU_MANF_1131,Post Retrofit Checkout - SXU_REFB_B,4.0,32.0,32.0,32.0,07-05-24,07-10-24,AS_SXU_MANF_1121: FS,AS_SXU_MANF_1141: FS,SLAC,0%,52191.52191_METSMET Metrology,52191_METSMET Metrology,Labor,0.0d,4.0,4.0,At Completion Units,11/8/2023,11/13/2023,0,0,0,0,0,0,0,0,0,0,1.03_Accelerator Systems (AS),1.03.06_AS Soft X-Ray Undulator (SXR) - SLAC,1.03.06.06_AS Soft X-Ray Undulator Procurement and Fabrication - SLAC,1.03.06.06.03_SXR Undulator Integration and Testing,AS_SXU_MANF_1131_Post Retrofit Checkout - SXU_REFB_B,Metrology,,SLAC,Labor
103788,1.03,1.03.06,1.03.06.06,1.03.06.06.03,1.03.06.06.03,SXR Undulator Integration and Testing,AS_SXU_MANF_1131,Post Retrofit Checkout - SXU_REFB_B,4.0,16.0,16.0,16.0,07-05-24,07-10-24,AS_SXU_MANF_1121: FS,AS_SXU_MANF_1141: FS,SLAC,0%,0106.0106_Staff Scientist,0106_Staff Scientist,Labor,0.0d,4.0,4.0,At Completion Units,11/8/2023,11/13/2023,0,0,0,0,0,0,0,0,0,0,1.03_Accelerator Systems (AS),1.03.06_AS Soft X-Ray Undulator (SXR) - SLAC,1.03.06.06_AS Soft X-Ray Undulator Procurement and Fabrication - SLAC,1.03.06.06.03_SXR Undulator Integration and Testing,AS_SXU_MANF_1131_Post Retrofit Checkout - SXU_REFB_B,Scientist,,SLAC,Labor
103789,1.03,1.03.06,1.03.06.06,1.03.06.06.03,1.03.06.06.03,SXR Undulator Integration and Testing,AS_SXU_MANF_1131,Post Retrofit Checkout - SXU_REFB_B,4.0,4.0,4.0,4.0,07-05-24,07-10-24,AS_SXU_MANF_1121: FS,AS_SXU_MANF_1141: FS,SLAC,0%,52169.52169_METS Mechanical Engineer,52169_METS Mechanical Engineer,Labor,0.0d,4.0,4.0,At Completion Units,11/8/2023,11/13/2023,0,0,0,0,0,0,0,0,0,0,1.03_Accelerator Systems (AS),1.03.06_AS Soft X-Ray Undulator (SXR) - SLAC,1.03.06.06_AS Soft X-Ray Undulator Procurement and Fabrication - SLAC,1.03.06.06.03_SXR Undulator Integration and Testing,AS_SXU_MANF_1131_Post Retrofit Checkout - SXU_REFB_B,Mechanical,,SLAC,Labor
103790,1.03,1.03.06,1.03.06.06,1.03.06.06.03,1.03.06.06.03,SXR Undulator Integration and Testing,AS_SXU_MANF_1121,Retrofit SXU Magnetic System - SXU_REFB_B,15.0,280.0,280.0,280.0,06-13-24,07-03-24,"AS_SXU_MANF_1111: FS, AS_SXU_INST_1100: FS",AS_SXU_MANF_1131: FS,SLAC,0%,52198.52198_METSMANF (METSD Manufacturing),52198_METSMANF (METSD Manufacturing),Labor,0.0d,15.0,15.0,At Completion Units,10/18/2023,11/7/2023,0,0,0,0,0,0,0,0,0,0,1.03_Accelerator Systems (AS),1.03.06_AS Soft X-Ray Undulator (SXR) - SLAC,1.03.06.06_AS Soft X-Ray Undulator Procurement and Fabrication - SLAC,1.03.06.06.03_SXR Undulator Integration and Testing,AS_SXU_MANF_1121_Retrofit SXU Magnetic System - SXU_REFB_B,Manufacturing,,SLAC,Labor
103791,1.03,1.03.06,1.03.06.06,1.03.06.06.03,1.03.06.06.03,SXR Undulator Integration and Testing,AS_SXU_MANF_1121,Retrofit SXU Magnetic System - SXU_REFB_B,15.0,24.0,24.0,24.0,06-13-24,07-03-24,"AS_SXU_MANF_1111: FS, AS_SXU_INST_1100: FS",AS_SXU_MANF_1131: FS,SLAC,0%,52213.52213_EEDHW (Electronics & Engineering Div - HW Engr),52213_EEDHW (Electronics & Engineering Div - HW Engr),Labor,0.0d,15.0,15.0,At Completion Units,10/18/2023,11/7/2023,0,0,0,0,0,0,0,0,0,0,1.03_Accelerator Systems (AS),1.03.06_AS Soft X-Ray Undulator (SXR) - SLAC,1.03.06.06_AS Soft X-Ray Undulator Procurement and Fabrication - SLAC,1.03.06.06.03_SXR Undulator Integration and Testing,AS_SXU_MANF_1121_Retrofit SXU Magnetic System - SXU_REFB_B,Electrical,,SLAC,Labor
103792,1.03,1.03.06,1.03.06.06,1.03.06.06.03,1.03.06.06.03,SXR Undulator Integration and Testing,AS_SXU_MANF_1121,Retrofit SXU Magnetic System - SXU_REFB_B,15.0,12.0,12.0,12.0,06-13-24,07-03-24,"AS_SXU_MANF_1111: FS, AS_SXU_INST_1100: FS",AS_SXU_MANF_1131: FS,SLAC,0%,52169.52169_METS Mechanical Engineer,52169_METS Mechanical Engineer,Labor,0.0d,15.0,15.0,At Completion Units,10/18/2023,11/7/2023,0,0,0,0,0,0,0,0,0,0,1.03_Accelerator Systems (AS),1.03.06_AS Soft X-Ray Undulator (SXR) - SLAC,1.03.06.06_AS Soft X-Ray Undulator Procurement and Fabrication - SLAC,1.03.06.06.03_SXR Undulator Integration and Testing,AS_SXU_MANF_1121_Retrofit SXU Magnetic System - SXU_REFB_B,Mechanical,,SLAC,Labor
103793,1.03,1.03.06,1.03.06.06,1.03.06.06.03,1.03.06.06.03,SXR Undulator Integration and Testing,AS_SXU_MANF_1111,Receiving Inspection - Magnet Modules - SXU_REFB_B,3.0,8.0,8.0,8.0,06-10-24,06-12-24,AS_SXU_MANF_1101: FS,AS_SXU_MANF_1121: FS,SLAC,0%,52169.52169_METS Mechanical Engineer,52169_METS Mechanical Engineer,Labor,0.0d,3.0,3.0,At Completion Units,10/13/2023,10/17/2023,0,0,0,0,0,0,0,0,0,0,1.03_Accelerator Systems (AS),1.03.06_AS Soft X-Ray Undulator (SXR) - SLAC,1.03.06.06_AS Soft X-Ray Undulator Procurement and Fabrication - SLAC,1.03.06.06.03_SXR Undulator Integration and Testing,AS_SXU_MANF_1111_Receiving Inspection - Magnet Modules - SXU_REFB_B,Mechanical,,SLAC,Labor
103794,1.03,1.03.06,1.03.06.06,1.03.06.06.03,1.03.06.06.03,SXR Undulator Integration and Testing,AS_SXU_MANF_0346,Tune and Calibrate Undulator - SXU_HE_03,15.0,32.0,32.0,32.0,05-07-25,05-28-25,"AS_SXU_MANF_0306: FS, AS_SXU_MANF_0246: FS","AS_SXU_MANF_0356: FS, AS_SXU_MANF_0446: FS",SLAC,0%,52213.52213_EEDHW (Electronics & Engineering Div - HW Engr),52213_EEDHW (Electronics & Engineering Div - HW Engr),Labor,0.0d,15.0,15.0,At Completion Units,7/1/2024,7/22/2024,0,0,0,0,0,0,0,0,0,0,1.03_Accelerator Systems (AS),1.03.06_AS Soft X-Ray Undulator (SXR) - SLAC,1.03.06.06_AS Soft X-Ray Undulator Procurement and Fabrication - SLAC,1.03.06.06.03_SXR Undulator Integration and Testing,AS_SXU_MANF_0346_Tune and Calibrate Undulator - SXU_HE_03,Electrical,,SLAC,Labor
103795,1.03,1.03.06,1.03.06.06,1.03.06.06.03,1.03.06.06.03,SXR Undulator Integration and Testing,AS_SXU_MANF_0346,Tune and Calibrate Undulator - SXU_HE_03,15.0,48.0,48.0,48.0,05-07-25,05-28-25,"AS_SXU_MANF_0306: FS, AS_SXU_MANF_0246: FS","AS_SXU_MANF_0356: FS, AS_SXU_MANF_0446: FS",SLAC,0%,52198.52198_METSMANF (METSD Manufacturing),52198_METSMANF (METSD Manufacturing),Labor,0.0d,15.0,15.0,At Completion Units,7/1/2024,7/22/2024,0,0,0,0,0,0,0,0,0,0,1.03_Accelerator Systems (AS),1.03.06_AS Soft X-Ray Undulator (SXR) - SLAC,1.03.06.06_AS Soft X-Ray Undulator Procurement and Fabrication - SLAC,1.03.06.06.03_SXR Undulator Integration and Testing,AS_SXU_MANF_0346_Tune and Calibrate Undulator - SXU_HE_03,Manufacturing,,SLAC,Labor
103796,1.03,1.03.06,1.03.06.06,1.03.06.06.03,1.03.06.06.03,SXR Undulator Integration and Testing,AS_SXU_MANF_0346,Tune and Calibrate Undulator - SXU_HE_03,15.0,394.0,394.0,394.0,05-07-25,05-28-25,"AS_SXU_MANF_0306: FS, AS_SXU_MANF_0246: FS","AS_SXU_MANF_0356: FS, AS_SXU_MANF_0446: FS",SLAC,0%,52191.52191_METSMET Metrology,52191_METSMET Metrology,Labor,0.0d,15.0,15.0,At Completion Units,7/1/2024,7/22/2024,0,0,0,0,0,0,0,0,0,0,1.03_Accelerator Systems (AS),1.03.06_AS Soft X-Ray Undulator (SXR) - SLAC,1.03.06.06_AS Soft X-Ray Undulator Procurement and Fabrication - SLAC,1.03.06.06.03_SXR Undulator Integration and Testing,AS_SXU_MANF_0346_Tune and Calibrate Undulator - SXU_HE_03,Metrology,,SLAC,Labor
103797,1.03,1.03.06,1.03.06.06,1.03.06.06.03,1.03.06.06.03,SXR Undulator Integration and Testing,AS_SXU_MANF_0346,Tune and Calibrate Undulator - SXU_HE_03,15.0,32.0,32.0,32.0,05-07-25,05-28-25,"AS_SXU_MANF_0306: FS, AS_SXU_MANF_0246: FS","AS_SXU_MANF_0356: FS, AS_SXU_MANF_0446: FS",SLAC,0%,0106.0106_Staff Scientist,0106_Staff Scientist,Labor,0.0d,15.0,15.0,At Completion Units,7/1/2024,7/22/2024,0,0,0,0,0,0,0,0,0,0,1.03_Accelerator Systems (AS),1.03.06_AS Soft X-Ray Undulator (SXR) - SLAC,1.03.06.06_AS Soft X-Ray Undulator Procurement and Fabrication - SLAC,1.03.06.06.03_SXR Undulator Integration and Testing,AS_SXU_MANF_0346_Tune and Calibrate Undulator - SXU_HE_03,Scientist,,SLAC,Labor
103798,1.03,1.03.06,1.03.06.06,1.03.06.06.03,1.03.06.06.03,SXR Undulator Integration and Testing,AS_SXU_MANF_0346,Tune and Calibrate Undulator - SXU_HE_03,15.0,16.0,16.0,16.0,05-07-25,05-28-25,"AS_SXU_MANF_0306: FS, AS_SXU_MANF_0246: FS","AS_SXU_MANF_0356: FS, AS_SXU_MANF_0446: FS",SLAC,0%,52169.52169_METS Mechanical Engineer,52169_METS Mechanical Engineer,Labor,0.0d,15.0,15.0,At Completion Units,7/1/2024,7/22/2024,0,0,0,0,0,0,0,0,0,0,1.03_Accelerator Systems (AS),1.03.06_AS Soft X-Ray Undulator (SXR) - SLAC,1.03.06.06_AS Soft X-Ray Undulator Procurement and Fabrication - SLAC,1.03.06.06.03_SXR Undulator Integration and Testing,AS_SXU_MANF_0346_Tune and Calibrate Undulator - SXU_HE_03,Mechanical,,SLAC,Labor
103799,1.03,1.03.06,1.03.06.06,1.03.06.06.03,1.03.06.06.03,SXR Undulator Integration and Testing,AS_SXU_MANF_0946,Tune and Calibrate Undulator - SXU_HE_09,15.0,32.0,32.0,32.0,12-18-25,01-22-26,"AS_SXU_MANF_0906: FS, AS_SXU_MANF_0846: FS",AS_SXU_MANF_0956: FS,SLAC,0%,52213.52213_EEDHW (Electronics & Engineering Div - HW Engr),52213_EEDHW (Electronics & Engineering Div - HW Engr),Labor,0.0d,15.0,15.0,At Completion Units,2/26/2025,3/18/2025,0,0,0,0,0,0,0,0,0,0,1.03_Accelerator Systems (AS),1.03.06_AS Soft X-Ray Undulator (SXR) - SLAC,1.03.06.06_AS Soft X-Ray Undulator Procurement and Fabrication - SLAC,1.03.06.06.03_SXR Undulator Integration and Testing,AS_SXU_MANF_0946_Tune and Calibrate Undulator - SXU_HE_09,Electrical,,SLAC,Labor
103800,1.03,1.03.06,1.03.06.06,1.03.06.06.03,1.03.06.06.03,SXR Undulator Integration and Testing,AS_SXU_MANF_0946,Tune and Calibrate Undulator - SXU_HE_09,15.0,48.0,48.0,48.0,12-18-25,01-22-26,"AS_SXU_MANF_0906: FS, AS_SXU_MANF_0846: FS",AS_SXU_MANF_0956: FS,SLAC,0%,52198.52198_METSMANF (METSD Manufacturing),52198_METSMANF (METSD Manufacturing),Labor,0.0d,15.0,15.0,At Completion Units,2/26/2025,3/18/2025,0,0,0,0,0,0,0,0,0,0,1.03_Accelerator Systems (AS),1.03.06_AS Soft X-Ray Undulator (SXR) - SLAC,1.03.06.06_AS Soft X-Ray Undulator Procurement and Fabrication - SLAC,1.03.06.06.03_SXR Undulator Integration and Testing,AS_SXU_MANF_0946_Tune and Calibrate Undulator - SXU_HE_09,Manufacturing,,SLAC,Labor
103801,1.03,1.03.06,1.03.06.06,1.03.06.06.03,1.03.06.06.03,SXR Undulator Integration and Testing,AS_SXU_MANF_0946,Tune and Calibrate Undulator - SXU_HE_09,15.0,394.0,394.0,394.0,12-18-25,01-22-26,"AS_SXU_MANF_0906: FS, AS_SXU_MANF_0846: FS",AS_SXU_MANF_0956: FS,SLAC,0%,52191.52191_METSMET Metrology,52191_METSMET Metrology,Labor,0.0d,15.0,15.0,At Completion Units,2/26/2025,3/18/2025,0,0,0,0,0,0,0,0,0,0,1.03_Accelerator Systems (AS),1.03.06_AS Soft X-Ray Undulator (SXR) - SLAC,1.03.06.06_AS Soft X-Ray Undulator Procurement and Fabrication - SLAC,1.03.06.06.03_SXR Undulator Integration and Testing,AS_SXU_MANF_0946_Tune and Calibrate Undulator - SXU_HE_09,Metrology,,SLAC,Labor
103802,1.03,1.03.06,1.03.06.06,1.03.06.06.03,1.03.06.06.03,SXR Undulator Integration and Testing,AS_SXU_MANF_0946,Tune and Calibrate Undulator - SXU_HE_09,15.0,32.0,32.0,32.0,12-18-25,01-22-26,"AS_SXU_MANF_0906: FS, AS_SXU_MANF_0846: FS",AS_SXU_MANF_0956: FS,SLAC,0%,0106.0106_Staff Scientist,0106_Staff Scientist,Labor,0.0d,15.0,15.0,At Completion Units,2/26/2025,3/18/2025,0,0,0,0,0,0,0,0,0,0,1.03_Accelerator Systems (AS),1.03.06_AS Soft X-Ray Undulator (SXR) - SLAC,1.03.06.06_AS Soft X-Ray Undulator Procurement and Fabrication - SLAC,1.03.06.06.03_SXR Undulator Integration and Testing,AS_SXU_MANF_0946_Tune and Calibrate Undulator - SXU_HE_09,Scientist,,SLAC,Labor
103803,1.03,1.03.06,1.03.06.06,1.03.06.06.03,1.03.06.06.03,SXR Undulator Integration and Testing,AS_SXU_MANF_0946,Tune and Calibrate Undulator - SXU_HE_09,15.0,16.0,16.0,16.0,12-18-25,01-22-26,"AS_SXU_MANF_0906: FS, AS_SXU_MANF_0846: FS",AS_SXU_MANF_0956: FS,SLAC,0%,52169.52169_METS Mechanical Engineer,52169_METS Mechanical Engineer,Labor,0.0d,15.0,15.0,At Completion Units,2/26/2025,3/18/2025,0,0,0,0,0,0,0,0,0,0,1.03_Accelerator Systems (AS),1.03.06_AS Soft X-Ray Undulator (SXR) - SLAC,1.03.06.06_AS Soft X-Ray Undulator Procurement and Fabrication - SLAC,1.03.06.06.03_SXR Undulator Integration and Testing,AS_SXU_MANF_0946_Tune and Calibrate Undulator - SXU_HE_09,Mechanical,,SLAC,Labor
103804,1.03,1.03.06,1.03.06.06,1.03.06.06.03,1.03.06.06.03,SXR Undulator Integration and Testing,AS_SXU_MANF_0846,Tune and Calibrate Undulator - SXU_HE_08,15.0,32.0,32.0,32.0,11-11-25,12-03-25,"AS_SXU_MANF_0801: FS, AS_SXU_MANF_0806: FS, AS_SXU_MANF_0746: FS","AS_SXU_MANF_0856: FS, AS_SXU_MANF_0946: FS",SLAC,0%,52213.52213_EEDHW (Electronics & Engineering Div - HW Engr),52213_EEDHW (Electronics & Engineering Div - HW Engr),Labor,0.0d,15.0,15.0,At Completion Units,1/21/2025,2/10/2025,0,0,0,0,0,0,0,0,0,0,1.03_Accelerator Systems (AS),1.03.06_AS Soft X-Ray Undulator (SXR) - SLAC,1.03.06.06_AS Soft X-Ray Undulator Procurement and Fabrication - SLAC,1.03.06.06.03_SXR Undulator Integration and Testing,AS_SXU_MANF_0846_Tune and Calibrate Undulator - SXU_HE_08,Electrical,,SLAC,Labor
103805,1.03,1.03.06,1.03.06.06,1.03.06.06.03,1.03.06.06.03,SXR Undulator Integration and Testing,AS_SXU_MANF_0846,Tune and Calibrate Undulator - SXU_HE_08,15.0,48.0,48.0,48.0,11-11-25,12-03-25,"AS_SXU_MANF_0801: FS, AS_SXU_MANF_0806: FS, AS_SXU_MANF_0746: FS","AS_SXU_MANF_0856: FS, AS_SXU_MANF_0946: FS",SLAC,0%,52198.52198_METSMANF (METSD Manufacturing),52198_METSMANF (METSD Manufacturing),Labor,0.0d,15.0,15.0,At Completion Units,1/21/2025,2/10/2025,0,0,0,0,0,0,0,0,0,0,1.03_Accelerator Systems (AS),1.03.06_AS Soft X-Ray Undulator (SXR) - SLAC,1.03.06.06_AS Soft X-Ray Undulator Procurement and Fabrication - SLAC,1.03.06.06.03_SXR Undulator Integration and Testing,AS_SXU_MANF_0846_Tune and Calibrate Undulator - SXU_HE_08,Manufacturing,,SLAC,Labor
103806,1.03,1.03.06,1.03.06.06,1.03.06.06.03,1.03.06.06.03,SXR Undulator Integration and Testing,AS_SXU_MANF_0846,Tune and Calibrate Undulator - SXU_HE_08,15.0,394.0,394.0,394.0,11-11-25,12-03-25,"AS_SXU_MANF_0801: FS, AS_SXU_MANF_0806: FS, AS_SXU_MANF_0746: FS","AS_SXU_MANF_0856: FS, AS_SXU_MANF_0946: FS",SLAC,0%,52191.52191_METSMET Metrology,52191_METSMET Metrology,Labor,0.0d,15.0,15.0,At Completion Units,1/21/2025,2/10/2025,0,0,0,0,0,0,0,0,0,0,1.03_Accelerator Systems (AS),1.03.06_AS Soft X-Ray Undulator (SXR) - SLAC,1.03.06.06_AS Soft X-Ray Undulator Procurement and Fabrication - SLAC,1.03.06.06.03_SXR Undulator Integration and Testing,AS_SXU_MANF_0846_Tune and Calibrate Undulator - SXU_HE_08,Metrology,,SLAC,Labor
103807,1.03,1.03.06,1.03.06.06,1.03.06.06.03,1.03.06.06.03,SXR Undulator Integration and Testing,AS_SXU_MANF_0846,Tune and Calibrate Undulator - SXU_HE_08,15.0,32.0,32.0,32.0,11-11-25,12-03-25,"AS_SXU_MANF_0801: FS, AS_SXU_MANF_0806: FS, AS_SXU_MANF_0746: FS","AS_SXU_MANF_0856: FS, AS_SXU_MANF_0946: FS",SLAC,0%,0106.0106_Staff Scientist,0106_Staff Scientist,Labor,0.0d,15.0,15.0,At Completion Units,1/21/2025,2/10/2025,0,0,0,0,0,0,0,0,0,0,1.03_Accelerator Systems (AS),1.03.06_AS Soft X-Ray Undulator (SXR) - SLAC,1.03.06.06_AS Soft X-Ray Undulator Procurement and Fabrication - SLAC,1.03.06.06.03_SXR Undulator Integration and Testing,AS_SXU_MANF_0846_Tune and Calibrate Undulator - SXU_HE_08,Scientist,,SLAC,Labor
103808,1.03,1.03.06,1.03.06.06,1.03.06.06.03,1.03.06.06.03,SXR Undulator Integration and Testing,AS_SXU_MANF_0846,Tune and Calibrate Undulator - SXU_HE_08,15.0,16.0,16.0,16.0,11-11-25,12-03-25,"AS_SXU_MANF_0801: FS, AS_SXU_MANF_0806: FS, AS_SXU_MANF_0746: FS","AS_SXU_MANF_0856: FS, AS_SXU_MANF_0946: FS",SLAC,0%,52169.52169_METS Mechanical Engineer,52169_METS Mechanical Engineer,Labor,0.0d,15.0,15.0,At Completion Units,1/21/2025,2/10/2025,0,0,0,0,0,0,0,0,0,0,1.03_Accelerator Systems (AS),1.03.06_AS Soft X-Ray Undulator (SXR) - SLAC,1.03.06.06_AS Soft X-Ray Undulator Procurement and Fabrication - SLAC,1.03.06.06.03_SXR Undulator Integration and Testing,AS_SXU_MANF_0846_Tune and Calibrate Undulator - SXU_HE_08,Mechanical,,SLAC,Labor
103809,1.03,1.03.06,1.03.06.06,1.03.06.06.03,1.03.06.06.03,SXR Undulator Integration and Testing,AS_SXU_MANF_0746,Tune and Calibrate Undulator - SXU_HE_07,15.0,32.0,32.0,32.0,10-07-25,10-27-25,"AS_SXU_MANF_0706: FS, AS_SXU_MANF_0646: FS","AS_SXU_MANF_0756: FS, AS_SXU_MANF_0846: FS",SLAC,0%,52213.52213_EEDHW (Electronics & Engineering Div - HW Engr),52213_EEDHW (Electronics & Engineering Div - HW Engr),Labor,0.0d,15.0,15.0,At Completion Units,12/2/2024,12/20/2024,0,0,0,0,0,0,0,0,0,0,1.03_Accelerator Systems (AS),1.03.06_AS Soft X-Ray Undulator (SXR) - SLAC,1.03.06.06_AS Soft X-Ray Undulator Procurement and Fabrication - SLAC,1.03.06.06.03_SXR Undulator Integration and Testing,AS_SXU_MANF_0746_Tune and Calibrate Undulator - SXU_HE_07,Electrical,,SLAC,Labor
103810,1.03,1.03.06,1.03.06.06,1.03.06.06.03,1.03.06.06.03,SXR Undulator Integration and Testing,AS_SXU_MANF_0746,Tune and Calibrate Undulator - SXU_HE_07,15.0,48.0,48.0,48.0,10-07-25,10-27-25,"AS_SXU_MANF_0706: FS, AS_SXU_MANF_0646: FS","AS_SXU_MANF_0756: FS, AS_SXU_MANF_0846: FS",SLAC,0%,52198.52198_METSMANF (METSD Manufacturing),52198_METSMANF (METSD Manufacturing),Labor,0.0d,15.0,15.0,At Completion Units,12/2/2024,12/20/2024,0,0,0,0,0,0,0,0,0,0,1.03_Accelerator Systems (AS),1.03.06_AS Soft X-Ray Undulator (SXR) - SLAC,1.03.06.06_AS Soft X-Ray Undulator Procurement and Fabrication - SLAC,1.03.06.06.03_SXR Undulator Integration and Testing,AS_SXU_MANF_0746_Tune and Calibrate Undulator - SXU_HE_07,Manufacturing,,SLAC,Labor
103811,1.03,1.03.06,1.03.06.06,1.03.06.06.03,1.03.06.06.03,SXR Undulator Integration and Testing,AS_SXU_MANF_0746,Tune and Calibrate Undulator - SXU_HE_07,15.0,394.0,394.0,394.0,10-07-25,10-27-25,"AS_SXU_MANF_0706: FS, AS_SXU_MANF_0646: FS","AS_SXU_MANF_0756: FS, AS_SXU_MANF_0846: FS",SLAC,0%,52191.52191_METSMET Metrology,52191_METSMET Metrology,Labor,0.0d,15.0,15.0,At Completion Units,12/2/2024,12/20/2024,0,0,0,0,0,0,0,0,0,0,1.03_Accelerator Systems (AS),1.03.06_AS Soft X-Ray Undulator (SXR) - SLAC,1.03.06.06_AS Soft X-Ray Undulator Procurement and Fabrication - SLAC,1.03.06.06.03_SXR Undulator Integration and Testing,AS_SXU_MANF_0746_Tune and Calibrate Undulator - SXU_HE_07,Metrology,,SLAC,Labor
103812,1.03,1.03.06,1.03.06.06,1.03.06.06.03,1.03.06.06.03,SXR Undulator Integration and Testing,AS_SXU_MANF_0746,Tune and Calibrate Undulator - SXU_HE_07,15.0,32.0,32.0,32.0,10-07-25,10-27-25,"AS_SXU_MANF_0706: FS, AS_SXU_MANF_0646: FS","AS_SXU_MANF_0756: FS, AS_SXU_MANF_0846: FS",SLAC,0%,0106.0106_Staff Scientist,0106_Staff Scientist,Labor,0.0d,15.0,15.0,At Completion Units,12/2/2024,12/20/2024,0,0,0,0,0,0,0,0,0,0,1.03_Accelerator Systems (AS),1.03.06_AS Soft X-Ray Undulator (SXR) - SLAC,1.03.06.06_AS Soft X-Ray Undulator Procurement and Fabrication - SLAC,1.03.06.06.03_SXR Undulator Integration and Testing,AS_SXU_MANF_0746_Tune and Calibrate Undulator - SXU_HE_07,Scientist,,SLAC,Labor
103813,1.03,1.03.06,1.03.06.06,1.03.06.06.03,1.03.06.06.03,SXR Undulator Integration and Testing,AS_SXU_MANF_0746,Tune and Calibrate Undulator - SXU_HE_07,15.0,16.0,16.0,16.0,10-07-25,10-27-25,"AS_SXU_MANF_0706: FS, AS_SXU_MANF_0646: FS","AS_SXU_MANF_0756: FS, AS_SXU_MANF_0846: FS",SLAC,0%,52169.52169_METS Mechanical Engineer,52169_METS Mechanical Engineer,Labor,0.0d,15.0,15.0,At Completion Units,12/2/2024,12/20/2024,0,0,0,0,0,0,0,0,0,0,1.03_Accelerator Systems (AS),1.03.06_AS Soft X-Ray Undulator (SXR) - SLAC,1.03.06.06_AS Soft X-Ray Undulator Procurement and Fabrication - SLAC,1.03.06.06.03_SXR Undulator Integration and Testing,AS_SXU_MANF_0746_Tune and Calibrate Undulator - SXU_HE_07,Mechanical,,SLAC,Labor
103814,1.03,1.03.06,1.03.06.06,1.03.06.06.03,1.03.06.06.03,SXR Undulator Integration and Testing,AS_SXU_MANF_0646,Tune and Calibrate Undulator - SXU_HE_06,15.0,32.0,32.0,32.0,09-02-25,09-22-25,"AS_SXU_MANF_0606: FS, AS_SXU_MANF_0546: FS","AS_SXU_MANF_0656: FS, AS_SXU_MANF_0746: FS",SLAC,0%,52213.52213_EEDHW (Electronics & Engineering Div - HW Engr),52213_EEDHW (Electronics & Engineering Div - HW Engr),Labor,0.0d,15.0,15.0,At Completion Units,10/24/2024,11/13/2024,0,0,0,0,0,0,0,0,0,0,1.03_Accelerator Systems (AS),1.03.06_AS Soft X-Ray Undulator (SXR) - SLAC,1.03.06.06_AS Soft X-Ray Undulator Procurement and Fabrication - SLAC,1.03.06.06.03_SXR Undulator Integration and Testing,AS_SXU_MANF_0646_Tune and Calibrate Undulator - SXU_HE_06,Electrical,,SLAC,Labor
103815,1.03,1.03.06,1.03.06.06,1.03.06.06.03,1.03.06.06.03,SXR Undulator Integration and Testing,AS_SXU_MANF_0646,Tune and Calibrate Undulator - SXU_HE_06,15.0,48.0,48.0,48.0,09-02-25,09-22-25,"AS_SXU_MANF_0606: FS, AS_SXU_MANF_0546: FS","AS_SXU_MANF_0656: FS, AS_SXU_MANF_0746: FS",SLAC,0%,52198.52198_METSMANF (METSD Manufacturing),52198_METSMANF (METSD Manufacturing),Labor,0.0d,15.0,15.0,At Completion Units,10/24/2024,11/13/2024,0,0,0,0,0,0,0,0,0,0,1.03_Accelerator Systems (AS),1.03.06_AS Soft X-Ray Undulator (SXR) - SLAC,1.03.06.06_AS Soft X-Ray Undulator Procurement and Fabrication - SLAC,1.03.06.06.03_SXR Undulator Integration and Testing,AS_SXU_MANF_0646_Tune and Calibrate Undulator - SXU_HE_06,Manufacturing,,SLAC,Labor
103816,1.03,1.03.06,1.03.06.06,1.03.06.06.03,1.03.06.06.03,SXR Undulator Integration and Testing,AS_SXU_MANF_0646,Tune and Calibrate Undulator - SXU_HE_06,15.0,394.0,394.0,394.0,09-02-25,09-22-25,"AS_SXU_MANF_0606: FS, AS_SXU_MANF_0546: FS","AS_SXU_MANF_0656: FS, AS_SXU_MANF_0746: FS",SLAC,0%,52191.52191_METSMET Metrology,52191_METSMET Metrology,Labor,0.0d,15.0,15.0,At Completion Units,10/24/2024,11/13/2024,0,0,0,0,0,0,0,0,0,0,1.03_Accelerator Systems (AS),1.03.06_AS Soft X-Ray Undulator (SXR) - SLAC,1.03.06.06_AS Soft X-Ray Undulator Procurement and Fabrication - SLAC,1.03.06.06.03_SXR Undulator Integration and Testing,AS_SXU_MANF_0646_Tune and Calibrate Undulator - SXU_HE_06,Metrology,,SLAC,Labor
103817,1.03,1.03.06,1.03.06.06,1.03.06.06.03,1.03.06.06.03,SXR Undulator Integration and Testing,AS_SXU_MANF_0646,Tune and Calibrate Undulator - SXU_HE_06,15.0,32.0,32.0,32.0,09-02-25,09-22-25,"AS_SXU_MANF_0606: FS, AS_SXU_MANF_0546: FS","AS_SXU_MANF_0656: FS, AS_SXU_MANF_0746: FS",SLAC,0%,0106.0106_Staff Scientist,0106_Staff Scientist,Labor,0.0d,15.0,15.0,At Completion Units,10/24/2024,11/13/2024,0,0,0,0,0,0,0,0,0,0,1.03_Accelerator Systems (AS),1.03.06_AS Soft X-Ray Undulator (SXR) - SLAC,1.03.06.06_AS Soft X-Ray Undulator Procurement and Fabrication - SLAC,1.03.06.06.03_SXR Undulator Integration and Testing,AS_SXU_MANF_0646_Tune and Calibrate Undulator - SXU_HE_06,Scientist,,SLAC,Labor
103818,1.03,1.03.06,1.03.06.06,1.03.06.06.03,1.03.06.06.03,SXR Undulator Integration and Testing,AS_SXU_MANF_0646,Tune and Calibrate Undulator - SXU_HE_06,15.0,16.0,16.0,16.0,09-02-25,09-22-25,"AS_SXU_MANF_0606: FS, AS_SXU_MANF_0546: FS","AS_SXU_MANF_0656: FS, AS_SXU_MANF_0746: FS",SLAC,0%,52169.52169_METS Mechanical Engineer,52169_METS Mechanical Engineer,Labor,0.0d,15.0,15.0,At Completion Units,10/24/2024,11/13/2024,0,0,0,0,0,0,0,0,0,0,1.03_Accelerator Systems (AS),1.03.06_AS Soft X-Ray Undulator (SXR) - SLAC,1.03.06.06_AS Soft X-Ray Undulator Procurement and Fabrication - SLAC,1.03.06.06.03_SXR Undulator Integration and Testing,AS_SXU_MANF_0646_Tune and Calibrate Undulator - SXU_HE_06,Mechanical,,SLAC,Labor
103819,1.03,1.03.06,1.03.06.06,1.03.06.06.03,1.03.06.06.03,SXR Undulator Integration and Testing,AS_SXU_MANF_0546,Tune and Calibrate Undulator - SXU_HE_05,15.0,32.0,32.0,32.0,07-18-25,08-07-25,"AS_SXU_MANF_0506: FS, AS_SXU_MANF_0446: FS","AS_SXU_MANF_0556: FS, AS_SXU_MANF_0646: FS",SLAC,0%,52213.52213_EEDHW (Electronics & Engineering Div - HW Engr),52213_EEDHW (Electronics & Engineering Div - HW Engr),Labor,0.0d,15.0,15.0,At Completion Units,9/11/2024,10/1/2024,0,0,0,0,0,0,0,0,0,0,1.03_Accelerator Systems (AS),1.03.06_AS Soft X-Ray Undulator (SXR) - SLAC,1.03.06.06_AS Soft X-Ray Undulator Procurement and Fabrication - SLAC,1.03.06.06.03_SXR Undulator Integration and Testing,AS_SXU_MANF_0546_Tune and Calibrate Undulator - SXU_HE_05,Electrical,,SLAC,Labor
103820,1.03,1.03.06,1.03.06.06,1.03.06.06.03,1.03.06.06.03,SXR Undulator Integration and Testing,AS_SXU_MANF_0546,Tune and Calibrate Undulator - SXU_HE_05,15.0,48.0,48.0,48.0,07-18-25,08-07-25,"AS_SXU_MANF_0506: FS, AS_SXU_MANF_0446: FS","AS_SXU_MANF_0556: FS, AS_SXU_MANF_0646: FS",SLAC,0%,52198.52198_METSMANF (METSD Manufacturing),52198_METSMANF (METSD Manufacturing),Labor,0.0d,15.0,15.0,At Completion Units,9/11/2024,10/1/2024,0,0,0,0,0,0,0,0,0,0,1.03_Accelerator Systems (AS),1.03.06_AS Soft X-Ray Undulator (SXR) - SLAC,1.03.06.06_AS Soft X-Ray Undulator Procurement and Fabrication - SLAC,1.03.06.06.03_SXR Undulator Integration and Testing,AS_SXU_MANF_0546_Tune and Calibrate Undulator - SXU_HE_05,Manufacturing,,SLAC,Labor
103821,1.03,1.03.06,1.03.06.06,1.03.06.06.03,1.03.06.06.03,SXR Undulator Integration and Testing,AS_SXU_MANF_0546,Tune and Calibrate Undulator - SXU_HE_05,15.0,394.0,394.0,394.0,07-18-25,08-07-25,"AS_SXU_MANF_0506: FS, AS_SXU_MANF_0446: FS","AS_SXU_MANF_0556: FS, AS_SXU_MANF_0646: FS",SLAC,0%,52191.52191_METSMET Metrology,52191_METSMET Metrology,Labor,0.0d,15.0,15.0,At Completion Units,9/11/2024,10/1/2024,0,0,0,0,0,0,0,0,0,0,1.03_Accelerator Systems (AS),1.03.06_AS Soft X-Ray Undulator (SXR) - SLAC,1.03.06.06_AS Soft X-Ray Undulator Procurement and Fabrication - SLAC,1.03.06.06.03_SXR Undulator Integration and Testing,AS_SXU_MANF_0546_Tune and Calibrate Undulator - SXU_HE_05,Metrology,,SLAC,Labor
103822,1.03,1.03.06,1.03.06.06,1.03.06.06.03,1.03.06.06.03,SXR Undulator Integration and Testing,AS_SXU_MANF_0546,Tune and Calibrate Undulator - SXU_HE_05,15.0,32.0,32.0,32.0,07-18-25,08-07-25,"AS_SXU_MANF_0506: FS, AS_SXU_MANF_0446: FS","AS_SXU_MANF_0556: FS, AS_SXU_MANF_0646: FS",SLAC,0%,0106.0106_Staff Scientist,0106_Staff Scientist,Labor,0.0d,15.0,15.0,At Completion Units,9/11/2024,10/1/2024,0,0,0,0,0,0,0,0,0,0,1.03_Accelerator Systems (AS),1.03.06_AS Soft X-Ray Undulator (SXR) - SLAC,1.03.06.06_AS Soft X-Ray Undulator Procurement and Fabrication - SLAC,1.03.06.06.03_SXR Undulator Integration and Testing,AS_SXU_MANF_0546_Tune and Calibrate Undulator - SXU_HE_05,Scientist,,SLAC,Labor
103823,1.03,1.03.06,1.03.06.06,1.03.06.06.03,1.03.06.06.03,SXR Undulator Integration and Testing,AS_SXU_MANF_0546,Tune and Calibrate Undulator - SXU_HE_05,15.0,16.0,16.0,16.0,07-18-25,08-07-25,"AS_SXU_MANF_0506: FS, AS_SXU_MANF_0446: FS","AS_SXU_MANF_0556: FS, AS_SXU_MANF_0646: FS",SLAC,0%,52169.52169_METS Mechanical Engineer,52169_METS Mechanical Engineer,Labor,0.0d,15.0,15.0,At Completion Units,9/11/2024,10/1/2024,0,0,0,0,0,0,0,0,0,0,1.03_Accelerator Systems (AS),1.03.06_AS Soft X-Ray Undulator (SXR) - SLAC,1.03.06.06_AS Soft X-Ray Undulator Procurement and Fabrication - SLAC,1.03.06.06.03_SXR Undulator Integration and Testing,AS_SXU_MANF_0546_Tune and Calibrate Undulator - SXU_HE_05,Mechanical,,SLAC,Labor
103824,1.03,1.03.06,1.03.06.06,1.03.06.06.03,1.03.06.06.03,SXR Undulator Integration and Testing,AS_SXU_MANF_0446,Tune and Calibrate Undulator - SXU_HE_04,15.0,32.0,32.0,32.0,06-12-25,07-02-25,"AS_SXU_MANF_0406: FS, AS_SXU_MANF_0346: FS","AS_SXU_MANF_0456: FS, AS_SXU_MANF_0546: FS",SLAC,0%,52213.52213_EEDHW (Electronics & Engineering Div - HW Engr),52213_EEDHW (Electronics & Engineering Div - HW Engr),Labor,0.0d,15.0,15.0,At Completion Units,8/6/2024,8/26/2024,0,0,0,0,0,0,0,0,0,0,1.03_Accelerator Systems (AS),1.03.06_AS Soft X-Ray Undulator (SXR) - SLAC,1.03.06.06_AS Soft X-Ray Undulator Procurement and Fabrication - SLAC,1.03.06.06.03_SXR Undulator Integration and Testing,AS_SXU_MANF_0446_Tune and Calibrate Undulator - SXU_HE_04,Electrical,,SLAC,Labor
103825,1.03,1.03.06,1.03.06.06,1.03.06.06.03,1.03.06.06.03,SXR Undulator Integration and Testing,AS_SXU_MANF_0446,Tune and Calibrate Undulator - SXU_HE_04,15.0,48.0,48.0,48.0,06-12-25,07-02-25,"AS_SXU_MANF_0406: FS, AS_SXU_MANF_0346: FS","AS_SXU_MANF_0456: FS, AS_SXU_MANF_0546: FS",SLAC,0%,52198.52198_METSMANF (METSD Manufacturing),52198_METSMANF (METSD Manufacturing),Labor,0.0d,15.0,15.0,At Completion Units,8/6/2024,8/26/2024,0,0,0,0,0,0,0,0,0,0,1.03_Accelerator Systems (AS),1.03.06_AS Soft X-Ray Undulator (SXR) - SLAC,1.03.06.06_AS Soft X-Ray Undulator Procurement and Fabrication - SLAC,1.03.06.06.03_SXR Undulator Integration and Testing,AS_SXU_MANF_0446_Tune and Calibrate Undulator - SXU_HE_04,Manufacturing,,SLAC,Labor
103826,1.03,1.03.06,1.03.06.06,1.03.06.06.03,1.03.06.06.03,SXR Undulator Integration and Testing,AS_SXU_MANF_0446,Tune and Calibrate Undulator - SXU_HE_04,15.0,394.0,394.0,394.0,06-12-25,07-02-25,"AS_SXU_MANF_0406: FS, AS_SXU_MANF_0346: FS","AS_SXU_MANF_0456: FS, AS_SXU_MANF_0546: FS",SLAC,0%,52191.52191_METSMET Metrology,52191_METSMET Metrology,Labor,0.0d,15.0,15.0,At Completion Units,8/6/2024,8/26/2024,0,0,0,0,0,0,0,0,0,0,1.03_Accelerator Systems (AS),1.03.06_AS Soft X-Ray Undulator (SXR) - SLAC,1.03.06.06_AS Soft X-Ray Undulator Procurement and Fabrication - SLAC,1.03.06.06.03_SXR Undulator Integration and Testing,AS_SXU_MANF_0446_Tune and Calibrate Undulator - SXU_HE_04,Metrology,,SLAC,Labor
103827,1.03,1.03.06,1.03.06.06,1.03.06.06.03,1.03.06.06.03,SXR Undulator Integration and Testing,AS_SXU_MANF_0446,Tune and Calibrate Undulator - SXU_HE_04,15.0,32.0,32.0,32.0,06-12-25,07-02-25,"AS_SXU_MANF_0406: FS, AS_SXU_MANF_0346: FS","AS_SXU_MANF_0456: FS, AS_SXU_MANF_0546: FS",SLAC,0%,0106.0106_Staff Scientist,0106_Staff Scientist,Labor,0.0d,15.0,15.0,At Completion Units,8/6/2024,8/26/2024,0,0,0,0,0,0,0,0,0,0,1.03_Accelerator Systems (AS),1.03.06_AS Soft X-Ray Undulator (SXR) - SLAC,1.03.06.06_AS Soft X-Ray Undulator Procurement and Fabrication - SLAC,1.03.06.06.03_SXR Undulator Integration and Testing,AS_SXU_MANF_0446_Tune and Calibrate Undulator - SXU_HE_04,Scientist,,SLAC,Labor
103828,1.03,1.03.06,1.03.06.06,1.03.06.06.03,1.03.06.06.03,SXR Undulator Integration and Testing,AS_SXU_MANF_0446,Tune and Calibrate Undulator - SXU_HE_04,15.0,16.0,16.0,16.0,06-12-25,07-02-25,"AS_SXU_MANF_0406: FS, AS_SXU_MANF_0346: FS","AS_SXU_MANF_0456: FS, AS_SXU_MANF_0546: FS",SLAC,0%,52169.52169_METS Mechanical Engineer,52169_METS Mechanical Engineer,Labor,0.0d,15.0,15.0,At Completion Units,8/6/2024,8/26/2024,0,0,0,0,0,0,0,0,0,0,1.03_Accelerator Systems (AS),1.03.06_AS Soft X-Ray Undulator (SXR) - SLAC,1.03.06.06_AS Soft X-Ray Undulator Procurement and Fabrication - SLAC,1.03.06.06.03_SXR Undulator Integration and Testing,AS_SXU_MANF_0446_Tune and Calibrate Undulator - SXU_HE_04,Mechanical,,SLAC,Labor
103829,1.03,1.03.06,1.03.06.06,1.03.06.06.03,1.03.06.06.03,SXR Undulator Integration and Testing,AS_SXU_MANF_0246,Tune and Calibrate Undulator - SXU_HE_02,15.0,32.0,32.0,32.0,04-02-25,04-22-25,"AS_SXU_MANF_0206: FS, AS_SXU_MANF_0146: FS","AS_SXU_MANF_0256: FS, AS_SXU_MANF_0346: FS",SLAC,0%,52213.52213_EEDHW (Electronics & Engineering Div - HW Engr),52213_EEDHW (Electronics & Engineering Div - HW Engr),Labor,0.0d,15.0,15.0,At Completion Units,5/24/2024,6/14/2024,0,0,0,0,0,0,0,0,0,0,1.03_Accelerator Systems (AS),1.03.06_AS Soft X-Ray Undulator (SXR) - SLAC,1.03.06.06_AS Soft X-Ray Undulator Procurement and Fabrication - SLAC,1.03.06.06.03_SXR Undulator Integration and Testing,AS_SXU_MANF_0246_Tune and Calibrate Undulator - SXU_HE_02,Electrical,,SLAC,Labor
103830,1.03,1.03.06,1.03.06.06,1.03.06.06.03,1.03.06.06.03,SXR Undulator Integration and Testing,AS_SXU_MANF_0246,Tune and Calibrate Undulator - SXU_HE_02,15.0,48.0,48.0,48.0,04-02-25,04-22-25,"AS_SXU_MANF_0206: FS, AS_SXU_MANF_0146: FS","AS_SXU_MANF_0256: FS, AS_SXU_MANF_0346: FS",SLAC,0%,52198.52198_METSMANF (METSD Manufacturing),52198_METSMANF (METSD Manufacturing),Labor,0.0d,15.0,15.0,At Completion Units,5/24/2024,6/14/2024,0,0,0,0,0,0,0,0,0,0,1.03_Accelerator Systems (AS),1.03.06_AS Soft X-Ray Undulator (SXR) - SLAC,1.03.06.06_AS Soft X-Ray Undulator Procurement and Fabrication - SLAC,1.03.06.06.03_SXR Undulator Integration and Testing,AS_SXU_MANF_0246_Tune and Calibrate Undulator - SXU_HE_02,Manufacturing,,SLAC,Labor
103831,1.03,1.03.06,1.03.06.06,1.03.06.06.03,1.03.06.06.03,SXR Undulator Integration and Testing,AS_SXU_MANF_0246,Tune and Calibrate Undulator - SXU_HE_02,15.0,394.0,394.0,394.0,04-02-25,04-22-25,"AS_SXU_MANF_0206: FS, AS_SXU_MANF_0146: FS","AS_SXU_MANF_0256: FS, AS_SXU_MANF_0346: FS",SLAC,0%,52191.52191_METSMET Metrology,52191_METSMET Metrology,Labor,0.0d,15.0,15.0,At Completion Units,5/24/2024,6/14/2024,0,0,0,0,0,0,0,0,0,0,1.03_Accelerator Systems (AS),1.03.06_AS Soft X-Ray Undulator (SXR) - SLAC,1.03.06.06_AS Soft X-Ray Undulator Procurement and Fabrication - SLAC,1.03.06.06.03_SXR Undulator Integration and Testing,AS_SXU_MANF_0246_Tune and Calibrate Undulator - SXU_HE_02,Metrology,,SLAC,Labor
103832,1.03,1.03.06,1.03.06.06,1.03.06.06.03,1.03.06.06.03,SXR Undulator Integration and Testing,AS_SXU_MANF_0246,Tune and Calibrate Undulator - SXU_HE_02,15.0,32.0,32.0,32.0,04-02-25,04-22-25,"AS_SXU_MANF_0206: FS, AS_SXU_MANF_0146: FS","AS_SXU_MANF_0256: FS, AS_SXU_MANF_0346: FS",SLAC,0%,0106.0106_Staff Scientist,0106_Staff Scientist,Labor,0.0d,15.0,15.0,At Completion Units,5/24/2024,6/14/2024,0,0,0,0,0,0,0,0,0,0,1.03_Accelerator Systems (AS),1.03.06_AS Soft X-Ray Undulator (SXR) - SLAC,1.03.06.06_AS Soft X-Ray Undulator Procurement and Fabrication - SLAC,1.03.06.06.03_SXR Undulator Integration and Testing,AS_SXU_MANF_0246_Tune and Calibrate Undulator - SXU_HE_02,Scientist,,SLAC,Labor
103833,1.03,1.03.06,1.03.06.06,1.03.06.06.03,1.03.06.06.03,SXR Undulator Integration and Testing,AS_SXU_MANF_0246,Tune and Calibrate Undulator - SXU_HE_02,15.0,16.0,16.0,16.0,04-02-25,04-22-25,"AS_SXU_MANF_0206: FS, AS_SXU_MANF_0146: FS","AS_SXU_MANF_0256: FS, AS_SXU_MANF_0346: FS",SLAC,0%,52169.52169_METS Mechanical Engineer,52169_METS Mechanical Engineer,Labor,0.0d,15.0,15.0,At Completion Units,5/24/2024,6/14/2024,0,0,0,0,0,0,0,0,0,0,1.03_Accelerator Systems (AS),1.03.06_AS Soft X-Ray Undulator (SXR) - SLAC,1.03.06.06_AS Soft X-Ray Undulator Procurement and Fabrication - SLAC,1.03.06.06.03_SXR Undulator Integration and Testing,AS_SXU_MANF_0246_Tune and Calibrate Undulator - SXU_HE_02,Mechanical,,SLAC,Labor
103834,1.03,1.03.06,1.03.06.06,1.03.06.06.03,1.03.06.06.03,SXR Undulator Integration and Testing,AS_SXU_MANF_0146,Tune and Calibrate Undulator - SXU_HE_01,15.0,32.0,32.0,32.0,01-27-25,02-14-25,AS_SXU_MANF_0106: FS,"AS_SXU_MANF_0156: FS, AS_SXU_MANF_0246: FS",SLAC,0%,52213.52213_EEDHW (Electronics & Engineering Div - HW Engr),52213_EEDHW (Electronics & Engineering Div - HW Engr),Labor,0.0d,15.0,15.0,At Completion Units,3/21/2024,4/10/2024,0,0,0,0,0,0,0,0,0,0,1.03_Accelerator Systems (AS),1.03.06_AS Soft X-Ray Undulator (SXR) - SLAC,1.03.06.06_AS Soft X-Ray Undulator Procurement and Fabrication - SLAC,1.03.06.06.03_SXR Undulator Integration and Testing,AS_SXU_MANF_0146_Tune and Calibrate Undulator - SXU_HE_01,Electrical,,SLAC,Labor
103835,1.03,1.03.06,1.03.06.06,1.03.06.06.03,1.03.06.06.03,SXR Undulator Integration and Testing,AS_SXU_MANF_0906,Receiving Inspection - SXU_HE_09,5.0,12.0,12.0,12.0,12-11-25,12-17-25,AS_SXU_MANF_0901: FS,"AS_SXU_MANF_0946: FS, AS_LBL_PROD_465: FS",SLAC,0%,52152.52152_FAC Fleet,52152_FAC Fleet,Labor,0.0d,5.0,5.0,At Completion Units,2/19/2025,2/25/2025,0,0,0,0,0,0,0,0,0,0,1.03_Accelerator Systems (AS),1.03.06_AS Soft X-Ray Undulator (SXR) - SLAC,1.03.06.06_AS Soft X-Ray Undulator Procurement and Fabrication - SLAC,1.03.06.06.03_SXR Undulator Integration and Testing,AS_SXU_MANF_0906_Receiving Inspection - SXU_HE_09,Support System,,SLAC,Labor
103836,1.03,1.03.06,1.03.06.06,1.03.06.06.03,1.03.06.06.03,SXR Undulator Integration and Testing,AS_SXU_MANF_0906,Receiving Inspection - SXU_HE_09,5.0,32.0,32.0,32.0,12-11-25,12-17-25,AS_SXU_MANF_0901: FS,"AS_SXU_MANF_0946: FS, AS_LBL_PROD_465: FS",SLAC,0%,52213.52213_EEDHW (Electronics & Engineering Div - HW Engr),52213_EEDHW (Electronics & Engineering Div - HW Engr),Labor,0.0d,5.0,5.0,At Completion Units,2/19/2025,2/25/2025,0,0,0,0,0,0,0,0,0,0,1.03_Accelerator Systems (AS),1.03.06_AS Soft X-Ray Undulator (SXR) - SLAC,1.03.06.06_AS Soft X-Ray Undulator Procurement and Fabrication - SLAC,1.03.06.06.03_SXR Undulator Integration and Testing,AS_SXU_MANF_0906_Receiving Inspection - SXU_HE_09,Electrical,,SLAC,Labor
103837,1.03,1.03.06,1.03.06.06,1.03.06.06.03,1.03.06.06.03,SXR Undulator Integration and Testing,AS_SXU_MANF_0906,Receiving Inspection - SXU_HE_09,5.0,32.0,32.0,32.0,12-11-25,12-17-25,AS_SXU_MANF_0901: FS,"AS_SXU_MANF_0946: FS, AS_LBL_PROD_465: FS",SLAC,0%,52169.52169_METS Mechanical Engineer,52169_METS Mechanical Engineer,Labor,0.0d,5.0,5.0,At Completion Units,2/19/2025,2/25/2025,0,0,0,0,0,0,0,0,0,0,1.03_Accelerator Systems (AS),1.03.06_AS Soft X-Ray Undulator (SXR) - SLAC,1.03.06.06_AS Soft X-Ray Undulator Procurement and Fabrication - SLAC,1.03.06.06.03_SXR Undulator Integration and Testing,AS_SXU_MANF_0906_Receiving Inspection - SXU_HE_09,Mechanical,,SLAC,Labor
103838,1.03,1.03.06,1.03.06.06,1.03.06.06.03,1.03.06.06.03,SXR Undulator Integration and Testing,AS_SXU_MANF_0706,Receiving Inspection - SXU_HE_07,5.0,12.0,12.0,12.0,09-30-25,10-06-25,AS_SXU_MANF_0701: FS,"AS_SXU_MANF_0746: FS, AS_LBL_PROD_445: FS",SLAC,0%,52152.52152_FAC Fleet,52152_FAC Fleet,Labor,0.0d,5.0,5.0,At Completion Units,11/21/2024,11/27/2024,0,0,0,0,0,0,0,0,0,0,1.03_Accelerator Systems (AS),1.03.06_AS Soft X-Ray Undulator (SXR) - SLAC,1.03.06.06_AS Soft X-Ray Undulator Procurement and Fabrication - SLAC,1.03.06.06.03_SXR Undulator Integration and Testing,AS_SXU_MANF_0706_Receiving Inspection - SXU_HE_07,Support System,,SLAC,Labor
103839,1.03,1.03.06,1.03.06.06,1.03.06.06.03,1.03.06.06.03,SXR Undulator Integration and Testing,AS_SXU_MANF_0706,Receiving Inspection - SXU_HE_07,5.0,32.0,32.0,32.0,09-30-25,10-06-25,AS_SXU_MANF_0701: FS,"AS_SXU_MANF_0746: FS, AS_LBL_PROD_445: FS",SLAC,0%,52213.52213_EEDHW (Electronics & Engineering Div - HW Engr),52213_EEDHW (Electronics & Engineering Div - HW Engr),Labor,0.0d,5.0,5.0,At Completion Units,11/21/2024,11/27/2024,0,0,0,0,0,0,0,0,0,0,1.03_Accelerator Systems (AS),1.03.06_AS Soft X-Ray Undulator (SXR) - SLAC,1.03.06.06_AS Soft X-Ray Undulator Procurement and Fabrication - SLAC,1.03.06.06.03_SXR Undulator Integration and Testing,AS_SXU_MANF_0706_Receiving Inspection - SXU_HE_07,Electrical,,SLAC,Labor
103840,1.03,1.03.06,1.03.06.06,1.03.06.06.03,1.03.06.06.03,SXR Undulator Integration and Testing,AS_SXU_MANF_0706,Receiving Inspection - SXU_HE_07,5.0,32.0,32.0,32.0,09-30-25,10-06-25,AS_SXU_MANF_0701: FS,"AS_SXU_MANF_0746: FS, AS_LBL_PROD_445: FS",SLAC,0%,52169.52169_METS Mechanical Engineer,52169_METS Mechanical Engineer,Labor,0.0d,5.0,5.0,At Completion Units,11/21/2024,11/27/2024,0,0,0,0,0,0,0,0,0,0,1.03_Accelerator Systems (AS),1.03.06_AS Soft X-Ray Undulator (SXR) - SLAC,1.03.06.06_AS Soft X-Ray Undulator Procurement and Fabrication - SLAC,1.03.06.06.03_SXR Undulator Integration and Testing,AS_SXU_MANF_0706_Receiving Inspection - SXU_HE_07,Mechanical,,SLAC,Labor
103841,1.03,1.03.06,1.03.06.06,1.03.06.06.03,1.03.06.06.03,SXR Undulator Integration and Testing,AS_SXU_MANF_0606,Receiving Inspection - SXU_HE_06,5.0,12.0,12.0,12.0,08-25-25,08-29-25,AS_SXU_MANF_0601: FS,"AS_SXU_MANF_0646: FS, AS_LBL_PROD_435: FS",SLAC,0%,52152.52152_FAC Fleet,52152_FAC Fleet,Labor,0.0d,5.0,5.0,At Completion Units,10/17/2024,10/23/2024,0,0,0,0,0,0,0,0,0,0,1.03_Accelerator Systems (AS),1.03.06_AS Soft X-Ray Undulator (SXR) - SLAC,1.03.06.06_AS Soft X-Ray Undulator Procurement and Fabrication - SLAC,1.03.06.06.03_SXR Undulator Integration and Testing,AS_SXU_MANF_0606_Receiving Inspection - SXU_HE_06,Support System,,SLAC,Labor
103842,1.03,1.03.06,1.03.06.06,1.03.06.06.03,1.03.06.06.03,SXR Undulator Integration and Testing,AS_SXU_MANF_0606,Receiving Inspection - SXU_HE_06,5.0,32.0,32.0,32.0,08-25-25,08-29-25,AS_SXU_MANF_0601: FS,"AS_SXU_MANF_0646: FS, AS_LBL_PROD_435: FS",SLAC,0%,52213.52213_EEDHW (Electronics & Engineering Div - HW Engr),52213_EEDHW (Electronics & Engineering Div - HW Engr),Labor,0.0d,5.0,5.0,At Completion Units,10/17/2024,10/23/2024,0,0,0,0,0,0,0,0,0,0,1.03_Accelerator Systems (AS),1.03.06_AS Soft X-Ray Undulator (SXR) - SLAC,1.03.06.06_AS Soft X-Ray Undulator Procurement and Fabrication - SLAC,1.03.06.06.03_SXR Undulator Integration and Testing,AS_SXU_MANF_0606_Receiving Inspection - SXU_HE_06,Electrical,,SLAC,Labor
103843,1.03,1.03.06,1.03.06.06,1.03.06.06.03,1.03.06.06.03,SXR Undulator Integration and Testing,AS_SXU_MANF_0606,Receiving Inspection - SXU_HE_06,5.0,32.0,32.0,32.0,08-25-25,08-29-25,AS_SXU_MANF_0601: FS,"AS_SXU_MANF_0646: FS, AS_LBL_PROD_435: FS",SLAC,0%,52169.52169_METS Mechanical Engineer,52169_METS Mechanical Engineer,Labor,0.0d,5.0,5.0,At Completion Units,10/17/2024,10/23/2024,0,0,0,0,0,0,0,0,0,0,1.03_Accelerator Systems (AS),1.03.06_AS Soft X-Ray Undulator (SXR) - SLAC,1.03.06.06_AS Soft X-Ray Undulator Procurement and Fabrication - SLAC,1.03.06.06.03_SXR Undulator Integration and Testing,AS_SXU_MANF_0606_Receiving Inspection - SXU_HE_06,Mechanical,,SLAC,Labor
103844,1.03,1.03.06,1.03.06.06,1.03.06.06.03,1.03.06.06.03,SXR Undulator Integration and Testing,AS_SXU_MANF_0506,Receiving Inspection - SXU_HE_05,5.0,12.0,12.0,12.0,07-11-25,07-17-25,AS_SXU_MANF_0501: FS,"AS_SXU_MANF_0546: FS, AS_LBL_PROD_425: FS",SLAC,0%,52152.52152_FAC Fleet,52152_FAC Fleet,Labor,0.0d,5.0,5.0,At Completion Units,9/4/2024,9/10/2024,0,0,0,0,0,0,0,0,0,0,1.03_Accelerator Systems (AS),1.03.06_AS Soft X-Ray Undulator (SXR) - SLAC,1.03.06.06_AS Soft X-Ray Undulator Procurement and Fabrication - SLAC,1.03.06.06.03_SXR Undulator Integration and Testing,AS_SXU_MANF_0506_Receiving Inspection - SXU_HE_05,Support System,,SLAC,Labor
103845,1.03,1.03.06,1.03.06.06,1.03.06.06.03,1.03.06.06.03,SXR Undulator Integration and Testing,AS_SXU_MANF_0506,Receiving Inspection - SXU_HE_05,5.0,32.0,32.0,32.0,07-11-25,07-17-25,AS_SXU_MANF_0501: FS,"AS_SXU_MANF_0546: FS, AS_LBL_PROD_425: FS",SLAC,0%,52213.52213_EEDHW (Electronics & Engineering Div - HW Engr),52213_EEDHW (Electronics & Engineering Div - HW Engr),Labor,0.0d,5.0,5.0,At Completion Units,9/4/2024,9/10/2024,0,0,0,0,0,0,0,0,0,0,1.03_Accelerator Systems (AS),1.03.06_AS Soft X-Ray Undulator (SXR) - SLAC,1.03.06.06_AS Soft X-Ray Undulator Procurement and Fabrication - SLAC,1.03.06.06.03_SXR Undulator Integration and Testing,AS_SXU_MANF_0506_Receiving Inspection - SXU_HE_05,Electrical,,SLAC,Labor
103846,1.03,1.03.06,1.03.06.06,1.03.06.06.03,1.03.06.06.03,SXR Undulator Integration and Testing,AS_SXU_MANF_0506,Receiving Inspection - SXU_HE_05,5.0,32.0,32.0,32.0,07-11-25,07-17-25,AS_SXU_MANF_0501: FS,"AS_SXU_MANF_0546: FS, AS_LBL_PROD_425: FS",SLAC,0%,52169.52169_METS Mechanical Engineer,52169_METS Mechanical Engineer,Labor,0.0d,5.0,5.0,At Completion Units,9/4/2024,9/10/2024,0,0,0,0,0,0,0,0,0,0,1.03_Accelerator Systems (AS),1.03.06_AS Soft X-Ray Undulator (SXR) - SLAC,1.03.06.06_AS Soft X-Ray Undulator Procurement and Fabrication - SLAC,1.03.06.06.03_SXR Undulator Integration and Testing,AS_SXU_MANF_0506_Receiving Inspection - SXU_HE_05,Mechanical,,SLAC,Labor
103847,1.03,1.03.06,1.03.06.06,1.03.06.06.03,1.03.06.06.03,SXR Undulator Integration and Testing,AS_SXU_MANF_0406,Receiving Inspection - SXU_HE_04,5.0,12.0,12.0,12.0,06-05-25,06-11-25,AS_SXU_MANF_0401: FS,"AS_SXU_MANF_0446: FS, AS_LBL_PROD_415: FS",SLAC,0%,52152.52152_FAC Fleet,52152_FAC Fleet,Labor,0.0d,5.0,5.0,At Completion Units,7/30/2024,8/5/2024,0,0,0,0,0,0,0,0,0,0,1.03_Accelerator Systems (AS),1.03.06_AS Soft X-Ray Undulator (SXR) - SLAC,1.03.06.06_AS Soft X-Ray Undulator Procurement and Fabrication - SLAC,1.03.06.06.03_SXR Undulator Integration and Testing,AS_SXU_MANF_0406_Receiving Inspection - SXU_HE_04,Support System,,SLAC,Labor
103848,1.03,1.03.06,1.03.06.06,1.03.06.06.03,1.03.06.06.03,SXR Undulator Integration and Testing,AS_SXU_MANF_0406,Receiving Inspection - SXU_HE_04,5.0,32.0,32.0,32.0,06-05-25,06-11-25,AS_SXU_MANF_0401: FS,"AS_SXU_MANF_0446: FS, AS_LBL_PROD_415: FS",SLAC,0%,52213.52213_EEDHW (Electronics & Engineering Div - HW Engr),52213_EEDHW (Electronics & Engineering Div - HW Engr),Labor,0.0d,5.0,5.0,At Completion Units,7/30/2024,8/5/2024,0,0,0,0,0,0,0,0,0,0,1.03_Accelerator Systems (AS),1.03.06_AS Soft X-Ray Undulator (SXR) - SLAC,1.03.06.06_AS Soft X-Ray Undulator Procurement and Fabrication - SLAC,1.03.06.06.03_SXR Undulator Integration and Testing,AS_SXU_MANF_0406_Receiving Inspection - SXU_HE_04,Electrical,,SLAC,Labor
103849,1.03,1.03.06,1.03.06.06,1.03.06.06.03,1.03.06.06.03,SXR Undulator Integration and Testing,AS_SXU_MANF_0406,Receiving Inspection - SXU_HE_04,5.0,32.0,32.0,32.0,06-05-25,06-11-25,AS_SXU_MANF_0401: FS,"AS_SXU_MANF_0446: FS, AS_LBL_PROD_415: FS",SLAC,0%,52169.52169_METS Mechanical Engineer,52169_METS Mechanical Engineer,Labor,0.0d,5.0,5.0,At Completion Units,7/30/2024,8/5/2024,0,0,0,0,0,0,0,0,0,0,1.03_Accelerator Systems (AS),1.03.06_AS Soft X-Ray Undulator (SXR) - SLAC,1.03.06.06_AS Soft X-Ray Undulator Procurement and Fabrication - SLAC,1.03.06.06.03_SXR Undulator Integration and Testing,AS_SXU_MANF_0406_Receiving Inspection - SXU_HE_04,Mechanical,,SLAC,Labor
103850,1.03,1.03.06,1.03.06.06,1.03.06.06.03,1.03.06.06.03,SXR Undulator Integration and Testing,AS_SXU_MANF_0306,Receiving Inspection - SXU_HE_03,5.0,12.0,12.0,12.0,04-30-25,05-06-25,AS_SXU_MANF_0301: FS,"AS_SXU_MANF_0346: FS, AS_LBL_PROD_405: FS",SLAC,0%,52152.52152_FAC Fleet,52152_FAC Fleet,Labor,0.0d,5.0,5.0,At Completion Units,6/24/2024,6/28/2024,0,0,0,0,0,0,0,0,0,0,1.03_Accelerator Systems (AS),1.03.06_AS Soft X-Ray Undulator (SXR) - SLAC,1.03.06.06_AS Soft X-Ray Undulator Procurement and Fabrication - SLAC,1.03.06.06.03_SXR Undulator Integration and Testing,AS_SXU_MANF_0306_Receiving Inspection - SXU_HE_03,Support System,,SLAC,Labor
103851,1.03,1.03.06,1.03.06.06,1.03.06.06.03,1.03.06.06.03,SXR Undulator Integration and Testing,AS_SXU_MANF_0306,Receiving Inspection - SXU_HE_03,5.0,32.0,32.0,32.0,04-30-25,05-06-25,AS_SXU_MANF_0301: FS,"AS_SXU_MANF_0346: FS, AS_LBL_PROD_405: FS",SLAC,0%,52213.52213_EEDHW (Electronics & Engineering Div - HW Engr),52213_EEDHW (Electronics & Engineering Div - HW Engr),Labor,0.0d,5.0,5.0,At Completion Units,6/24/2024,6/28/2024,0,0,0,0,0,0,0,0,0,0,1.03_Accelerator Systems (AS),1.03.06_AS Soft X-Ray Undulator (SXR) - SLAC,1.03.06.06_AS Soft X-Ray Undulator Procurement and Fabrication - SLAC,1.03.06.06.03_SXR Undulator Integration and Testing,AS_SXU_MANF_0306_Receiving Inspection - SXU_HE_03,Electrical,,SLAC,Labor
103852,1.03,1.03.06,1.03.06.06,1.03.06.06.03,1.03.06.06.03,SXR Undulator Integration and Testing,AS_SXU_MANF_0306,Receiving Inspection - SXU_HE_03,5.0,32.0,32.0,32.0,04-30-25,05-06-25,AS_SXU_MANF_0301: FS,"AS_SXU_MANF_0346: FS, AS_LBL_PROD_405: FS",SLAC,0%,52169.52169_METS Mechanical Engineer,52169_METS Mechanical Engineer,Labor,0.0d,5.0,5.0,At Completion Units,6/24/2024,6/28/2024,0,0,0,0,0,0,0,0,0,0,1.03_Accelerator Systems (AS),1.03.06_AS Soft X-Ray Undulator (SXR) - SLAC,1.03.06.06_AS Soft X-Ray Undulator Procurement and Fabrication - SLAC,1.03.06.06.03_SXR Undulator Integration and Testing,AS_SXU_MANF_0306_Receiving Inspection - SXU_HE_03,Mechanical,,SLAC,Labor
103853,1.03,1.03.06,1.03.06.06,1.03.06.06.03,1.03.06.06.03,SXR Undulator Integration and Testing,AS_SXU_MANF_0206,Receiving Inspection - SXU_HE_02,5.0,12.0,12.0,12.0,03-26-25,04-01-25,AS_SXU_MANF_0201: FS,"AS_SXU_MANF_0246: FS, AS_LBL_PROD_395: FS",SLAC,0%,52152.52152_FAC Fleet,52152_FAC Fleet,Labor,0.0d,5.0,5.0,At Completion Units,5/17/2024,5/23/2024,0,0,0,0,0,0,0,0,0,0,1.03_Accelerator Systems (AS),1.03.06_AS Soft X-Ray Undulator (SXR) - SLAC,1.03.06.06_AS Soft X-Ray Undulator Procurement and Fabrication - SLAC,1.03.06.06.03_SXR Undulator Integration and Testing,AS_SXU_MANF_0206_Receiving Inspection - SXU_HE_02,Support System,,SLAC,Labor
103854,1.03,1.03.06,1.03.06.06,1.03.06.06.03,1.03.06.06.03,SXR Undulator Integration and Testing,AS_SXU_MANF_0206,Receiving Inspection - SXU_HE_02,5.0,32.0,32.0,32.0,03-26-25,04-01-25,AS_SXU_MANF_0201: FS,"AS_SXU_MANF_0246: FS, AS_LBL_PROD_395: FS",SLAC,0%,52213.52213_EEDHW (Electronics & Engineering Div - HW Engr),52213_EEDHW (Electronics & Engineering Div - HW Engr),Labor,0.0d,5.0,5.0,At Completion Units,5/17/2024,5/23/2024,0,0,0,0,0,0,0,0,0,0,1.03_Accelerator Systems (AS),1.03.06_AS Soft X-Ray Undulator (SXR) - SLAC,1.03.06.06_AS Soft X-Ray Undulator Procurement and Fabrication - SLAC,1.03.06.06.03_SXR Undulator Integration and Testing,AS_SXU_MANF_0206_Receiving Inspection - SXU_HE_02,Electrical,,SLAC,Labor
103855,1.03,1.03.06,1.03.06.06,1.03.06.06.03,1.03.06.06.03,SXR Undulator Integration and Testing,AS_SXU_MANF_0206,Receiving Inspection - SXU_HE_02,5.0,32.0,32.0,32.0,03-26-25,04-01-25,AS_SXU_MANF_0201: FS,"AS_SXU_MANF_0246: FS, AS_LBL_PROD_395: FS",SLAC,0%,52169.52169_METS Mechanical Engineer,52169_METS Mechanical Engineer,Labor,0.0d,5.0,5.0,At Completion Units,5/17/2024,5/23/2024,0,0,0,0,0,0,0,0,0,0,1.03_Accelerator Systems (AS),1.03.06_AS Soft X-Ray Undulator (SXR) - SLAC,1.03.06.06_AS Soft X-Ray Undulator Procurement and Fabrication - SLAC,1.03.06.06.03_SXR Undulator Integration and Testing,AS_SXU_MANF_0206_Receiving Inspection - SXU_HE_02,Mechanical,,SLAC,Labor
103856,1.03,1.03.06,1.03.06.06,1.03.06.06.03,1.03.06.06.03,SXR Undulator Integration and Testing,AS_SXU_MANF_0146,Tune and Calibrate Undulator - SXU_HE_01,15.0,48.0,48.0,48.0,01-27-25,02-14-25,AS_SXU_MANF_0106: FS,"AS_SXU_MANF_0156: FS, AS_SXU_MANF_0246: FS",SLAC,0%,52198.52198_METSMANF (METSD Manufacturing),52198_METSMANF (METSD Manufacturing),Labor,0.0d,15.0,15.0,At Completion Units,3/21/2024,4/10/2024,0,0,0,0,0,0,0,0,0,0,1.03_Accelerator Systems (AS),1.03.06_AS Soft X-Ray Undulator (SXR) - SLAC,1.03.06.06_AS Soft X-Ray Undulator Procurement and Fabrication - SLAC,1.03.06.06.03_SXR Undulator Integration and Testing,AS_SXU_MANF_0146_Tune and Calibrate Undulator - SXU_HE_01,Manufacturing,,SLAC,Labor
103857,1.03,1.03.06,1.03.06.06,1.03.06.06.03,1.03.06.06.03,SXR Undulator Integration and Testing,AS_SXU_MANF_0106,Receiving Inspection - SXU_HE_01,5.0,12.0,12.0,12.0,01-17-25,01-24-25,AS_SXU_MANF_0101: FS,"AS_SXU_MANF_0146: FS, AS_LBL_PROD_385: FS",SLAC,0%,52152.52152_FAC Fleet,52152_FAC Fleet,Labor,0.0d,5.0,5.0,At Completion Units,3/14/2024,3/20/2024,0,0,0,0,0,0,0,0,0,0,1.03_Accelerator Systems (AS),1.03.06_AS Soft X-Ray Undulator (SXR) - SLAC,1.03.06.06_AS Soft X-Ray Undulator Procurement and Fabrication - SLAC,1.03.06.06.03_SXR Undulator Integration and Testing,AS_SXU_MANF_0106_Receiving Inspection - SXU_HE_01,Support System,,SLAC,Labor
103858,1.03,1.03.06,1.03.06.06,1.03.06.06.03,1.03.06.06.03,SXR Undulator Integration and Testing,AS_SXU_MANF_0146,Tune and Calibrate Undulator - SXU_HE_01,15.0,394.0,394.0,394.0,01-27-25,02-14-25,AS_SXU_MANF_0106: FS,"AS_SXU_MANF_0156: FS, AS_SXU_MANF_0246: FS",SLAC,0%,52191.52191_METSMET Metrology,52191_METSMET Metrology,Labor,0.0d,15.0,15.0,At Completion Units,3/21/2024,4/10/2024,0,0,0,0,0,0,0,0,0,0,1.03_Accelerator Systems (AS),1.03.06_AS Soft X-Ray Undulator (SXR) - SLAC,1.03.06.06_AS Soft X-Ray Undulator Procurement and Fabrication - SLAC,1.03.06.06.03_SXR Undulator Integration and Testing,AS_SXU_MANF_0146_Tune and Calibrate Undulator - SXU_HE_01,Metrology,,SLAC,Labor
103859,1.03,1.03.06,1.03.06.06,1.03.06.06.03,1.03.06.06.03,SXR Undulator Integration and Testing,AS_SXU_MANF_0146,Tune and Calibrate Undulator - SXU_HE_01,15.0,32.0,32.0,32.0,01-27-25,02-14-25,AS_SXU_MANF_0106: FS,"AS_SXU_MANF_0156: FS, AS_SXU_MANF_0246: FS",SLAC,0%,0106.0106_Staff Scientist,0106_Staff Scientist,Labor,0.0d,15.0,15.0,At Completion Units,3/21/2024,4/10/2024,0,0,0,0,0,0,0,0,0,0,1.03_Accelerator Systems (AS),1.03.06_AS Soft X-Ray Undulator (SXR) - SLAC,1.03.06.06_AS Soft X-Ray Undulator Procurement and Fabrication - SLAC,1.03.06.06.03_SXR Undulator Integration and Testing,AS_SXU_MANF_0146_Tune and Calibrate Undulator - SXU_HE_01,Scientist,,SLAC,Labor
103860,1.03,1.03.06,1.03.06.06,1.03.06.06.03,1.03.06.06.03,SXR Undulator Integration and Testing,AS_SXU_MANF_0146,Tune and Calibrate Undulator - SXU_HE_01,15.0,16.0,16.0,16.0,01-27-25,02-14-25,AS_SXU_MANF_0106: FS,"AS_SXU_MANF_0156: FS, AS_SXU_MANF_0246: FS",SLAC,0%,52169.52169_METS Mechanical Engineer,52169_METS Mechanical Engineer,Labor,0.0d,15.0,15.0,At Completion Units,3/21/2024,4/10/2024,0,0,0,0,0,0,0,0,0,0,1.03_Accelerator Systems (AS),1.03.06_AS Soft X-Ray Undulator (SXR) - SLAC,1.03.06.06_AS Soft X-Ray Undulator Procurement and Fabrication - SLAC,1.03.06.06.03_SXR Undulator Integration and Testing,AS_SXU_MANF_0146_Tune and Calibrate Undulator - SXU_HE_01,Mechanical,,SLAC,Labor
103861,1.03,1.03.06,1.03.06.06,1.03.06.06.03,1.03.06.06.03,SXR Undulator Integration and Testing,AS_SXU_MANF_0106,Receiving Inspection - SXU_HE_01,5.0,32.0,32.0,32.0,01-17-25,01-24-25,AS_SXU_MANF_0101: FS,"AS_SXU_MANF_0146: FS, AS_LBL_PROD_385: FS",SLAC,0%,52213.52213_EEDHW (Electronics & Engineering Div - HW Engr),52213_EEDHW (Electronics & Engineering Div - HW Engr),Labor,0.0d,5.0,5.0,At Completion Units,3/14/2024,3/20/2024,0,0,0,0,0,0,0,0,0,0,1.03_Accelerator Systems (AS),1.03.06_AS Soft X-Ray Undulator (SXR) - SLAC,1.03.06.06_AS Soft X-Ray Undulator Procurement and Fabrication - SLAC,1.03.06.06.03_SXR Undulator Integration and Testing,AS_SXU_MANF_0106_Receiving Inspection - SXU_HE_01,Electrical,,SLAC,Labor
103862,1.03,1.03.06,1.03.06.06,1.03.06.06.03,1.03.06.06.03,SXR Undulator Integration and Testing,AS_SXU_MANF_0106,Receiving Inspection - SXU_HE_01,5.0,32.0,32.0,32.0,01-17-25,01-24-25,AS_SXU_MANF_0101: FS,"AS_SXU_MANF_0146: FS, AS_LBL_PROD_385: FS",SLAC,0%,52169.52169_METS Mechanical Engineer,52169_METS Mechanical Engineer,Labor,0.0d,5.0,5.0,At Completion Units,3/14/2024,3/20/2024,0,0,0,0,0,0,0,0,0,0,1.03_Accelerator Systems (AS),1.03.06_AS Soft X-Ray Undulator (SXR) - SLAC,1.03.06.06_AS Soft X-Ray Undulator Procurement and Fabrication - SLAC,1.03.06.06.03_SXR Undulator Integration and Testing,AS_SXU_MANF_0106_Receiving Inspection - SXU_HE_01,Mechanical,,SLAC,Labor
103863,1.03,1.03.06,1.03.06.06,1.03.06.06.03,1.03.06.06.03,SXR Undulator Integration and Testing,AS_SXU_MANF_5750,Perform SXU Transportation Tests,5.0,40.0,40.0,40.0,07-21-22,07-27-22,AS_SXU_MANF_1046: FS,"AS_SXU_MANF_5760: FS, AS_SXU_MANF_5755: FS, AS_LBL_DE_400: FS",SLAC,0%,52198.52198_METSMANF (METSD Manufacturing),52198_METSMANF (METSD Manufacturing),Labor,0.0d,5.0,5.0,At Completion Units,9/9/2022,9/15/2022,0,0,0,0,0,0,0,0,0,0,1.03_Accelerator Systems (AS),1.03.06_AS Soft X-Ray Undulator (SXR) - SLAC,1.03.06.06_AS Soft X-Ray Undulator Procurement and Fabrication - SLAC,1.03.06.06.03_SXR Undulator Integration and Testing,AS_SXU_MANF_5750_Perform SXU Transportation Tests,Manufacturing,,SLAC,Labor
103864,1.03,1.03.06,1.03.06.06,1.03.06.06.03,1.03.06.06.03,SXR Undulator Integration and Testing,AS_SXU_MANF_5790,Perform SXU temperature calibration tests,65.0,16.0,16.0,16.0,09-16-22,01-02-23,AS_SXU_MANF_5780: FS,AS_SXU_MANF_1056: FS,SLAC,0%,52213.52213_EEDHW (Electronics & Engineering Div - HW Engr),52213_EEDHW (Electronics & Engineering Div - HW Engr),Labor,0.0d,65.0,65.0,At Completion Units,11/4/2022,2/22/2023,0,0,0,0,0,0,0,0,0,0,1.03_Accelerator Systems (AS),1.03.06_AS Soft X-Ray Undulator (SXR) - SLAC,1.03.06.06_AS Soft X-Ray Undulator Procurement and Fabrication - SLAC,1.03.06.06.03_SXR Undulator Integration and Testing,AS_SXU_MANF_5790_Perform SXU temperature calibration tests,Electrical,,SLAC,Labor
103865,1.03,1.03.06,1.03.06.06,1.03.06.06.03,1.03.06.06.03,SXR Undulator Integration and Testing,AS_SXU_MANF_5790,Perform SXU temperature calibration tests,65.0,476.0,476.0,476.0,09-16-22,01-02-23,AS_SXU_MANF_5780: FS,AS_SXU_MANF_1056: FS,SLAC,0%,52191.52191_METSMET Metrology,52191_METSMET Metrology,Labor,0.0d,65.0,65.0,At Completion Units,11/4/2022,2/22/2023,0,0,0,0,0,0,0,0,0,0,1.03_Accelerator Systems (AS),1.03.06_AS Soft X-Ray Undulator (SXR) - SLAC,1.03.06.06_AS Soft X-Ray Undulator Procurement and Fabrication - SLAC,1.03.06.06.03_SXR Undulator Integration and Testing,AS_SXU_MANF_5790_Perform SXU temperature calibration tests,Metrology,,SLAC,Labor
103866,1.03,1.03.06,1.03.06.06,1.03.06.06.03,1.03.06.06.03,SXR Undulator Integration and Testing,AS_SXU_MANF_5790,Perform SXU temperature calibration tests,65.0,16.0,16.0,16.0,09-16-22,01-02-23,AS_SXU_MANF_5780: FS,AS_SXU_MANF_1056: FS,SLAC,0%,52169.52169_METS Mechanical Engineer,52169_METS Mechanical Engineer,Labor,0.0d,65.0,65.0,At Completion Units,11/4/2022,2/22/2023,0,0,0,0,0,0,0,0,0,0,1.03_Accelerator Systems (AS),1.03.06_AS Soft X-Ray Undulator (SXR) - SLAC,1.03.06.06_AS Soft X-Ray Undulator Procurement and Fabrication - SLAC,1.03.06.06.03_SXR Undulator Integration and Testing,AS_SXU_MANF_5790_Perform SXU temperature calibration tests,Mechanical,,SLAC,Labor
103867,1.03,1.03.06,1.03.06.06,1.03.06.06.03,1.03.06.06.03,SXR Undulator Integration and Testing,AS_SXU_MANF_5780,Perform SXU beam pipe corr calibration tests,15.0,284.0,284.0,284.0,08-25-22,09-15-22,AS_SXU_MANF_5770: FS,AS_SXU_MANF_5790: FS,SLAC,0%,52191.52191_METSMET Metrology,52191_METSMET Metrology,Labor,0.0d,15.0,15.0,At Completion Units,10/14/2022,11/3/2022,0,0,0,0,0,0,0,0,0,0,1.03_Accelerator Systems (AS),1.03.06_AS Soft X-Ray Undulator (SXR) - SLAC,1.03.06.06_AS Soft X-Ray Undulator Procurement and Fabrication - SLAC,1.03.06.06.03_SXR Undulator Integration and Testing,AS_SXU_MANF_5780_Perform SXU beam pipe corr calibration tests,Metrology,,SLAC,Labor
103868,1.03,1.03.06,1.03.06.06,1.03.06.06.03,1.03.06.06.03,SXR Undulator Integration and Testing,AS_SXU_MANF_5770,Perform SXU lifetime tests,10.0,8.0,8.0,8.0,08-11-22,08-24-22,AS_SXU_MANF_5760: FS,AS_SXU_MANF_5780: FS,SLAC,0%,52213.52213_EEDHW (Electronics & Engineering Div - HW Engr),52213_EEDHW (Electronics & Engineering Div - HW Engr),Labor,0.0d,10.0,10.0,At Completion Units,9/30/2022,10/13/2022,0,0,0,0,0,0,0,0,0,0,1.03_Accelerator Systems (AS),1.03.06_AS Soft X-Ray Undulator (SXR) - SLAC,1.03.06.06_AS Soft X-Ray Undulator Procurement and Fabrication - SLAC,1.03.06.06.03_SXR Undulator Integration and Testing,AS_SXU_MANF_5770_Perform SXU lifetime tests,Electrical,,SLAC,Labor
103869,1.03,1.03.06,1.03.06.06,1.03.06.06.03,1.03.06.06.03,SXR Undulator Integration and Testing,AS_SXU_MANF_5770,Perform SXU lifetime tests,10.0,304.0,304.0,304.0,08-11-22,08-24-22,AS_SXU_MANF_5760: FS,AS_SXU_MANF_5780: FS,SLAC,0%,52191.52191_METSMET Metrology,52191_METSMET Metrology,Labor,0.0d,10.0,10.0,At Completion Units,9/30/2022,10/13/2022,0,0,0,0,0,0,0,0,0,0,1.03_Accelerator Systems (AS),1.03.06_AS Soft X-Ray Undulator (SXR) - SLAC,1.03.06.06_AS Soft X-Ray Undulator Procurement and Fabrication - SLAC,1.03.06.06.03_SXR Undulator Integration and Testing,AS_SXU_MANF_5770_Perform SXU lifetime tests,Metrology,,SLAC,Labor
103870,1.03,1.03.06,1.03.06.06,1.03.06.06.03,1.03.06.06.03,SXR Undulator Integration and Testing,AS_SXU_MANF_5760,Perform SXU phase matching Tests,10.0,8.0,8.0,8.0,07-28-22,08-10-22,AS_SXU_MANF_5750: FS,AS_SXU_MANF_5770: FS,SLAC,0%,52213.52213_EEDHW (Electronics & Engineering Div - HW Engr),52213_EEDHW (Electronics & Engineering Div - HW Engr),Labor,0.0d,10.0,10.0,At Completion Units,9/16/2022,9/29/2022,0,0,0,0,0,0,0,0,0,0,1.03_Accelerator Systems (AS),1.03.06_AS Soft X-Ray Undulator (SXR) - SLAC,1.03.06.06_AS Soft X-Ray Undulator Procurement and Fabrication - SLAC,1.03.06.06.03_SXR Undulator Integration and Testing,AS_SXU_MANF_5760_Perform SXU phase matching Tests,Electrical,,SLAC,Labor
103871,1.03,1.03.06,1.03.06.06,1.03.06.06.03,1.03.06.06.03,SXR Undulator Integration and Testing,AS_SXU_MANF_5760,Perform SXU phase matching Tests,10.0,118.0,118.0,118.0,07-28-22,08-10-22,AS_SXU_MANF_5750: FS,AS_SXU_MANF_5770: FS,SLAC,0%,52191.52191_METSMET Metrology,52191_METSMET Metrology,Labor,0.0d,10.0,10.0,At Completion Units,9/16/2022,9/29/2022,0,0,0,0,0,0,0,0,0,0,1.03_Accelerator Systems (AS),1.03.06_AS Soft X-Ray Undulator (SXR) - SLAC,1.03.06.06_AS Soft X-Ray Undulator Procurement and Fabrication - SLAC,1.03.06.06.03_SXR Undulator Integration and Testing,AS_SXU_MANF_5760_Perform SXU phase matching Tests,Metrology,,SLAC,Labor
103872,1.03,1.03.06,1.03.06.06,1.03.06.06.03,1.03.06.06.03,SXR Undulator Integration and Testing,AS_SXU_MANF_5750,Perform SXU Transportation Tests,5.0,24.0,24.0,24.0,07-21-22,07-27-22,AS_SXU_MANF_1046: FS,"AS_SXU_MANF_5760: FS, AS_SXU_MANF_5755: FS, AS_LBL_DE_400: FS",SLAC,0%,52152.52152_FAC Fleet,52152_FAC Fleet,Labor,0.0d,5.0,5.0,At Completion Units,9/9/2022,9/15/2022,0,0,0,0,0,0,0,0,0,0,1.03_Accelerator Systems (AS),1.03.06_AS Soft X-Ray Undulator (SXR) - SLAC,1.03.06.06_AS Soft X-Ray Undulator Procurement and Fabrication - SLAC,1.03.06.06.03_SXR Undulator Integration and Testing,AS_SXU_MANF_5750_Perform SXU Transportation Tests,Support System,,SLAC,Labor
103873,1.03,1.03.06,1.03.06.06,1.03.06.06.03,1.03.06.06.03,SXR Undulator Integration and Testing,AS_SXU_MANF_5750,Perform SXU Transportation Tests,5.0,8.0,8.0,8.0,07-21-22,07-27-22,AS_SXU_MANF_1046: FS,"AS_SXU_MANF_5760: FS, AS_SXU_MANF_5755: FS, AS_LBL_DE_400: FS",SLAC,0%,52213.52213_EEDHW (Electronics & Engineering Div - HW Engr),52213_EEDHW (Electronics & Engineering Div - HW Engr),Labor,0.0d,5.0,5.0,At Completion Units,9/9/2022,9/15/2022,0,0,0,0,0,0,0,0,0,0,1.03_Accelerator Systems (AS),1.03.06_AS Soft X-Ray Undulator (SXR) - SLAC,1.03.06.06_AS Soft X-Ray Undulator Procurement and Fabrication - SLAC,1.03.06.06.03_SXR Undulator Integration and Testing,AS_SXU_MANF_5750_Perform SXU Transportation Tests,Electrical,,SLAC,Labor
103874,1.03,1.03.06,1.03.06.06,1.03.06.06.03,1.03.06.06.03,SXR Undulator Integration and Testing,AS_SXU_MANF_5750,Perform SXU Transportation Tests,5.0,118.0,118.0,118.0,07-21-22,07-27-22,AS_SXU_MANF_1046: FS,"AS_SXU_MANF_5760: FS, AS_SXU_MANF_5755: FS, AS_LBL_DE_400: FS",SLAC,0%,52191.52191_METSMET Metrology,52191_METSMET Metrology,Labor,0.0d,5.0,5.0,At Completion Units,9/9/2022,9/15/2022,0,0,0,0,0,0,0,0,0,0,1.03_Accelerator Systems (AS),1.03.06_AS Soft X-Ray Undulator (SXR) - SLAC,1.03.06.06_AS Soft X-Ray Undulator Procurement and Fabrication - SLAC,1.03.06.06.03_SXR Undulator Integration and Testing,AS_SXU_MANF_5750_Perform SXU Transportation Tests,Metrology,,SLAC,Labor
103875,1.03,1.03.06,1.03.06.06,1.03.06.06.03,1.03.06.06.03,SXR Undulator Integration and Testing,AS_SXU_MANF_5750,Perform SXU Transportation Tests,5.0,16.0,16.0,16.0,07-21-22,07-27-22,AS_SXU_MANF_1046: FS,"AS_SXU_MANF_5760: FS, AS_SXU_MANF_5755: FS, AS_LBL_DE_400: FS",SLAC,0%,52169.52169_METS Mechanical Engineer,52169_METS Mechanical Engineer,Labor,0.0d,5.0,5.0,At Completion Units,9/9/2022,9/15/2022,0,0,0,0,0,0,0,0,0,0,1.03_Accelerator Systems (AS),1.03.06_AS Soft X-Ray Undulator (SXR) - SLAC,1.03.06.06_AS Soft X-Ray Undulator Procurement and Fabrication - SLAC,1.03.06.06.03_SXR Undulator Integration and Testing,AS_SXU_MANF_5750_Perform SXU Transportation Tests,Mechanical,,SLAC,Labor
104195,1.03,1.03.06,1.03.06.06,1.03.06.06.04,1.03.06.06.04,HXRSS Procurement and Fabrication,AS_SXU_MANF_5870,Purchase misc hardware - HXRSS,40.0,5324.0,5324.0,5324.0,10-02-23,11-28-23,"AS_SXU_DE_8040: FS, AS_M4_3010: FS",AS_SXU_MANF_5910: FS,SLAC,0%,SL_MSSC.SLAC M&S (<$500K) (gets G&A) (gets ESC),SLAC M&S (<$500K) (gets G&A) (gets ESC),Nonlabor,0.0d,40.0,40.0,At Completion Units,nn,,0,0,0,0,0,0,0,0,0,0,1.03_Accelerator Systems (AS),1.03.06_AS Soft X-Ray Undulator (SXR) - SLAC,1.03.06.06_AS Soft X-Ray Undulator Procurement and Fabrication - SLAC,1.03.06.06.04_HXRSS Procurement and Fabrication,AS_SXU_MANF_5870_Purchase misc hardware - HXRSS,Material,,SLAC,M&S
104196,1.03,1.03.06,1.03.06.06,1.03.06.06.04,1.03.06.06.04,HXRSS Procurement and Fabrication,AS_SXU_MANF_5860,Purchase adapter plates - HXRSS,60.0,2000.0,2000.0,2000.0,10-02-23,01-10-24,"AS_SXU_DE_8040: FS, AS_M4_3010: FS",AS_SXU_MANF_5910: FS,SLAC,0%,SL_MSSC.SLAC M&S (<$500K) (gets G&A) (gets ESC),SLAC M&S (<$500K) (gets G&A) (gets ESC),Nonlabor,0.0d,60.0,60.0,At Completion Units,nn,,0,0,0,0,0,0,0,0,0,0,1.03_Accelerator Systems (AS),1.03.06_AS Soft X-Ray Undulator (SXR) - SLAC,1.03.06.06_AS Soft X-Ray Undulator Procurement and Fabrication - SLAC,1.03.06.06.04_HXRSS Procurement and Fabrication,AS_SXU_MANF_5860_Purchase adapter plates - HXRSS,Material,,SLAC,M&S
104197,1.03,1.03.06,1.03.06.06,1.03.06.06.04,1.03.06.06.04,HXRSS Procurement and Fabrication,AS_SXU_MANF_5920,Magnet installation - HXRSS,15.0,23.0,23.0,23.0,03-11-24,03-29-24,"AS_SXU_MANF_5830: FS, AS_SXU_MANF_5840: FS",AS_SXU_MANF_5930: FS,SLAC,0%,52198.52198_METSMANF (METSD Manufacturing),52198_METSMANF (METSD Manufacturing),Labor,0.0d,15.0,15.0,At Completion Units,nn,,0,0,0,0,0,0,0,0,0,0,1.03_Accelerator Systems (AS),1.03.06_AS Soft X-Ray Undulator (SXR) - SLAC,1.03.06.06_AS Soft X-Ray Undulator Procurement and Fabrication - SLAC,1.03.06.06.04_HXRSS Procurement and Fabrication,AS_SXU_MANF_5920_Magnet installation - HXRSS,Manufacturing,,SLAC,Labor
104198,1.03,1.03.06,1.03.06.06,1.03.06.06.04,1.03.06.06.04,HXRSS Procurement and Fabrication,AS_SXU_MANF_5910,Girder modifications - HXRSS,40.0,72.0,72.0,72.0,01-11-24,03-08-24,"AS_SXU_MANF_5860: FS, AS_SXU_MANF_5870: FS",AS_SXU_MANF_5930: FS,SLAC,0%,52198.52198_METSMANF (METSD Manufacturing),52198_METSMANF (METSD Manufacturing),Labor,0.0d,40.0,40.0,At Completion Units,nn,,0,0,0,0,0,0,0,0,0,0,1.03_Accelerator Systems (AS),1.03.06_AS Soft X-Ray Undulator (SXR) - SLAC,1.03.06.06_AS Soft X-Ray Undulator Procurement and Fabrication - SLAC,1.03.06.06.04_HXRSS Procurement and Fabrication,AS_SXU_MANF_5910_Girder modifications - HXRSS,Manufacturing,,SLAC,Labor
104199,1.03,1.03.06,1.03.06.06,1.03.06.06.04,1.03.06.06.04,HXRSS Procurement and Fabrication,AS_SXU_MANF_5900,Process vacuum subassemblies- HXRSS,20.0,47.0,47.0,47.0,04-08-24,05-03-24,"AS_SXU_MANF_5820: FS, AS_SXU_MANF_5850: FS",AS_SXU_MANF_5890: FS,SLAC,0%,52198.52198_METSMANF (METSD Manufacturing),52198_METSMANF (METSD Manufacturing),Labor,0.0d,20.0,20.0,At Completion Units,nn,,0,0,0,0,0,0,0,0,0,0,1.03_Accelerator Systems (AS),1.03.06_AS Soft X-Ray Undulator (SXR) - SLAC,1.03.06.06_AS Soft X-Ray Undulator Procurement and Fabrication - SLAC,1.03.06.06.04_HXRSS Procurement and Fabrication,AS_SXU_MANF_5900_Process vacuum subassemblies- HXRSS,Manufacturing,,SLAC,Labor
104200,1.03,1.03.06,1.03.06.06,1.03.06.06.04,1.03.06.06.04,HXRSS Procurement and Fabrication,AS_SXU_MANF_5890,Assemble main chamber - HXRSS,20.0,80.0,80.0,80.0,05-06-24,06-03-24,"AS_SXU_MANF_5880: FS, AS_SXU_MANF_5900: FS",AS_SXU_MANF_5930: FS,SLAC,0%,52198.52198_METSMANF (METSD Manufacturing),52198_METSMANF (METSD Manufacturing),Labor,0.0d,20.0,20.0,At Completion Units,nn,,0,0,0,0,0,0,0,0,0,0,1.03_Accelerator Systems (AS),1.03.06_AS Soft X-Ray Undulator (SXR) - SLAC,1.03.06.06_AS Soft X-Ray Undulator Procurement and Fabrication - SLAC,1.03.06.06.04_HXRSS Procurement and Fabrication,AS_SXU_MANF_5890_Assemble main chamber - HXRSS,Manufacturing,,SLAC,Labor
104201,1.03,1.03.06,1.03.06.06,1.03.06.06.04,1.03.06.06.04,HXRSS Procurement and Fabrication,AS_SXU_MANF_5880,Process main chamber - HXRSS,20.0,24.0,24.0,24.0,03-11-24,04-05-24,AS_SXU_MANF_5810: FS,AS_SXU_MANF_5890: FS,SLAC,0%,52198.52198_METSMANF (METSD Manufacturing),52198_METSMANF (METSD Manufacturing),Labor,0.0d,20.0,20.0,At Completion Units,nn,,0,0,0,0,0,0,0,0,0,0,1.03_Accelerator Systems (AS),1.03.06_AS Soft X-Ray Undulator (SXR) - SLAC,1.03.06.06_AS Soft X-Ray Undulator Procurement and Fabrication - SLAC,1.03.06.06.04_HXRSS Procurement and Fabrication,AS_SXU_MANF_5880_Process main chamber - HXRSS,Manufacturing,,SLAC,Labor
104202,1.03,1.03.06,1.03.06.06,1.03.06.06.04,1.03.06.06.04,HXRSS Procurement and Fabrication,AS_SXU_MANF_5850,Purchase beam pipes - HXRSS,80.0,4.0,4.0,4.0,10-02-23,02-08-24,"AS_SXU_DE_8040: FS, AS_M4_3010: FS",AS_SXU_MANF_5900: FS,SLAC,0%,52198.52198_METSMANF (METSD Manufacturing),52198_METSMANF (METSD Manufacturing),Labor,0.0d,80.0,80.0,At Completion Units,nn,,0,0,0,0,0,0,0,0,0,0,1.03_Accelerator Systems (AS),1.03.06_AS Soft X-Ray Undulator (SXR) - SLAC,1.03.06.06_AS Soft X-Ray Undulator Procurement and Fabrication - SLAC,1.03.06.06.04_HXRSS Procurement and Fabrication,AS_SXU_MANF_5850_Purchase beam pipes - HXRSS,Manufacturing,,SLAC,Labor
104203,1.03,1.03.06,1.03.06.06,1.03.06.06.04,1.03.06.06.04,HXRSS Procurement and Fabrication,AS_SXU_MANF_5850,Purchase beam pipes - HXRSS,80.0,44707.0,44707.0,44707.0,10-02-23,02-08-24,"AS_SXU_DE_8040: FS, AS_M4_3010: FS",AS_SXU_MANF_5900: FS,SLAC,0%,SL_MSSC.SLAC M&S (<$500K) (gets G&A) (gets ESC),SLAC M&S (<$500K) (gets G&A) (gets ESC),Nonlabor,0.0d,80.0,80.0,At Completion Units,nn,,0,0,0,0,0,0,0,0,0,0,1.03_Accelerator Systems (AS),1.03.06_AS Soft X-Ray Undulator (SXR) - SLAC,1.03.06.06_AS Soft X-Ray Undulator Procurement and Fabrication - SLAC,1.03.06.06.04_HXRSS Procurement and Fabrication,AS_SXU_MANF_5850_Purchase beam pipes - HXRSS,Material,,SLAC,M&S
104204,1.03,1.03.06,1.03.06.06,1.03.06.06.04,1.03.06.06.04,HXRSS Procurement and Fabrication,AS_SXU_MANF_5840,Purchase dipole stands - HXRSS,70.0,16765.0,16765.0,16765.0,10-02-23,01-25-24,"AS_SXU_DE_8040: FS, AS_M4_3010: FS",AS_SXU_MANF_5920: FS,SLAC,0%,SL_MSSC.SLAC M&S (<$500K) (gets G&A) (gets ESC),SLAC M&S (<$500K) (gets G&A) (gets ESC),Nonlabor,0.0d,70.0,70.0,At Completion Units,nn,,0,0,0,0,0,0,0,0,0,0,1.03_Accelerator Systems (AS),1.03.06_AS Soft X-Ray Undulator (SXR) - SLAC,1.03.06.06_AS Soft X-Ray Undulator Procurement and Fabrication - SLAC,1.03.06.06.04_HXRSS Procurement and Fabrication,AS_SXU_MANF_5840_Purchase dipole stands - HXRSS,Material,,SLAC,M&S
104205,1.03,1.03.06,1.03.06.06,1.03.06.06.04,1.03.06.06.04,HXRSS Procurement and Fabrication,AS_SXU_MANF_5830,Purchase dipole magnets - HXRSS,100.0,45825.0,45825.0,45825.0,10-02-23,03-08-24,"AS_SXU_DE_8040: FS, AS_M4_3010: FS",AS_SXU_MANF_5920: FS,SLAC,0%,SL_MSSC.SLAC M&S (<$500K) (gets G&A) (gets ESC),SLAC M&S (<$500K) (gets G&A) (gets ESC),Nonlabor,0.0d,100.0,100.0,At Completion Units,nn,,0,0,0,0,0,0,0,0,0,0,1.03_Accelerator Systems (AS),1.03.06_AS Soft X-Ray Undulator (SXR) - SLAC,1.03.06.06_AS Soft X-Ray Undulator Procurement and Fabrication - SLAC,1.03.06.06.04_HXRSS Procurement and Fabrication,AS_SXU_MANF_5830_Purchase dipole magnets - HXRSS,Material,,SLAC,M&S
104206,1.03,1.03.06,1.03.06.06,1.03.06.06.04,1.03.06.06.04,HXRSS Procurement and Fabrication,AS_SXU_MANF_5820,Purchase mirror / grating - HXRSS,120.0,8000.0,8000.0,8000.0,10-02-23,04-05-24,"AS_SXU_DE_8040: FS, AS_M4_3010: FS",AS_SXU_MANF_5900: FS,SLAC,0%,SL_MSSC.SLAC M&S (<$500K) (gets G&A) (gets ESC),SLAC M&S (<$500K) (gets G&A) (gets ESC),Nonlabor,0.0d,120.0,120.0,At Completion Units,nn,,0,0,0,0,0,0,0,0,0,0,1.03_Accelerator Systems (AS),1.03.06_AS Soft X-Ray Undulator (SXR) - SLAC,1.03.06.06_AS Soft X-Ray Undulator Procurement and Fabrication - SLAC,1.03.06.06.04_HXRSS Procurement and Fabrication,AS_SXU_MANF_5820_Purchase mirror / grating - HXRSS,Material,,SLAC,M&S
104207,1.03,1.03.06,1.03.06.06,1.03.06.06.04,1.03.06.06.04,HXRSS Procurement and Fabrication,AS_SXU_MANF_5810,Purchase main chamber - HXRSS,100.0,30000.0,30000.0,30000.0,10-02-23,03-08-24,"AS_SXU_DE_8040: FS, AS_M4_3010: FS",AS_SXU_MANF_5880: FS,SLAC,0%,SL_MSSC.SLAC M&S (<$500K) (gets G&A) (gets ESC),SLAC M&S (<$500K) (gets G&A) (gets ESC),Nonlabor,0.0d,100.0,100.0,At Completion Units,nn,,0,0,0,0,0,0,0,0,0,0,1.03_Accelerator Systems (AS),1.03.06_AS Soft X-Ray Undulator (SXR) - SLAC,1.03.06.06_AS Soft X-Ray Undulator Procurement and Fabrication - SLAC,1.03.06.06.04_HXRSS Procurement and Fabrication,AS_SXU_MANF_5810_Purchase main chamber - HXRSS,Material,,SLAC,M&S
104208,1.03,1.03.06,1.03.06.06,1.03.06.06.04,1.03.06.06.04,HXRSS Procurement and Fabrication,AS_SXU_MANF_5800,Manufacturing Support - HXRSS,100.0,40.0,40.0,40.0,07-29-22,01-03-23,AS_SXU_DE_8040: FS,AS_SXU_MANF_5930: FS,SLAC,0%,52190.52190_METSTP Tech Planning - Reinstated FY16,52190_METSTP Tech Planning - Reinstated FY16,Labor,0.0d,100.0,100.0,At Completion Units,nn,,0,0,0,0,0,0,0,0,0,0,1.03_Accelerator Systems (AS),1.03.06_AS Soft X-Ray Undulator (SXR) - SLAC,1.03.06.06_AS Soft X-Ray Undulator Procurement and Fabrication - SLAC,1.03.06.06.04_HXRSS Procurement and Fabrication,AS_SXU_MANF_5800_Manufacturing Support - HXRSS,METSTPT Tech Planning,Tech,SLAC,Labor
104209,1.03,1.03.06,1.03.06.06,1.03.06.06.04,1.03.06.06.04,HXRSS Procurement and Fabrication,AS_SXU_MANF_5800,Manufacturing Support - HXRSS,100.0,80.0,80.0,80.0,07-29-22,01-03-23,AS_SXU_DE_8040: FS,AS_SXU_MANF_5930: FS,SLAC,0%,52169.52169_METS Mechanical Engineer,52169_METS Mechanical Engineer,Labor,0.0d,100.0,100.0,At Completion Units,nn,,0,0,0,0,0,0,0,0,0,0,1.03_Accelerator Systems (AS),1.03.06_AS Soft X-Ray Undulator (SXR) - SLAC,1.03.06.06_AS Soft X-Ray Undulator Procurement and Fabrication - SLAC,1.03.06.06.04_HXRSS Procurement and Fabrication,AS_SXU_MANF_5800_Manufacturing Support - HXRSS,Mechanical,,SLAC,Labor
104848,1.03,1.03.06,1.03.06.20,1.03.06.20.01,1.03.06.20.01,SXR Undulator Components Installation,AS_SXU_INST_5250,Install Vacuum Chamber water cooling,10.0,80.0,80.0,80.0,05-02-25,05-15-25,AS_SXU_INST_5225: FS,AS_SXU_INST_5400: FS,SLAC,0%,52198.52198_METSMANF (METSD Manufacturing),52198_METSMANF (METSD Manufacturing),Labor,0.0d,10.0,10.0,At Completion Units,9/10/2024,9/23/2024,0,0,0,0,0,0,0,0,0,0,1.03_Accelerator Systems (AS),1.03.06_AS Soft X-Ray Undulator (SXR) - SLAC,1.03.06.20_AS Soft X-Ray Undulator Installation - SLAC,1.03.06.20.01_SXR Undulator Components Installation,AS_SXU_INST_5250_Install Vacuum Chamber water cooling,Manufacturing,,SLAC,Labor
104849,1.03,1.03.06,1.03.06.20,1.03.06.20.01,1.03.06.20.01,SXR Undulator Components Installation,AS_SXU_INST_5250,Install Vacuum Chamber water cooling,10.0,5.0,5.0,5.0,05-02-25,05-15-25,AS_SXU_INST_5225: FS,AS_SXU_INST_5400: FS,SLAC,0%,52190.52190_METSTP Tech Planning - Reinstated FY16,52190_METSTP Tech Planning - Reinstated FY16,Labor,0.0d,10.0,10.0,At Completion Units,9/10/2024,9/23/2024,0,0,0,0,0,0,0,0,0,0,1.03_Accelerator Systems (AS),1.03.06_AS Soft X-Ray Undulator (SXR) - SLAC,1.03.06.20_AS Soft X-Ray Undulator Installation - SLAC,1.03.06.20.01_SXR Undulator Components Installation,AS_SXU_INST_5250_Install Vacuum Chamber water cooling,METSTPT Tech Planning,Tech,SLAC,Labor
104850,1.03,1.03.06,1.03.06.20,1.03.06.20.01,1.03.06.20.01,SXR Undulator Components Installation,AS_SXU_INST_5250,Install Vacuum Chamber water cooling,10.0,80.0,80.0,80.0,05-02-25,05-15-25,AS_SXU_INST_5225: FS,AS_SXU_INST_5400: FS,SLAC,0%,52169.52169_METS Mechanical Engineer,52169_METS Mechanical Engineer,Labor,0.0d,10.0,10.0,At Completion Units,9/10/2024,9/23/2024,0,0,0,0,0,0,0,0,0,0,1.03_Accelerator Systems (AS),1.03.06_AS Soft X-Ray Undulator (SXR) - SLAC,1.03.06.20_AS Soft X-Ray Undulator Installation - SLAC,1.03.06.20.01_SXR Undulator Components Installation,AS_SXU_INST_5250_Install Vacuum Chamber water cooling,Mechanical,,SLAC,Labor
104851,1.03,1.03.06,1.03.06.20,1.03.06.20.01,1.03.06.20.01,SXR Undulator Components Installation,AS_SXU_INST_5250,Install Vacuum Chamber water cooling,10.0,40.0,40.0,40.0,05-02-25,05-15-25,AS_SXU_INST_5225: FS,AS_SXU_INST_5400: FS,SLAC,0%,52168.52168_METS - Mechanical Design,52168_METS - Mechanical Design,Labor,0.0d,10.0,10.0,At Completion Units,9/10/2024,9/23/2024,0,0,0,0,0,0,0,0,0,0,1.03_Accelerator Systems (AS),1.03.06_AS Soft X-Ray Undulator (SXR) - SLAC,1.03.06.20_AS Soft X-Ray Undulator Installation - SLAC,1.03.06.20.01_SXR Undulator Components Installation,AS_SXU_INST_5250_Install Vacuum Chamber water cooling,Mechanical,,SLAC,Labor
104852,1.03,1.03.06,1.03.06.20,1.03.06.20.01,1.03.06.20.01,SXR Undulator Components Installation,AS_SXU_INST_5000,Installation Coordination: Short Down #2 - SXR Undulator System Installation,41.0,400.0,400.0,400.0,08-01-24,09-27-24,AS_M4_1030: FS,AS_M4_DTS2_1030: FS,SLAC,0%,52191.52191_METSMET Metrology,52191_METSMET Metrology,Labor,0.0d,41.0,41.0,At Completion Units,8/1/2024,9/27/2024,0,0,0,0,0,0,0,0,0,0,1.03_Accelerator Systems (AS),1.03.06_AS Soft X-Ray Undulator (SXR) - SLAC,1.03.06.20_AS Soft X-Ray Undulator Installation - SLAC,1.03.06.20.01_SXR Undulator Components Installation,AS_SXU_INST_5000_Installation Coordination: Short Down #2 - SXR Undulator System Installation,Metrology,,SLAC,Labor
104853,1.03,1.03.06,1.03.06.20,1.03.06.20.01,1.03.06.20.01,SXR Undulator Components Installation,AS_SXU_INST_5000,Installation Coordination: Short Down #2 - SXR Undulator System Installation,41.0,32.0,32.0,32.0,08-01-24,09-27-24,AS_M4_1030: FS,AS_M4_DTS2_1030: FS,SLAC,0%,52191.52191_METSMET Metrology,52191_METSMET Metrology,Labor,0.0d,41.0,41.0,At Completion Units,8/1/2024,9/27/2024,0,0,0,0,0,0,0,0,0,0,1.03_Accelerator Systems (AS),1.03.06_AS Soft X-Ray Undulator (SXR) - SLAC,1.03.06.20_AS Soft X-Ray Undulator Installation - SLAC,1.03.06.20.01_SXR Undulator Components Installation,AS_SXU_INST_5000_Installation Coordination: Short Down #2 - SXR Undulator System Installation,Metrology,,SLAC,Labor
104854,1.03,1.03.06,1.03.06.20,1.03.06.20.01,1.03.06.20.01,SXR Undulator Components Installation,AS_SXU_INST_5330,Install entrance RFBPMs,5.0,32.0,32.0,32.0,11-04-24,11-08-24,AS_SXU_MANF_3720: FS,AS_SXU_INST_5400: FS,SLAC,0%,52127.52127_Research Electrical & SW Engineer,52127_Research Electrical & SW Engineer,Labor,0.0d,5.0,5.0,At Completion Units,10/5/2023,10/11/2023,0,0,0,0,0,0,0,0,0,0,1.03_Accelerator Systems (AS),1.03.06_AS Soft X-Ray Undulator (SXR) - SLAC,1.03.06.20_AS Soft X-Ray Undulator Installation - SLAC,1.03.06.20.01_SXR Undulator Components Installation,AS_SXU_INST_5330_Install entrance RFBPMs,Electrical,,SLAC,Labor
104855,1.03,1.03.06,1.03.06.20,1.03.06.20.01,1.03.06.20.01,SXR Undulator Components Installation,AS_SXU_INST_5330,Install entrance RFBPMs,5.0,8.0,8.0,8.0,11-04-24,11-08-24,AS_SXU_MANF_3720: FS,AS_SXU_INST_5400: FS,SLAC,0%,52191.52191_METSMET Metrology,52191_METSMET Metrology,Labor,0.0d,5.0,5.0,At Completion Units,10/5/2023,10/11/2023,0,0,0,0,0,0,0,0,0,0,1.03_Accelerator Systems (AS),1.03.06_AS Soft X-Ray Undulator (SXR) - SLAC,1.03.06.20_AS Soft X-Ray Undulator Installation - SLAC,1.03.06.20.01_SXR Undulator Components Installation,AS_SXU_INST_5330_Install entrance RFBPMs,Metrology,,SLAC,Labor
104856,1.03,1.03.06,1.03.06.20,1.03.06.20.01,1.03.06.20.01,SXR Undulator Components Installation,AS_SXU_INST_5330,Install entrance RFBPMs,5.0,4.0,4.0,4.0,11-04-24,11-08-24,AS_SXU_MANF_3720: FS,AS_SXU_INST_5400: FS,SLAC,0%,52169.52169_METS Mechanical Engineer,52169_METS Mechanical Engineer,Labor,0.0d,5.0,5.0,At Completion Units,10/5/2023,10/11/2023,0,0,0,0,0,0,0,0,0,0,1.03_Accelerator Systems (AS),1.03.06_AS Soft X-Ray Undulator (SXR) - SLAC,1.03.06.20_AS Soft X-Ray Undulator Installation - SLAC,1.03.06.20.01_SXR Undulator Components Installation,AS_SXU_INST_5330_Install entrance RFBPMs,Mechanical,,SLAC,Labor
104857,1.03,1.03.06,1.03.06.20,1.03.06.20.01,1.03.06.20.01,SXR Undulator Components Installation,AS_SXU_INST_5330,Install entrance RFBPMs,5.0,32.0,32.0,32.0,11-04-24,11-08-24,AS_SXU_MANF_3720: FS,AS_SXU_INST_5400: FS,SLAC,0%,52198.52198_METSMANF (METSD Manufacturing),52198_METSMANF (METSD Manufacturing),Labor,0.0d,5.0,5.0,At Completion Units,10/5/2023,10/11/2023,0,0,0,0,0,0,0,0,0,0,1.03_Accelerator Systems (AS),1.03.06_AS Soft X-Ray Undulator (SXR) - SLAC,1.03.06.20_AS Soft X-Ray Undulator Installation - SLAC,1.03.06.20.01_SXR Undulator Components Installation,AS_SXU_INST_5330_Install entrance RFBPMs,Manufacturing,,SLAC,Labor
104858,1.03,1.03.06,1.03.06.20,1.03.06.20.01,1.03.06.20.01,SXR Undulator Components Installation,AS_SXU_INST_5320,Integrate SXRSS chicane magnets,5.0,16.0,16.0,16.0,03-21-24,03-27-24,AS_SXU_INST_5310: FS,AS_SXU_INST_5400: FS,SLAC,0%,52191.52191_METSMET Metrology,52191_METSMET Metrology,Labor,0.0d,5.0,5.0,At Completion Units,2/21/2023,2/27/2023,0,0,0,0,0,0,0,0,0,0,1.03_Accelerator Systems (AS),1.03.06_AS Soft X-Ray Undulator (SXR) - SLAC,1.03.06.20_AS Soft X-Ray Undulator Installation - SLAC,1.03.06.20.01_SXR Undulator Components Installation,AS_SXU_INST_5320_Integrate SXRSS chicane magnets,Metrology,,SLAC,Labor
104859,1.03,1.03.06,1.03.06.20,1.03.06.20.01,1.03.06.20.01,SXR Undulator Components Installation,AS_SXU_INST_5320,Integrate SXRSS chicane magnets,5.0,8.0,8.0,8.0,03-21-24,03-27-24,AS_SXU_INST_5310: FS,AS_SXU_INST_5400: FS,SLAC,0%,52169.52169_METS Mechanical Engineer,52169_METS Mechanical Engineer,Labor,0.0d,5.0,5.0,At Completion Units,2/21/2023,2/27/2023,0,0,0,0,0,0,0,0,0,0,1.03_Accelerator Systems (AS),1.03.06_AS Soft X-Ray Undulator (SXR) - SLAC,1.03.06.20_AS Soft X-Ray Undulator Installation - SLAC,1.03.06.20.01_SXR Undulator Components Installation,AS_SXU_INST_5320_Integrate SXRSS chicane magnets,Mechanical,,SLAC,Labor
104860,1.03,1.03.06,1.03.06.20,1.03.06.20.01,1.03.06.20.01,SXR Undulator Components Installation,AS_SXU_INST_5320,Integrate SXRSS chicane magnets,5.0,80.0,80.0,80.0,03-21-24,03-27-24,AS_SXU_INST_5310: FS,AS_SXU_INST_5400: FS,SLAC,0%,52198.52198_METSMANF (METSD Manufacturing),52198_METSMANF (METSD Manufacturing),Labor,0.0d,5.0,5.0,At Completion Units,2/21/2023,2/27/2023,0,0,0,0,0,0,0,0,0,0,1.03_Accelerator Systems (AS),1.03.06_AS Soft X-Ray Undulator (SXR) - SLAC,1.03.06.20_AS Soft X-Ray Undulator Installation - SLAC,1.03.06.20.01_SXR Undulator Components Installation,AS_SXU_INST_5320_Integrate SXRSS chicane magnets,Manufacturing,,SLAC,Labor
104861,1.03,1.03.06,1.03.06.20,1.03.06.20.01,1.03.06.20.01,SXR Undulator Components Installation,AS_SXU_INST_5310,Disassemble SXRSS,5.0,8.0,8.0,8.0,03-14-24,03-20-24,AS_SXU_INST_5300: FS,AS_SXU_INST_5320: FS,SLAC,0%,52169.52169_METS Mechanical Engineer,52169_METS Mechanical Engineer,Labor,0.0d,5.0,5.0,At Completion Units,2/13/2023,2/17/2023,0,0,0,0,0,0,0,0,0,0,1.03_Accelerator Systems (AS),1.03.06_AS Soft X-Ray Undulator (SXR) - SLAC,1.03.06.20_AS Soft X-Ray Undulator Installation - SLAC,1.03.06.20.01_SXR Undulator Components Installation,AS_SXU_INST_5310_Disassemble SXRSS,Mechanical,,SLAC,Labor
104862,1.03,1.03.06,1.03.06.20,1.03.06.20.01,1.03.06.20.01,SXR Undulator Components Installation,AS_SXU_INST_5310,Disassemble SXRSS,5.0,64.0,64.0,64.0,03-14-24,03-20-24,AS_SXU_INST_5300: FS,AS_SXU_INST_5320: FS,SLAC,0%,52198.52198_METSMANF (METSD Manufacturing),52198_METSMANF (METSD Manufacturing),Labor,0.0d,5.0,5.0,At Completion Units,2/13/2023,2/17/2023,0,0,0,0,0,0,0,0,0,0,1.03_Accelerator Systems (AS),1.03.06_AS Soft X-Ray Undulator (SXR) - SLAC,1.03.06.20_AS Soft X-Ray Undulator Installation - SLAC,1.03.06.20.01_SXR Undulator Components Installation,AS_SXU_INST_5310_Disassemble SXRSS,Manufacturing,,SLAC,Labor
104863,1.03,1.03.06,1.03.06.20,1.03.06.20.01,1.03.06.20.01,SXR Undulator Components Installation,AS_SXU_INST_5300,Relocate SXRSS,5.0,12.0,12.0,12.0,03-07-24,03-13-24,AS_SXU_MANF_5590: FS,AS_SXU_INST_5310: FS,SLAC,0%,52211.52211_EEDOPSE (Electronics & Engineering Div - Ops & PSE),52211_EEDOPSE (Electronics & Engineering Div - Ops & PSE),Labor,0.0d,5.0,5.0,At Completion Units,2/6/2023,2/10/2023,0,0,0,0,0,0,0,0,0,0,1.03_Accelerator Systems (AS),1.03.06_AS Soft X-Ray Undulator (SXR) - SLAC,1.03.06.20_AS Soft X-Ray Undulator Installation - SLAC,1.03.06.20.01_SXR Undulator Components Installation,AS_SXU_INST_5300_Relocate SXRSS,Electrical,,SLAC,Labor
104864,1.03,1.03.06,1.03.06.20,1.03.06.20.01,1.03.06.20.01,SXR Undulator Components Installation,AS_SXU_INST_5300,Relocate SXRSS,5.0,16.0,16.0,16.0,03-07-24,03-13-24,AS_SXU_MANF_5590: FS,AS_SXU_INST_5310: FS,SLAC,0%,52191.52191_METSMET Metrology,52191_METSMET Metrology,Labor,0.0d,5.0,5.0,At Completion Units,2/6/2023,2/10/2023,0,0,0,0,0,0,0,0,0,0,1.03_Accelerator Systems (AS),1.03.06_AS Soft X-Ray Undulator (SXR) - SLAC,1.03.06.20_AS Soft X-Ray Undulator Installation - SLAC,1.03.06.20.01_SXR Undulator Components Installation,AS_SXU_INST_5300_Relocate SXRSS,Metrology,,SLAC,Labor
104865,1.03,1.03.06,1.03.06.20,1.03.06.20.01,1.03.06.20.01,SXR Undulator Components Installation,AS_SXU_INST_5300,Relocate SXRSS,5.0,16.0,16.0,16.0,03-07-24,03-13-24,AS_SXU_MANF_5590: FS,AS_SXU_INST_5310: FS,SLAC,0%,52213.52213_EEDHW (Electronics & Engineering Div - HW Engr),52213_EEDHW (Electronics & Engineering Div - HW Engr),Labor,0.0d,5.0,5.0,At Completion Units,2/6/2023,2/10/2023,0,0,0,0,0,0,0,0,0,0,1.03_Accelerator Systems (AS),1.03.06_AS Soft X-Ray Undulator (SXR) - SLAC,1.03.06.20_AS Soft X-Ray Undulator Installation - SLAC,1.03.06.20.01_SXR Undulator Components Installation,AS_SXU_INST_5300_Relocate SXRSS,Electrical,,SLAC,Labor
104866,1.03,1.03.06,1.03.06.20,1.03.06.20.01,1.03.06.20.01,SXR Undulator Components Installation,AS_SXU_INST_5300,Relocate SXRSS,5.0,16.0,16.0,16.0,03-07-24,03-13-24,AS_SXU_MANF_5590: FS,AS_SXU_INST_5310: FS,SLAC,0%,52169.52169_METS Mechanical Engineer,52169_METS Mechanical Engineer,Labor,0.0d,5.0,5.0,At Completion Units,2/6/2023,2/10/2023,0,0,0,0,0,0,0,0,0,0,1.03_Accelerator Systems (AS),1.03.06_AS Soft X-Ray Undulator (SXR) - SLAC,1.03.06.20_AS Soft X-Ray Undulator Installation - SLAC,1.03.06.20.01_SXR Undulator Components Installation,AS_SXU_INST_5300_Relocate SXRSS,Mechanical,,SLAC,Labor
104867,1.03,1.03.06,1.03.06.20,1.03.06.20.01,1.03.06.20.01,SXR Undulator Components Installation,AS_SXU_INST_5300,Relocate SXRSS,5.0,104.0,104.0,104.0,03-07-24,03-13-24,AS_SXU_MANF_5590: FS,AS_SXU_INST_5310: FS,SLAC,0%,52198.52198_METSMANF (METSD Manufacturing),52198_METSMANF (METSD Manufacturing),Labor,0.0d,5.0,5.0,At Completion Units,2/6/2023,2/10/2023,0,0,0,0,0,0,0,0,0,0,1.03_Accelerator Systems (AS),1.03.06_AS Soft X-Ray Undulator (SXR) - SLAC,1.03.06.20_AS Soft X-Ray Undulator Installation - SLAC,1.03.06.20.01_SXR Undulator Components Installation,AS_SXU_INST_5300_Relocate SXRSS,Manufacturing,,SLAC,Labor
104868,1.03,1.03.06,1.03.06.20,1.03.06.20.01,1.03.06.20.01,SXR Undulator Components Installation,AS_SXU_INST_4010,R_IRR: Installation Readiness Review (IRR) - SXR Undulator System Installation,1.0,4.0,4.0,4.0,07-19-23,07-19-23,AS_SXU_INST_4000: FS,AS_SXU_INST_4020: FS,SLAC,0%,52155.52155_Health Physics Technician III,52155_Health Physics Technician III,Labor,0.0d,1.0,1.0,At Completion Units,7/19/2023,7/19/2023,Review,0,0,0,0,0,0,0,0,0,1.03_Accelerator Systems (AS),1.03.06_AS Soft X-Ray Undulator (SXR) - SLAC,1.03.06.20_AS Soft X-Ray Undulator Installation - SLAC,1.03.06.20.01_SXR Undulator Components Installation,AS_SXU_INST_4010_R_IRR: Installation Readiness Review (IRR) - SXR Undulator System Installation,Support System,Tech,SLAC,Labor
104869,1.03,1.03.06,1.03.06.20,1.03.06.20.01,1.03.06.20.01,SXR Undulator Components Installation,AS_SXU_INST_5090,Install interspace stands - SXR Undulator System Installation,3.0,25.0,25.0,25.0,08-20-24,08-22-24,"AS_SXU_INST_5070: FS, AS_SXU_MANF_3940: FS",AS_SXU_INST_5100: FS,SLAC,0%,52191.52191_METSMET Metrology,52191_METSMET Metrology,Labor,0.0d,3.0,3.0,At Completion Units,8/20/2024,8/22/2024,0,0,0,0,0,0,0,0,0,0,1.03_Accelerator Systems (AS),1.03.06_AS Soft X-Ray Undulator (SXR) - SLAC,1.03.06.20_AS Soft X-Ray Undulator Installation - SLAC,1.03.06.20.01_SXR Undulator Components Installation,AS_SXU_INST_5090_Install interspace stands - SXR Undulator System Installation,Metrology,,SLAC,Labor
104870,1.03,1.03.06,1.03.06.20,1.03.06.20.01,1.03.06.20.01,SXR Undulator Components Installation,AS_SXU_INST_5080,Install and grout floor plates - SXR Undulator System Installation,7.0,60.0,60.0,60.0,08-20-24,08-28-24,AS_SXU_INST_5060: FS,AS_SXU_INST_0110: FS,SLAC,0%,52191.52191_METSMET Metrology,52191_METSMET Metrology,Labor,0.0d,7.0,7.0,At Completion Units,8/20/2024,8/28/2024,0,0,0,0,0,0,0,0,0,0,1.03_Accelerator Systems (AS),1.03.06_AS Soft X-Ray Undulator (SXR) - SLAC,1.03.06.20_AS Soft X-Ray Undulator Installation - SLAC,1.03.06.20.01_SXR Undulator Components Installation,AS_SXU_INST_5080_Install and grout floor plates - SXR Undulator System Installation,Metrology,,SLAC,Labor
104871,1.03,1.03.06,1.03.06.20,1.03.06.20.01,1.03.06.20.01,SXR Undulator Components Installation,AS_SXU_INST_5225,Install Undulator Vacuum Chamber - Cell 25,1.0,6.0,6.0,6.0,05-01-25,05-01-25,"AS_SXU_INST_5124: FS, AS_SXU_INST_5224: SS",AS_SXU_INST_5250: FS,SLAC,0%,52191.52191_METSMET Metrology,52191_METSMET Metrology,Labor,0.0d,1.0,1.0,At Completion Units,9/9/2024,9/9/2024,0,0,0,0,0,0,0,0,0,0,1.03_Accelerator Systems (AS),1.03.06_AS Soft X-Ray Undulator (SXR) - SLAC,1.03.06.20_AS Soft X-Ray Undulator Installation - SLAC,1.03.06.20.01_SXR Undulator Components Installation,AS_SXU_INST_5225_Install Undulator Vacuum Chamber - Cell 25,Metrology,,SLAC,Labor
104872,1.03,1.03.06,1.03.06.20,1.03.06.20.01,1.03.06.20.01,SXR Undulator Components Installation,AS_SXU_INST_5225,Install Undulator Vacuum Chamber - Cell 25,1.0,2.0,2.0,2.0,05-01-25,05-01-25,"AS_SXU_INST_5124: FS, AS_SXU_INST_5224: SS",AS_SXU_INST_5250: FS,SLAC,0%,52169.52169_METS Mechanical Engineer,52169_METS Mechanical Engineer,Labor,0.0d,1.0,1.0,At Completion Units,9/9/2024,9/9/2024,0,0,0,0,0,0,0,0,0,0,1.03_Accelerator Systems (AS),1.03.06_AS Soft X-Ray Undulator (SXR) - SLAC,1.03.06.20_AS Soft X-Ray Undulator Installation - SLAC,1.03.06.20.01_SXR Undulator Components Installation,AS_SXU_INST_5225_Install Undulator Vacuum Chamber - Cell 25,Mechanical,,SLAC,Labor
104873,1.03,1.03.06,1.03.06.20,1.03.06.20.01,1.03.06.20.01,SXR Undulator Components Installation,AS_SXU_INST_5225,Install Undulator Vacuum Chamber - Cell 25,1.0,12.0,12.0,12.0,05-01-25,05-01-25,"AS_SXU_INST_5124: FS, AS_SXU_INST_5224: SS",AS_SXU_INST_5250: FS,SLAC,0%,52198.52198_METSMANF (METSD Manufacturing),52198_METSMANF (METSD Manufacturing),Labor,0.0d,1.0,1.0,At Completion Units,9/9/2024,9/9/2024,0,0,0,0,0,0,0,0,0,0,1.03_Accelerator Systems (AS),1.03.06_AS Soft X-Ray Undulator (SXR) - SLAC,1.03.06.20_AS Soft X-Ray Undulator Installation - SLAC,1.03.06.20.01_SXR Undulator Components Installation,AS_SXU_INST_5225_Install Undulator Vacuum Chamber - Cell 25,Manufacturing,,SLAC,Labor
104874,1.03,1.03.06,1.03.06.20,1.03.06.20.01,1.03.06.20.01,SXR Undulator Components Installation,AS_SXU_INST_5224,Install Undulator Vacuum Chamber - Cell 24,1.0,6.0,6.0,6.0,05-01-25,05-01-25,"AS_SXU_INST_5123: FS, AS_SXU_INST_5223: SS",AS_SXU_INST_5225: SS,SLAC,0%,52191.52191_METSMET Metrology,52191_METSMET Metrology,Labor,0.0d,1.0,1.0,At Completion Units,9/9/2024,9/9/2024,0,0,0,0,0,0,0,0,0,0,1.03_Accelerator Systems (AS),1.03.06_AS Soft X-Ray Undulator (SXR) - SLAC,1.03.06.20_AS Soft X-Ray Undulator Installation - SLAC,1.03.06.20.01_SXR Undulator Components Installation,AS_SXU_INST_5224_Install Undulator Vacuum Chamber - Cell 24,Metrology,,SLAC,Labor
104875,1.03,1.03.06,1.03.06.20,1.03.06.20.01,1.03.06.20.01,SXR Undulator Components Installation,AS_SXU_INST_5224,Install Undulator Vacuum Chamber - Cell 24,1.0,2.0,2.0,2.0,05-01-25,05-01-25,"AS_SXU_INST_5123: FS, AS_SXU_INST_5223: SS",AS_SXU_INST_5225: SS,SLAC,0%,52169.52169_METS Mechanical Engineer,52169_METS Mechanical Engineer,Labor,0.0d,1.0,1.0,At Completion Units,9/9/2024,9/9/2024,0,0,0,0,0,0,0,0,0,0,1.03_Accelerator Systems (AS),1.03.06_AS Soft X-Ray Undulator (SXR) - SLAC,1.03.06.20_AS Soft X-Ray Undulator Installation - SLAC,1.03.06.20.01_SXR Undulator Components Installation,AS_SXU_INST_5224_Install Undulator Vacuum Chamber - Cell 24,Mechanical,,SLAC,Labor
104876,1.03,1.03.06,1.03.06.20,1.03.06.20.01,1.03.06.20.01,SXR Undulator Components Installation,AS_SXU_INST_5224,Install Undulator Vacuum Chamber - Cell 24,1.0,12.0,12.0,12.0,05-01-25,05-01-25,"AS_SXU_INST_5123: FS, AS_SXU_INST_5223: SS",AS_SXU_INST_5225: SS,SLAC,0%,52198.52198_METSMANF (METSD Manufacturing),52198_METSMANF (METSD Manufacturing),Labor,0.0d,1.0,1.0,At Completion Units,9/9/2024,9/9/2024,0,0,0,0,0,0,0,0,0,0,1.03_Accelerator Systems (AS),1.03.06_AS Soft X-Ray Undulator (SXR) - SLAC,1.03.06.20_AS Soft X-Ray Undulator Installation - SLAC,1.03.06.20.01_SXR Undulator Components Installation,AS_SXU_INST_5224_Install Undulator Vacuum Chamber - Cell 24,Manufacturing,,SLAC,Labor
104877,1.03,1.03.06,1.03.06.20,1.03.06.20.01,1.03.06.20.01,SXR Undulator Components Installation,AS_SXU_INST_5223,Install Undulator Vacuum Chamber - Cell 23,1.0,6.0,6.0,6.0,05-01-25,05-01-25,"AS_SXU_INST_5122: FS, AS_SXU_INST_5123: FS, AS_SXU_INST_5222: FS",AS_SXU_INST_5224: SS,SLAC,0%,52191.52191_METSMET Metrology,52191_METSMET Metrology,Labor,0.0d,1.0,1.0,At Completion Units,9/9/2024,9/9/2024,0,0,0,0,0,0,0,0,0,0,1.03_Accelerator Systems (AS),1.03.06_AS Soft X-Ray Undulator (SXR) - SLAC,1.03.06.20_AS Soft X-Ray Undulator Installation - SLAC,1.03.06.20.01_SXR Undulator Components Installation,AS_SXU_INST_5223_Install Undulator Vacuum Chamber - Cell 23,Metrology,,SLAC,Labor
104878,1.03,1.03.06,1.03.06.20,1.03.06.20.01,1.03.06.20.01,SXR Undulator Components Installation,AS_SXU_INST_5223,Install Undulator Vacuum Chamber - Cell 23,1.0,2.0,2.0,2.0,05-01-25,05-01-25,"AS_SXU_INST_5122: FS, AS_SXU_INST_5123: FS, AS_SXU_INST_5222: FS",AS_SXU_INST_5224: SS,SLAC,0%,52169.52169_METS Mechanical Engineer,52169_METS Mechanical Engineer,Labor,0.0d,1.0,1.0,At Completion Units,9/9/2024,9/9/2024,0,0,0,0,0,0,0,0,0,0,1.03_Accelerator Systems (AS),1.03.06_AS Soft X-Ray Undulator (SXR) - SLAC,1.03.06.20_AS Soft X-Ray Undulator Installation - SLAC,1.03.06.20.01_SXR Undulator Components Installation,AS_SXU_INST_5223_Install Undulator Vacuum Chamber - Cell 23,Mechanical,,SLAC,Labor
104879,1.03,1.03.06,1.03.06.20,1.03.06.20.01,1.03.06.20.01,SXR Undulator Components Installation,AS_SXU_INST_5223,Install Undulator Vacuum Chamber - Cell 23,1.0,12.0,12.0,12.0,05-01-25,05-01-25,"AS_SXU_INST_5122: FS, AS_SXU_INST_5123: FS, AS_SXU_INST_5222: FS",AS_SXU_INST_5224: SS,SLAC,0%,52198.52198_METSMANF (METSD Manufacturing),52198_METSMANF (METSD Manufacturing),Labor,0.0d,1.0,1.0,At Completion Units,9/9/2024,9/9/2024,0,0,0,0,0,0,0,0,0,0,1.03_Accelerator Systems (AS),1.03.06_AS Soft X-Ray Undulator (SXR) - SLAC,1.03.06.20_AS Soft X-Ray Undulator Installation - SLAC,1.03.06.20.01_SXR Undulator Components Installation,AS_SXU_INST_5223_Install Undulator Vacuum Chamber - Cell 23,Manufacturing,,SLAC,Labor
104880,1.03,1.03.06,1.03.06.20,1.03.06.20.01,1.03.06.20.01,SXR Undulator Components Installation,AS_SXU_INST_5222,Install Undulator Vacuum Chamber - Cell 22,1.0,6.0,6.0,6.0,04-30-25,04-30-25,"AS_SXU_INST_5121: FS, AS_SXU_INST_5122: SS, AS_SXU_INST_5221: SS",AS_SXU_INST_5223: FS,SLAC,0%,52191.52191_METSMET Metrology,52191_METSMET Metrology,Labor,0.0d,1.0,1.0,At Completion Units,9/6/2024,9/6/2024,0,0,0,0,0,0,0,0,0,0,1.03_Accelerator Systems (AS),1.03.06_AS Soft X-Ray Undulator (SXR) - SLAC,1.03.06.20_AS Soft X-Ray Undulator Installation - SLAC,1.03.06.20.01_SXR Undulator Components Installation,AS_SXU_INST_5222_Install Undulator Vacuum Chamber - Cell 22,Metrology,,SLAC,Labor
104881,1.03,1.03.06,1.03.06.20,1.03.06.20.01,1.03.06.20.01,SXR Undulator Components Installation,AS_SXU_INST_5222,Install Undulator Vacuum Chamber - Cell 22,1.0,2.0,2.0,2.0,04-30-25,04-30-25,"AS_SXU_INST_5121: FS, AS_SXU_INST_5122: SS, AS_SXU_INST_5221: SS",AS_SXU_INST_5223: FS,SLAC,0%,52169.52169_METS Mechanical Engineer,52169_METS Mechanical Engineer,Labor,0.0d,1.0,1.0,At Completion Units,9/6/2024,9/6/2024,0,0,0,0,0,0,0,0,0,0,1.03_Accelerator Systems (AS),1.03.06_AS Soft X-Ray Undulator (SXR) - SLAC,1.03.06.20_AS Soft X-Ray Undulator Installation - SLAC,1.03.06.20.01_SXR Undulator Components Installation,AS_SXU_INST_5222_Install Undulator Vacuum Chamber - Cell 22,Mechanical,,SLAC,Labor
104882,1.03,1.03.06,1.03.06.20,1.03.06.20.01,1.03.06.20.01,SXR Undulator Components Installation,AS_SXU_INST_5222,Install Undulator Vacuum Chamber - Cell 22,1.0,12.0,12.0,12.0,04-30-25,04-30-25,"AS_SXU_INST_5121: FS, AS_SXU_INST_5122: SS, AS_SXU_INST_5221: SS",AS_SXU_INST_5223: FS,SLAC,0%,52198.52198_METSMANF (METSD Manufacturing),52198_METSMANF (METSD Manufacturing),Labor,0.0d,1.0,1.0,At Completion Units,9/6/2024,9/6/2024,0,0,0,0,0,0,0,0,0,0,1.03_Accelerator Systems (AS),1.03.06_AS Soft X-Ray Undulator (SXR) - SLAC,1.03.06.20_AS Soft X-Ray Undulator Installation - SLAC,1.03.06.20.01_SXR Undulator Components Installation,AS_SXU_INST_5222_Install Undulator Vacuum Chamber - Cell 22,Manufacturing,,SLAC,Labor
104883,1.03,1.03.06,1.03.06.20,1.03.06.20.01,1.03.06.20.01,SXR Undulator Components Installation,AS_SXU_INST_5221,Install Undulator Vacuum Chamber - Cell 21,1.0,6.0,6.0,6.0,04-30-25,04-30-25,"AS_SXU_INST_5120: FS, AS_SXU_INST_5121: FS, AS_SXU_INST_5220: SS",AS_SXU_INST_5222: SS,SLAC,0%,52191.52191_METSMET Metrology,52191_METSMET Metrology,Labor,0.0d,1.0,1.0,At Completion Units,9/6/2024,9/6/2024,0,0,0,0,0,0,0,0,0,0,1.03_Accelerator Systems (AS),1.03.06_AS Soft X-Ray Undulator (SXR) - SLAC,1.03.06.20_AS Soft X-Ray Undulator Installation - SLAC,1.03.06.20.01_SXR Undulator Components Installation,AS_SXU_INST_5221_Install Undulator Vacuum Chamber - Cell 21,Metrology,,SLAC,Labor
104884,1.03,1.03.06,1.03.06.20,1.03.06.20.01,1.03.06.20.01,SXR Undulator Components Installation,AS_SXU_INST_5221,Install Undulator Vacuum Chamber - Cell 21,1.0,2.0,2.0,2.0,04-30-25,04-30-25,"AS_SXU_INST_5120: FS, AS_SXU_INST_5121: FS, AS_SXU_INST_5220: SS",AS_SXU_INST_5222: SS,SLAC,0%,52169.52169_METS Mechanical Engineer,52169_METS Mechanical Engineer,Labor,0.0d,1.0,1.0,At Completion Units,9/6/2024,9/6/2024,0,0,0,0,0,0,0,0,0,0,1.03_Accelerator Systems (AS),1.03.06_AS Soft X-Ray Undulator (SXR) - SLAC,1.03.06.20_AS Soft X-Ray Undulator Installation - SLAC,1.03.06.20.01_SXR Undulator Components Installation,AS_SXU_INST_5221_Install Undulator Vacuum Chamber - Cell 21,Mechanical,,SLAC,Labor
104885,1.03,1.03.06,1.03.06.20,1.03.06.20.01,1.03.06.20.01,SXR Undulator Components Installation,AS_SXU_INST_5221,Install Undulator Vacuum Chamber - Cell 21,1.0,12.0,12.0,12.0,04-30-25,04-30-25,"AS_SXU_INST_5120: FS, AS_SXU_INST_5121: FS, AS_SXU_INST_5220: SS",AS_SXU_INST_5222: SS,SLAC,0%,52198.52198_METSMANF (METSD Manufacturing),52198_METSMANF (METSD Manufacturing),Labor,0.0d,1.0,1.0,At Completion Units,9/6/2024,9/6/2024,0,0,0,0,0,0,0,0,0,0,1.03_Accelerator Systems (AS),1.03.06_AS Soft X-Ray Undulator (SXR) - SLAC,1.03.06.20_AS Soft X-Ray Undulator Installation - SLAC,1.03.06.20.01_SXR Undulator Components Installation,AS_SXU_INST_5221_Install Undulator Vacuum Chamber - Cell 21,Manufacturing,,SLAC,Labor
104886,1.03,1.03.06,1.03.06.20,1.03.06.20.01,1.03.06.20.01,SXR Undulator Components Installation,AS_SXU_INST_5220,Install Undulator Vacuum Chamber - Cell 20,1.0,6.0,6.0,6.0,04-30-25,04-30-25,"AS_SXU_INST_5120: FS, AS_SXU_INST_5219: FS, AS_SXU_INST_5119: FS",AS_SXU_INST_5221: SS,SLAC,0%,52191.52191_METSMET Metrology,52191_METSMET Metrology,Labor,0.0d,1.0,1.0,At Completion Units,9/6/2024,9/6/2024,0,0,0,0,0,0,0,0,0,0,1.03_Accelerator Systems (AS),1.03.06_AS Soft X-Ray Undulator (SXR) - SLAC,1.03.06.20_AS Soft X-Ray Undulator Installation - SLAC,1.03.06.20.01_SXR Undulator Components Installation,AS_SXU_INST_5220_Install Undulator Vacuum Chamber - Cell 20,Metrology,,SLAC,Labor
104887,1.03,1.03.06,1.03.06.20,1.03.06.20.01,1.03.06.20.01,SXR Undulator Components Installation,AS_SXU_INST_5220,Install Undulator Vacuum Chamber - Cell 20,1.0,2.0,2.0,2.0,04-30-25,04-30-25,"AS_SXU_INST_5120: FS, AS_SXU_INST_5219: FS, AS_SXU_INST_5119: FS",AS_SXU_INST_5221: SS,SLAC,0%,52169.52169_METS Mechanical Engineer,52169_METS Mechanical Engineer,Labor,0.0d,1.0,1.0,At Completion Units,9/6/2024,9/6/2024,0,0,0,0,0,0,0,0,0,0,1.03_Accelerator Systems (AS),1.03.06_AS Soft X-Ray Undulator (SXR) - SLAC,1.03.06.20_AS Soft X-Ray Undulator Installation - SLAC,1.03.06.20.01_SXR Undulator Components Installation,AS_SXU_INST_5220_Install Undulator Vacuum Chamber - Cell 20,Mechanical,,SLAC,Labor
104888,1.03,1.03.06,1.03.06.20,1.03.06.20.01,1.03.06.20.01,SXR Undulator Components Installation,AS_SXU_INST_5220,Install Undulator Vacuum Chamber - Cell 20,1.0,12.0,12.0,12.0,04-30-25,04-30-25,"AS_SXU_INST_5120: FS, AS_SXU_INST_5219: FS, AS_SXU_INST_5119: FS",AS_SXU_INST_5221: SS,SLAC,0%,52198.52198_METSMANF (METSD Manufacturing),52198_METSMANF (METSD Manufacturing),Labor,0.0d,1.0,1.0,At Completion Units,9/6/2024,9/6/2024,0,0,0,0,0,0,0,0,0,0,1.03_Accelerator Systems (AS),1.03.06_AS Soft X-Ray Undulator (SXR) - SLAC,1.03.06.20_AS Soft X-Ray Undulator Installation - SLAC,1.03.06.20.01_SXR Undulator Components Installation,AS_SXU_INST_5220_Install Undulator Vacuum Chamber - Cell 20,Manufacturing,,SLAC,Labor
104889,1.03,1.03.06,1.03.06.20,1.03.06.20.01,1.03.06.20.01,SXR Undulator Components Installation,AS_SXU_INST_5219,Install Undulator Vacuum Chamber - Cell 19,1.0,6.0,6.0,6.0,04-29-25,04-29-25,"AS_SXU_INST_5218: SS, AS_SXU_INST_5118: FS, AS_SXU_INST_5119: SS",AS_SXU_INST_5220: FS,SLAC,0%,52191.52191_METSMET Metrology,52191_METSMET Metrology,Labor,0.0d,1.0,1.0,At Completion Units,9/5/2024,9/5/2024,0,0,0,0,0,0,0,0,0,0,1.03_Accelerator Systems (AS),1.03.06_AS Soft X-Ray Undulator (SXR) - SLAC,1.03.06.20_AS Soft X-Ray Undulator Installation - SLAC,1.03.06.20.01_SXR Undulator Components Installation,AS_SXU_INST_5219_Install Undulator Vacuum Chamber - Cell 19,Metrology,,SLAC,Labor
104890,1.03,1.03.06,1.03.06.20,1.03.06.20.01,1.03.06.20.01,SXR Undulator Components Installation,AS_SXU_INST_5219,Install Undulator Vacuum Chamber - Cell 19,1.0,2.0,2.0,2.0,04-29-25,04-29-25,"AS_SXU_INST_5218: SS, AS_SXU_INST_5118: FS, AS_SXU_INST_5119: SS",AS_SXU_INST_5220: FS,SLAC,0%,52169.52169_METS Mechanical Engineer,52169_METS Mechanical Engineer,Labor,0.0d,1.0,1.0,At Completion Units,9/5/2024,9/5/2024,0,0,0,0,0,0,0,0,0,0,1.03_Accelerator Systems (AS),1.03.06_AS Soft X-Ray Undulator (SXR) - SLAC,1.03.06.20_AS Soft X-Ray Undulator Installation - SLAC,1.03.06.20.01_SXR Undulator Components Installation,AS_SXU_INST_5219_Install Undulator Vacuum Chamber - Cell 19,Mechanical,,SLAC,Labor
104891,1.03,1.03.06,1.03.06.20,1.03.06.20.01,1.03.06.20.01,SXR Undulator Components Installation,AS_SXU_INST_5219,Install Undulator Vacuum Chamber - Cell 19,1.0,12.0,12.0,12.0,04-29-25,04-29-25,"AS_SXU_INST_5218: SS, AS_SXU_INST_5118: FS, AS_SXU_INST_5119: SS",AS_SXU_INST_5220: FS,SLAC,0%,52198.52198_METSMANF (METSD Manufacturing),52198_METSMANF (METSD Manufacturing),Labor,0.0d,1.0,1.0,At Completion Units,9/5/2024,9/5/2024,0,0,0,0,0,0,0,0,0,0,1.03_Accelerator Systems (AS),1.03.06_AS Soft X-Ray Undulator (SXR) - SLAC,1.03.06.20_AS Soft X-Ray Undulator Installation - SLAC,1.03.06.20.01_SXR Undulator Components Installation,AS_SXU_INST_5219_Install Undulator Vacuum Chamber - Cell 19,Manufacturing,,SLAC,Labor
104892,1.03,1.03.06,1.03.06.20,1.03.06.20.01,1.03.06.20.01,SXR Undulator Components Installation,AS_SXU_INST_5218,Install Undulator Vacuum Chamber - Cell 18,1.0,6.0,6.0,6.0,04-29-25,04-29-25,"AS_SXU_INST_5217: SS, AS_SXU_INST_5117: FS, AS_SXU_INST_5118: FS",AS_SXU_INST_5219: SS,SLAC,0%,52191.52191_METSMET Metrology,52191_METSMET Metrology,Labor,0.0d,1.0,1.0,At Completion Units,9/5/2024,9/5/2024,0,0,0,0,0,0,0,0,0,0,1.03_Accelerator Systems (AS),1.03.06_AS Soft X-Ray Undulator (SXR) - SLAC,1.03.06.20_AS Soft X-Ray Undulator Installation - SLAC,1.03.06.20.01_SXR Undulator Components Installation,AS_SXU_INST_5218_Install Undulator Vacuum Chamber - Cell 18,Metrology,,SLAC,Labor
104893,1.03,1.03.06,1.03.06.20,1.03.06.20.01,1.03.06.20.01,SXR Undulator Components Installation,AS_SXU_INST_5218,Install Undulator Vacuum Chamber - Cell 18,1.0,2.0,2.0,2.0,04-29-25,04-29-25,"AS_SXU_INST_5217: SS, AS_SXU_INST_5117: FS, AS_SXU_INST_5118: FS",AS_SXU_INST_5219: SS,SLAC,0%,52169.52169_METS Mechanical Engineer,52169_METS Mechanical Engineer,Labor,0.0d,1.0,1.0,At Completion Units,9/5/2024,9/5/2024,0,0,0,0,0,0,0,0,0,0,1.03_Accelerator Systems (AS),1.03.06_AS Soft X-Ray Undulator (SXR) - SLAC,1.03.06.20_AS Soft X-Ray Undulator Installation - SLAC,1.03.06.20.01_SXR Undulator Components Installation,AS_SXU_INST_5218_Install Undulator Vacuum Chamber - Cell 18,Mechanical,,SLAC,Labor
104894,1.03,1.03.06,1.03.06.20,1.03.06.20.01,1.03.06.20.01,SXR Undulator Components Installation,AS_SXU_INST_5218,Install Undulator Vacuum Chamber - Cell 18,1.0,12.0,12.0,12.0,04-29-25,04-29-25,"AS_SXU_INST_5217: SS, AS_SXU_INST_5117: FS, AS_SXU_INST_5118: FS",AS_SXU_INST_5219: SS,SLAC,0%,52198.52198_METSMANF (METSD Manufacturing),52198_METSMANF (METSD Manufacturing),Labor,0.0d,1.0,1.0,At Completion Units,9/5/2024,9/5/2024,0,0,0,0,0,0,0,0,0,0,1.03_Accelerator Systems (AS),1.03.06_AS Soft X-Ray Undulator (SXR) - SLAC,1.03.06.20_AS Soft X-Ray Undulator Installation - SLAC,1.03.06.20.01_SXR Undulator Components Installation,AS_SXU_INST_5218_Install Undulator Vacuum Chamber - Cell 18,Manufacturing,,SLAC,Labor
104895,1.03,1.03.06,1.03.06.20,1.03.06.20.01,1.03.06.20.01,SXR Undulator Components Installation,AS_SXU_INST_5217,Install Undulator Vacuum Chamber - Cell 17,1.0,6.0,6.0,6.0,04-29-25,04-29-25,"AS_SXU_INST_5116: FS, AS_SXU_INST_5117: FS",AS_SXU_INST_5218: SS,SLAC,0%,52191.52191_METSMET Metrology,52191_METSMET Metrology,Labor,0.0d,1.0,1.0,At Completion Units,9/5/2024,9/5/2024,0,0,0,0,0,0,0,0,0,0,1.03_Accelerator Systems (AS),1.03.06_AS Soft X-Ray Undulator (SXR) - SLAC,1.03.06.20_AS Soft X-Ray Undulator Installation - SLAC,1.03.06.20.01_SXR Undulator Components Installation,AS_SXU_INST_5217_Install Undulator Vacuum Chamber - Cell 17,Metrology,,SLAC,Labor
104896,1.03,1.03.06,1.03.06.20,1.03.06.20.01,1.03.06.20.01,SXR Undulator Components Installation,AS_SXU_INST_5217,Install Undulator Vacuum Chamber - Cell 17,1.0,2.0,2.0,2.0,04-29-25,04-29-25,"AS_SXU_INST_5116: FS, AS_SXU_INST_5117: FS",AS_SXU_INST_5218: SS,SLAC,0%,52169.52169_METS Mechanical Engineer,52169_METS Mechanical Engineer,Labor,0.0d,1.0,1.0,At Completion Units,9/5/2024,9/5/2024,0,0,0,0,0,0,0,0,0,0,1.03_Accelerator Systems (AS),1.03.06_AS Soft X-Ray Undulator (SXR) - SLAC,1.03.06.20_AS Soft X-Ray Undulator Installation - SLAC,1.03.06.20.01_SXR Undulator Components Installation,AS_SXU_INST_5217_Install Undulator Vacuum Chamber - Cell 17,Mechanical,,SLAC,Labor
104897,1.03,1.03.06,1.03.06.20,1.03.06.20.01,1.03.06.20.01,SXR Undulator Components Installation,AS_SXU_INST_5217,Install Undulator Vacuum Chamber - Cell 17,1.0,12.0,12.0,12.0,04-29-25,04-29-25,"AS_SXU_INST_5116: FS, AS_SXU_INST_5117: FS",AS_SXU_INST_5218: SS,SLAC,0%,52198.52198_METSMANF (METSD Manufacturing),52198_METSMANF (METSD Manufacturing),Labor,0.0d,1.0,1.0,At Completion Units,9/5/2024,9/5/2024,0,0,0,0,0,0,0,0,0,0,1.03_Accelerator Systems (AS),1.03.06_AS Soft X-Ray Undulator (SXR) - SLAC,1.03.06.20_AS Soft X-Ray Undulator Installation - SLAC,1.03.06.20.01_SXR Undulator Components Installation,AS_SXU_INST_5217_Install Undulator Vacuum Chamber - Cell 17,Manufacturing,,SLAC,Labor
104898,1.03,1.03.06,1.03.06.20,1.03.06.20.01,1.03.06.20.01,SXR Undulator Components Installation,AS_SXU_INST_5124,Install Interspace Assembly - Cell 24,1.0,12.0,12.0,12.0,04-30-25,04-30-25,"AS_SXU_INST_5100: FS, AS_SXU_INST_5123: SS, AS_SXU_MANF_8024: FS",AS_SXU_INST_5225: FS,SLAC,0%,52191.52191_METSMET Metrology,52191_METSMET Metrology,Labor,0.0d,1.0,1.0,At Completion Units,9/6/2024,9/6/2024,0,0,0,0,0,0,0,0,0,0,1.03_Accelerator Systems (AS),1.03.06_AS Soft X-Ray Undulator (SXR) - SLAC,1.03.06.20_AS Soft X-Ray Undulator Installation - SLAC,1.03.06.20.01_SXR Undulator Components Installation,AS_SXU_INST_5124_Install Interspace Assembly - Cell 24,Metrology,,SLAC,Labor
104899,1.03,1.03.06,1.03.06.20,1.03.06.20.01,1.03.06.20.01,SXR Undulator Components Installation,AS_SXU_INST_5124,Install Interspace Assembly - Cell 24,1.0,8.0,8.0,8.0,04-30-25,04-30-25,"AS_SXU_INST_5100: FS, AS_SXU_INST_5123: SS, AS_SXU_MANF_8024: FS",AS_SXU_INST_5225: FS,SLAC,0%,52213.52213_EEDHW (Electronics & Engineering Div - HW Engr),52213_EEDHW (Electronics & Engineering Div - HW Engr),Labor,0.0d,1.0,1.0,At Completion Units,9/6/2024,9/6/2024,0,0,0,0,0,0,0,0,0,0,1.03_Accelerator Systems (AS),1.03.06_AS Soft X-Ray Undulator (SXR) - SLAC,1.03.06.20_AS Soft X-Ray Undulator Installation - SLAC,1.03.06.20.01_SXR Undulator Components Installation,AS_SXU_INST_5124_Install Interspace Assembly - Cell 24,Electrical,,SLAC,Labor
104900,1.03,1.03.06,1.03.06.20,1.03.06.20.01,1.03.06.20.01,SXR Undulator Components Installation,AS_SXU_INST_5124,Install Interspace Assembly - Cell 24,1.0,2.0,2.0,2.0,04-30-25,04-30-25,"AS_SXU_INST_5100: FS, AS_SXU_INST_5123: SS, AS_SXU_MANF_8024: FS",AS_SXU_INST_5225: FS,SLAC,0%,52169.52169_METS Mechanical Engineer,52169_METS Mechanical Engineer,Labor,0.0d,1.0,1.0,At Completion Units,9/6/2024,9/6/2024,0,0,0,0,0,0,0,0,0,0,1.03_Accelerator Systems (AS),1.03.06_AS Soft X-Ray Undulator (SXR) - SLAC,1.03.06.20_AS Soft X-Ray Undulator Installation - SLAC,1.03.06.20.01_SXR Undulator Components Installation,AS_SXU_INST_5124_Install Interspace Assembly - Cell 24,Mechanical,,SLAC,Labor
104901,1.03,1.03.06,1.03.06.20,1.03.06.20.01,1.03.06.20.01,SXR Undulator Components Installation,AS_SXU_INST_5124,Install Interspace Assembly - Cell 24,1.0,4.0,4.0,4.0,04-30-25,04-30-25,"AS_SXU_INST_5100: FS, AS_SXU_INST_5123: SS, AS_SXU_MANF_8024: FS",AS_SXU_INST_5225: FS,SLAC,0%,52198.52198_METSMANF (METSD Manufacturing),52198_METSMANF (METSD Manufacturing),Labor,0.0d,1.0,1.0,At Completion Units,9/6/2024,9/6/2024,0,0,0,0,0,0,0,0,0,0,1.03_Accelerator Systems (AS),1.03.06_AS Soft X-Ray Undulator (SXR) - SLAC,1.03.06.20_AS Soft X-Ray Undulator Installation - SLAC,1.03.06.20.01_SXR Undulator Components Installation,AS_SXU_INST_5124_Install Interspace Assembly - Cell 24,Manufacturing,,SLAC,Labor
104902,1.03,1.03.06,1.03.06.20,1.03.06.20.01,1.03.06.20.01,SXR Undulator Components Installation,AS_SXU_INST_5123,Install Interspace Assembly - Cell 23,1.0,12.0,12.0,12.0,04-30-25,04-30-25,"AS_SXU_INST_5100: FS, AS_SXU_INST_5122: SS, AS_SXU_MANF_8023: FS","AS_SXU_INST_5223: FS, AS_SXU_INST_5224: FS, AS_SXU_INST_5124: SS",SLAC,0%,52191.52191_METSMET Metrology,52191_METSMET Metrology,Labor,0.0d,1.0,1.0,At Completion Units,9/6/2024,9/6/2024,0,0,0,0,0,0,0,0,0,0,1.03_Accelerator Systems (AS),1.03.06_AS Soft X-Ray Undulator (SXR) - SLAC,1.03.06.20_AS Soft X-Ray Undulator Installation - SLAC,1.03.06.20.01_SXR Undulator Components Installation,AS_SXU_INST_5123_Install Interspace Assembly - Cell 23,Metrology,,SLAC,Labor
104903,1.03,1.03.06,1.03.06.20,1.03.06.20.01,1.03.06.20.01,SXR Undulator Components Installation,AS_SXU_INST_5123,Install Interspace Assembly - Cell 23,1.0,8.0,8.0,8.0,04-30-25,04-30-25,"AS_SXU_INST_5100: FS, AS_SXU_INST_5122: SS, AS_SXU_MANF_8023: FS","AS_SXU_INST_5223: FS, AS_SXU_INST_5224: FS, AS_SXU_INST_5124: SS",SLAC,0%,52213.52213_EEDHW (Electronics & Engineering Div - HW Engr),52213_EEDHW (Electronics & Engineering Div - HW Engr),Labor,0.0d,1.0,1.0,At Completion Units,9/6/2024,9/6/2024,0,0,0,0,0,0,0,0,0,0,1.03_Accelerator Systems (AS),1.03.06_AS Soft X-Ray Undulator (SXR) - SLAC,1.03.06.20_AS Soft X-Ray Undulator Installation - SLAC,1.03.06.20.01_SXR Undulator Components Installation,AS_SXU_INST_5123_Install Interspace Assembly - Cell 23,Electrical,,SLAC,Labor
104904,1.03,1.03.06,1.03.06.20,1.03.06.20.01,1.03.06.20.01,SXR Undulator Components Installation,AS_SXU_INST_5123,Install Interspace Assembly - Cell 23,1.0,2.0,2.0,2.0,04-30-25,04-30-25,"AS_SXU_INST_5100: FS, AS_SXU_INST_5122: SS, AS_SXU_MANF_8023: FS","AS_SXU_INST_5223: FS, AS_SXU_INST_5224: FS, AS_SXU_INST_5124: SS",SLAC,0%,52169.52169_METS Mechanical Engineer,52169_METS Mechanical Engineer,Labor,0.0d,1.0,1.0,At Completion Units,9/6/2024,9/6/2024,0,0,0,0,0,0,0,0,0,0,1.03_Accelerator Systems (AS),1.03.06_AS Soft X-Ray Undulator (SXR) - SLAC,1.03.06.20_AS Soft X-Ray Undulator Installation - SLAC,1.03.06.20.01_SXR Undulator Components Installation,AS_SXU_INST_5123_Install Interspace Assembly - Cell 23,Mechanical,,SLAC,Labor
104905,1.03,1.03.06,1.03.06.20,1.03.06.20.01,1.03.06.20.01,SXR Undulator Components Installation,AS_SXU_INST_5123,Install Interspace Assembly - Cell 23,1.0,4.0,4.0,4.0,04-30-25,04-30-25,"AS_SXU_INST_5100: FS, AS_SXU_INST_5122: SS, AS_SXU_MANF_8023: FS","AS_SXU_INST_5223: FS, AS_SXU_INST_5224: FS, AS_SXU_INST_5124: SS",SLAC,0%,52198.52198_METSMANF (METSD Manufacturing),52198_METSMANF (METSD Manufacturing),Labor,0.0d,1.0,1.0,At Completion Units,9/6/2024,9/6/2024,0,0,0,0,0,0,0,0,0,0,1.03_Accelerator Systems (AS),1.03.06_AS Soft X-Ray Undulator (SXR) - SLAC,1.03.06.20_AS Soft X-Ray Undulator Installation - SLAC,1.03.06.20.01_SXR Undulator Components Installation,AS_SXU_INST_5123_Install Interspace Assembly - Cell 23,Manufacturing,,SLAC,Labor
104906,1.03,1.03.06,1.03.06.20,1.03.06.20.01,1.03.06.20.01,SXR Undulator Components Installation,AS_SXU_INST_5122,Install Interspace Assembly - Cell 22,1.0,12.0,12.0,12.0,04-30-25,04-30-25,"AS_SXU_INST_5100: FS, AS_SXU_INST_5121: FS, AS_SXU_MANF_8022: FS","AS_SXU_INST_5222: SS, AS_SXU_INST_5223: FS, AS_SXU_INST_5123: SS",SLAC,0%,52191.52191_METSMET Metrology,52191_METSMET Metrology,Labor,0.0d,1.0,1.0,At Completion Units,9/6/2024,9/6/2024,0,0,0,0,0,0,0,0,0,0,1.03_Accelerator Systems (AS),1.03.06_AS Soft X-Ray Undulator (SXR) - SLAC,1.03.06.20_AS Soft X-Ray Undulator Installation - SLAC,1.03.06.20.01_SXR Undulator Components Installation,AS_SXU_INST_5122_Install Interspace Assembly - Cell 22,Metrology,,SLAC,Labor
104907,1.03,1.03.06,1.03.06.20,1.03.06.20.01,1.03.06.20.01,SXR Undulator Components Installation,AS_SXU_INST_5122,Install Interspace Assembly - Cell 22,1.0,8.0,8.0,8.0,04-30-25,04-30-25,"AS_SXU_INST_5100: FS, AS_SXU_INST_5121: FS, AS_SXU_MANF_8022: FS","AS_SXU_INST_5222: SS, AS_SXU_INST_5223: FS, AS_SXU_INST_5123: SS",SLAC,0%,52213.52213_EEDHW (Electronics & Engineering Div - HW Engr),52213_EEDHW (Electronics & Engineering Div - HW Engr),Labor,0.0d,1.0,1.0,At Completion Units,9/6/2024,9/6/2024,0,0,0,0,0,0,0,0,0,0,1.03_Accelerator Systems (AS),1.03.06_AS Soft X-Ray Undulator (SXR) - SLAC,1.03.06.20_AS Soft X-Ray Undulator Installation - SLAC,1.03.06.20.01_SXR Undulator Components Installation,AS_SXU_INST_5122_Install Interspace Assembly - Cell 22,Electrical,,SLAC,Labor
104908,1.03,1.03.06,1.03.06.20,1.03.06.20.01,1.03.06.20.01,SXR Undulator Components Installation,AS_SXU_INST_5122,Install Interspace Assembly - Cell 22,1.0,2.0,2.0,2.0,04-30-25,04-30-25,"AS_SXU_INST_5100: FS, AS_SXU_INST_5121: FS, AS_SXU_MANF_8022: FS","AS_SXU_INST_5222: SS, AS_SXU_INST_5223: FS, AS_SXU_INST_5123: SS",SLAC,0%,52169.52169_METS Mechanical Engineer,52169_METS Mechanical Engineer,Labor,0.0d,1.0,1.0,At Completion Units,9/6/2024,9/6/2024,0,0,0,0,0,0,0,0,0,0,1.03_Accelerator Systems (AS),1.03.06_AS Soft X-Ray Undulator (SXR) - SLAC,1.03.06.20_AS Soft X-Ray Undulator Installation - SLAC,1.03.06.20.01_SXR Undulator Components Installation,AS_SXU_INST_5122_Install Interspace Assembly - Cell 22,Mechanical,,SLAC,Labor
104909,1.03,1.03.06,1.03.06.20,1.03.06.20.01,1.03.06.20.01,SXR Undulator Components Installation,AS_SXU_INST_5122,Install Interspace Assembly - Cell 22,1.0,4.0,4.0,4.0,04-30-25,04-30-25,"AS_SXU_INST_5100: FS, AS_SXU_INST_5121: FS, AS_SXU_MANF_8022: FS","AS_SXU_INST_5222: SS, AS_SXU_INST_5223: FS, AS_SXU_INST_5123: SS",SLAC,0%,52198.52198_METSMANF (METSD Manufacturing),52198_METSMANF (METSD Manufacturing),Labor,0.0d,1.0,1.0,At Completion Units,9/6/2024,9/6/2024,0,0,0,0,0,0,0,0,0,0,1.03_Accelerator Systems (AS),1.03.06_AS Soft X-Ray Undulator (SXR) - SLAC,1.03.06.20_AS Soft X-Ray Undulator Installation - SLAC,1.03.06.20.01_SXR Undulator Components Installation,AS_SXU_INST_5122_Install Interspace Assembly - Cell 22,Manufacturing,,SLAC,Labor
104910,1.03,1.03.06,1.03.06.20,1.03.06.20.01,1.03.06.20.01,SXR Undulator Components Installation,AS_SXU_INST_5121,Install Interspace Assembly - Cell 21,1.0,12.0,12.0,12.0,04-29-25,04-29-25,"AS_SXU_INST_5100: FS, AS_SXU_INST_5120: SS, AS_SXU_MANF_8021: FS","AS_SXU_INST_5221: FS, AS_SXU_INST_5222: FS, AS_SXU_INST_5122: FS",SLAC,0%,52191.52191_METSMET Metrology,52191_METSMET Metrology,Labor,0.0d,1.0,1.0,At Completion Units,9/5/2024,9/5/2024,0,0,0,0,0,0,0,0,0,0,1.03_Accelerator Systems (AS),1.03.06_AS Soft X-Ray Undulator (SXR) - SLAC,1.03.06.20_AS Soft X-Ray Undulator Installation - SLAC,1.03.06.20.01_SXR Undulator Components Installation,AS_SXU_INST_5121_Install Interspace Assembly - Cell 21,Metrology,,SLAC,Labor
104911,1.03,1.03.06,1.03.06.20,1.03.06.20.01,1.03.06.20.01,SXR Undulator Components Installation,AS_SXU_INST_5121,Install Interspace Assembly - Cell 21,1.0,8.0,8.0,8.0,04-29-25,04-29-25,"AS_SXU_INST_5100: FS, AS_SXU_INST_5120: SS, AS_SXU_MANF_8021: FS","AS_SXU_INST_5221: FS, AS_SXU_INST_5222: FS, AS_SXU_INST_5122: FS",SLAC,0%,52213.52213_EEDHW (Electronics & Engineering Div - HW Engr),52213_EEDHW (Electronics & Engineering Div - HW Engr),Labor,0.0d,1.0,1.0,At Completion Units,9/5/2024,9/5/2024,0,0,0,0,0,0,0,0,0,0,1.03_Accelerator Systems (AS),1.03.06_AS Soft X-Ray Undulator (SXR) - SLAC,1.03.06.20_AS Soft X-Ray Undulator Installation - SLAC,1.03.06.20.01_SXR Undulator Components Installation,AS_SXU_INST_5121_Install Interspace Assembly - Cell 21,Electrical,,SLAC,Labor
104912,1.03,1.03.06,1.03.06.20,1.03.06.20.01,1.03.06.20.01,SXR Undulator Components Installation,AS_SXU_INST_5121,Install Interspace Assembly - Cell 21,1.0,2.0,2.0,2.0,04-29-25,04-29-25,"AS_SXU_INST_5100: FS, AS_SXU_INST_5120: SS, AS_SXU_MANF_8021: FS","AS_SXU_INST_5221: FS, AS_SXU_INST_5222: FS, AS_SXU_INST_5122: FS",SLAC,0%,52169.52169_METS Mechanical Engineer,52169_METS Mechanical Engineer,Labor,0.0d,1.0,1.0,At Completion Units,9/5/2024,9/5/2024,0,0,0,0,0,0,0,0,0,0,1.03_Accelerator Systems (AS),1.03.06_AS Soft X-Ray Undulator (SXR) - SLAC,1.03.06.20_AS Soft X-Ray Undulator Installation - SLAC,1.03.06.20.01_SXR Undulator Components Installation,AS_SXU_INST_5121_Install Interspace Assembly - Cell 21,Mechanical,,SLAC,Labor
104913,1.03,1.03.06,1.03.06.20,1.03.06.20.01,1.03.06.20.01,SXR Undulator Components Installation,AS_SXU_INST_5121,Install Interspace Assembly - Cell 21,1.0,4.0,4.0,4.0,04-29-25,04-29-25,"AS_SXU_INST_5100: FS, AS_SXU_INST_5120: SS, AS_SXU_MANF_8021: FS","AS_SXU_INST_5221: FS, AS_SXU_INST_5222: FS, AS_SXU_INST_5122: FS",SLAC,0%,52198.52198_METSMANF (METSD Manufacturing),52198_METSMANF (METSD Manufacturing),Labor,0.0d,1.0,1.0,At Completion Units,9/5/2024,9/5/2024,0,0,0,0,0,0,0,0,0,0,1.03_Accelerator Systems (AS),1.03.06_AS Soft X-Ray Undulator (SXR) - SLAC,1.03.06.20_AS Soft X-Ray Undulator Installation - SLAC,1.03.06.20.01_SXR Undulator Components Installation,AS_SXU_INST_5121_Install Interspace Assembly - Cell 21,Manufacturing,,SLAC,Labor
104914,1.03,1.03.06,1.03.06.20,1.03.06.20.01,1.03.06.20.01,SXR Undulator Components Installation,AS_SXU_INST_5120,Install Interspace Assembly - Cell 20,1.0,12.0,12.0,12.0,04-29-25,04-29-25,"AS_SXU_INST_5100: FS, AS_SXU_INST_5119: SS, AS_SXU_MANF_8020: FS","AS_SXU_INST_5220: FS, AS_SXU_INST_5221: FS, AS_SXU_INST_5121: SS",SLAC,0%,52191.52191_METSMET Metrology,52191_METSMET Metrology,Labor,0.0d,1.0,1.0,At Completion Units,9/5/2024,9/5/2024,0,0,0,0,0,0,0,0,0,0,1.03_Accelerator Systems (AS),1.03.06_AS Soft X-Ray Undulator (SXR) - SLAC,1.03.06.20_AS Soft X-Ray Undulator Installation - SLAC,1.03.06.20.01_SXR Undulator Components Installation,AS_SXU_INST_5120_Install Interspace Assembly - Cell 20,Metrology,,SLAC,Labor
104915,1.03,1.03.06,1.03.06.20,1.03.06.20.01,1.03.06.20.01,SXR Undulator Components Installation,AS_SXU_INST_5120,Install Interspace Assembly - Cell 20,1.0,8.0,8.0,8.0,04-29-25,04-29-25,"AS_SXU_INST_5100: FS, AS_SXU_INST_5119: SS, AS_SXU_MANF_8020: FS","AS_SXU_INST_5220: FS, AS_SXU_INST_5221: FS, AS_SXU_INST_5121: SS",SLAC,0%,52213.52213_EEDHW (Electronics & Engineering Div - HW Engr),52213_EEDHW (Electronics & Engineering Div - HW Engr),Labor,0.0d,1.0,1.0,At Completion Units,9/5/2024,9/5/2024,0,0,0,0,0,0,0,0,0,0,1.03_Accelerator Systems (AS),1.03.06_AS Soft X-Ray Undulator (SXR) - SLAC,1.03.06.20_AS Soft X-Ray Undulator Installation - SLAC,1.03.06.20.01_SXR Undulator Components Installation,AS_SXU_INST_5120_Install Interspace Assembly - Cell 20,Electrical,,SLAC,Labor
104916,1.03,1.03.06,1.03.06.20,1.03.06.20.01,1.03.06.20.01,SXR Undulator Components Installation,AS_SXU_INST_5120,Install Interspace Assembly - Cell 20,1.0,2.0,2.0,2.0,04-29-25,04-29-25,"AS_SXU_INST_5100: FS, AS_SXU_INST_5119: SS, AS_SXU_MANF_8020: FS","AS_SXU_INST_5220: FS, AS_SXU_INST_5221: FS, AS_SXU_INST_5121: SS",SLAC,0%,52169.52169_METS Mechanical Engineer,52169_METS Mechanical Engineer,Labor,0.0d,1.0,1.0,At Completion Units,9/5/2024,9/5/2024,0,0,0,0,0,0,0,0,0,0,1.03_Accelerator Systems (AS),1.03.06_AS Soft X-Ray Undulator (SXR) - SLAC,1.03.06.20_AS Soft X-Ray Undulator Installation - SLAC,1.03.06.20.01_SXR Undulator Components Installation,AS_SXU_INST_5120_Install Interspace Assembly - Cell 20,Mechanical,,SLAC,Labor
104917,1.03,1.03.06,1.03.06.20,1.03.06.20.01,1.03.06.20.01,SXR Undulator Components Installation,AS_SXU_INST_5120,Install Interspace Assembly - Cell 20,1.0,4.0,4.0,4.0,04-29-25,04-29-25,"AS_SXU_INST_5100: FS, AS_SXU_INST_5119: SS, AS_SXU_MANF_8020: FS","AS_SXU_INST_5220: FS, AS_SXU_INST_5221: FS, AS_SXU_INST_5121: SS",SLAC,0%,52198.52198_METSMANF (METSD Manufacturing),52198_METSMANF (METSD Manufacturing),Labor,0.0d,1.0,1.0,At Completion Units,9/5/2024,9/5/2024,0,0,0,0,0,0,0,0,0,0,1.03_Accelerator Systems (AS),1.03.06_AS Soft X-Ray Undulator (SXR) - SLAC,1.03.06.20_AS Soft X-Ray Undulator Installation - SLAC,1.03.06.20.01_SXR Undulator Components Installation,AS_SXU_INST_5120_Install Interspace Assembly - Cell 20,Manufacturing,,SLAC,Labor
104918,1.03,1.03.06,1.03.06.20,1.03.06.20.01,1.03.06.20.01,SXR Undulator Components Installation,AS_SXU_INST_5119,Install Interspace Assembly - Cell 19,1.0,12.0,12.0,12.0,04-29-25,04-29-25,"AS_SXU_INST_5100: FS, AS_SXU_INST_5118: FS, AS_SXU_MANF_8019: FS","AS_SXU_INST_5120: SS, AS_SXU_INST_5219: SS, AS_SXU_INST_5220: FS",SLAC,0%,52191.52191_METSMET Metrology,52191_METSMET Metrology,Labor,0.0d,1.0,1.0,At Completion Units,9/5/2024,9/5/2024,0,0,0,0,0,0,0,0,0,0,1.03_Accelerator Systems (AS),1.03.06_AS Soft X-Ray Undulator (SXR) - SLAC,1.03.06.20_AS Soft X-Ray Undulator Installation - SLAC,1.03.06.20.01_SXR Undulator Components Installation,AS_SXU_INST_5119_Install Interspace Assembly - Cell 19,Metrology,,SLAC,Labor
104919,1.03,1.03.06,1.03.06.20,1.03.06.20.01,1.03.06.20.01,SXR Undulator Components Installation,AS_SXU_INST_5119,Install Interspace Assembly - Cell 19,1.0,8.0,8.0,8.0,04-29-25,04-29-25,"AS_SXU_INST_5100: FS, AS_SXU_INST_5118: FS, AS_SXU_MANF_8019: FS","AS_SXU_INST_5120: SS, AS_SXU_INST_5219: SS, AS_SXU_INST_5220: FS",SLAC,0%,52213.52213_EEDHW (Electronics & Engineering Div - HW Engr),52213_EEDHW (Electronics & Engineering Div - HW Engr),Labor,0.0d,1.0,1.0,At Completion Units,9/5/2024,9/5/2024,0,0,0,0,0,0,0,0,0,0,1.03_Accelerator Systems (AS),1.03.06_AS Soft X-Ray Undulator (SXR) - SLAC,1.03.06.20_AS Soft X-Ray Undulator Installation - SLAC,1.03.06.20.01_SXR Undulator Components Installation,AS_SXU_INST_5119_Install Interspace Assembly - Cell 19,Electrical,,SLAC,Labor
104920,1.03,1.03.06,1.03.06.20,1.03.06.20.01,1.03.06.20.01,SXR Undulator Components Installation,AS_SXU_INST_5119,Install Interspace Assembly - Cell 19,1.0,2.0,2.0,2.0,04-29-25,04-29-25,"AS_SXU_INST_5100: FS, AS_SXU_INST_5118: FS, AS_SXU_MANF_8019: FS","AS_SXU_INST_5120: SS, AS_SXU_INST_5219: SS, AS_SXU_INST_5220: FS",SLAC,0%,52169.52169_METS Mechanical Engineer,52169_METS Mechanical Engineer,Labor,0.0d,1.0,1.0,At Completion Units,9/5/2024,9/5/2024,0,0,0,0,0,0,0,0,0,0,1.03_Accelerator Systems (AS),1.03.06_AS Soft X-Ray Undulator (SXR) - SLAC,1.03.06.20_AS Soft X-Ray Undulator Installation - SLAC,1.03.06.20.01_SXR Undulator Components Installation,AS_SXU_INST_5119_Install Interspace Assembly - Cell 19,Mechanical,,SLAC,Labor
104921,1.03,1.03.06,1.03.06.20,1.03.06.20.01,1.03.06.20.01,SXR Undulator Components Installation,AS_SXU_INST_5119,Install Interspace Assembly - Cell 19,1.0,4.0,4.0,4.0,04-29-25,04-29-25,"AS_SXU_INST_5100: FS, AS_SXU_INST_5118: FS, AS_SXU_MANF_8019: FS","AS_SXU_INST_5120: SS, AS_SXU_INST_5219: SS, AS_SXU_INST_5220: FS",SLAC,0%,52198.52198_METSMANF (METSD Manufacturing),52198_METSMANF (METSD Manufacturing),Labor,0.0d,1.0,1.0,At Completion Units,9/5/2024,9/5/2024,0,0,0,0,0,0,0,0,0,0,1.03_Accelerator Systems (AS),1.03.06_AS Soft X-Ray Undulator (SXR) - SLAC,1.03.06.20_AS Soft X-Ray Undulator Installation - SLAC,1.03.06.20.01_SXR Undulator Components Installation,AS_SXU_INST_5119_Install Interspace Assembly - Cell 19,Manufacturing,,SLAC,Labor
104922,1.03,1.03.06,1.03.06.20,1.03.06.20.01,1.03.06.20.01,SXR Undulator Components Installation,AS_SXU_INST_5118,Install Interspace Assembly - Cell 18,1.0,12.0,12.0,12.0,04-28-25,04-28-25,"AS_SXU_INST_5100: FS, AS_SXU_INST_5117: SS, AS_SXU_MANF_8018: FS","AS_SXU_INST_5119: FS, AS_SXU_INST_5218: FS, AS_SXU_INST_5219: FS",SLAC,0%,52191.52191_METSMET Metrology,52191_METSMET Metrology,Labor,0.0d,1.0,1.0,At Completion Units,9/4/2024,9/4/2024,0,0,0,0,0,0,0,0,0,0,1.03_Accelerator Systems (AS),1.03.06_AS Soft X-Ray Undulator (SXR) - SLAC,1.03.06.20_AS Soft X-Ray Undulator Installation - SLAC,1.03.06.20.01_SXR Undulator Components Installation,AS_SXU_INST_5118_Install Interspace Assembly - Cell 18,Metrology,,SLAC,Labor
104923,1.03,1.03.06,1.03.06.20,1.03.06.20.01,1.03.06.20.01,SXR Undulator Components Installation,AS_SXU_INST_5118,Install Interspace Assembly - Cell 18,1.0,8.0,8.0,8.0,04-28-25,04-28-25,"AS_SXU_INST_5100: FS, AS_SXU_INST_5117: SS, AS_SXU_MANF_8018: FS","AS_SXU_INST_5119: FS, AS_SXU_INST_5218: FS, AS_SXU_INST_5219: FS",SLAC,0%,52213.52213_EEDHW (Electronics & Engineering Div - HW Engr),52213_EEDHW (Electronics & Engineering Div - HW Engr),Labor,0.0d,1.0,1.0,At Completion Units,9/4/2024,9/4/2024,0,0,0,0,0,0,0,0,0,0,1.03_Accelerator Systems (AS),1.03.06_AS Soft X-Ray Undulator (SXR) - SLAC,1.03.06.20_AS Soft X-Ray Undulator Installation - SLAC,1.03.06.20.01_SXR Undulator Components Installation,AS_SXU_INST_5118_Install Interspace Assembly - Cell 18,Electrical,,SLAC,Labor
104924,1.03,1.03.06,1.03.06.20,1.03.06.20.01,1.03.06.20.01,SXR Undulator Components Installation,AS_SXU_INST_5118,Install Interspace Assembly - Cell 18,1.0,2.0,2.0,2.0,04-28-25,04-28-25,"AS_SXU_INST_5100: FS, AS_SXU_INST_5117: SS, AS_SXU_MANF_8018: FS","AS_SXU_INST_5119: FS, AS_SXU_INST_5218: FS, AS_SXU_INST_5219: FS",SLAC,0%,52169.52169_METS Mechanical Engineer,52169_METS Mechanical Engineer,Labor,0.0d,1.0,1.0,At Completion Units,9/4/2024,9/4/2024,0,0,0,0,0,0,0,0,0,0,1.03_Accelerator Systems (AS),1.03.06_AS Soft X-Ray Undulator (SXR) - SLAC,1.03.06.20_AS Soft X-Ray Undulator Installation - SLAC,1.03.06.20.01_SXR Undulator Components Installation,AS_SXU_INST_5118_Install Interspace Assembly - Cell 18,Mechanical,,SLAC,Labor
104925,1.03,1.03.06,1.03.06.20,1.03.06.20.01,1.03.06.20.01,SXR Undulator Components Installation,AS_SXU_INST_5118,Install Interspace Assembly - Cell 18,1.0,4.0,4.0,4.0,04-28-25,04-28-25,"AS_SXU_INST_5100: FS, AS_SXU_INST_5117: SS, AS_SXU_MANF_8018: FS","AS_SXU_INST_5119: FS, AS_SXU_INST_5218: FS, AS_SXU_INST_5219: FS",SLAC,0%,52198.52198_METSMANF (METSD Manufacturing),52198_METSMANF (METSD Manufacturing),Labor,0.0d,1.0,1.0,At Completion Units,9/4/2024,9/4/2024,0,0,0,0,0,0,0,0,0,0,1.03_Accelerator Systems (AS),1.03.06_AS Soft X-Ray Undulator (SXR) - SLAC,1.03.06.20_AS Soft X-Ray Undulator Installation - SLAC,1.03.06.20.01_SXR Undulator Components Installation,AS_SXU_INST_5118_Install Interspace Assembly - Cell 18,Manufacturing,,SLAC,Labor
104926,1.03,1.03.06,1.03.06.20,1.03.06.20.01,1.03.06.20.01,SXR Undulator Components Installation,AS_SXU_INST_5117,Install Interspace Assembly - Cell 17,1.0,12.0,12.0,12.0,04-28-25,04-28-25,"AS_SXU_INST_5100: FS, AS_SXU_INST_5116: SS, AS_SXU_MANF_8017: FS","AS_SXU_INST_5118: SS, AS_SXU_INST_5217: FS, AS_SXU_INST_5218: FS",SLAC,0%,52191.52191_METSMET Metrology,52191_METSMET Metrology,Labor,0.0d,1.0,1.0,At Completion Units,9/4/2024,9/4/2024,0,0,0,0,0,0,0,0,0,0,1.03_Accelerator Systems (AS),1.03.06_AS Soft X-Ray Undulator (SXR) - SLAC,1.03.06.20_AS Soft X-Ray Undulator Installation - SLAC,1.03.06.20.01_SXR Undulator Components Installation,AS_SXU_INST_5117_Install Interspace Assembly - Cell 17,Metrology,,SLAC,Labor
104927,1.03,1.03.06,1.03.06.20,1.03.06.20.01,1.03.06.20.01,SXR Undulator Components Installation,AS_SXU_INST_5117,Install Interspace Assembly - Cell 17,1.0,8.0,8.0,8.0,04-28-25,04-28-25,"AS_SXU_INST_5100: FS, AS_SXU_INST_5116: SS, AS_SXU_MANF_8017: FS","AS_SXU_INST_5118: SS, AS_SXU_INST_5217: FS, AS_SXU_INST_5218: FS",SLAC,0%,52213.52213_EEDHW (Electronics & Engineering Div - HW Engr),52213_EEDHW (Electronics & Engineering Div - HW Engr),Labor,0.0d,1.0,1.0,At Completion Units,9/4/2024,9/4/2024,0,0,0,0,0,0,0,0,0,0,1.03_Accelerator Systems (AS),1.03.06_AS Soft X-Ray Undulator (SXR) - SLAC,1.03.06.20_AS Soft X-Ray Undulator Installation - SLAC,1.03.06.20.01_SXR Undulator Components Installation,AS_SXU_INST_5117_Install Interspace Assembly - Cell 17,Electrical,,SLAC,Labor
104928,1.03,1.03.06,1.03.06.20,1.03.06.20.01,1.03.06.20.01,SXR Undulator Components Installation,AS_SXU_INST_5117,Install Interspace Assembly - Cell 17,1.0,2.0,2.0,2.0,04-28-25,04-28-25,"AS_SXU_INST_5100: FS, AS_SXU_INST_5116: SS, AS_SXU_MANF_8017: FS","AS_SXU_INST_5118: SS, AS_SXU_INST_5217: FS, AS_SXU_INST_5218: FS",SLAC,0%,52169.52169_METS Mechanical Engineer,52169_METS Mechanical Engineer,Labor,0.0d,1.0,1.0,At Completion Units,9/4/2024,9/4/2024,0,0,0,0,0,0,0,0,0,0,1.03_Accelerator Systems (AS),1.03.06_AS Soft X-Ray Undulator (SXR) - SLAC,1.03.06.20_AS Soft X-Ray Undulator Installation - SLAC,1.03.06.20.01_SXR Undulator Components Installation,AS_SXU_INST_5117_Install Interspace Assembly - Cell 17,Mechanical,,SLAC,Labor
104929,1.03,1.03.06,1.03.06.20,1.03.06.20.01,1.03.06.20.01,SXR Undulator Components Installation,AS_SXU_INST_5117,Install Interspace Assembly - Cell 17,1.0,4.0,4.0,4.0,04-28-25,04-28-25,"AS_SXU_INST_5100: FS, AS_SXU_INST_5116: SS, AS_SXU_MANF_8017: FS","AS_SXU_INST_5118: SS, AS_SXU_INST_5217: FS, AS_SXU_INST_5218: FS",SLAC,0%,52198.52198_METSMANF (METSD Manufacturing),52198_METSMANF (METSD Manufacturing),Labor,0.0d,1.0,1.0,At Completion Units,9/4/2024,9/4/2024,0,0,0,0,0,0,0,0,0,0,1.03_Accelerator Systems (AS),1.03.06_AS Soft X-Ray Undulator (SXR) - SLAC,1.03.06.20_AS Soft X-Ray Undulator Installation - SLAC,1.03.06.20.01_SXR Undulator Components Installation,AS_SXU_INST_5117_Install Interspace Assembly - Cell 17,Manufacturing,,SLAC,Labor
104930,1.03,1.03.06,1.03.06.20,1.03.06.20.01,1.03.06.20.01,SXR Undulator Components Installation,AS_SXU_INST_5116,Install Interspace Assembly - Cell 16,1.0,12.0,12.0,12.0,04-28-25,04-28-25,"AS_SXU_INST_5100: FS, AS_SXU_MANF_8016: FS","AS_SXU_INST_5117: SS, AS_SXU_INST_5217: FS",SLAC,0%,52191.52191_METSMET Metrology,52191_METSMET Metrology,Labor,0.0d,1.0,1.0,At Completion Units,9/4/2024,9/4/2024,0,0,0,0,0,0,0,0,0,0,1.03_Accelerator Systems (AS),1.03.06_AS Soft X-Ray Undulator (SXR) - SLAC,1.03.06.20_AS Soft X-Ray Undulator Installation - SLAC,1.03.06.20.01_SXR Undulator Components Installation,AS_SXU_INST_5116_Install Interspace Assembly - Cell 16,Metrology,,SLAC,Labor
104931,1.03,1.03.06,1.03.06.20,1.03.06.20.01,1.03.06.20.01,SXR Undulator Components Installation,AS_SXU_INST_5116,Install Interspace Assembly - Cell 16,1.0,8.0,8.0,8.0,04-28-25,04-28-25,"AS_SXU_INST_5100: FS, AS_SXU_MANF_8016: FS","AS_SXU_INST_5117: SS, AS_SXU_INST_5217: FS",SLAC,0%,52213.52213_EEDHW (Electronics & Engineering Div - HW Engr),52213_EEDHW (Electronics & Engineering Div - HW Engr),Labor,0.0d,1.0,1.0,At Completion Units,9/4/2024,9/4/2024,0,0,0,0,0,0,0,0,0,0,1.03_Accelerator Systems (AS),1.03.06_AS Soft X-Ray Undulator (SXR) - SLAC,1.03.06.20_AS Soft X-Ray Undulator Installation - SLAC,1.03.06.20.01_SXR Undulator Components Installation,AS_SXU_INST_5116_Install Interspace Assembly - Cell 16,Electrical,,SLAC,Labor
104932,1.03,1.03.06,1.03.06.20,1.03.06.20.01,1.03.06.20.01,SXR Undulator Components Installation,AS_SXU_INST_5116,Install Interspace Assembly - Cell 16,1.0,2.0,2.0,2.0,04-28-25,04-28-25,"AS_SXU_INST_5100: FS, AS_SXU_MANF_8016: FS","AS_SXU_INST_5117: SS, AS_SXU_INST_5217: FS",SLAC,0%,52169.52169_METS Mechanical Engineer,52169_METS Mechanical Engineer,Labor,0.0d,1.0,1.0,At Completion Units,9/4/2024,9/4/2024,0,0,0,0,0,0,0,0,0,0,1.03_Accelerator Systems (AS),1.03.06_AS Soft X-Ray Undulator (SXR) - SLAC,1.03.06.20_AS Soft X-Ray Undulator Installation - SLAC,1.03.06.20.01_SXR Undulator Components Installation,AS_SXU_INST_5116_Install Interspace Assembly - Cell 16,Mechanical,,SLAC,Labor
104933,1.03,1.03.06,1.03.06.20,1.03.06.20.01,1.03.06.20.01,SXR Undulator Components Installation,AS_SXU_INST_5116,Install Interspace Assembly - Cell 16,1.0,4.0,4.0,4.0,04-28-25,04-28-25,"AS_SXU_INST_5100: FS, AS_SXU_MANF_8016: FS","AS_SXU_INST_5117: SS, AS_SXU_INST_5217: FS",SLAC,0%,52198.52198_METSMANF (METSD Manufacturing),52198_METSMANF (METSD Manufacturing),Labor,0.0d,1.0,1.0,At Completion Units,9/4/2024,9/4/2024,0,0,0,0,0,0,0,0,0,0,1.03_Accelerator Systems (AS),1.03.06_AS Soft X-Ray Undulator (SXR) - SLAC,1.03.06.20_AS Soft X-Ray Undulator Installation - SLAC,1.03.06.20.01_SXR Undulator Components Installation,AS_SXU_INST_5116_Install Interspace Assembly - Cell 16,Manufacturing,,SLAC,Labor
104934,1.03,1.03.06,1.03.06.20,1.03.06.20.01,1.03.06.20.01,SXR Undulator Components Installation,AS_SXU_INST_105,RCV: Construction support for SXR Undulator System Installation,1.0,112560.0,112560.0,112560.0,04-25-25,04-25-25,AS_SXU_INST_104: FS,AS_SXU_INST_106: FS,SLAC,0%,SL_MSSC.SLAC M&S (<$500K) (gets G&A) (gets ESC),SLAC M&S (<$500K) (gets G&A) (gets ESC),Nonlabor,0.0d,1.0,1.0,At Completion Units,3/28/2024,3/28/2024,0,0,0,0,0,0,0,0,0,0,1.03_Accelerator Systems (AS),1.03.06_AS Soft X-Ray Undulator (SXR) - SLAC,1.03.06.20_AS Soft X-Ray Undulator Installation - SLAC,1.03.06.20.01_SXR Undulator Components Installation,AS_SXU_INST_105_RCV: Construction support for SXR Undulator System Installation,Material,,SLAC,M&S
104935,1.03,1.03.06,1.03.06.20,1.03.06.20.01,1.03.06.20.01,SXR Undulator Components Installation,AS_SXU_INST_103,AWARD: Procurement - Construction support for SXR Undulator System Installation,1.0,112560.0,112560.0,112560.0,08-17-23,08-17-23,AS_SXU_INST_102: FS,"AS_SXU_INST_104: FS, AS_SXU_INST_5050: FS",SLAC,0%,AWARD_USE.AWARD - Use this AWARD,AWARD - Use this AWARD,Nonlabor,0.0d,1.0,1.0,At Completion Units,8/17/2023,8/17/2023,0,0,0,0,0,0,0,0,0,0,1.03_Accelerator Systems (AS),1.03.06_AS Soft X-Ray Undulator (SXR) - SLAC,1.03.06.20_AS Soft X-Ray Undulator Installation - SLAC,1.03.06.20.01_SXR Undulator Components Installation,AS_SXU_INST_103_AWARD: Procurement - Construction support for SXR Undulator System Installation,Material,,SLAC,M&S
104936,1.03,1.03.06,1.03.06.20,1.03.06.20.01,1.03.06.20.01,SXR Undulator Components Installation,AS_SXU_INST_101,RQN: Approval of Requisition - Construction support for SXR Undulator System Installation,1.0,112560.0,112560.0,112560.0,07-19-23,07-19-23,AS_SXU_INST_100: FS,AS_SXU_INST_102: FS,SLAC,0%,REQ.Requisition,Requisition,Nonlabor,0.0d,1.0,1.0,At Completion Units,7/19/2023,7/19/2023,0,0,0,0,0,0,0,0,0,0,1.03_Accelerator Systems (AS),1.03.06_AS Soft X-Ray Undulator (SXR) - SLAC,1.03.06.20_AS Soft X-Ray Undulator Installation - SLAC,1.03.06.20.01_SXR Undulator Components Installation,AS_SXU_INST_101_RQN: Approval of Requisition - Construction support for SXR Undulator System Installation,Material,,SLAC,M&S
104937,1.03,1.03.06,1.03.06.20,1.03.06.20.01,1.03.06.20.01,SXR Undulator Components Installation,AS_SXU_INST_4020,Respond to recommendations from IRR - SXR Undulator System Installation,5.0,16.0,16.0,16.0,07-20-23,07-26-23,AS_SXU_INST_4010: FS,AS_SXU_INST_4030: FF,SLAC,0%,52169.52169_METS Mechanical Engineer,52169_METS Mechanical Engineer,Labor,0.0d,5.0,5.0,At Completion Units,7/20/2023,7/26/2023,0,0,0,0,0,0,0,0,0,0,1.03_Accelerator Systems (AS),1.03.06_AS Soft X-Ray Undulator (SXR) - SLAC,1.03.06.20_AS Soft X-Ray Undulator Installation - SLAC,1.03.06.20.01_SXR Undulator Components Installation,AS_SXU_INST_4020_Respond to recommendations from IRR - SXR Undulator System Installation,Mechanical,,SLAC,Labor
104938,1.03,1.03.06,1.03.06.20,1.03.06.20.01,1.03.06.20.01,SXR Undulator Components Installation,AS_SXU_INST_4000,Prepare for Installation Readiness Review (IRR) - SXR Undulator System Installation,10.0,4.0,4.0,4.0,07-05-23,07-18-23,MS_FY_2023_Q4: FS,"AS_SXU_INST_4010: FS, AS_SXU_INST_100: SS",SLAC,0%,52190.52190_METSTP Tech Planning - Reinstated FY16,52190_METSTP Tech Planning - Reinstated FY16,Labor,0.0d,10.0,10.0,At Completion Units,7/5/2023,7/18/2023,0,0,0,0,0,0,0,0,0,0,1.03_Accelerator Systems (AS),1.03.06_AS Soft X-Ray Undulator (SXR) - SLAC,1.03.06.20_AS Soft X-Ray Undulator Installation - SLAC,1.03.06.20.01_SXR Undulator Components Installation,AS_SXU_INST_4000_Prepare for Installation Readiness Review (IRR) - SXR Undulator System Installation,METSTPT Tech Planning,Tech,SLAC,Labor
104939,1.03,1.03.06,1.03.06.20,1.03.06.20.01,1.03.06.20.01,SXR Undulator Components Installation,AS_SXU_INST_4000,Prepare for Installation Readiness Review (IRR) - SXR Undulator System Installation,10.0,4.0,4.0,4.0,07-05-23,07-18-23,MS_FY_2023_Q4: FS,"AS_SXU_INST_4010: FS, AS_SXU_INST_100: SS",SLAC,0%,52211.52211_EEDOPSE (Electronics & Engineering Div - Ops & PSE),52211_EEDOPSE (Electronics & Engineering Div - Ops & PSE),Labor,0.0d,10.0,10.0,At Completion Units,7/5/2023,7/18/2023,0,0,0,0,0,0,0,0,0,0,1.03_Accelerator Systems (AS),1.03.06_AS Soft X-Ray Undulator (SXR) - SLAC,1.03.06.20_AS Soft X-Ray Undulator Installation - SLAC,1.03.06.20.01_SXR Undulator Components Installation,AS_SXU_INST_4000_Prepare for Installation Readiness Review (IRR) - SXR Undulator System Installation,Electrical,,SLAC,Labor
104940,1.03,1.03.06,1.03.06.20,1.03.06.20.01,1.03.06.20.01,SXR Undulator Components Installation,AS_SXU_INST_4000,Prepare for Installation Readiness Review (IRR) - SXR Undulator System Installation,10.0,4.0,4.0,4.0,07-05-23,07-18-23,MS_FY_2023_Q4: FS,"AS_SXU_INST_4010: FS, AS_SXU_INST_100: SS",SLAC,0%,52127.52127_Research Electrical & SW Engineer,52127_Research Electrical & SW Engineer,Labor,0.0d,10.0,10.0,At Completion Units,7/5/2023,7/18/2023,0,0,0,0,0,0,0,0,0,0,1.03_Accelerator Systems (AS),1.03.06_AS Soft X-Ray Undulator (SXR) - SLAC,1.03.06.20_AS Soft X-Ray Undulator Installation - SLAC,1.03.06.20.01_SXR Undulator Components Installation,AS_SXU_INST_4000_Prepare for Installation Readiness Review (IRR) - SXR Undulator System Installation,Electrical,,SLAC,Labor
104941,1.03,1.03.06,1.03.06.20,1.03.06.20.01,1.03.06.20.01,SXR Undulator Components Installation,AS_SXU_INST_4000,Prepare for Installation Readiness Review (IRR) - SXR Undulator System Installation,10.0,12.0,12.0,12.0,07-05-23,07-18-23,MS_FY_2023_Q4: FS,"AS_SXU_INST_4010: FS, AS_SXU_INST_100: SS",SLAC,0%,52213.52213_EEDHW (Electronics & Engineering Div - HW Engr),52213_EEDHW (Electronics & Engineering Div - HW Engr),Labor,0.0d,10.0,10.0,At Completion Units,7/5/2023,7/18/2023,0,0,0,0,0,0,0,0,0,0,1.03_Accelerator Systems (AS),1.03.06_AS Soft X-Ray Undulator (SXR) - SLAC,1.03.06.20_AS Soft X-Ray Undulator Installation - SLAC,1.03.06.20.01_SXR Undulator Components Installation,AS_SXU_INST_4000_Prepare for Installation Readiness Review (IRR) - SXR Undulator System Installation,Electrical,,SLAC,Labor
104942,1.03,1.03.06,1.03.06.20,1.03.06.20.01,1.03.06.20.01,SXR Undulator Components Installation,AS_SXU_INST_4000,Prepare for Installation Readiness Review (IRR) - SXR Undulator System Installation,10.0,40.0,40.0,40.0,07-05-23,07-18-23,MS_FY_2023_Q4: FS,"AS_SXU_INST_4010: FS, AS_SXU_INST_100: SS",SLAC,0%,52168.52168_METS - Mechanical Design,52168_METS - Mechanical Design,Labor,0.0d,10.0,10.0,At Completion Units,7/5/2023,7/18/2023,0,0,0,0,0,0,0,0,0,0,1.03_Accelerator Systems (AS),1.03.06_AS Soft X-Ray Undulator (SXR) - SLAC,1.03.06.20_AS Soft X-Ray Undulator Installation - SLAC,1.03.06.20.01_SXR Undulator Components Installation,AS_SXU_INST_4000_Prepare for Installation Readiness Review (IRR) - SXR Undulator System Installation,Mechanical,,SLAC,Labor
104943,1.03,1.03.06,1.03.06.20,1.03.06.20.01,1.03.06.20.01,SXR Undulator Components Installation,AS_SXU_INST_4000,Prepare for Installation Readiness Review (IRR) - SXR Undulator System Installation,10.0,60.0,60.0,60.0,07-05-23,07-18-23,MS_FY_2023_Q4: FS,"AS_SXU_INST_4010: FS, AS_SXU_INST_100: SS",SLAC,0%,52169.52169_METS Mechanical Engineer,52169_METS Mechanical Engineer,Labor,0.0d,10.0,10.0,At Completion Units,7/5/2023,7/18/2023,0,0,0,0,0,0,0,0,0,0,1.03_Accelerator Systems (AS),1.03.06_AS Soft X-Ray Undulator (SXR) - SLAC,1.03.06.20_AS Soft X-Ray Undulator Installation - SLAC,1.03.06.20.01_SXR Undulator Components Installation,AS_SXU_INST_4000_Prepare for Installation Readiness Review (IRR) - SXR Undulator System Installation,Mechanical,,SLAC,Labor
104944,1.03,1.03.06,1.03.06.20,1.03.06.20.01,1.03.06.20.01,SXR Undulator Components Installation,AS_SXU_INST_4000,Prepare for Installation Readiness Review (IRR) - SXR Undulator System Installation,10.0,8.0,8.0,8.0,07-05-23,07-18-23,MS_FY_2023_Q4: FS,"AS_SXU_INST_4010: FS, AS_SXU_INST_100: SS",SLAC,0%,52191.52191_METSMET Metrology,52191_METSMET Metrology,Labor,0.0d,10.0,10.0,At Completion Units,7/5/2023,7/18/2023,0,0,0,0,0,0,0,0,0,0,1.03_Accelerator Systems (AS),1.03.06_AS Soft X-Ray Undulator (SXR) - SLAC,1.03.06.20_AS Soft X-Ray Undulator Installation - SLAC,1.03.06.20.01_SXR Undulator Components Installation,AS_SXU_INST_4000_Prepare for Installation Readiness Review (IRR) - SXR Undulator System Installation,Metrology,,SLAC,Labor
104945,1.03,1.03.06,1.03.06.20,1.03.06.20.01,1.03.06.20.01,SXR Undulator Components Installation,AS_SXU_INST_4000,Prepare for Installation Readiness Review (IRR) - SXR Undulator System Installation,10.0,8.0,8.0,8.0,07-05-23,07-18-23,MS_FY_2023_Q4: FS,"AS_SXU_INST_4010: FS, AS_SXU_INST_100: SS",SLAC,0%,52198.52198_METSMANF (METSD Manufacturing),52198_METSMANF (METSD Manufacturing),Labor,0.0d,10.0,10.0,At Completion Units,7/5/2023,7/18/2023,0,0,0,0,0,0,0,0,0,0,1.03_Accelerator Systems (AS),1.03.06_AS Soft X-Ray Undulator (SXR) - SLAC,1.03.06.20_AS Soft X-Ray Undulator Installation - SLAC,1.03.06.20.01_SXR Undulator Components Installation,AS_SXU_INST_4000_Prepare for Installation Readiness Review (IRR) - SXR Undulator System Installation,Manufacturing,,SLAC,Labor
104946,1.03,1.03.06,1.03.06.20,1.03.06.20.01,1.03.06.20.01,SXR Undulator Components Installation,AS_SXU_INST_4010,R_IRR: Installation Readiness Review (IRR) - SXR Undulator System Installation,1.0,4.0,4.0,4.0,07-19-23,07-19-23,AS_SXU_INST_4000: FS,AS_SXU_INST_4020: FS,SLAC,0%,52190.52190_METSTP Tech Planning - Reinstated FY16,52190_METSTP Tech Planning - Reinstated FY16,Labor,0.0d,1.0,1.0,At Completion Units,7/19/2023,7/19/2023,Review,0,0,0,0,0,0,0,0,0,1.03_Accelerator Systems (AS),1.03.06_AS Soft X-Ray Undulator (SXR) - SLAC,1.03.06.20_AS Soft X-Ray Undulator Installation - SLAC,1.03.06.20.01_SXR Undulator Components Installation,AS_SXU_INST_4010_R_IRR: Installation Readiness Review (IRR) - SXR Undulator System Installation,METSTPT Tech Planning,Tech,SLAC,Labor
104947,1.03,1.03.06,1.03.06.20,1.03.06.20.01,1.03.06.20.01,SXR Undulator Components Installation,AS_SXU_INST_4010,R_IRR: Installation Readiness Review (IRR) - SXR Undulator System Installation,1.0,4.0,4.0,4.0,07-19-23,07-19-23,AS_SXU_INST_4000: FS,AS_SXU_INST_4020: FS,SLAC,0%,52152.52152_FAC Fleet,52152_FAC Fleet,Labor,0.0d,1.0,1.0,At Completion Units,7/19/2023,7/19/2023,Review,0,0,0,0,0,0,0,0,0,1.03_Accelerator Systems (AS),1.03.06_AS Soft X-Ray Undulator (SXR) - SLAC,1.03.06.20_AS Soft X-Ray Undulator Installation - SLAC,1.03.06.20.01_SXR Undulator Components Installation,AS_SXU_INST_4010_R_IRR: Installation Readiness Review (IRR) - SXR Undulator System Installation,Support System,,SLAC,Labor
104948,1.03,1.03.06,1.03.06.20,1.03.06.20.01,1.03.06.20.01,SXR Undulator Components Installation,AS_SXU_INST_4010,R_IRR: Installation Readiness Review (IRR) - SXR Undulator System Installation,1.0,4.0,4.0,4.0,07-19-23,07-19-23,AS_SXU_INST_4000: FS,AS_SXU_INST_4020: FS,SLAC,0%,52211.52211_EEDOPSE (Electronics & Engineering Div - Ops & PSE),52211_EEDOPSE (Electronics & Engineering Div - Ops & PSE),Labor,0.0d,1.0,1.0,At Completion Units,7/19/2023,7/19/2023,Review,0,0,0,0,0,0,0,0,0,1.03_Accelerator Systems (AS),1.03.06_AS Soft X-Ray Undulator (SXR) - SLAC,1.03.06.20_AS Soft X-Ray Undulator Installation - SLAC,1.03.06.20.01_SXR Undulator Components Installation,AS_SXU_INST_4010_R_IRR: Installation Readiness Review (IRR) - SXR Undulator System Installation,Electrical,,SLAC,Labor
104949,1.03,1.03.06,1.03.06.20,1.03.06.20.01,1.03.06.20.01,SXR Undulator Components Installation,AS_SXU_INST_4010,R_IRR: Installation Readiness Review (IRR) - SXR Undulator System Installation,1.0,4.0,4.0,4.0,07-19-23,07-19-23,AS_SXU_INST_4000: FS,AS_SXU_INST_4020: FS,SLAC,0%,52127.52127_Research Electrical & SW Engineer,52127_Research Electrical & SW Engineer,Labor,0.0d,1.0,1.0,At Completion Units,7/19/2023,7/19/2023,Review,0,0,0,0,0,0,0,0,0,1.03_Accelerator Systems (AS),1.03.06_AS Soft X-Ray Undulator (SXR) - SLAC,1.03.06.20_AS Soft X-Ray Undulator Installation - SLAC,1.03.06.20.01_SXR Undulator Components Installation,AS_SXU_INST_4010_R_IRR: Installation Readiness Review (IRR) - SXR Undulator System Installation,Electrical,,SLAC,Labor
104950,1.03,1.03.06,1.03.06.20,1.03.06.20.01,1.03.06.20.01,SXR Undulator Components Installation,AS_SXU_INST_4010,R_IRR: Installation Readiness Review (IRR) - SXR Undulator System Installation,1.0,8.0,8.0,8.0,07-19-23,07-19-23,AS_SXU_INST_4000: FS,AS_SXU_INST_4020: FS,SLAC,0%,52213.52213_EEDHW (Electronics & Engineering Div - HW Engr),52213_EEDHW (Electronics & Engineering Div - HW Engr),Labor,0.0d,1.0,1.0,At Completion Units,7/19/2023,7/19/2023,Review,0,0,0,0,0,0,0,0,0,1.03_Accelerator Systems (AS),1.03.06_AS Soft X-Ray Undulator (SXR) - SLAC,1.03.06.20_AS Soft X-Ray Undulator Installation - SLAC,1.03.06.20.01_SXR Undulator Components Installation,AS_SXU_INST_4010_R_IRR: Installation Readiness Review (IRR) - SXR Undulator System Installation,Electrical,,SLAC,Labor
104951,1.03,1.03.06,1.03.06.20,1.03.06.20.01,1.03.06.20.01,SXR Undulator Components Installation,AS_SXU_INST_4010,R_IRR: Installation Readiness Review (IRR) - SXR Undulator System Installation,1.0,4.0,4.0,4.0,07-19-23,07-19-23,AS_SXU_INST_4000: FS,AS_SXU_INST_4020: FS,SLAC,0%,52168.52168_METS - Mechanical Design,52168_METS - Mechanical Design,Labor,0.0d,1.0,1.0,At Completion Units,7/19/2023,7/19/2023,Review,0,0,0,0,0,0,0,0,0,1.03_Accelerator Systems (AS),1.03.06_AS Soft X-Ray Undulator (SXR) - SLAC,1.03.06.20_AS Soft X-Ray Undulator Installation - SLAC,1.03.06.20.01_SXR Undulator Components Installation,AS_SXU_INST_4010_R_IRR: Installation Readiness Review (IRR) - SXR Undulator System Installation,Mechanical,,SLAC,Labor
104952,1.03,1.03.06,1.03.06.20,1.03.06.20.01,1.03.06.20.01,SXR Undulator Components Installation,AS_SXU_INST_4010,R_IRR: Installation Readiness Review (IRR) - SXR Undulator System Installation,1.0,8.0,8.0,8.0,07-19-23,07-19-23,AS_SXU_INST_4000: FS,AS_SXU_INST_4020: FS,SLAC,0%,52169.52169_METS Mechanical Engineer,52169_METS Mechanical Engineer,Labor,0.0d,1.0,1.0,At Completion Units,7/19/2023,7/19/2023,Review,0,0,0,0,0,0,0,0,0,1.03_Accelerator Systems (AS),1.03.06_AS Soft X-Ray Undulator (SXR) - SLAC,1.03.06.20_AS Soft X-Ray Undulator Installation - SLAC,1.03.06.20.01_SXR Undulator Components Installation,AS_SXU_INST_4010_R_IRR: Installation Readiness Review (IRR) - SXR Undulator System Installation,Mechanical,,SLAC,Labor
104953,1.03,1.03.06,1.03.06.20,1.03.06.20.01,1.03.06.20.01,SXR Undulator Components Installation,AS_SXU_INST_4010,R_IRR: Installation Readiness Review (IRR) - SXR Undulator System Installation,1.0,4.0,4.0,4.0,07-19-23,07-19-23,AS_SXU_INST_4000: FS,AS_SXU_INST_4020: FS,SLAC,0%,0106.0106_Staff Scientist,0106_Staff Scientist,Labor,0.0d,1.0,1.0,At Completion Units,7/19/2023,7/19/2023,Review,0,0,0,0,0,0,0,0,0,1.03_Accelerator Systems (AS),1.03.06_AS Soft X-Ray Undulator (SXR) - SLAC,1.03.06.20_AS Soft X-Ray Undulator Installation - SLAC,1.03.06.20.01_SXR Undulator Components Installation,AS_SXU_INST_4010_R_IRR: Installation Readiness Review (IRR) - SXR Undulator System Installation,Scientist,,SLAC,Labor
104954,1.03,1.03.06,1.03.06.20,1.03.06.20.01,1.03.06.20.01,SXR Undulator Components Installation,AS_SXU_INST_4010,R_IRR: Installation Readiness Review (IRR) - SXR Undulator System Installation,1.0,4.0,4.0,4.0,07-19-23,07-19-23,AS_SXU_INST_4000: FS,AS_SXU_INST_4020: FS,SLAC,0%,52191.52191_METSMET Metrology,52191_METSMET Metrology,Labor,0.0d,1.0,1.0,At Completion Units,7/19/2023,7/19/2023,Review,0,0,0,0,0,0,0,0,0,1.03_Accelerator Systems (AS),1.03.06_AS Soft X-Ray Undulator (SXR) - SLAC,1.03.06.20_AS Soft X-Ray Undulator Installation - SLAC,1.03.06.20.01_SXR Undulator Components Installation,AS_SXU_INST_4010_R_IRR: Installation Readiness Review (IRR) - SXR Undulator System Installation,Metrology,,SLAC,Labor
104955,1.03,1.03.06,1.03.06.20,1.03.06.20.01,1.03.06.20.01,SXR Undulator Components Installation,AS_SXU_INST_4010,R_IRR: Installation Readiness Review (IRR) - SXR Undulator System Installation,1.0,12.0,12.0,12.0,07-19-23,07-19-23,AS_SXU_INST_4000: FS,AS_SXU_INST_4020: FS,SLAC,0%,52198.52198_METSMANF (METSD Manufacturing),52198_METSMANF (METSD Manufacturing),Labor,0.0d,1.0,1.0,At Completion Units,7/19/2023,7/19/2023,Review,0,0,0,0,0,0,0,0,0,1.03_Accelerator Systems (AS),1.03.06_AS Soft X-Ray Undulator (SXR) - SLAC,1.03.06.20_AS Soft X-Ray Undulator Installation - SLAC,1.03.06.20.01_SXR Undulator Components Installation,AS_SXU_INST_4010_R_IRR: Installation Readiness Review (IRR) - SXR Undulator System Installation,Manufacturing,,SLAC,Labor
104956,1.03,1.03.06,1.03.06.20,1.03.06.20.01,1.03.06.20.01,SXR Undulator Components Installation,AS_SXU_INST_5000,Installation Coordination: Short Down #2 - SXR Undulator System Installation,41.0,18.0,18.0,18.0,08-01-24,09-27-24,AS_M4_1030: FS,AS_M4_DTS2_1030: FS,SLAC,0%,52155.52155_Health Physics Technician III,52155_Health Physics Technician III,Labor,0.0d,41.0,41.0,At Completion Units,8/1/2024,9/27/2024,0,0,0,0,0,0,0,0,0,0,1.03_Accelerator Systems (AS),1.03.06_AS Soft X-Ray Undulator (SXR) - SLAC,1.03.06.20_AS Soft X-Ray Undulator Installation - SLAC,1.03.06.20.01_SXR Undulator Components Installation,AS_SXU_INST_5000_Installation Coordination: Short Down #2 - SXR Undulator System Installation,Support System,Tech,SLAC,Labor
104957,1.03,1.03.06,1.03.06.20,1.03.06.20.01,1.03.06.20.01,SXR Undulator Components Installation,AS_SXU_INST_5000,Installation Coordination: Short Down #2 - SXR Undulator System Installation,41.0,136.0,136.0,136.0,08-01-24,09-27-24,AS_M4_1030: FS,AS_M4_DTS2_1030: FS,SLAC,0%,52169.52169_METS Mechanical Engineer,52169_METS Mechanical Engineer,Labor,0.0d,41.0,41.0,At Completion Units,8/1/2024,9/27/2024,0,0,0,0,0,0,0,0,0,0,1.03_Accelerator Systems (AS),1.03.06_AS Soft X-Ray Undulator (SXR) - SLAC,1.03.06.20_AS Soft X-Ray Undulator Installation - SLAC,1.03.06.20.01_SXR Undulator Components Installation,AS_SXU_INST_5000_Installation Coordination: Short Down #2 - SXR Undulator System Installation,Mechanical,,SLAC,Labor
104958,1.03,1.03.06,1.03.06.20,1.03.06.20.01,1.03.06.20.01,SXR Undulator Components Installation,AS_SXU_INST_5050,Map anchor holes - SXR Undulator System Installation,3.0,8.0,8.0,8.0,08-08-24,08-12-24,"AS_SXU_INST_103: FS, AS_SXU_INST_5010: FS","AS_SXU_INST_5060: FS, AS_SXU_INST_5070: FS",SLAC,0%,52169.52169_METS Mechanical Engineer,52169_METS Mechanical Engineer,Labor,0.0d,3.0,3.0,At Completion Units,8/8/2024,8/12/2024,0,0,0,0,0,0,0,0,0,0,1.03_Accelerator Systems (AS),1.03.06_AS Soft X-Ray Undulator (SXR) - SLAC,1.03.06.20_AS Soft X-Ray Undulator Installation - SLAC,1.03.06.20.01_SXR Undulator Components Installation,AS_SXU_INST_5050_Map anchor holes - SXR Undulator System Installation,Mechanical,,SLAC,Labor
104959,1.03,1.03.06,1.03.06.20,1.03.06.20.01,1.03.06.20.01,SXR Undulator Components Installation,AS_SXU_INST_5050,Map anchor holes - SXR Undulator System Installation,3.0,32.0,32.0,32.0,08-08-24,08-12-24,"AS_SXU_INST_103: FS, AS_SXU_INST_5010: FS","AS_SXU_INST_5060: FS, AS_SXU_INST_5070: FS",SLAC,0%,52191.52191_METSMET Metrology,52191_METSMET Metrology,Labor,0.0d,3.0,3.0,At Completion Units,8/8/2024,8/12/2024,0,0,0,0,0,0,0,0,0,0,1.03_Accelerator Systems (AS),1.03.06_AS Soft X-Ray Undulator (SXR) - SLAC,1.03.06.20_AS Soft X-Ray Undulator Installation - SLAC,1.03.06.20.01_SXR Undulator Components Installation,AS_SXU_INST_5050_Map anchor holes - SXR Undulator System Installation,Metrology,,SLAC,Labor
104960,1.03,1.03.06,1.03.06.20,1.03.06.20.01,1.03.06.20.01,SXR Undulator Components Installation,AS_SXU_INST_5010,Remove SXX drifts and interspace assemblies - SXR Undulator System Installation,5.0,32.0,32.0,32.0,08-01-24,08-07-24,"AS_SXU_INST_4030: FS, AS_M4_1030: FS",AS_SXU_INST_5050: FS,SLAC,0%,52190.52190_METSTP Tech Planning - Reinstated FY16,52190_METSTP Tech Planning - Reinstated FY16,Labor,0.0d,5.0,5.0,At Completion Units,8/1/2024,8/7/2024,0,0,0,0,0,0,0,0,0,0,1.03_Accelerator Systems (AS),1.03.06_AS Soft X-Ray Undulator (SXR) - SLAC,1.03.06.20_AS Soft X-Ray Undulator Installation - SLAC,1.03.06.20.01_SXR Undulator Components Installation,AS_SXU_INST_5010_Remove SXX drifts and interspace assemblies - SXR Undulator System Installation,METSTPT Tech Planning,Tech,SLAC,Labor
104961,1.03,1.03.06,1.03.06.20,1.03.06.20.01,1.03.06.20.01,SXR Undulator Components Installation,AS_SXU_INST_5010,Remove SXX drifts and interspace assemblies - SXR Undulator System Installation,5.0,16.0,16.0,16.0,08-01-24,08-07-24,"AS_SXU_INST_4030: FS, AS_M4_1030: FS",AS_SXU_INST_5050: FS,SLAC,0%,52127.52127_Research Electrical & SW Engineer,52127_Research Electrical & SW Engineer,Labor,0.0d,5.0,5.0,At Completion Units,8/1/2024,8/7/2024,0,0,0,0,0,0,0,0,0,0,1.03_Accelerator Systems (AS),1.03.06_AS Soft X-Ray Undulator (SXR) - SLAC,1.03.06.20_AS Soft X-Ray Undulator Installation - SLAC,1.03.06.20.01_SXR Undulator Components Installation,AS_SXU_INST_5010_Remove SXX drifts and interspace assemblies - SXR Undulator System Installation,Electrical,,SLAC,Labor
104962,1.03,1.03.06,1.03.06.20,1.03.06.20.01,1.03.06.20.01,SXR Undulator Components Installation,AS_SXU_INST_5010,Remove SXX drifts and interspace assemblies - SXR Undulator System Installation,5.0,16.0,16.0,16.0,08-01-24,08-07-24,"AS_SXU_INST_4030: FS, AS_M4_1030: FS",AS_SXU_INST_5050: FS,SLAC,0%,52213.52213_EEDHW (Electronics & Engineering Div - HW Engr),52213_EEDHW (Electronics & Engineering Div - HW Engr),Labor,0.0d,5.0,5.0,At Completion Units,8/1/2024,8/7/2024,0,0,0,0,0,0,0,0,0,0,1.03_Accelerator Systems (AS),1.03.06_AS Soft X-Ray Undulator (SXR) - SLAC,1.03.06.20_AS Soft X-Ray Undulator Installation - SLAC,1.03.06.20.01_SXR Undulator Components Installation,AS_SXU_INST_5010_Remove SXX drifts and interspace assemblies - SXR Undulator System Installation,Electrical,,SLAC,Labor
104963,1.03,1.03.06,1.03.06.20,1.03.06.20.01,1.03.06.20.01,SXR Undulator Components Installation,AS_SXU_INST_5010,Remove SXX drifts and interspace assemblies - SXR Undulator System Installation,5.0,60.0,60.0,60.0,08-01-24,08-07-24,"AS_SXU_INST_4030: FS, AS_M4_1030: FS",AS_SXU_INST_5050: FS,SLAC,0%,52169.52169_METS Mechanical Engineer,52169_METS Mechanical Engineer,Labor,0.0d,5.0,5.0,At Completion Units,8/1/2024,8/7/2024,0,0,0,0,0,0,0,0,0,0,1.03_Accelerator Systems (AS),1.03.06_AS Soft X-Ray Undulator (SXR) - SLAC,1.03.06.20_AS Soft X-Ray Undulator Installation - SLAC,1.03.06.20.01_SXR Undulator Components Installation,AS_SXU_INST_5010_Remove SXX drifts and interspace assemblies - SXR Undulator System Installation,Mechanical,,SLAC,Labor
104964,1.03,1.03.06,1.03.06.20,1.03.06.20.01,1.03.06.20.01,SXR Undulator Components Installation,AS_SXU_INST_5010,Remove SXX drifts and interspace assemblies - SXR Undulator System Installation,5.0,160.0,160.0,160.0,08-01-24,08-07-24,"AS_SXU_INST_4030: FS, AS_M4_1030: FS",AS_SXU_INST_5050: FS,SLAC,0%,52198.52198_METSMANF (METSD Manufacturing),52198_METSMANF (METSD Manufacturing),Labor,0.0d,5.0,5.0,At Completion Units,8/1/2024,8/7/2024,0,0,0,0,0,0,0,0,0,0,1.03_Accelerator Systems (AS),1.03.06_AS Soft X-Ray Undulator (SXR) - SLAC,1.03.06.20_AS Soft X-Ray Undulator Installation - SLAC,1.03.06.20.01_SXR Undulator Components Installation,AS_SXU_INST_5010_Remove SXX drifts and interspace assemblies - SXR Undulator System Installation,Manufacturing,,SLAC,Labor
105284,1.03,1.03.06,1.03.06.20,1.03.06.20.02,1.03.06.20.02,SXR Phase Shifter Installation,AS_SXU_INST_2702,Remove Phase Shifter from Tunnel - PS_REFB_R,1.0,2.0,2.0,2.0,01-07-25,01-07-25,AS_SXU_INST_2800: FS,AS_SXU_MANF_6027: FS,SLAC,0%,52198.52198_METSMANF (METSD Manufacturing),52198_METSMANF (METSD Manufacturing),Labor,0.0d,1.0,1.0,At Completion Units,1/7/2025,1/7/2025,0,0,0,0,0,0,0,0,0,0,1.03_Accelerator Systems (AS),1.03.06_AS Soft X-Ray Undulator (SXR) - SLAC,1.03.06.20_AS Soft X-Ray Undulator Installation - SLAC,1.03.06.20.02_SXR Phase Shifter Installation,AS_SXU_INST_2702_Remove Phase Shifter from Tunnel - PS_REFB_R,Manufacturing,,SLAC,Labor
105285,1.03,1.03.06,1.03.06.20,1.03.06.20.02,1.03.06.20.02,SXR Phase Shifter Installation,AS_SXU_INST_2912,Install Phase Shifter - PS_HE_29,1.0,2.0,2.0,2.0,04-21-25,04-22-25,"AS_SXU_MANF_6079: FS, PM_PAMM_12: FS",AS_SXU_INST_2920: FS,SLAC,0%,52190.52190_METSTP Tech Planning - Reinstated FY16,52190_METSTP Tech Planning - Reinstated FY16,Labor,0.0d,1.0,1.0,At Completion Units,4/21/2025,4/22/2025,0,0,0,0,0,0,0,0,0,0,1.03_Accelerator Systems (AS),1.03.06_AS Soft X-Ray Undulator (SXR) - SLAC,1.03.06.20_AS Soft X-Ray Undulator Installation - SLAC,1.03.06.20.02_SXR Phase Shifter Installation,AS_SXU_INST_2912_Install Phase Shifter - PS_HE_29,METSTPT Tech Planning,Tech,SLAC,Labor
105286,1.03,1.03.06,1.03.06.20,1.03.06.20.02,1.03.06.20.02,SXR Phase Shifter Installation,AS_SXU_INST_2912,Install Phase Shifter - PS_HE_29,1.0,3.0,3.0,3.0,04-21-25,04-22-25,"AS_SXU_MANF_6079: FS, PM_PAMM_12: FS",AS_SXU_INST_2920: FS,SLAC,0%,52152.52152_FAC Fleet,52152_FAC Fleet,Labor,0.0d,1.0,1.0,At Completion Units,4/21/2025,4/22/2025,0,0,0,0,0,0,0,0,0,0,1.03_Accelerator Systems (AS),1.03.06_AS Soft X-Ray Undulator (SXR) - SLAC,1.03.06.20_AS Soft X-Ray Undulator Installation - SLAC,1.03.06.20.02_SXR Phase Shifter Installation,AS_SXU_INST_2912_Install Phase Shifter - PS_HE_29,Support System,,SLAC,Labor
105287,1.03,1.03.06,1.03.06.20,1.03.06.20.02,1.03.06.20.02,SXR Phase Shifter Installation,AS_SXU_INST_2912,Install Phase Shifter - PS_HE_29,1.0,2.0,2.0,2.0,04-21-25,04-22-25,"AS_SXU_MANF_6079: FS, PM_PAMM_12: FS",AS_SXU_INST_2920: FS,SLAC,0%,52198.52198_METSMANF (METSD Manufacturing),52198_METSMANF (METSD Manufacturing),Labor,0.0d,1.0,1.0,At Completion Units,4/21/2025,4/22/2025,0,0,0,0,0,0,0,0,0,0,1.03_Accelerator Systems (AS),1.03.06_AS Soft X-Ray Undulator (SXR) - SLAC,1.03.06.20_AS Soft X-Ray Undulator Installation - SLAC,1.03.06.20.02_SXR Phase Shifter Installation,AS_SXU_INST_2912_Install Phase Shifter - PS_HE_29,Manufacturing,,SLAC,Labor
105288,1.03,1.03.06,1.03.06.20,1.03.06.20.02,1.03.06.20.02,SXR Phase Shifter Installation,AS_SXU_INST_2912,Install Phase Shifter - PS_HE_29,1.0,1.0,1.0,1.0,04-21-25,04-22-25,"AS_SXU_MANF_6079: FS, PM_PAMM_12: FS",AS_SXU_INST_2920: FS,SLAC,0%,52191.52191_METSMET Metrology,52191_METSMET Metrology,Labor,0.0d,1.0,1.0,At Completion Units,4/21/2025,4/22/2025,0,0,0,0,0,0,0,0,0,0,1.03_Accelerator Systems (AS),1.03.06_AS Soft X-Ray Undulator (SXR) - SLAC,1.03.06.20_AS Soft X-Ray Undulator Installation - SLAC,1.03.06.20.02_SXR Phase Shifter Installation,AS_SXU_INST_2912_Install Phase Shifter - PS_HE_29,Metrology,,SLAC,Labor
105289,1.03,1.03.06,1.03.06.20,1.03.06.20.02,1.03.06.20.02,SXR Phase Shifter Installation,AS_SXU_INST_2902,Remove Phase Shifter from Tunnel - PS_REFB_T,1.0,2.0,2.0,2.0,02-11-25,02-12-25,AS_SXU_INST_3000: FS,AS_SXU_MANF_6029: FS,SLAC,0%,52198.52198_METSMANF (METSD Manufacturing),52198_METSMANF (METSD Manufacturing),Labor,0.0d,1.0,1.0,At Completion Units,2/11/2025,2/12/2025,0,0,0,0,0,0,0,0,0,0,1.03_Accelerator Systems (AS),1.03.06_AS Soft X-Ray Undulator (SXR) - SLAC,1.03.06.20_AS Soft X-Ray Undulator Installation - SLAC,1.03.06.20.02_SXR Phase Shifter Installation,AS_SXU_INST_2902_Remove Phase Shifter from Tunnel - PS_REFB_T,Manufacturing,,SLAC,Labor
105290,1.03,1.03.06,1.03.06.20,1.03.06.20.02,1.03.06.20.02,SXR Phase Shifter Installation,AS_SXU_INST_2812,Install Phase Shifter - PS_HE_28,1.0,1.0,1.0,1.0,03-26-25,03-27-25,"AS_SXU_MANF_6078: FS, PM_PAMM_11: FS",AS_SXU_INST_2820: FS,SLAC,0%,52191.52191_METSMET Metrology,52191_METSMET Metrology,Labor,0.0d,1.0,1.0,At Completion Units,3/26/2025,3/27/2025,0,0,0,0,0,0,0,0,0,0,1.03_Accelerator Systems (AS),1.03.06_AS Soft X-Ray Undulator (SXR) - SLAC,1.03.06.20_AS Soft X-Ray Undulator Installation - SLAC,1.03.06.20.02_SXR Phase Shifter Installation,AS_SXU_INST_2812_Install Phase Shifter - PS_HE_28,Metrology,,SLAC,Labor
105291,1.03,1.03.06,1.03.06.20,1.03.06.20.02,1.03.06.20.02,SXR Phase Shifter Installation,AS_SXU_INST_2712,Install Phase Shifter - PS_HE_27,1.0,2.0,2.0,2.0,03-26-25,03-27-25,"AS_SXU_MANF_6077: FS, PM_PAMM_11: FS",AS_SXU_INST_2720: FS,SLAC,0%,52190.52190_METSTP Tech Planning - Reinstated FY16,52190_METSTP Tech Planning - Reinstated FY16,Labor,0.0d,1.0,1.0,At Completion Units,3/26/2025,3/27/2025,0,0,0,0,0,0,0,0,0,0,1.03_Accelerator Systems (AS),1.03.06_AS Soft X-Ray Undulator (SXR) - SLAC,1.03.06.20_AS Soft X-Ray Undulator Installation - SLAC,1.03.06.20.02_SXR Phase Shifter Installation,AS_SXU_INST_2712_Install Phase Shifter - PS_HE_27,METSTPT Tech Planning,Tech,SLAC,Labor
105292,1.03,1.03.06,1.03.06.20,1.03.06.20.02,1.03.06.20.02,SXR Phase Shifter Installation,AS_SXU_INST_2712,Install Phase Shifter - PS_HE_27,1.0,3.0,3.0,3.0,03-26-25,03-27-25,"AS_SXU_MANF_6077: FS, PM_PAMM_11: FS",AS_SXU_INST_2720: FS,SLAC,0%,52152.52152_FAC Fleet,52152_FAC Fleet,Labor,0.0d,1.0,1.0,At Completion Units,3/26/2025,3/27/2025,0,0,0,0,0,0,0,0,0,0,1.03_Accelerator Systems (AS),1.03.06_AS Soft X-Ray Undulator (SXR) - SLAC,1.03.06.20_AS Soft X-Ray Undulator Installation - SLAC,1.03.06.20.02_SXR Phase Shifter Installation,AS_SXU_INST_2712_Install Phase Shifter - PS_HE_27,Support System,,SLAC,Labor
105293,1.03,1.03.06,1.03.06.20,1.03.06.20.02,1.03.06.20.02,SXR Phase Shifter Installation,AS_SXU_INST_2712,Install Phase Shifter - PS_HE_27,1.0,2.0,2.0,2.0,03-26-25,03-27-25,"AS_SXU_MANF_6077: FS, PM_PAMM_11: FS",AS_SXU_INST_2720: FS,SLAC,0%,52198.52198_METSMANF (METSD Manufacturing),52198_METSMANF (METSD Manufacturing),Labor,0.0d,1.0,1.0,At Completion Units,3/26/2025,3/27/2025,0,0,0,0,0,0,0,0,0,0,1.03_Accelerator Systems (AS),1.03.06_AS Soft X-Ray Undulator (SXR) - SLAC,1.03.06.20_AS Soft X-Ray Undulator Installation - SLAC,1.03.06.20.02_SXR Phase Shifter Installation,AS_SXU_INST_2712_Install Phase Shifter - PS_HE_27,Manufacturing,,SLAC,Labor
105294,1.03,1.03.06,1.03.06.20,1.03.06.20.02,1.03.06.20.02,SXR Phase Shifter Installation,AS_SXU_INST_2712,Install Phase Shifter - PS_HE_27,1.0,1.0,1.0,1.0,03-26-25,03-27-25,"AS_SXU_MANF_6077: FS, PM_PAMM_11: FS",AS_SXU_INST_2720: FS,SLAC,0%,52191.52191_METSMET Metrology,52191_METSMET Metrology,Labor,0.0d,1.0,1.0,At Completion Units,3/26/2025,3/27/2025,0,0,0,0,0,0,0,0,0,0,1.03_Accelerator Systems (AS),1.03.06_AS Soft X-Ray Undulator (SXR) - SLAC,1.03.06.20_AS Soft X-Ray Undulator Installation - SLAC,1.03.06.20.02_SXR Phase Shifter Installation,AS_SXU_INST_2712_Install Phase Shifter - PS_HE_27,Metrology,,SLAC,Labor
105295,1.03,1.03.06,1.03.06.20,1.03.06.20.02,1.03.06.20.02,SXR Phase Shifter Installation,AS_SXU_INST_2612,Install Phase Shifter - PS_HE_26,1.0,1.0,1.0,1.0,03-26-25,03-27-25,"AS_SXU_MANF_6076: FS, PM_PAMM_11: FS",AS_SXU_INST_2620: FS,SLAC,0%,52191.52191_METSMET Metrology,52191_METSMET Metrology,Labor,0.0d,1.0,1.0,At Completion Units,3/26/2025,3/27/2025,0,0,0,0,0,0,0,0,0,0,1.03_Accelerator Systems (AS),1.03.06_AS Soft X-Ray Undulator (SXR) - SLAC,1.03.06.20_AS Soft X-Ray Undulator Installation - SLAC,1.03.06.20.02_SXR Phase Shifter Installation,AS_SXU_INST_2612_Install Phase Shifter - PS_HE_26,Metrology,,SLAC,Labor
105296,1.03,1.03.06,1.03.06.20,1.03.06.20.02,1.03.06.20.02,SXR Phase Shifter Installation,AS_SXU_INST_2512,Install Phase Shifter - PS_HE_25,1.0,1.0,1.0,1.0,02-10-25,02-11-25,"AS_SXU_MANF_6075: FS, PM_PAMM_10: FS",AS_SXU_INST_2520: FS,SLAC,0%,52191.52191_METSMET Metrology,52191_METSMET Metrology,Labor,0.0d,1.0,1.0,At Completion Units,2/10/2025,2/11/2025,0,0,0,0,0,0,0,0,0,0,1.03_Accelerator Systems (AS),1.03.06_AS Soft X-Ray Undulator (SXR) - SLAC,1.03.06.20_AS Soft X-Ray Undulator Installation - SLAC,1.03.06.20.02_SXR Phase Shifter Installation,AS_SXU_INST_2512_Install Phase Shifter - PS_HE_25,Metrology,,SLAC,Labor
105297,1.03,1.03.06,1.03.06.20,1.03.06.20.02,1.03.06.20.02,SXR Phase Shifter Installation,AS_SXU_INST_2412,Install Phase Shifter - PS_HE_24,1.0,2.0,2.0,2.0,02-10-25,02-11-25,"AS_SXU_MANF_6074: FS, PM_PAMM_10: FS",AS_SXU_INST_2420: FS,SLAC,0%,52190.52190_METSTP Tech Planning - Reinstated FY16,52190_METSTP Tech Planning - Reinstated FY16,Labor,0.0d,1.0,1.0,At Completion Units,2/10/2025,2/11/2025,0,0,0,0,0,0,0,0,0,0,1.03_Accelerator Systems (AS),1.03.06_AS Soft X-Ray Undulator (SXR) - SLAC,1.03.06.20_AS Soft X-Ray Undulator Installation - SLAC,1.03.06.20.02_SXR Phase Shifter Installation,AS_SXU_INST_2412_Install Phase Shifter - PS_HE_24,METSTPT Tech Planning,Tech,SLAC,Labor
105298,1.03,1.03.06,1.03.06.20,1.03.06.20.02,1.03.06.20.02,SXR Phase Shifter Installation,AS_SXU_INST_2412,Install Phase Shifter - PS_HE_24,1.0,3.0,3.0,3.0,02-10-25,02-11-25,"AS_SXU_MANF_6074: FS, PM_PAMM_10: FS",AS_SXU_INST_2420: FS,SLAC,0%,52152.52152_FAC Fleet,52152_FAC Fleet,Labor,0.0d,1.0,1.0,At Completion Units,2/10/2025,2/11/2025,0,0,0,0,0,0,0,0,0,0,1.03_Accelerator Systems (AS),1.03.06_AS Soft X-Ray Undulator (SXR) - SLAC,1.03.06.20_AS Soft X-Ray Undulator Installation - SLAC,1.03.06.20.02_SXR Phase Shifter Installation,AS_SXU_INST_2412_Install Phase Shifter - PS_HE_24,Support System,,SLAC,Labor
105299,1.03,1.03.06,1.03.06.20,1.03.06.20.02,1.03.06.20.02,SXR Phase Shifter Installation,AS_SXU_INST_2412,Install Phase Shifter - PS_HE_24,1.0,2.0,2.0,2.0,02-10-25,02-11-25,"AS_SXU_MANF_6074: FS, PM_PAMM_10: FS",AS_SXU_INST_2420: FS,SLAC,0%,52198.52198_METSMANF (METSD Manufacturing),52198_METSMANF (METSD Manufacturing),Labor,0.0d,1.0,1.0,At Completion Units,2/10/2025,2/11/2025,0,0,0,0,0,0,0,0,0,0,1.03_Accelerator Systems (AS),1.03.06_AS Soft X-Ray Undulator (SXR) - SLAC,1.03.06.20_AS Soft X-Ray Undulator Installation - SLAC,1.03.06.20.02_SXR Phase Shifter Installation,AS_SXU_INST_2412_Install Phase Shifter - PS_HE_24,Manufacturing,,SLAC,Labor
105300,1.03,1.03.06,1.03.06.20,1.03.06.20.02,1.03.06.20.02,SXR Phase Shifter Installation,AS_SXU_INST_2412,Install Phase Shifter - PS_HE_24,1.0,1.0,1.0,1.0,02-10-25,02-11-25,"AS_SXU_MANF_6074: FS, PM_PAMM_10: FS",AS_SXU_INST_2420: FS,SLAC,0%,52191.52191_METSMET Metrology,52191_METSMET Metrology,Labor,0.0d,1.0,1.0,At Completion Units,2/10/2025,2/11/2025,0,0,0,0,0,0,0,0,0,0,1.03_Accelerator Systems (AS),1.03.06_AS Soft X-Ray Undulator (SXR) - SLAC,1.03.06.20_AS Soft X-Ray Undulator Installation - SLAC,1.03.06.20.02_SXR Phase Shifter Installation,AS_SXU_INST_2412_Install Phase Shifter - PS_HE_24,Metrology,,SLAC,Labor
105301,1.03,1.03.06,1.03.06.20,1.03.06.20.02,1.03.06.20.02,SXR Phase Shifter Installation,AS_SXU_INST_2402,Remove Phase Shifter from Tunnel - PS_REFB_O,1.0,2.0,2.0,2.0,11-06-24,11-07-24,AS_SXU_INST_2500: FS,AS_SXU_MANF_6024: FS,SLAC,0%,52198.52198_METSMANF (METSD Manufacturing),52198_METSMANF (METSD Manufacturing),Labor,0.0d,1.0,1.0,At Completion Units,11/6/2024,11/7/2024,0,0,0,0,0,0,0,0,0,0,1.03_Accelerator Systems (AS),1.03.06_AS Soft X-Ray Undulator (SXR) - SLAC,1.03.06.20_AS Soft X-Ray Undulator Installation - SLAC,1.03.06.20.02_SXR Phase Shifter Installation,AS_SXU_INST_2402_Remove Phase Shifter from Tunnel - PS_REFB_O,Manufacturing,,SLAC,Labor
105302,1.03,1.03.06,1.03.06.20,1.03.06.20.02,1.03.06.20.02,SXR Phase Shifter Installation,AS_SXU_INST_2312,Install Phase Shifter - PS_HE_23,1.0,1.0,1.0,1.0,02-10-25,02-11-25,"AS_SXU_MANF_6073: FS, PM_PAMM_10: FS",AS_SXU_INST_0920: FS,SLAC,0%,52191.52191_METSMET Metrology,52191_METSMET Metrology,Labor,0.0d,1.0,1.0,At Completion Units,2/10/2025,2/11/2025,0,0,0,0,0,0,0,0,0,0,1.03_Accelerator Systems (AS),1.03.06_AS Soft X-Ray Undulator (SXR) - SLAC,1.03.06.20_AS Soft X-Ray Undulator Installation - SLAC,1.03.06.20.02_SXR Phase Shifter Installation,AS_SXU_INST_2312_Install Phase Shifter - PS_HE_23,Metrology,,SLAC,Labor
105303,1.03,1.03.06,1.03.06.20,1.03.06.20.02,1.03.06.20.02,SXR Phase Shifter Installation,AS_SXU_INST_2212,Install Phase Shifter - PS_HE_22,1.0,1.0,1.0,1.0,01-06-25,01-06-25,"AS_SXU_MANF_6072: FS, PM_PAMM_09: FS",AS_SXU_INST_2320: FS,SLAC,0%,52191.52191_METSMET Metrology,52191_METSMET Metrology,Labor,0.0d,1.0,1.0,At Completion Units,1/6/2025,1/6/2025,0,0,0,0,0,0,0,0,0,0,1.03_Accelerator Systems (AS),1.03.06_AS Soft X-Ray Undulator (SXR) - SLAC,1.03.06.20_AS Soft X-Ray Undulator Installation - SLAC,1.03.06.20.02_SXR Phase Shifter Installation,AS_SXU_INST_2212_Install Phase Shifter - PS_HE_22,Metrology,,SLAC,Labor
105304,1.03,1.03.06,1.03.06.20,1.03.06.20.02,1.03.06.20.02,SXR Phase Shifter Installation,AS_SXU_INST_2112,Install Phase Shifter - PS_HE_21,1.0,2.0,2.0,2.0,01-06-25,01-06-25,"AS_SXU_MANF_6071: FS, PM_PAMM_09: FS",AS_SXU_INST_0820: FS,SLAC,0%,52190.52190_METSTP Tech Planning - Reinstated FY16,52190_METSTP Tech Planning - Reinstated FY16,Labor,0.0d,1.0,1.0,At Completion Units,1/6/2025,1/6/2025,0,0,0,0,0,0,0,0,0,0,1.03_Accelerator Systems (AS),1.03.06_AS Soft X-Ray Undulator (SXR) - SLAC,1.03.06.20_AS Soft X-Ray Undulator Installation - SLAC,1.03.06.20.02_SXR Phase Shifter Installation,AS_SXU_INST_2112_Install Phase Shifter - PS_HE_21,METSTPT Tech Planning,Tech,SLAC,Labor
105305,1.03,1.03.06,1.03.06.20,1.03.06.20.02,1.03.06.20.02,SXR Phase Shifter Installation,AS_SXU_INST_2112,Install Phase Shifter - PS_HE_21,1.0,3.0,3.0,3.0,01-06-25,01-06-25,"AS_SXU_MANF_6071: FS, PM_PAMM_09: FS",AS_SXU_INST_0820: FS,SLAC,0%,52152.52152_FAC Fleet,52152_FAC Fleet,Labor,0.0d,1.0,1.0,At Completion Units,1/6/2025,1/6/2025,0,0,0,0,0,0,0,0,0,0,1.03_Accelerator Systems (AS),1.03.06_AS Soft X-Ray Undulator (SXR) - SLAC,1.03.06.20_AS Soft X-Ray Undulator Installation - SLAC,1.03.06.20.02_SXR Phase Shifter Installation,AS_SXU_INST_2112_Install Phase Shifter - PS_HE_21,Support System,,SLAC,Labor
105306,1.03,1.03.06,1.03.06.20,1.03.06.20.02,1.03.06.20.02,SXR Phase Shifter Installation,AS_SXU_INST_2112,Install Phase Shifter - PS_HE_21,1.0,2.0,2.0,2.0,01-06-25,01-06-25,"AS_SXU_MANF_6071: FS, PM_PAMM_09: FS",AS_SXU_INST_0820: FS,SLAC,0%,52198.52198_METSMANF (METSD Manufacturing),52198_METSMANF (METSD Manufacturing),Labor,0.0d,1.0,1.0,At Completion Units,1/6/2025,1/6/2025,0,0,0,0,0,0,0,0,0,0,1.03_Accelerator Systems (AS),1.03.06_AS Soft X-Ray Undulator (SXR) - SLAC,1.03.06.20_AS Soft X-Ray Undulator Installation - SLAC,1.03.06.20.02_SXR Phase Shifter Installation,AS_SXU_INST_2112_Install Phase Shifter - PS_HE_21,Manufacturing,,SLAC,Labor
105307,1.03,1.03.06,1.03.06.20,1.03.06.20.02,1.03.06.20.02,SXR Phase Shifter Installation,AS_SXU_INST_2112,Install Phase Shifter - PS_HE_21,1.0,1.0,1.0,1.0,01-06-25,01-06-25,"AS_SXU_MANF_6071: FS, PM_PAMM_09: FS",AS_SXU_INST_0820: FS,SLAC,0%,52191.52191_METSMET Metrology,52191_METSMET Metrology,Labor,0.0d,1.0,1.0,At Completion Units,1/6/2025,1/6/2025,0,0,0,0,0,0,0,0,0,0,1.03_Accelerator Systems (AS),1.03.06_AS Soft X-Ray Undulator (SXR) - SLAC,1.03.06.20_AS Soft X-Ray Undulator Installation - SLAC,1.03.06.20.02_SXR Phase Shifter Installation,AS_SXU_INST_2112_Install Phase Shifter - PS_HE_21,Metrology,,SLAC,Labor
105308,1.03,1.03.06,1.03.06.20,1.03.06.20.02,1.03.06.20.02,SXR Phase Shifter Installation,AS_SXU_INST_2102,Remove Phase Shifter from Tunnel - PS_REFB_L,1.0,2.0,2.0,2.0,06-21-24,06-24-24,AS_SXU_INST_2200: FS,AS_SXU_MANF_6021: FS,SLAC,0%,52198.52198_METSMANF (METSD Manufacturing),52198_METSMANF (METSD Manufacturing),Labor,0.0d,1.0,1.0,At Completion Units,6/21/2024,6/24/2024,0,0,0,0,0,0,0,0,0,0,1.03_Accelerator Systems (AS),1.03.06_AS Soft X-Ray Undulator (SXR) - SLAC,1.03.06.20_AS Soft X-Ray Undulator Installation - SLAC,1.03.06.20.02_SXR Phase Shifter Installation,AS_SXU_INST_2102_Remove Phase Shifter from Tunnel - PS_REFB_L,Manufacturing,,SLAC,Labor
105309,1.03,1.03.06,1.03.06.20,1.03.06.20.02,1.03.06.20.02,SXR Phase Shifter Installation,AS_SXU_INST_2012,Install Phase Shifter - PS_HE_20,1.0,1.0,1.0,1.0,01-06-25,01-06-25,"AS_SXU_MANF_6070: FS, PM_PAMM_09: FS",AS_SXU_INST_0720: FS,SLAC,0%,52191.52191_METSMET Metrology,52191_METSMET Metrology,Labor,0.0d,1.0,1.0,At Completion Units,1/6/2025,1/6/2025,0,0,0,0,0,0,0,0,0,0,1.03_Accelerator Systems (AS),1.03.06_AS Soft X-Ray Undulator (SXR) - SLAC,1.03.06.20_AS Soft X-Ray Undulator Installation - SLAC,1.03.06.20.02_SXR Phase Shifter Installation,AS_SXU_INST_2012_Install Phase Shifter - PS_HE_20,Metrology,,SLAC,Labor
105310,1.03,1.03.06,1.03.06.20,1.03.06.20.02,1.03.06.20.02,SXR Phase Shifter Installation,AS_SXU_INST_1912,Install Phase Shifter - PS_HE_19,1.0,1.0,1.0,1.0,11-05-24,11-06-24,"AS_SXU_MANF_6069: FS, PM_PAMM_08: FS",AS_SXU_INST_2220: FS,SLAC,0%,52191.52191_METSMET Metrology,52191_METSMET Metrology,Labor,0.0d,1.0,1.0,At Completion Units,11/5/2024,11/6/2024,0,0,0,0,0,0,0,0,0,0,1.03_Accelerator Systems (AS),1.03.06_AS Soft X-Ray Undulator (SXR) - SLAC,1.03.06.20_AS Soft X-Ray Undulator Installation - SLAC,1.03.06.20.02_SXR Phase Shifter Installation,AS_SXU_INST_1912_Install Phase Shifter - PS_HE_19,Metrology,,SLAC,Labor
105311,1.03,1.03.06,1.03.06.20,1.03.06.20.02,1.03.06.20.02,SXR Phase Shifter Installation,AS_SXU_INST_1812,Install Phase Shifter - PS_HE_18,1.0,2.0,2.0,2.0,11-05-24,11-06-24,"AS_SXU_MANF_6068: FS, PM_PAMM_08: FS",AS_SXU_INST_0620: FS,SLAC,0%,52190.52190_METSTP Tech Planning - Reinstated FY16,52190_METSTP Tech Planning - Reinstated FY16,Labor,0.0d,1.0,1.0,At Completion Units,11/5/2024,11/6/2024,0,0,0,0,0,0,0,0,0,0,1.03_Accelerator Systems (AS),1.03.06_AS Soft X-Ray Undulator (SXR) - SLAC,1.03.06.20_AS Soft X-Ray Undulator Installation - SLAC,1.03.06.20.02_SXR Phase Shifter Installation,AS_SXU_INST_1812_Install Phase Shifter - PS_HE_18,METSTPT Tech Planning,Tech,SLAC,Labor
105312,1.03,1.03.06,1.03.06.20,1.03.06.20.02,1.03.06.20.02,SXR Phase Shifter Installation,AS_SXU_INST_1812,Install Phase Shifter - PS_HE_18,1.0,3.0,3.0,3.0,11-05-24,11-06-24,"AS_SXU_MANF_6068: FS, PM_PAMM_08: FS",AS_SXU_INST_0620: FS,SLAC,0%,52152.52152_FAC Fleet,52152_FAC Fleet,Labor,0.0d,1.0,1.0,At Completion Units,11/5/2024,11/6/2024,0,0,0,0,0,0,0,0,0,0,1.03_Accelerator Systems (AS),1.03.06_AS Soft X-Ray Undulator (SXR) - SLAC,1.03.06.20_AS Soft X-Ray Undulator Installation - SLAC,1.03.06.20.02_SXR Phase Shifter Installation,AS_SXU_INST_1812_Install Phase Shifter - PS_HE_18,Support System,,SLAC,Labor
105313,1.03,1.03.06,1.03.06.20,1.03.06.20.02,1.03.06.20.02,SXR Phase Shifter Installation,AS_SXU_INST_1812,Install Phase Shifter - PS_HE_18,1.0,2.0,2.0,2.0,11-05-24,11-06-24,"AS_SXU_MANF_6068: FS, PM_PAMM_08: FS",AS_SXU_INST_0620: FS,SLAC,0%,52198.52198_METSMANF (METSD Manufacturing),52198_METSMANF (METSD Manufacturing),Labor,0.0d,1.0,1.0,At Completion Units,11/5/2024,11/6/2024,0,0,0,0,0,0,0,0,0,0,1.03_Accelerator Systems (AS),1.03.06_AS Soft X-Ray Undulator (SXR) - SLAC,1.03.06.20_AS Soft X-Ray Undulator Installation - SLAC,1.03.06.20.02_SXR Phase Shifter Installation,AS_SXU_INST_1812_Install Phase Shifter - PS_HE_18,Manufacturing,,SLAC,Labor
105314,1.03,1.03.06,1.03.06.20,1.03.06.20.02,1.03.06.20.02,SXR Phase Shifter Installation,AS_SXU_INST_1812,Install Phase Shifter - PS_HE_18,1.0,1.0,1.0,1.0,11-05-24,11-06-24,"AS_SXU_MANF_6068: FS, PM_PAMM_08: FS",AS_SXU_INST_0620: FS,SLAC,0%,52191.52191_METSMET Metrology,52191_METSMET Metrology,Labor,0.0d,1.0,1.0,At Completion Units,11/5/2024,11/6/2024,0,0,0,0,0,0,0,0,0,0,1.03_Accelerator Systems (AS),1.03.06_AS Soft X-Ray Undulator (SXR) - SLAC,1.03.06.20_AS Soft X-Ray Undulator Installation - SLAC,1.03.06.20.02_SXR Phase Shifter Installation,AS_SXU_INST_1812_Install Phase Shifter - PS_HE_18,Metrology,,SLAC,Labor
105315,1.03,1.03.06,1.03.06.20,1.03.06.20.02,1.03.06.20.02,SXR Phase Shifter Installation,AS_SXU_INST_1802,Remove Phase Shifter from Tunnel - PS_REFB_I,1.0,2.0,2.0,2.0,01-03-24,01-03-24,AS_SXU_INST_1900: FS,AS_SXU_MANF_6018: FS,SLAC,0%,52198.52198_METSMANF (METSD Manufacturing),52198_METSMANF (METSD Manufacturing),Labor,0.0d,1.0,1.0,At Completion Units,1/3/2024,1/3/2024,0,0,0,0,0,0,0,0,0,0,1.03_Accelerator Systems (AS),1.03.06_AS Soft X-Ray Undulator (SXR) - SLAC,1.03.06.20_AS Soft X-Ray Undulator Installation - SLAC,1.03.06.20.02_SXR Phase Shifter Installation,AS_SXU_INST_1802_Remove Phase Shifter from Tunnel - PS_REFB_I,Manufacturing,,SLAC,Labor
105316,1.03,1.03.06,1.03.06.20,1.03.06.20.02,1.03.06.20.02,SXR Phase Shifter Installation,AS_SXU_INST_1712,Install Phase Shifter - PS_HE_17,1.0,1.0,1.0,1.0,11-05-24,11-06-24,"AS_SXU_MANF_6067: FS, PM_PAMM_08: FS",AS_SXU_INST_0520: FS,SLAC,0%,52191.52191_METSMET Metrology,52191_METSMET Metrology,Labor,0.0d,1.0,1.0,At Completion Units,11/5/2024,11/6/2024,0,0,0,0,0,0,0,0,0,0,1.03_Accelerator Systems (AS),1.03.06_AS Soft X-Ray Undulator (SXR) - SLAC,1.03.06.20_AS Soft X-Ray Undulator Installation - SLAC,1.03.06.20.02_SXR Phase Shifter Installation,AS_SXU_INST_1712_Install Phase Shifter - PS_HE_17,Metrology,,SLAC,Labor
105317,1.03,1.03.06,1.03.06.20,1.03.06.20.02,1.03.06.20.02,SXR Phase Shifter Installation,AS_SXU_INST_1612,Install Phase Shifter - PS_HE_16,1.0,1.0,1.0,1.0,08-29-24,08-29-24,"AS_SXU_MANF_6066: FS, PM_PAMM_07: FS",AS_SXU_INST_2120: FS,SLAC,0%,52191.52191_METSMET Metrology,52191_METSMET Metrology,Labor,0.0d,1.0,1.0,At Completion Units,8/26/2024,8/27/2024,0,0,0,0,0,0,0,0,0,0,1.03_Accelerator Systems (AS),1.03.06_AS Soft X-Ray Undulator (SXR) - SLAC,1.03.06.20_AS Soft X-Ray Undulator Installation - SLAC,1.03.06.20.02_SXR Phase Shifter Installation,AS_SXU_INST_1612_Install Phase Shifter - PS_HE_16,Metrology,,SLAC,Labor
105318,1.03,1.03.06,1.03.06.20,1.03.06.20.02,1.03.06.20.02,SXR Phase Shifter Installation,AS_SXU_INST_1512,Install Phase Shifter - PS_HE_15,1.0,2.0,2.0,2.0,08-26-24,08-27-24,"AS_SXU_MANF_6065: FS, PM_PAMM_07: FS",AS_SXU_INST_0420: FS,SLAC,0%,52190.52190_METSTP Tech Planning - Reinstated FY16,52190_METSTP Tech Planning - Reinstated FY16,Labor,0.0d,1.0,1.0,At Completion Units,8/26/2024,8/27/2024,0,0,0,0,0,0,0,0,0,0,1.03_Accelerator Systems (AS),1.03.06_AS Soft X-Ray Undulator (SXR) - SLAC,1.03.06.20_AS Soft X-Ray Undulator Installation - SLAC,1.03.06.20.02_SXR Phase Shifter Installation,AS_SXU_INST_1512_Install Phase Shifter - PS_HE_15,METSTPT Tech Planning,Tech,SLAC,Labor
105319,1.03,1.03.06,1.03.06.20,1.03.06.20.02,1.03.06.20.02,SXR Phase Shifter Installation,AS_SXU_INST_1512,Install Phase Shifter - PS_HE_15,1.0,3.0,3.0,3.0,08-26-24,08-27-24,"AS_SXU_MANF_6065: FS, PM_PAMM_07: FS",AS_SXU_INST_0420: FS,SLAC,0%,52152.52152_FAC Fleet,52152_FAC Fleet,Labor,0.0d,1.0,1.0,At Completion Units,8/26/2024,8/27/2024,0,0,0,0,0,0,0,0,0,0,1.03_Accelerator Systems (AS),1.03.06_AS Soft X-Ray Undulator (SXR) - SLAC,1.03.06.20_AS Soft X-Ray Undulator Installation - SLAC,1.03.06.20.02_SXR Phase Shifter Installation,AS_SXU_INST_1512_Install Phase Shifter - PS_HE_15,Support System,,SLAC,Labor
105320,1.03,1.03.06,1.03.06.20,1.03.06.20.02,1.03.06.20.02,SXR Phase Shifter Installation,AS_SXU_INST_1512,Install Phase Shifter - PS_HE_15,1.0,2.0,2.0,2.0,08-26-24,08-27-24,"AS_SXU_MANF_6065: FS, PM_PAMM_07: FS",AS_SXU_INST_0420: FS,SLAC,0%,52198.52198_METSMANF (METSD Manufacturing),52198_METSMANF (METSD Manufacturing),Labor,0.0d,1.0,1.0,At Completion Units,8/26/2024,8/27/2024,0,0,0,0,0,0,0,0,0,0,1.03_Accelerator Systems (AS),1.03.06_AS Soft X-Ray Undulator (SXR) - SLAC,1.03.06.20_AS Soft X-Ray Undulator Installation - SLAC,1.03.06.20.02_SXR Phase Shifter Installation,AS_SXU_INST_1512_Install Phase Shifter - PS_HE_15,Manufacturing,,SLAC,Labor
105321,1.03,1.03.06,1.03.06.20,1.03.06.20.02,1.03.06.20.02,SXR Phase Shifter Installation,AS_SXU_INST_1512,Install Phase Shifter - PS_HE_15,1.0,1.0,1.0,1.0,08-26-24,08-27-24,"AS_SXU_MANF_6065: FS, PM_PAMM_07: FS",AS_SXU_INST_0420: FS,SLAC,0%,52191.52191_METSMET Metrology,52191_METSMET Metrology,Labor,0.0d,1.0,1.0,At Completion Units,8/26/2024,8/27/2024,0,0,0,0,0,0,0,0,0,0,1.03_Accelerator Systems (AS),1.03.06_AS Soft X-Ray Undulator (SXR) - SLAC,1.03.06.20_AS Soft X-Ray Undulator Installation - SLAC,1.03.06.20.02_SXR Phase Shifter Installation,AS_SXU_INST_1512_Install Phase Shifter - PS_HE_15,Metrology,,SLAC,Labor
105322,1.03,1.03.06,1.03.06.20,1.03.06.20.02,1.03.06.20.02,SXR Phase Shifter Installation,AS_SXU_INST_1502,Remove Phase Shifter from Tunnel - PS_REFB_F,1.0,2.0,2.0,2.0,11-22-23,11-27-23,AS_SXU_INST_1600: FS,AS_SXU_MANF_6015: FS,SLAC,0%,52198.52198_METSMANF (METSD Manufacturing),52198_METSMANF (METSD Manufacturing),Labor,0.0d,1.0,1.0,At Completion Units,11/22/2023,11/27/2023,0,0,0,0,0,0,0,0,0,0,1.03_Accelerator Systems (AS),1.03.06_AS Soft X-Ray Undulator (SXR) - SLAC,1.03.06.20_AS Soft X-Ray Undulator Installation - SLAC,1.03.06.20.02_SXR Phase Shifter Installation,AS_SXU_INST_1502_Remove Phase Shifter from Tunnel - PS_REFB_F,Manufacturing,,SLAC,Labor
105323,1.03,1.03.06,1.03.06.20,1.03.06.20.02,1.03.06.20.02,SXR Phase Shifter Installation,AS_SXU_INST_1412,Install Phase Shifter - PS_HE_14,1.0,1.0,1.0,1.0,08-26-24,08-27-24,"AS_SXU_MANF_6064: FS, PM_PAMM_07: FS",AS_SXU_INST_0320: FS,SLAC,0%,52191.52191_METSMET Metrology,52191_METSMET Metrology,Labor,0.0d,1.0,1.0,At Completion Units,8/26/2024,8/27/2024,0,0,0,0,0,0,0,0,0,0,1.03_Accelerator Systems (AS),1.03.06_AS Soft X-Ray Undulator (SXR) - SLAC,1.03.06.20_AS Soft X-Ray Undulator Installation - SLAC,1.03.06.20.02_SXR Phase Shifter Installation,AS_SXU_INST_1412_Install Phase Shifter - PS_HE_14,Metrology,,SLAC,Labor
105324,1.03,1.03.06,1.03.06.20,1.03.06.20.02,1.03.06.20.02,SXR Phase Shifter Installation,AS_SXU_INST_1312,Install Phase Shifter - PS_HE_13,1.0,1.0,1.0,1.0,08-08-24,08-08-24,"AS_SXU_MANF_6063: FS, PM_PAMM_06: FS",AS_SXU_INST_2020: FS,SLAC,0%,52191.52191_METSMET Metrology,52191_METSMET Metrology,Labor,0.0d,1.0,1.0,At Completion Units,6/20/2024,6/21/2024,0,0,0,0,0,0,0,0,0,0,1.03_Accelerator Systems (AS),1.03.06_AS Soft X-Ray Undulator (SXR) - SLAC,1.03.06.20_AS Soft X-Ray Undulator Installation - SLAC,1.03.06.20.02_SXR Phase Shifter Installation,AS_SXU_INST_1312_Install Phase Shifter - PS_HE_13,Metrology,,SLAC,Labor
105325,1.03,1.03.06,1.03.06.20,1.03.06.20.02,1.03.06.20.02,SXR Phase Shifter Installation,AS_SXU_INST_1212,Install Phase Shifter - PS_HE_12,1.0,2.0,2.0,2.0,08-01-24,08-01-24,"AS_SXU_MANF_6062: FS, PM_PAMM_06: FS",AS_SXU_INST_0220: FS,SLAC,0%,52190.52190_METSTP Tech Planning - Reinstated FY16,52190_METSTP Tech Planning - Reinstated FY16,Labor,0.0d,1.0,1.0,At Completion Units,6/20/2024,6/21/2024,0,0,0,0,0,0,0,0,0,0,1.03_Accelerator Systems (AS),1.03.06_AS Soft X-Ray Undulator (SXR) - SLAC,1.03.06.20_AS Soft X-Ray Undulator Installation - SLAC,1.03.06.20.02_SXR Phase Shifter Installation,AS_SXU_INST_1212_Install Phase Shifter - PS_HE_12,METSTPT Tech Planning,Tech,SLAC,Labor
105326,1.03,1.03.06,1.03.06.20,1.03.06.20.02,1.03.06.20.02,SXR Phase Shifter Installation,AS_SXU_INST_1212,Install Phase Shifter - PS_HE_12,1.0,3.0,3.0,3.0,08-01-24,08-01-24,"AS_SXU_MANF_6062: FS, PM_PAMM_06: FS",AS_SXU_INST_0220: FS,SLAC,0%,52152.52152_FAC Fleet,52152_FAC Fleet,Labor,0.0d,1.0,1.0,At Completion Units,6/20/2024,6/21/2024,0,0,0,0,0,0,0,0,0,0,1.03_Accelerator Systems (AS),1.03.06_AS Soft X-Ray Undulator (SXR) - SLAC,1.03.06.20_AS Soft X-Ray Undulator Installation - SLAC,1.03.06.20.02_SXR Phase Shifter Installation,AS_SXU_INST_1212_Install Phase Shifter - PS_HE_12,Support System,,SLAC,Labor
105327,1.03,1.03.06,1.03.06.20,1.03.06.20.02,1.03.06.20.02,SXR Phase Shifter Installation,AS_SXU_INST_1212,Install Phase Shifter - PS_HE_12,1.0,2.0,2.0,2.0,08-01-24,08-01-24,"AS_SXU_MANF_6062: FS, PM_PAMM_06: FS",AS_SXU_INST_0220: FS,SLAC,0%,52198.52198_METSMANF (METSD Manufacturing),52198_METSMANF (METSD Manufacturing),Labor,0.0d,1.0,1.0,At Completion Units,6/20/2024,6/21/2024,0,0,0,0,0,0,0,0,0,0,1.03_Accelerator Systems (AS),1.03.06_AS Soft X-Ray Undulator (SXR) - SLAC,1.03.06.20_AS Soft X-Ray Undulator Installation - SLAC,1.03.06.20.02_SXR Phase Shifter Installation,AS_SXU_INST_1212_Install Phase Shifter - PS_HE_12,Manufacturing,,SLAC,Labor
105328,1.03,1.03.06,1.03.06.20,1.03.06.20.02,1.03.06.20.02,SXR Phase Shifter Installation,AS_SXU_INST_1212,Install Phase Shifter - PS_HE_12,1.0,1.0,1.0,1.0,08-01-24,08-01-24,"AS_SXU_MANF_6062: FS, PM_PAMM_06: FS",AS_SXU_INST_0220: FS,SLAC,0%,52191.52191_METSMET Metrology,52191_METSMET Metrology,Labor,0.0d,1.0,1.0,At Completion Units,6/20/2024,6/21/2024,0,0,0,0,0,0,0,0,0,0,1.03_Accelerator Systems (AS),1.03.06_AS Soft X-Ray Undulator (SXR) - SLAC,1.03.06.20_AS Soft X-Ray Undulator Installation - SLAC,1.03.06.20.02_SXR Phase Shifter Installation,AS_SXU_INST_1212_Install Phase Shifter - PS_HE_12,Metrology,,SLAC,Labor
105329,1.03,1.03.06,1.03.06.20,1.03.06.20.02,1.03.06.20.02,SXR Phase Shifter Installation,AS_SXU_INST_1202,Remove Phase Shifter from Tunnel - PS_REFB_C,1.0,2.0,2.0,2.0,07-17-23,07-18-23,AS_SXU_INST_1300: FS,AS_SXU_MANF_6012: FS,SLAC,0%,52198.52198_METSMANF (METSD Manufacturing),52198_METSMANF (METSD Manufacturing),Labor,0.0d,1.0,1.0,At Completion Units,7/17/2023,7/18/2023,0,0,0,0,0,0,0,0,0,0,1.03_Accelerator Systems (AS),1.03.06_AS Soft X-Ray Undulator (SXR) - SLAC,1.03.06.20_AS Soft X-Ray Undulator Installation - SLAC,1.03.06.20.02_SXR Phase Shifter Installation,AS_SXU_INST_1202_Remove Phase Shifter from Tunnel - PS_REFB_C,Manufacturing,,SLAC,Labor
105330,1.03,1.03.06,1.03.06.20,1.03.06.20.02,1.03.06.20.02,SXR Phase Shifter Installation,AS_SXU_INST_1112,Install Phase Shifter - PS_HE_11,1.0,1.0,1.0,1.0,07-25-24,07-25-24,"AS_SXU_MANF_6061: FS, PM_PAMM_06: FS",AS_SXU_INST_0120: FS,SLAC,0%,52191.52191_METSMET Metrology,52191_METSMET Metrology,Labor,0.0d,1.0,1.0,At Completion Units,6/20/2024,6/21/2024,0,0,0,0,0,0,0,0,0,0,1.03_Accelerator Systems (AS),1.03.06_AS Soft X-Ray Undulator (SXR) - SLAC,1.03.06.20_AS Soft X-Ray Undulator Installation - SLAC,1.03.06.20.02_SXR Phase Shifter Installation,AS_SXU_INST_1112_Install Phase Shifter - PS_HE_11,Metrology,,SLAC,Labor
105331,1.03,1.03.06,1.03.06.20,1.03.06.20.02,1.03.06.20.02,SXR Phase Shifter Installation,AS_SXU_INST_1012,Install and Align Phase Shifter - PS_HE_10,1.0,1.0,1.0,1.0,07-18-24,07-18-24,"AS_SXU_MANF_6060: FS, PM_PAMM_05: FS",AS_SXU_INST_1920: FS,SLAC,0%,52191.52191_METSMET Metrology,52191_METSMET Metrology,Labor,0.0d,1.0,1.0,At Completion Units,4/17/2024,4/18/2024,0,0,0,0,0,0,0,0,0,0,1.03_Accelerator Systems (AS),1.03.06_AS Soft X-Ray Undulator (SXR) - SLAC,1.03.06.20_AS Soft X-Ray Undulator Installation - SLAC,1.03.06.20.02_SXR Phase Shifter Installation,AS_SXU_INST_1012_Install and Align Phase Shifter - PS_HE_10,Metrology,,SLAC,Labor
105332,1.03,1.03.06,1.03.06.20,1.03.06.20.02,1.03.06.20.02,SXR Phase Shifter Installation,AS_SXU_INST_0912,Install Phase Shifter - PS_HE_9,1.0,2.0,2.0,2.0,07-11-24,07-11-24,"AS_SXU_MANF_6059: FS, PM_PAMM_05: FS",AS_SXU_INST_1820: FS,SLAC,0%,52190.52190_METSTP Tech Planning - Reinstated FY16,52190_METSTP Tech Planning - Reinstated FY16,Labor,0.0d,1.0,1.0,At Completion Units,4/17/2024,4/18/2024,0,0,0,0,0,0,0,0,0,0,1.03_Accelerator Systems (AS),1.03.06_AS Soft X-Ray Undulator (SXR) - SLAC,1.03.06.20_AS Soft X-Ray Undulator Installation - SLAC,1.03.06.20.02_SXR Phase Shifter Installation,AS_SXU_INST_0912_Install Phase Shifter - PS_HE_9,METSTPT Tech Planning,Tech,SLAC,Labor
105333,1.03,1.03.06,1.03.06.20,1.03.06.20.02,1.03.06.20.02,SXR Phase Shifter Installation,AS_SXU_INST_0912,Install Phase Shifter - PS_HE_9,1.0,3.0,3.0,3.0,07-11-24,07-11-24,"AS_SXU_MANF_6059: FS, PM_PAMM_05: FS",AS_SXU_INST_1820: FS,SLAC,0%,52152.52152_FAC Fleet,52152_FAC Fleet,Labor,0.0d,1.0,1.0,At Completion Units,4/17/2024,4/18/2024,0,0,0,0,0,0,0,0,0,0,1.03_Accelerator Systems (AS),1.03.06_AS Soft X-Ray Undulator (SXR) - SLAC,1.03.06.20_AS Soft X-Ray Undulator Installation - SLAC,1.03.06.20.02_SXR Phase Shifter Installation,AS_SXU_INST_0912_Install Phase Shifter - PS_HE_9,Support System,,SLAC,Labor
105334,1.03,1.03.06,1.03.06.20,1.03.06.20.02,1.03.06.20.02,SXR Phase Shifter Installation,AS_SXU_INST_0912,Install Phase Shifter - PS_HE_9,1.0,2.0,2.0,2.0,07-11-24,07-11-24,"AS_SXU_MANF_6059: FS, PM_PAMM_05: FS",AS_SXU_INST_1820: FS,SLAC,0%,52198.52198_METSMANF (METSD Manufacturing),52198_METSMANF (METSD Manufacturing),Labor,0.0d,1.0,1.0,At Completion Units,4/17/2024,4/18/2024,0,0,0,0,0,0,0,0,0,0,1.03_Accelerator Systems (AS),1.03.06_AS Soft X-Ray Undulator (SXR) - SLAC,1.03.06.20_AS Soft X-Ray Undulator Installation - SLAC,1.03.06.20.02_SXR Phase Shifter Installation,AS_SXU_INST_0912_Install Phase Shifter - PS_HE_9,Manufacturing,,SLAC,Labor
105335,1.03,1.03.06,1.03.06.20,1.03.06.20.02,1.03.06.20.02,SXR Phase Shifter Installation,AS_SXU_INST_0912,Install Phase Shifter - PS_HE_9,1.0,1.0,1.0,1.0,07-11-24,07-11-24,"AS_SXU_MANF_6059: FS, PM_PAMM_05: FS",AS_SXU_INST_1820: FS,SLAC,0%,52191.52191_METSMET Metrology,52191_METSMET Metrology,Labor,0.0d,1.0,1.0,At Completion Units,4/17/2024,4/18/2024,0,0,0,0,0,0,0,0,0,0,1.03_Accelerator Systems (AS),1.03.06_AS Soft X-Ray Undulator (SXR) - SLAC,1.03.06.20_AS Soft X-Ray Undulator Installation - SLAC,1.03.06.20.02_SXR Phase Shifter Installation,AS_SXU_INST_0912_Install Phase Shifter - PS_HE_9,Metrology,,SLAC,Labor
105336,1.03,1.03.06,1.03.06.20,1.03.06.20.02,1.03.06.20.02,SXR Phase Shifter Installation,AS_SXU_INST_0812,Install Phase Shifter - PS_HE_8,1.0,1.0,1.0,1.0,07-03-24,07-03-24,"AS_SXU_MANF_6058: FS, PM_PAMM_04: FS",AS_SXU_INST_1720: FS,SLAC,0%,52191.52191_METSMET Metrology,52191_METSMET Metrology,Labor,0.0d,1.0,1.0,At Completion Units,1/2/2024,1/2/2024,0,0,0,0,0,0,0,0,0,0,1.03_Accelerator Systems (AS),1.03.06_AS Soft X-Ray Undulator (SXR) - SLAC,1.03.06.20_AS Soft X-Ray Undulator Installation - SLAC,1.03.06.20.02_SXR Phase Shifter Installation,AS_SXU_INST_0812_Install Phase Shifter - PS_HE_8,Metrology,,SLAC,Labor
105337,1.03,1.03.06,1.03.06.20,1.03.06.20.02,1.03.06.20.02,SXR Phase Shifter Installation,AS_SXU_INST_0712,Install Phase Shifter - PS_HE_7,1.0,1.0,1.0,1.0,06-26-24,06-26-24,"AS_SXU_MANF_6057: FS, PM_PAMM_04: FS",AS_SXU_INST_1620: FS,SLAC,0%,52191.52191_METSMET Metrology,52191_METSMET Metrology,Labor,0.0d,1.0,1.0,At Completion Units,1/2/2024,1/2/2024,0,0,0,0,0,0,0,0,0,0,1.03_Accelerator Systems (AS),1.03.06_AS Soft X-Ray Undulator (SXR) - SLAC,1.03.06.20_AS Soft X-Ray Undulator Installation - SLAC,1.03.06.20.02_SXR Phase Shifter Installation,AS_SXU_INST_0712_Install Phase Shifter - PS_HE_7,Metrology,,SLAC,Labor
105338,1.03,1.03.06,1.03.06.20,1.03.06.20.02,1.03.06.20.02,SXR Phase Shifter Installation,AS_SXU_INST_0612,Install Phase Shifter - PS_HE_6,1.0,2.0,2.0,2.0,06-19-24,06-19-24,"AS_SXU_MANF_6056: FS, PM_PAMM_03: FS",AS_SXU_INST_1520: FS,SLAC,0%,52190.52190_METSTP Tech Planning - Reinstated FY16,52190_METSTP Tech Planning - Reinstated FY16,Labor,0.0d,1.0,1.0,At Completion Units,11/21/2023,11/22/2023,0,0,0,0,0,0,0,0,0,0,1.03_Accelerator Systems (AS),1.03.06_AS Soft X-Ray Undulator (SXR) - SLAC,1.03.06.20_AS Soft X-Ray Undulator Installation - SLAC,1.03.06.20.02_SXR Phase Shifter Installation,AS_SXU_INST_0612_Install Phase Shifter - PS_HE_6,METSTPT Tech Planning,Tech,SLAC,Labor
105339,1.03,1.03.06,1.03.06.20,1.03.06.20.02,1.03.06.20.02,SXR Phase Shifter Installation,AS_SXU_INST_0612,Install Phase Shifter - PS_HE_6,1.0,3.0,3.0,3.0,06-19-24,06-19-24,"AS_SXU_MANF_6056: FS, PM_PAMM_03: FS",AS_SXU_INST_1520: FS,SLAC,0%,52152.52152_FAC Fleet,52152_FAC Fleet,Labor,0.0d,1.0,1.0,At Completion Units,11/21/2023,11/22/2023,0,0,0,0,0,0,0,0,0,0,1.03_Accelerator Systems (AS),1.03.06_AS Soft X-Ray Undulator (SXR) - SLAC,1.03.06.20_AS Soft X-Ray Undulator Installation - SLAC,1.03.06.20.02_SXR Phase Shifter Installation,AS_SXU_INST_0612_Install Phase Shifter - PS_HE_6,Support System,,SLAC,Labor
105340,1.03,1.03.06,1.03.06.20,1.03.06.20.02,1.03.06.20.02,SXR Phase Shifter Installation,AS_SXU_INST_0612,Install Phase Shifter - PS_HE_6,1.0,2.0,2.0,2.0,06-19-24,06-19-24,"AS_SXU_MANF_6056: FS, PM_PAMM_03: FS",AS_SXU_INST_1520: FS,SLAC,0%,52198.52198_METSMANF (METSD Manufacturing),52198_METSMANF (METSD Manufacturing),Labor,0.0d,1.0,1.0,At Completion Units,11/21/2023,11/22/2023,0,0,0,0,0,0,0,0,0,0,1.03_Accelerator Systems (AS),1.03.06_AS Soft X-Ray Undulator (SXR) - SLAC,1.03.06.20_AS Soft X-Ray Undulator Installation - SLAC,1.03.06.20.02_SXR Phase Shifter Installation,AS_SXU_INST_0612_Install Phase Shifter - PS_HE_6,Manufacturing,,SLAC,Labor
105341,1.03,1.03.06,1.03.06.20,1.03.06.20.02,1.03.06.20.02,SXR Phase Shifter Installation,AS_SXU_INST_0612,Install Phase Shifter - PS_HE_6,1.0,1.0,1.0,1.0,06-19-24,06-19-24,"AS_SXU_MANF_6056: FS, PM_PAMM_03: FS",AS_SXU_INST_1520: FS,SLAC,0%,52191.52191_METSMET Metrology,52191_METSMET Metrology,Labor,0.0d,1.0,1.0,At Completion Units,11/21/2023,11/22/2023,0,0,0,0,0,0,0,0,0,0,1.03_Accelerator Systems (AS),1.03.06_AS Soft X-Ray Undulator (SXR) - SLAC,1.03.06.20_AS Soft X-Ray Undulator Installation - SLAC,1.03.06.20.02_SXR Phase Shifter Installation,AS_SXU_INST_0612_Install Phase Shifter - PS_HE_6,Metrology,,SLAC,Labor
105342,1.03,1.03.06,1.03.06.20,1.03.06.20.02,1.03.06.20.02,SXR Phase Shifter Installation,AS_SXU_INST_0512,Install Phase Shifter - PS_HE_5,1.0,1.0,1.0,1.0,06-12-24,06-12-24,"AS_SXU_MANF_6055: FS, PM_PAMM_03: FS",AS_SXU_INST_1420: FS,SLAC,0%,52191.52191_METSMET Metrology,52191_METSMET Metrology,Labor,0.0d,1.0,1.0,At Completion Units,11/21/2023,11/22/2023,0,0,0,0,0,0,0,0,0,0,1.03_Accelerator Systems (AS),1.03.06_AS Soft X-Ray Undulator (SXR) - SLAC,1.03.06.20_AS Soft X-Ray Undulator Installation - SLAC,1.03.06.20.02_SXR Phase Shifter Installation,AS_SXU_INST_0512_Install Phase Shifter - PS_HE_5,Metrology,,SLAC,Labor
105343,1.03,1.03.06,1.03.06.20,1.03.06.20.02,1.03.06.20.02,SXR Phase Shifter Installation,AS_SXU_INST_0412,Install Phase Shifter - PS_HE_4,1.0,1.0,1.0,1.0,06-05-24,06-05-24,"AS_SXU_MANF_6054: FS, PM_PAMM_02: FS",AS_SXU_INST_1320: FS,SLAC,0%,52191.52191_METSMET Metrology,52191_METSMET Metrology,Labor,0.0d,1.0,1.0,At Completion Units,10/12/2023,10/13/2023,0,0,0,0,0,0,0,0,0,0,1.03_Accelerator Systems (AS),1.03.06_AS Soft X-Ray Undulator (SXR) - SLAC,1.03.06.20_AS Soft X-Ray Undulator Installation - SLAC,1.03.06.20.02_SXR Phase Shifter Installation,AS_SXU_INST_0412_Install Phase Shifter - PS_HE_4,Metrology,,SLAC,Labor
105344,1.03,1.03.06,1.03.06.20,1.03.06.20.02,1.03.06.20.02,SXR Phase Shifter Installation,AS_SXU_INST_0312,Install Phase Shifter - PS_HE_3,1.0,2.0,2.0,2.0,05-29-24,05-29-24,"AS_SXU_MANF_6053: FS, PM_PAMM_02: FS",AS_SXU_INST_1220: FS,SLAC,0%,52190.52190_METSTP Tech Planning - Reinstated FY16,52190_METSTP Tech Planning - Reinstated FY16,Labor,0.0d,1.0,1.0,At Completion Units,10/12/2023,10/13/2023,0,0,0,0,0,0,0,0,0,0,1.03_Accelerator Systems (AS),1.03.06_AS Soft X-Ray Undulator (SXR) - SLAC,1.03.06.20_AS Soft X-Ray Undulator Installation - SLAC,1.03.06.20.02_SXR Phase Shifter Installation,AS_SXU_INST_0312_Install Phase Shifter - PS_HE_3,METSTPT Tech Planning,Tech,SLAC,Labor
105345,1.03,1.03.06,1.03.06.20,1.03.06.20.02,1.03.06.20.02,SXR Phase Shifter Installation,AS_SXU_INST_0312,Install Phase Shifter - PS_HE_3,1.0,3.0,3.0,3.0,05-29-24,05-29-24,"AS_SXU_MANF_6053: FS, PM_PAMM_02: FS",AS_SXU_INST_1220: FS,SLAC,0%,52152.52152_FAC Fleet,52152_FAC Fleet,Labor,0.0d,1.0,1.0,At Completion Units,10/12/2023,10/13/2023,0,0,0,0,0,0,0,0,0,0,1.03_Accelerator Systems (AS),1.03.06_AS Soft X-Ray Undulator (SXR) - SLAC,1.03.06.20_AS Soft X-Ray Undulator Installation - SLAC,1.03.06.20.02_SXR Phase Shifter Installation,AS_SXU_INST_0312_Install Phase Shifter - PS_HE_3,Support System,,SLAC,Labor
105346,1.03,1.03.06,1.03.06.20,1.03.06.20.02,1.03.06.20.02,SXR Phase Shifter Installation,AS_SXU_INST_0312,Install Phase Shifter - PS_HE_3,1.0,2.0,2.0,2.0,05-29-24,05-29-24,"AS_SXU_MANF_6053: FS, PM_PAMM_02: FS",AS_SXU_INST_1220: FS,SLAC,0%,52198.52198_METSMANF (METSD Manufacturing),52198_METSMANF (METSD Manufacturing),Labor,0.0d,1.0,1.0,At Completion Units,10/12/2023,10/13/2023,0,0,0,0,0,0,0,0,0,0,1.03_Accelerator Systems (AS),1.03.06_AS Soft X-Ray Undulator (SXR) - SLAC,1.03.06.20_AS Soft X-Ray Undulator Installation - SLAC,1.03.06.20.02_SXR Phase Shifter Installation,AS_SXU_INST_0312_Install Phase Shifter - PS_HE_3,Manufacturing,,SLAC,Labor
105347,1.03,1.03.06,1.03.06.20,1.03.06.20.02,1.03.06.20.02,SXR Phase Shifter Installation,AS_SXU_INST_0312,Install Phase Shifter - PS_HE_3,1.0,1.0,1.0,1.0,05-29-24,05-29-24,"AS_SXU_MANF_6053: FS, PM_PAMM_02: FS",AS_SXU_INST_1220: FS,SLAC,0%,52191.52191_METSMET Metrology,52191_METSMET Metrology,Labor,0.0d,1.0,1.0,At Completion Units,10/12/2023,10/13/2023,0,0,0,0,0,0,0,0,0,0,1.03_Accelerator Systems (AS),1.03.06_AS Soft X-Ray Undulator (SXR) - SLAC,1.03.06.20_AS Soft X-Ray Undulator Installation - SLAC,1.03.06.20.02_SXR Phase Shifter Installation,AS_SXU_INST_0312_Install Phase Shifter - PS_HE_3,Metrology,,SLAC,Labor
105348,1.03,1.03.06,1.03.06.20,1.03.06.20.02,1.03.06.20.02,SXR Phase Shifter Installation,AS_SXU_INST_0212,Install Phase Shifter - PS_HE_2,1.0,1.0,1.0,1.0,05-21-24,05-21-24,"AS_SXU_MANF_6052: FS, PM_PAMM_02: FS",AS_SXU_INST_1120: FS,SLAC,0%,52191.52191_METSMET Metrology,52191_METSMET Metrology,Labor,0.0d,1.0,1.0,At Completion Units,10/12/2023,10/13/2023,0,0,0,0,0,0,0,0,0,0,1.03_Accelerator Systems (AS),1.03.06_AS Soft X-Ray Undulator (SXR) - SLAC,1.03.06.20_AS Soft X-Ray Undulator Installation - SLAC,1.03.06.20.02_SXR Phase Shifter Installation,AS_SXU_INST_0212_Install Phase Shifter - PS_HE_2,Metrology,,SLAC,Labor
105349,1.03,1.03.06,1.03.06.20,1.03.06.20.02,1.03.06.20.02,SXR Phase Shifter Installation,AS_SXU_INST_0112,Install Phase Shifter - PS_HE_1,1.0,1.0,1.0,1.0,05-14-24,05-14-24,"AS_SXU_MANF_6051: FS, PM_PAMM_01: FS",AS_SXU_INST_1020: FS,SLAC,0%,52191.52191_METSMET Metrology,52191_METSMET Metrology,Labor,0.0d,1.0,1.0,At Completion Units,8/22/2023,8/22/2023,0,0,0,0,0,0,0,0,0,0,1.03_Accelerator Systems (AS),1.03.06_AS Soft X-Ray Undulator (SXR) - SLAC,1.03.06.20_AS Soft X-Ray Undulator Installation - SLAC,1.03.06.20.02_SXR Phase Shifter Installation,AS_SXU_INST_0112_Install Phase Shifter - PS_HE_1,Metrology,,SLAC,Labor
105669,1.03,1.03.06,1.03.06.20,1.03.06.20.03,1.03.06.20.03,SXR Undulator Installation,AS_SXU_INST_3100,Remove Undulator from Tunnel - SXU_REFB_V,1.0,15.0,15.0,15.0,03-26-25,03-27-25,0,0,SLAC,0%,52152.52152_FAC Fleet,52152_FAC Fleet,Labor,0.0d,1.0,1.0,At Completion Units,3/26/2025,3/27/2025,0,0,0,0,0,0,0,0,0,0,1.03_Accelerator Systems (AS),1.03.06_AS Soft X-Ray Undulator (SXR) - SLAC,1.03.06.20_AS Soft X-Ray Undulator Installation - SLAC,1.03.06.20.03_SXR Undulator Installation,AS_SXU_INST_3100_Remove Undulator from Tunnel - SXU_REFB_V,Support System,,SLAC,Labor
105670,1.03,1.03.06,1.03.06.20,1.03.06.20.03,1.03.06.20.03,SXR Undulator Installation,AS_SXU_INST_3100,Remove Undulator from Tunnel - SXU_REFB_V,1.0,6.0,6.0,6.0,03-26-25,03-27-25,0,0,SLAC,0%,52169.52169_METS Mechanical Engineer,52169_METS Mechanical Engineer,Labor,0.0d,1.0,1.0,At Completion Units,3/26/2025,3/27/2025,0,0,0,0,0,0,0,0,0,0,1.03_Accelerator Systems (AS),1.03.06_AS Soft X-Ray Undulator (SXR) - SLAC,1.03.06.20_AS Soft X-Ray Undulator Installation - SLAC,1.03.06.20.03_SXR Undulator Installation,AS_SXU_INST_3100_Remove Undulator from Tunnel - SXU_REFB_V,Mechanical,,SLAC,Labor
105671,1.03,1.03.06,1.03.06.20,1.03.06.20.03,1.03.06.20.03,SXR Undulator Installation,AS_SXU_INST_3100,Remove Undulator from Tunnel - SXU_REFB_V,1.0,40.0,40.0,40.0,03-26-25,03-27-25,0,0,SLAC,0%,52198.52198_METSMANF (METSD Manufacturing),52198_METSMANF (METSD Manufacturing),Labor,0.0d,1.0,1.0,At Completion Units,3/26/2025,3/27/2025,0,0,0,0,0,0,0,0,0,0,1.03_Accelerator Systems (AS),1.03.06_AS Soft X-Ray Undulator (SXR) - SLAC,1.03.06.20_AS Soft X-Ray Undulator Installation - SLAC,1.03.06.20.03_SXR Undulator Installation,AS_SXU_INST_3100_Remove Undulator from Tunnel - SXU_REFB_V,Manufacturing,,SLAC,Labor
105672,1.03,1.03.06,1.03.06.20,1.03.06.20.03,1.03.06.20.03,SXR Undulator Installation,AS_SXU_INST_3000,Remove Undulator from Tunnel - SXU_REFB_U,1.0,15.0,15.0,15.0,02-10-25,02-11-25,0,0,SLAC,0%,52152.52152_FAC Fleet,52152_FAC Fleet,Labor,0.0d,1.0,1.0,At Completion Units,2/10/2025,2/11/2025,0,0,0,0,0,0,0,0,0,0,1.03_Accelerator Systems (AS),1.03.06_AS Soft X-Ray Undulator (SXR) - SLAC,1.03.06.20_AS Soft X-Ray Undulator Installation - SLAC,1.03.06.20.03_SXR Undulator Installation,AS_SXU_INST_3000_Remove Undulator from Tunnel - SXU_REFB_U,Support System,,SLAC,Labor
105673,1.03,1.03.06,1.03.06.20,1.03.06.20.03,1.03.06.20.03,SXR Undulator Installation,AS_SXU_INST_3000,Remove Undulator from Tunnel - SXU_REFB_U,1.0,6.0,6.0,6.0,02-10-25,02-11-25,0,0,SLAC,0%,52169.52169_METS Mechanical Engineer,52169_METS Mechanical Engineer,Labor,0.0d,1.0,1.0,At Completion Units,2/10/2025,2/11/2025,0,0,0,0,0,0,0,0,0,0,1.03_Accelerator Systems (AS),1.03.06_AS Soft X-Ray Undulator (SXR) - SLAC,1.03.06.20_AS Soft X-Ray Undulator Installation - SLAC,1.03.06.20.03_SXR Undulator Installation,AS_SXU_INST_3000_Remove Undulator from Tunnel - SXU_REFB_U,Mechanical,,SLAC,Labor
105674,1.03,1.03.06,1.03.06.20,1.03.06.20.03,1.03.06.20.03,SXR Undulator Installation,AS_SXU_INST_3000,Remove Undulator from Tunnel - SXU_REFB_U,1.0,40.0,40.0,40.0,02-10-25,02-11-25,0,0,SLAC,0%,52198.52198_METSMANF (METSD Manufacturing),52198_METSMANF (METSD Manufacturing),Labor,0.0d,1.0,1.0,At Completion Units,2/10/2025,2/11/2025,0,0,0,0,0,0,0,0,0,0,1.03_Accelerator Systems (AS),1.03.06_AS Soft X-Ray Undulator (SXR) - SLAC,1.03.06.20_AS Soft X-Ray Undulator Installation - SLAC,1.03.06.20.03_SXR Undulator Installation,AS_SXU_INST_3000_Remove Undulator from Tunnel - SXU_REFB_U,Manufacturing,,SLAC,Labor
105675,1.03,1.03.06,1.03.06.20,1.03.06.20.03,1.03.06.20.03,SXR Undulator Installation,AS_SXU_INST_3010,Install Undulator - SXU_HE_30,1.0,2.0,2.0,2.0,03-10-26,03-10-26,0,0,SLAC,0%,52190.52190_METSTP Tech Planning - Reinstated FY16,52190_METSTP Tech Planning - Reinstated FY16,Labor,0.0d,1.0,1.0,At Completion Units,7/15/2025,7/15/2025,0,0,0,0,0,0,0,0,0,0,1.03_Accelerator Systems (AS),1.03.06_AS Soft X-Ray Undulator (SXR) - SLAC,1.03.06.20_AS Soft X-Ray Undulator Installation - SLAC,1.03.06.20.03_SXR Undulator Installation,AS_SXU_INST_3010_Install Undulator - SXU_HE_30,METSTPT Tech Planning,Tech,SLAC,Labor
105676,1.03,1.03.06,1.03.06.20,1.03.06.20.03,1.03.06.20.03,SXR Undulator Installation,AS_SXU_INST_3010,Install Undulator - SXU_HE_30,1.0,12.0,12.0,12.0,03-10-26,03-10-26,0,0,SLAC,0%,52152.52152_FAC Fleet,52152_FAC Fleet,Labor,0.0d,1.0,1.0,At Completion Units,7/15/2025,7/15/2025,0,0,0,0,0,0,0,0,0,0,1.03_Accelerator Systems (AS),1.03.06_AS Soft X-Ray Undulator (SXR) - SLAC,1.03.06.20_AS Soft X-Ray Undulator Installation - SLAC,1.03.06.20.03_SXR Undulator Installation,AS_SXU_INST_3010_Install Undulator - SXU_HE_30,Support System,,SLAC,Labor
105677,1.03,1.03.06,1.03.06.20,1.03.06.20.03,1.03.06.20.03,SXR Undulator Installation,AS_SXU_INST_3005,PAMM Management - SXU_HE_30,3.0,2.0,2.0,2.0,03-10-26,03-12-26,0,0,SLAC,0%,52155.52155_Health Physics Technician III,52155_Health Physics Technician III,Labor,0.0d,3.0,3.0,At Completion Units,7/15/2025,7/17/2025,0,0,0,0,0,0,0,0,0,0,1.03_Accelerator Systems (AS),1.03.06_AS Soft X-Ray Undulator (SXR) - SLAC,1.03.06.20_AS Soft X-Ray Undulator Installation - SLAC,1.03.06.20.03_SXR Undulator Installation,AS_SXU_INST_3005_PAMM Management - SXU_HE_30,Support System,Tech,SLAC,Labor
105678,1.03,1.03.06,1.03.06.20,1.03.06.20.03,1.03.06.20.03,SXR Undulator Installation,AS_SXU_INST_3030,Pre-beam checkout - SXU_HE_30,1.0,5.0,5.0,5.0,03-12-26,03-12-26,0,0,SLAC,0%,52213.52213_EEDHW (Electronics & Engineering Div - HW Engr),52213_EEDHW (Electronics & Engineering Div - HW Engr),Labor,0.0d,1.0,1.0,At Completion Units,7/17/2025,7/17/2025,0,0,0,0,0,0,0,0,0,0,1.03_Accelerator Systems (AS),1.03.06_AS Soft X-Ray Undulator (SXR) - SLAC,1.03.06.20_AS Soft X-Ray Undulator Installation - SLAC,1.03.06.20.03_SXR Undulator Installation,AS_SXU_INST_3030_Pre-beam checkout - SXU_HE_30,Electrical,,SLAC,Labor
105679,1.03,1.03.06,1.03.06.20,1.03.06.20.03,1.03.06.20.03,SXR Undulator Installation,AS_SXU_INST_3030,Pre-beam checkout - SXU_HE_30,1.0,2.0,2.0,2.0,03-12-26,03-12-26,0,0,SLAC,0%,52169.52169_METS Mechanical Engineer,52169_METS Mechanical Engineer,Labor,0.0d,1.0,1.0,At Completion Units,7/17/2025,7/17/2025,0,0,0,0,0,0,0,0,0,0,1.03_Accelerator Systems (AS),1.03.06_AS Soft X-Ray Undulator (SXR) - SLAC,1.03.06.20_AS Soft X-Ray Undulator Installation - SLAC,1.03.06.20.03_SXR Undulator Installation,AS_SXU_INST_3030_Pre-beam checkout - SXU_HE_30,Mechanical,,SLAC,Labor
105680,1.03,1.03.06,1.03.06.20,1.03.06.20.03,1.03.06.20.03,SXR Undulator Installation,AS_SXU_INST_3030,Pre-beam checkout - SXU_HE_30,1.0,8.0,8.0,8.0,03-12-26,03-12-26,0,0,SLAC,0%,0106.0106_Staff Scientist,0106_Staff Scientist,Labor,0.0d,1.0,1.0,At Completion Units,7/17/2025,7/17/2025,0,0,0,0,0,0,0,0,0,0,1.03_Accelerator Systems (AS),1.03.06_AS Soft X-Ray Undulator (SXR) - SLAC,1.03.06.20_AS Soft X-Ray Undulator Installation - SLAC,1.03.06.20.03_SXR Undulator Installation,AS_SXU_INST_3030_Pre-beam checkout - SXU_HE_30,Scientist,,SLAC,Labor
105681,1.03,1.03.06,1.03.06.20,1.03.06.20.03,1.03.06.20.03,SXR Undulator Installation,AS_SXU_INST_3030,Pre-beam checkout - SXU_HE_30,1.0,12.0,12.0,12.0,03-12-26,03-12-26,0,0,SLAC,0%,52191.52191_METSMET Metrology,52191_METSMET Metrology,Labor,0.0d,1.0,1.0,At Completion Units,7/17/2025,7/17/2025,0,0,0,0,0,0,0,0,0,0,1.03_Accelerator Systems (AS),1.03.06_AS Soft X-Ray Undulator (SXR) - SLAC,1.03.06.20_AS Soft X-Ray Undulator Installation - SLAC,1.03.06.20.03_SXR Undulator Installation,AS_SXU_INST_3030_Pre-beam checkout - SXU_HE_30,Metrology,,SLAC,Labor
105682,1.03,1.03.06,1.03.06.20,1.03.06.20.03,1.03.06.20.03,SXR Undulator Installation,AS_SXU_INST_3020,Perform technical checkouts - SXU_HE_30,1.0,4.0,4.0,4.0,03-11-26,03-11-26,0,0,SLAC,0%,52211.52211_EEDOPSE (Electronics & Engineering Div - Ops & PSE),52211_EEDOPSE (Electronics & Engineering Div - Ops & PSE),Labor,0.0d,1.0,1.0,At Completion Units,7/16/2025,7/16/2025,0,0,0,0,0,0,0,0,0,0,1.03_Accelerator Systems (AS),1.03.06_AS Soft X-Ray Undulator (SXR) - SLAC,1.03.06.20_AS Soft X-Ray Undulator Installation - SLAC,1.03.06.20.03_SXR Undulator Installation,AS_SXU_INST_3020_Perform technical checkouts - SXU_HE_30,Electrical,,SLAC,Labor
105683,1.03,1.03.06,1.03.06.20,1.03.06.20.03,1.03.06.20.03,SXR Undulator Installation,AS_SXU_INST_3020,Perform technical checkouts - SXU_HE_30,1.0,8.0,8.0,8.0,03-11-26,03-11-26,0,0,SLAC,0%,52127.52127_Research Electrical & SW Engineer,52127_Research Electrical & SW Engineer,Labor,0.0d,1.0,1.0,At Completion Units,7/16/2025,7/16/2025,0,0,0,0,0,0,0,0,0,0,1.03_Accelerator Systems (AS),1.03.06_AS Soft X-Ray Undulator (SXR) - SLAC,1.03.06.20_AS Soft X-Ray Undulator Installation - SLAC,1.03.06.20.03_SXR Undulator Installation,AS_SXU_INST_3020_Perform technical checkouts - SXU_HE_30,Electrical,,SLAC,Labor
105684,1.03,1.03.06,1.03.06.20,1.03.06.20.03,1.03.06.20.03,SXR Undulator Installation,AS_SXU_INST_3020,Perform technical checkouts - SXU_HE_30,1.0,20.0,20.0,20.0,03-11-26,03-11-26,0,0,SLAC,0%,52213.52213_EEDHW (Electronics & Engineering Div - HW Engr),52213_EEDHW (Electronics & Engineering Div - HW Engr),Labor,0.0d,1.0,1.0,At Completion Units,7/16/2025,7/16/2025,0,0,0,0,0,0,0,0,0,0,1.03_Accelerator Systems (AS),1.03.06_AS Soft X-Ray Undulator (SXR) - SLAC,1.03.06.20_AS Soft X-Ray Undulator Installation - SLAC,1.03.06.20.03_SXR Undulator Installation,AS_SXU_INST_3020_Perform technical checkouts - SXU_HE_30,Electrical,,SLAC,Labor
105685,1.03,1.03.06,1.03.06.20,1.03.06.20.03,1.03.06.20.03,SXR Undulator Installation,AS_SXU_INST_3020,Perform technical checkouts - SXU_HE_30,1.0,6.0,6.0,6.0,03-11-26,03-11-26,0,0,SLAC,0%,52169.52169_METS Mechanical Engineer,52169_METS Mechanical Engineer,Labor,0.0d,1.0,1.0,At Completion Units,7/16/2025,7/16/2025,0,0,0,0,0,0,0,0,0,0,1.03_Accelerator Systems (AS),1.03.06_AS Soft X-Ray Undulator (SXR) - SLAC,1.03.06.20_AS Soft X-Ray Undulator Installation - SLAC,1.03.06.20.03_SXR Undulator Installation,AS_SXU_INST_3020_Perform technical checkouts - SXU_HE_30,Mechanical,,SLAC,Labor
105686,1.03,1.03.06,1.03.06.20,1.03.06.20.03,1.03.06.20.03,SXR Undulator Installation,AS_SXU_INST_3020,Perform technical checkouts - SXU_HE_30,1.0,4.0,4.0,4.0,03-11-26,03-11-26,0,0,SLAC,0%,0106.0106_Staff Scientist,0106_Staff Scientist,Labor,0.0d,1.0,1.0,At Completion Units,7/16/2025,7/16/2025,0,0,0,0,0,0,0,0,0,0,1.03_Accelerator Systems (AS),1.03.06_AS Soft X-Ray Undulator (SXR) - SLAC,1.03.06.20_AS Soft X-Ray Undulator Installation - SLAC,1.03.06.20.03_SXR Undulator Installation,AS_SXU_INST_3020_Perform technical checkouts - SXU_HE_30,Scientist,,SLAC,Labor
105687,1.03,1.03.06,1.03.06.20,1.03.06.20.03,1.03.06.20.03,SXR Undulator Installation,AS_SXU_INST_3020,Perform technical checkouts - SXU_HE_30,1.0,4.0,4.0,4.0,03-11-26,03-11-26,0,0,SLAC,0%,52198.52198_METSMANF (METSD Manufacturing),52198_METSMANF (METSD Manufacturing),Labor,0.0d,1.0,1.0,At Completion Units,7/16/2025,7/16/2025,0,0,0,0,0,0,0,0,0,0,1.03_Accelerator Systems (AS),1.03.06_AS Soft X-Ray Undulator (SXR) - SLAC,1.03.06.20_AS Soft X-Ray Undulator Installation - SLAC,1.03.06.20.03_SXR Undulator Installation,AS_SXU_INST_3020_Perform technical checkouts - SXU_HE_30,Manufacturing,,SLAC,Labor
105688,1.03,1.03.06,1.03.06.20,1.03.06.20.03,1.03.06.20.03,SXR Undulator Installation,AS_SXU_INST_3010,Install Undulator - SXU_HE_30,1.0,12.0,12.0,12.0,03-10-26,03-10-26,0,0,SLAC,0%,52169.52169_METS Mechanical Engineer,52169_METS Mechanical Engineer,Labor,0.0d,1.0,1.0,At Completion Units,7/15/2025,7/15/2025,0,0,0,0,0,0,0,0,0,0,1.03_Accelerator Systems (AS),1.03.06_AS Soft X-Ray Undulator (SXR) - SLAC,1.03.06.20_AS Soft X-Ray Undulator Installation - SLAC,1.03.06.20.03_SXR Undulator Installation,AS_SXU_INST_3010_Install Undulator - SXU_HE_30,Mechanical,,SLAC,Labor
105689,1.03,1.03.06,1.03.06.20,1.03.06.20.03,1.03.06.20.03,SXR Undulator Installation,AS_SXU_INST_3010,Install Undulator - SXU_HE_30,1.0,4.0,4.0,4.0,03-10-26,03-10-26,0,0,SLAC,0%,0106.0106_Staff Scientist,0106_Staff Scientist,Labor,0.0d,1.0,1.0,At Completion Units,7/15/2025,7/15/2025,0,0,0,0,0,0,0,0,0,0,1.03_Accelerator Systems (AS),1.03.06_AS Soft X-Ray Undulator (SXR) - SLAC,1.03.06.20_AS Soft X-Ray Undulator Installation - SLAC,1.03.06.20.03_SXR Undulator Installation,AS_SXU_INST_3010_Install Undulator - SXU_HE_30,Scientist,,SLAC,Labor
105690,1.03,1.03.06,1.03.06.20,1.03.06.20.03,1.03.06.20.03,SXR Undulator Installation,AS_SXU_INST_3010,Install Undulator - SXU_HE_30,1.0,8.0,8.0,8.0,03-10-26,03-10-26,0,0,SLAC,0%,52191.52191_METSMET Metrology,52191_METSMET Metrology,Labor,0.0d,1.0,1.0,At Completion Units,7/15/2025,7/15/2025,0,0,0,0,0,0,0,0,0,0,1.03_Accelerator Systems (AS),1.03.06_AS Soft X-Ray Undulator (SXR) - SLAC,1.03.06.20_AS Soft X-Ray Undulator Installation - SLAC,1.03.06.20.03_SXR Undulator Installation,AS_SXU_INST_3010_Install Undulator - SXU_HE_30,Metrology,,SLAC,Labor
105691,1.03,1.03.06,1.03.06.20,1.03.06.20.03,1.03.06.20.03,SXR Undulator Installation,AS_SXU_INST_3010,Install Undulator - SXU_HE_30,1.0,34.0,34.0,34.0,03-10-26,03-10-26,0,0,SLAC,0%,52198.52198_METSMANF (METSD Manufacturing),52198_METSMANF (METSD Manufacturing),Labor,0.0d,1.0,1.0,At Completion Units,7/15/2025,7/15/2025,0,0,0,0,0,0,0,0,0,0,1.03_Accelerator Systems (AS),1.03.06_AS Soft X-Ray Undulator (SXR) - SLAC,1.03.06.20_AS Soft X-Ray Undulator Installation - SLAC,1.03.06.20.03_SXR Undulator Installation,AS_SXU_INST_3010_Install Undulator - SXU_HE_30,Manufacturing,,SLAC,Labor
105692,1.03,1.03.06,1.03.06.20,1.03.06.20.03,1.03.06.20.03,SXR Undulator Installation,AS_SXU_INST_3005,PAMM Management - SXU_HE_30,3.0,6.0,6.0,6.0,03-10-26,03-12-26,0,0,SLAC,0%,52169.52169_METS Mechanical Engineer,52169_METS Mechanical Engineer,Labor,0.0d,3.0,3.0,At Completion Units,7/15/2025,7/17/2025,0,0,0,0,0,0,0,0,0,0,1.03_Accelerator Systems (AS),1.03.06_AS Soft X-Ray Undulator (SXR) - SLAC,1.03.06.20_AS Soft X-Ray Undulator Installation - SLAC,1.03.06.20.03_SXR Undulator Installation,AS_SXU_INST_3005_PAMM Management - SXU_HE_30,Mechanical,,SLAC,Labor
105693,1.03,1.03.06,1.03.06.20,1.03.06.20.03,1.03.06.20.03,SXR Undulator Installation,AS_SXU_INST_2900,Remove Undulator from Tunnel - SXU_REFB_T,1.0,15.0,15.0,15.0,02-10-25,02-11-25,0,0,SLAC,0%,52152.52152_FAC Fleet,52152_FAC Fleet,Labor,0.0d,1.0,1.0,At Completion Units,2/10/2025,2/11/2025,0,0,0,0,0,0,0,0,0,0,1.03_Accelerator Systems (AS),1.03.06_AS Soft X-Ray Undulator (SXR) - SLAC,1.03.06.20_AS Soft X-Ray Undulator Installation - SLAC,1.03.06.20.03_SXR Undulator Installation,AS_SXU_INST_2900_Remove Undulator from Tunnel - SXU_REFB_T,Support System,,SLAC,Labor
105694,1.03,1.03.06,1.03.06.20,1.03.06.20.03,1.03.06.20.03,SXR Undulator Installation,AS_SXU_INST_2900,Remove Undulator from Tunnel - SXU_REFB_T,1.0,6.0,6.0,6.0,02-10-25,02-11-25,0,0,SLAC,0%,52169.52169_METS Mechanical Engineer,52169_METS Mechanical Engineer,Labor,0.0d,1.0,1.0,At Completion Units,2/10/2025,2/11/2025,0,0,0,0,0,0,0,0,0,0,1.03_Accelerator Systems (AS),1.03.06_AS Soft X-Ray Undulator (SXR) - SLAC,1.03.06.20_AS Soft X-Ray Undulator Installation - SLAC,1.03.06.20.03_SXR Undulator Installation,AS_SXU_INST_2900_Remove Undulator from Tunnel - SXU_REFB_T,Mechanical,,SLAC,Labor
105695,1.03,1.03.06,1.03.06.20,1.03.06.20.03,1.03.06.20.03,SXR Undulator Installation,AS_SXU_INST_2900,Remove Undulator from Tunnel - SXU_REFB_T,1.0,40.0,40.0,40.0,02-10-25,02-11-25,0,0,SLAC,0%,52198.52198_METSMANF (METSD Manufacturing),52198_METSMANF (METSD Manufacturing),Labor,0.0d,1.0,1.0,At Completion Units,2/10/2025,2/11/2025,0,0,0,0,0,0,0,0,0,0,1.03_Accelerator Systems (AS),1.03.06_AS Soft X-Ray Undulator (SXR) - SLAC,1.03.06.20_AS Soft X-Ray Undulator Installation - SLAC,1.03.06.20.03_SXR Undulator Installation,AS_SXU_INST_2900_Remove Undulator from Tunnel - SXU_REFB_T,Manufacturing,,SLAC,Labor
105696,1.03,1.03.06,1.03.06.20,1.03.06.20.03,1.03.06.20.03,SXR Undulator Installation,AS_SXU_INST_2910,Install Undulator - SXU_HE_29,1.0,2.0,2.0,2.0,02-17-26,02-17-26,0,0,SLAC,0%,52190.52190_METSTP Tech Planning - Reinstated FY16,52190_METSTP Tech Planning - Reinstated FY16,Labor,0.0d,1.0,1.0,At Completion Units,6/23/2025,6/23/2025,0,0,0,0,0,0,0,0,0,0,1.03_Accelerator Systems (AS),1.03.06_AS Soft X-Ray Undulator (SXR) - SLAC,1.03.06.20_AS Soft X-Ray Undulator Installation - SLAC,1.03.06.20.03_SXR Undulator Installation,AS_SXU_INST_2910_Install Undulator - SXU_HE_29,METSTPT Tech Planning,Tech,SLAC,Labor
105697,1.03,1.03.06,1.03.06.20,1.03.06.20.03,1.03.06.20.03,SXR Undulator Installation,AS_SXU_INST_2910,Install Undulator - SXU_HE_29,1.0,12.0,12.0,12.0,02-17-26,02-17-26,0,0,SLAC,0%,52152.52152_FAC Fleet,52152_FAC Fleet,Labor,0.0d,1.0,1.0,At Completion Units,6/23/2025,6/23/2025,0,0,0,0,0,0,0,0,0,0,1.03_Accelerator Systems (AS),1.03.06_AS Soft X-Ray Undulator (SXR) - SLAC,1.03.06.20_AS Soft X-Ray Undulator Installation - SLAC,1.03.06.20.03_SXR Undulator Installation,AS_SXU_INST_2910_Install Undulator - SXU_HE_29,Support System,,SLAC,Labor
105698,1.03,1.03.06,1.03.06.20,1.03.06.20.03,1.03.06.20.03,SXR Undulator Installation,AS_SXU_INST_2905,PAMM Management - SXU_HE_29,3.0,2.0,2.0,2.0,02-17-26,02-19-26,0,0,SLAC,0%,52155.52155_Health Physics Technician III,52155_Health Physics Technician III,Labor,0.0d,3.0,3.0,At Completion Units,6/23/2025,6/25/2025,0,0,0,0,0,0,0,0,0,0,1.03_Accelerator Systems (AS),1.03.06_AS Soft X-Ray Undulator (SXR) - SLAC,1.03.06.20_AS Soft X-Ray Undulator Installation - SLAC,1.03.06.20.03_SXR Undulator Installation,AS_SXU_INST_2905_PAMM Management - SXU_HE_29,Support System,Tech,SLAC,Labor
105699,1.03,1.03.06,1.03.06.20,1.03.06.20.03,1.03.06.20.03,SXR Undulator Installation,AS_SXU_INST_2930,Pre-beam checkout - SXU_HE_29,1.0,5.0,5.0,5.0,02-19-26,02-19-26,0,0,SLAC,0%,52213.52213_EEDHW (Electronics & Engineering Div - HW Engr),52213_EEDHW (Electronics & Engineering Div - HW Engr),Labor,0.0d,1.0,1.0,At Completion Units,6/25/2025,6/25/2025,0,0,0,0,0,0,0,0,0,0,1.03_Accelerator Systems (AS),1.03.06_AS Soft X-Ray Undulator (SXR) - SLAC,1.03.06.20_AS Soft X-Ray Undulator Installation - SLAC,1.03.06.20.03_SXR Undulator Installation,AS_SXU_INST_2930_Pre-beam checkout - SXU_HE_29,Electrical,,SLAC,Labor
105700,1.03,1.03.06,1.03.06.20,1.03.06.20.03,1.03.06.20.03,SXR Undulator Installation,AS_SXU_INST_2930,Pre-beam checkout - SXU_HE_29,1.0,2.0,2.0,2.0,02-19-26,02-19-26,0,0,SLAC,0%,52169.52169_METS Mechanical Engineer,52169_METS Mechanical Engineer,Labor,0.0d,1.0,1.0,At Completion Units,6/25/2025,6/25/2025,0,0,0,0,0,0,0,0,0,0,1.03_Accelerator Systems (AS),1.03.06_AS Soft X-Ray Undulator (SXR) - SLAC,1.03.06.20_AS Soft X-Ray Undulator Installation - SLAC,1.03.06.20.03_SXR Undulator Installation,AS_SXU_INST_2930_Pre-beam checkout - SXU_HE_29,Mechanical,,SLAC,Labor
105701,1.03,1.03.06,1.03.06.20,1.03.06.20.03,1.03.06.20.03,SXR Undulator Installation,AS_SXU_INST_2930,Pre-beam checkout - SXU_HE_29,1.0,8.0,8.0,8.0,02-19-26,02-19-26,0,0,SLAC,0%,0106.0106_Staff Scientist,0106_Staff Scientist,Labor,0.0d,1.0,1.0,At Completion Units,6/25/2025,6/25/2025,0,0,0,0,0,0,0,0,0,0,1.03_Accelerator Systems (AS),1.03.06_AS Soft X-Ray Undulator (SXR) - SLAC,1.03.06.20_AS Soft X-Ray Undulator Installation - SLAC,1.03.06.20.03_SXR Undulator Installation,AS_SXU_INST_2930_Pre-beam checkout - SXU_HE_29,Scientist,,SLAC,Labor
105702,1.03,1.03.06,1.03.06.20,1.03.06.20.03,1.03.06.20.03,SXR Undulator Installation,AS_SXU_INST_2930,Pre-beam checkout - SXU_HE_29,1.0,12.0,12.0,12.0,02-19-26,02-19-26,0,0,SLAC,0%,52191.52191_METSMET Metrology,52191_METSMET Metrology,Labor,0.0d,1.0,1.0,At Completion Units,6/25/2025,6/25/2025,0,0,0,0,0,0,0,0,0,0,1.03_Accelerator Systems (AS),1.03.06_AS Soft X-Ray Undulator (SXR) - SLAC,1.03.06.20_AS Soft X-Ray Undulator Installation - SLAC,1.03.06.20.03_SXR Undulator Installation,AS_SXU_INST_2930_Pre-beam checkout - SXU_HE_29,Metrology,,SLAC,Labor
105703,1.03,1.03.06,1.03.06.20,1.03.06.20.03,1.03.06.20.03,SXR Undulator Installation,AS_SXU_INST_2920,Perform technical checkouts - SXU_HE_29,1.0,4.0,4.0,4.0,02-18-26,02-18-26,0,0,SLAC,0%,52211.52211_EEDOPSE (Electronics & Engineering Div - Ops & PSE),52211_EEDOPSE (Electronics & Engineering Div - Ops & PSE),Labor,0.0d,1.0,1.0,At Completion Units,6/24/2025,6/24/2025,0,0,0,0,0,0,0,0,0,0,1.03_Accelerator Systems (AS),1.03.06_AS Soft X-Ray Undulator (SXR) - SLAC,1.03.06.20_AS Soft X-Ray Undulator Installation - SLAC,1.03.06.20.03_SXR Undulator Installation,AS_SXU_INST_2920_Perform technical checkouts - SXU_HE_29,Electrical,,SLAC,Labor
105704,1.03,1.03.06,1.03.06.20,1.03.06.20.03,1.03.06.20.03,SXR Undulator Installation,AS_SXU_INST_2920,Perform technical checkouts - SXU_HE_29,1.0,8.0,8.0,8.0,02-18-26,02-18-26,0,0,SLAC,0%,52127.52127_Research Electrical & SW Engineer,52127_Research Electrical & SW Engineer,Labor,0.0d,1.0,1.0,At Completion Units,6/24/2025,6/24/2025,0,0,0,0,0,0,0,0,0,0,1.03_Accelerator Systems (AS),1.03.06_AS Soft X-Ray Undulator (SXR) - SLAC,1.03.06.20_AS Soft X-Ray Undulator Installation - SLAC,1.03.06.20.03_SXR Undulator Installation,AS_SXU_INST_2920_Perform technical checkouts - SXU_HE_29,Electrical,,SLAC,Labor
105705,1.03,1.03.06,1.03.06.20,1.03.06.20.03,1.03.06.20.03,SXR Undulator Installation,AS_SXU_INST_2920,Perform technical checkouts - SXU_HE_29,1.0,20.0,20.0,20.0,02-18-26,02-18-26,0,0,SLAC,0%,52213.52213_EEDHW (Electronics & Engineering Div - HW Engr),52213_EEDHW (Electronics & Engineering Div - HW Engr),Labor,0.0d,1.0,1.0,At Completion Units,6/24/2025,6/24/2025,0,0,0,0,0,0,0,0,0,0,1.03_Accelerator Systems (AS),1.03.06_AS Soft X-Ray Undulator (SXR) - SLAC,1.03.06.20_AS Soft X-Ray Undulator Installation - SLAC,1.03.06.20.03_SXR Undulator Installation,AS_SXU_INST_2920_Perform technical checkouts - SXU_HE_29,Electrical,,SLAC,Labor
105706,1.03,1.03.06,1.03.06.20,1.03.06.20.03,1.03.06.20.03,SXR Undulator Installation,AS_SXU_INST_2920,Perform technical checkouts - SXU_HE_29,1.0,6.0,6.0,6.0,02-18-26,02-18-26,0,0,SLAC,0%,52169.52169_METS Mechanical Engineer,52169_METS Mechanical Engineer,Labor,0.0d,1.0,1.0,At Completion Units,6/24/2025,6/24/2025,0,0,0,0,0,0,0,0,0,0,1.03_Accelerator Systems (AS),1.03.06_AS Soft X-Ray Undulator (SXR) - SLAC,1.03.06.20_AS Soft X-Ray Undulator Installation - SLAC,1.03.06.20.03_SXR Undulator Installation,AS_SXU_INST_2920_Perform technical checkouts - SXU_HE_29,Mechanical,,SLAC,Labor
105707,1.03,1.03.06,1.03.06.20,1.03.06.20.03,1.03.06.20.03,SXR Undulator Installation,AS_SXU_INST_2920,Perform technical checkouts - SXU_HE_29,1.0,4.0,4.0,4.0,02-18-26,02-18-26,0,0,SLAC,0%,0106.0106_Staff Scientist,0106_Staff Scientist,Labor,0.0d,1.0,1.0,At Completion Units,6/24/2025,6/24/2025,0,0,0,0,0,0,0,0,0,0,1.03_Accelerator Systems (AS),1.03.06_AS Soft X-Ray Undulator (SXR) - SLAC,1.03.06.20_AS Soft X-Ray Undulator Installation - SLAC,1.03.06.20.03_SXR Undulator Installation,AS_SXU_INST_2920_Perform technical checkouts - SXU_HE_29,Scientist,,SLAC,Labor
105708,1.03,1.03.06,1.03.06.20,1.03.06.20.03,1.03.06.20.03,SXR Undulator Installation,AS_SXU_INST_2920,Perform technical checkouts - SXU_HE_29,1.0,4.0,4.0,4.0,02-18-26,02-18-26,0,0,SLAC,0%,52198.52198_METSMANF (METSD Manufacturing),52198_METSMANF (METSD Manufacturing),Labor,0.0d,1.0,1.0,At Completion Units,6/24/2025,6/24/2025,0,0,0,0,0,0,0,0,0,0,1.03_Accelerator Systems (AS),1.03.06_AS Soft X-Ray Undulator (SXR) - SLAC,1.03.06.20_AS Soft X-Ray Undulator Installation - SLAC,1.03.06.20.03_SXR Undulator Installation,AS_SXU_INST_2920_Perform technical checkouts - SXU_HE_29,Manufacturing,,SLAC,Labor
105709,1.03,1.03.06,1.03.06.20,1.03.06.20.03,1.03.06.20.03,SXR Undulator Installation,AS_SXU_INST_2910,Install Undulator - SXU_HE_29,1.0,12.0,12.0,12.0,02-17-26,02-17-26,0,0,SLAC,0%,52169.52169_METS Mechanical Engineer,52169_METS Mechanical Engineer,Labor,0.0d,1.0,1.0,At Completion Units,6/23/2025,6/23/2025,0,0,0,0,0,0,0,0,0,0,1.03_Accelerator Systems (AS),1.03.06_AS Soft X-Ray Undulator (SXR) - SLAC,1.03.06.20_AS Soft X-Ray Undulator Installation - SLAC,1.03.06.20.03_SXR Undulator Installation,AS_SXU_INST_2910_Install Undulator - SXU_HE_29,Mechanical,,SLAC,Labor
105710,1.03,1.03.06,1.03.06.20,1.03.06.20.03,1.03.06.20.03,SXR Undulator Installation,AS_SXU_INST_2910,Install Undulator - SXU_HE_29,1.0,4.0,4.0,4.0,02-17-26,02-17-26,0,0,SLAC,0%,0106.0106_Staff Scientist,0106_Staff Scientist,Labor,0.0d,1.0,1.0,At Completion Units,6/23/2025,6/23/2025,0,0,0,0,0,0,0,0,0,0,1.03_Accelerator Systems (AS),1.03.06_AS Soft X-Ray Undulator (SXR) - SLAC,1.03.06.20_AS Soft X-Ray Undulator Installation - SLAC,1.03.06.20.03_SXR Undulator Installation,AS_SXU_INST_2910_Install Undulator - SXU_HE_29,Scientist,,SLAC,Labor
105711,1.03,1.03.06,1.03.06.20,1.03.06.20.03,1.03.06.20.03,SXR Undulator Installation,AS_SXU_INST_2910,Install Undulator - SXU_HE_29,1.0,8.0,8.0,8.0,02-17-26,02-17-26,0,0,SLAC,0%,52191.52191_METSMET Metrology,52191_METSMET Metrology,Labor,0.0d,1.0,1.0,At Completion Units,6/23/2025,6/23/2025,0,0,0,0,0,0,0,0,0,0,1.03_Accelerator Systems (AS),1.03.06_AS Soft X-Ray Undulator (SXR) - SLAC,1.03.06.20_AS Soft X-Ray Undulator Installation - SLAC,1.03.06.20.03_SXR Undulator Installation,AS_SXU_INST_2910_Install Undulator - SXU_HE_29,Metrology,,SLAC,Labor
105712,1.03,1.03.06,1.03.06.20,1.03.06.20.03,1.03.06.20.03,SXR Undulator Installation,AS_SXU_INST_2910,Install Undulator - SXU_HE_29,1.0,34.0,34.0,34.0,02-17-26,02-17-26,0,0,SLAC,0%,52198.52198_METSMANF (METSD Manufacturing),52198_METSMANF (METSD Manufacturing),Labor,0.0d,1.0,1.0,At Completion Units,6/23/2025,6/23/2025,0,0,0,0,0,0,0,0,0,0,1.03_Accelerator Systems (AS),1.03.06_AS Soft X-Ray Undulator (SXR) - SLAC,1.03.06.20_AS Soft X-Ray Undulator Installation - SLAC,1.03.06.20.03_SXR Undulator Installation,AS_SXU_INST_2910_Install Undulator - SXU_HE_29,Manufacturing,,SLAC,Labor
105713,1.03,1.03.06,1.03.06.20,1.03.06.20.03,1.03.06.20.03,SXR Undulator Installation,AS_SXU_INST_2905,PAMM Management - SXU_HE_29,3.0,6.0,6.0,6.0,02-17-26,02-19-26,0,0,SLAC,0%,52169.52169_METS Mechanical Engineer,52169_METS Mechanical Engineer,Labor,0.0d,3.0,3.0,At Completion Units,6/23/2025,6/25/2025,0,0,0,0,0,0,0,0,0,0,1.03_Accelerator Systems (AS),1.03.06_AS Soft X-Ray Undulator (SXR) - SLAC,1.03.06.20_AS Soft X-Ray Undulator Installation - SLAC,1.03.06.20.03_SXR Undulator Installation,AS_SXU_INST_2905_PAMM Management - SXU_HE_29,Mechanical,,SLAC,Labor
105714,1.03,1.03.06,1.03.06.20,1.03.06.20.03,1.03.06.20.03,SXR Undulator Installation,AS_SXU_INST_2810,Install Undulator - SXU_HE_28,1.0,2.0,2.0,2.0,01-26-26,01-26-26,0,0,SLAC,0%,52190.52190_METSTP Tech Planning - Reinstated FY16,52190_METSTP Tech Planning - Reinstated FY16,Labor,0.0d,1.0,1.0,At Completion Units,6/2/2025,6/2/2025,0,0,0,0,0,0,0,0,0,0,1.03_Accelerator Systems (AS),1.03.06_AS Soft X-Ray Undulator (SXR) - SLAC,1.03.06.20_AS Soft X-Ray Undulator Installation - SLAC,1.03.06.20.03_SXR Undulator Installation,AS_SXU_INST_2810_Install Undulator - SXU_HE_28,METSTPT Tech Planning,Tech,SLAC,Labor
105715,1.03,1.03.06,1.03.06.20,1.03.06.20.03,1.03.06.20.03,SXR Undulator Installation,AS_SXU_INST_2810,Install Undulator - SXU_HE_28,1.0,12.0,12.0,12.0,01-26-26,01-26-26,0,0,SLAC,0%,52152.52152_FAC Fleet,52152_FAC Fleet,Labor,0.0d,1.0,1.0,At Completion Units,6/2/2025,6/2/2025,0,0,0,0,0,0,0,0,0,0,1.03_Accelerator Systems (AS),1.03.06_AS Soft X-Ray Undulator (SXR) - SLAC,1.03.06.20_AS Soft X-Ray Undulator Installation - SLAC,1.03.06.20.03_SXR Undulator Installation,AS_SXU_INST_2810_Install Undulator - SXU_HE_28,Support System,,SLAC,Labor
105716,1.03,1.03.06,1.03.06.20,1.03.06.20.03,1.03.06.20.03,SXR Undulator Installation,AS_SXU_INST_2805,PAMM Management - SXU_HE_28,3.0,2.0,2.0,2.0,01-26-26,01-28-26,0,0,SLAC,0%,52155.52155_Health Physics Technician III,52155_Health Physics Technician III,Labor,0.0d,3.0,3.0,At Completion Units,6/2/2025,6/4/2025,0,0,0,0,0,0,0,0,0,0,1.03_Accelerator Systems (AS),1.03.06_AS Soft X-Ray Undulator (SXR) - SLAC,1.03.06.20_AS Soft X-Ray Undulator Installation - SLAC,1.03.06.20.03_SXR Undulator Installation,AS_SXU_INST_2805_PAMM Management - SXU_HE_28,Support System,Tech,SLAC,Labor
105717,1.03,1.03.06,1.03.06.20,1.03.06.20.03,1.03.06.20.03,SXR Undulator Installation,AS_SXU_INST_2830,Pre-beam checkout - SXU_HE_28,1.0,5.0,5.0,5.0,01-28-26,01-28-26,0,0,SLAC,0%,52213.52213_EEDHW (Electronics & Engineering Div - HW Engr),52213_EEDHW (Electronics & Engineering Div - HW Engr),Labor,0.0d,1.0,1.0,At Completion Units,6/4/2025,6/4/2025,0,0,0,0,0,0,0,0,0,0,1.03_Accelerator Systems (AS),1.03.06_AS Soft X-Ray Undulator (SXR) - SLAC,1.03.06.20_AS Soft X-Ray Undulator Installation - SLAC,1.03.06.20.03_SXR Undulator Installation,AS_SXU_INST_2830_Pre-beam checkout - SXU_HE_28,Electrical,,SLAC,Labor
105718,1.03,1.03.06,1.03.06.20,1.03.06.20.03,1.03.06.20.03,SXR Undulator Installation,AS_SXU_INST_2830,Pre-beam checkout - SXU_HE_28,1.0,2.0,2.0,2.0,01-28-26,01-28-26,0,0,SLAC,0%,52169.52169_METS Mechanical Engineer,52169_METS Mechanical Engineer,Labor,0.0d,1.0,1.0,At Completion Units,6/4/2025,6/4/2025,0,0,0,0,0,0,0,0,0,0,1.03_Accelerator Systems (AS),1.03.06_AS Soft X-Ray Undulator (SXR) - SLAC,1.03.06.20_AS Soft X-Ray Undulator Installation - SLAC,1.03.06.20.03_SXR Undulator Installation,AS_SXU_INST_2830_Pre-beam checkout - SXU_HE_28,Mechanical,,SLAC,Labor
105719,1.03,1.03.06,1.03.06.20,1.03.06.20.03,1.03.06.20.03,SXR Undulator Installation,AS_SXU_INST_2830,Pre-beam checkout - SXU_HE_28,1.0,8.0,8.0,8.0,01-28-26,01-28-26,0,0,SLAC,0%,0106.0106_Staff Scientist,0106_Staff Scientist,Labor,0.0d,1.0,1.0,At Completion Units,6/4/2025,6/4/2025,0,0,0,0,0,0,0,0,0,0,1.03_Accelerator Systems (AS),1.03.06_AS Soft X-Ray Undulator (SXR) - SLAC,1.03.06.20_AS Soft X-Ray Undulator Installation - SLAC,1.03.06.20.03_SXR Undulator Installation,AS_SXU_INST_2830_Pre-beam checkout - SXU_HE_28,Scientist,,SLAC,Labor
105720,1.03,1.03.06,1.03.06.20,1.03.06.20.03,1.03.06.20.03,SXR Undulator Installation,AS_SXU_INST_2830,Pre-beam checkout - SXU_HE_28,1.0,12.0,12.0,12.0,01-28-26,01-28-26,0,0,SLAC,0%,52191.52191_METSMET Metrology,52191_METSMET Metrology,Labor,0.0d,1.0,1.0,At Completion Units,6/4/2025,6/4/2025,0,0,0,0,0,0,0,0,0,0,1.03_Accelerator Systems (AS),1.03.06_AS Soft X-Ray Undulator (SXR) - SLAC,1.03.06.20_AS Soft X-Ray Undulator Installation - SLAC,1.03.06.20.03_SXR Undulator Installation,AS_SXU_INST_2830_Pre-beam checkout - SXU_HE_28,Metrology,,SLAC,Labor
105721,1.03,1.03.06,1.03.06.20,1.03.06.20.03,1.03.06.20.03,SXR Undulator Installation,AS_SXU_INST_2820,Perform technical checkouts - SXU_HE_28,1.0,4.0,4.0,4.0,01-27-26,01-27-26,0,0,SLAC,0%,52211.52211_EEDOPSE (Electronics & Engineering Div - Ops & PSE),52211_EEDOPSE (Electronics & Engineering Div - Ops & PSE),Labor,0.0d,1.0,1.0,At Completion Units,6/3/2025,6/3/2025,0,0,0,0,0,0,0,0,0,0,1.03_Accelerator Systems (AS),1.03.06_AS Soft X-Ray Undulator (SXR) - SLAC,1.03.06.20_AS Soft X-Ray Undulator Installation - SLAC,1.03.06.20.03_SXR Undulator Installation,AS_SXU_INST_2820_Perform technical checkouts - SXU_HE_28,Electrical,,SLAC,Labor
105722,1.03,1.03.06,1.03.06.20,1.03.06.20.03,1.03.06.20.03,SXR Undulator Installation,AS_SXU_INST_2820,Perform technical checkouts - SXU_HE_28,1.0,8.0,8.0,8.0,01-27-26,01-27-26,0,0,SLAC,0%,52127.52127_Research Electrical & SW Engineer,52127_Research Electrical & SW Engineer,Labor,0.0d,1.0,1.0,At Completion Units,6/3/2025,6/3/2025,0,0,0,0,0,0,0,0,0,0,1.03_Accelerator Systems (AS),1.03.06_AS Soft X-Ray Undulator (SXR) - SLAC,1.03.06.20_AS Soft X-Ray Undulator Installation - SLAC,1.03.06.20.03_SXR Undulator Installation,AS_SXU_INST_2820_Perform technical checkouts - SXU_HE_28,Electrical,,SLAC,Labor
105723,1.03,1.03.06,1.03.06.20,1.03.06.20.03,1.03.06.20.03,SXR Undulator Installation,AS_SXU_INST_2820,Perform technical checkouts - SXU_HE_28,1.0,20.0,20.0,20.0,01-27-26,01-27-26,0,0,SLAC,0%,52213.52213_EEDHW (Electronics & Engineering Div - HW Engr),52213_EEDHW (Electronics & Engineering Div - HW Engr),Labor,0.0d,1.0,1.0,At Completion Units,6/3/2025,6/3/2025,0,0,0,0,0,0,0,0,0,0,1.03_Accelerator Systems (AS),1.03.06_AS Soft X-Ray Undulator (SXR) - SLAC,1.03.06.20_AS Soft X-Ray Undulator Installation - SLAC,1.03.06.20.03_SXR Undulator Installation,AS_SXU_INST_2820_Perform technical checkouts - SXU_HE_28,Electrical,,SLAC,Labor
105724,1.03,1.03.06,1.03.06.20,1.03.06.20.03,1.03.06.20.03,SXR Undulator Installation,AS_SXU_INST_2820,Perform technical checkouts - SXU_HE_28,1.0,6.0,6.0,6.0,01-27-26,01-27-26,0,0,SLAC,0%,52169.52169_METS Mechanical Engineer,52169_METS Mechanical Engineer,Labor,0.0d,1.0,1.0,At Completion Units,6/3/2025,6/3/2025,0,0,0,0,0,0,0,0,0,0,1.03_Accelerator Systems (AS),1.03.06_AS Soft X-Ray Undulator (SXR) - SLAC,1.03.06.20_AS Soft X-Ray Undulator Installation - SLAC,1.03.06.20.03_SXR Undulator Installation,AS_SXU_INST_2820_Perform technical checkouts - SXU_HE_28,Mechanical,,SLAC,Labor
105725,1.03,1.03.06,1.03.06.20,1.03.06.20.03,1.03.06.20.03,SXR Undulator Installation,AS_SXU_INST_2820,Perform technical checkouts - SXU_HE_28,1.0,4.0,4.0,4.0,01-27-26,01-27-26,0,0,SLAC,0%,0106.0106_Staff Scientist,0106_Staff Scientist,Labor,0.0d,1.0,1.0,At Completion Units,6/3/2025,6/3/2025,0,0,0,0,0,0,0,0,0,0,1.03_Accelerator Systems (AS),1.03.06_AS Soft X-Ray Undulator (SXR) - SLAC,1.03.06.20_AS Soft X-Ray Undulator Installation - SLAC,1.03.06.20.03_SXR Undulator Installation,AS_SXU_INST_2820_Perform technical checkouts - SXU_HE_28,Scientist,,SLAC,Labor
105726,1.03,1.03.06,1.03.06.20,1.03.06.20.03,1.03.06.20.03,SXR Undulator Installation,AS_SXU_INST_2820,Perform technical checkouts - SXU_HE_28,1.0,4.0,4.0,4.0,01-27-26,01-27-26,0,0,SLAC,0%,52198.52198_METSMANF (METSD Manufacturing),52198_METSMANF (METSD Manufacturing),Labor,0.0d,1.0,1.0,At Completion Units,6/3/2025,6/3/2025,0,0,0,0,0,0,0,0,0,0,1.03_Accelerator Systems (AS),1.03.06_AS Soft X-Ray Undulator (SXR) - SLAC,1.03.06.20_AS Soft X-Ray Undulator Installation - SLAC,1.03.06.20.03_SXR Undulator Installation,AS_SXU_INST_2820_Perform technical checkouts - SXU_HE_28,Manufacturing,,SLAC,Labor
105727,1.03,1.03.06,1.03.06.20,1.03.06.20.03,1.03.06.20.03,SXR Undulator Installation,AS_SXU_INST_2810,Install Undulator - SXU_HE_28,1.0,12.0,12.0,12.0,01-26-26,01-26-26,0,0,SLAC,0%,52169.52169_METS Mechanical Engineer,52169_METS Mechanical Engineer,Labor,0.0d,1.0,1.0,At Completion Units,6/2/2025,6/2/2025,0,0,0,0,0,0,0,0,0,0,1.03_Accelerator Systems (AS),1.03.06_AS Soft X-Ray Undulator (SXR) - SLAC,1.03.06.20_AS Soft X-Ray Undulator Installation - SLAC,1.03.06.20.03_SXR Undulator Installation,AS_SXU_INST_2810_Install Undulator - SXU_HE_28,Mechanical,,SLAC,Labor
105728,1.03,1.03.06,1.03.06.20,1.03.06.20.03,1.03.06.20.03,SXR Undulator Installation,AS_SXU_INST_2810,Install Undulator - SXU_HE_28,1.0,4.0,4.0,4.0,01-26-26,01-26-26,0,0,SLAC,0%,0106.0106_Staff Scientist,0106_Staff Scientist,Labor,0.0d,1.0,1.0,At Completion Units,6/2/2025,6/2/2025,0,0,0,0,0,0,0,0,0,0,1.03_Accelerator Systems (AS),1.03.06_AS Soft X-Ray Undulator (SXR) - SLAC,1.03.06.20_AS Soft X-Ray Undulator Installation - SLAC,1.03.06.20.03_SXR Undulator Installation,AS_SXU_INST_2810_Install Undulator - SXU_HE_28,Scientist,,SLAC,Labor
105729,1.03,1.03.06,1.03.06.20,1.03.06.20.03,1.03.06.20.03,SXR Undulator Installation,AS_SXU_INST_2810,Install Undulator - SXU_HE_28,1.0,8.0,8.0,8.0,01-26-26,01-26-26,0,0,SLAC,0%,52191.52191_METSMET Metrology,52191_METSMET Metrology,Labor,0.0d,1.0,1.0,At Completion Units,6/2/2025,6/2/2025,0,0,0,0,0,0,0,0,0,0,1.03_Accelerator Systems (AS),1.03.06_AS Soft X-Ray Undulator (SXR) - SLAC,1.03.06.20_AS Soft X-Ray Undulator Installation - SLAC,1.03.06.20.03_SXR Undulator Installation,AS_SXU_INST_2810_Install Undulator - SXU_HE_28,Metrology,,SLAC,Labor
105730,1.03,1.03.06,1.03.06.20,1.03.06.20.03,1.03.06.20.03,SXR Undulator Installation,AS_SXU_INST_2810,Install Undulator - SXU_HE_28,1.0,34.0,34.0,34.0,01-26-26,01-26-26,0,0,SLAC,0%,52198.52198_METSMANF (METSD Manufacturing),52198_METSMANF (METSD Manufacturing),Labor,0.0d,1.0,1.0,At Completion Units,6/2/2025,6/2/2025,0,0,0,0,0,0,0,0,0,0,1.03_Accelerator Systems (AS),1.03.06_AS Soft X-Ray Undulator (SXR) - SLAC,1.03.06.20_AS Soft X-Ray Undulator Installation - SLAC,1.03.06.20.03_SXR Undulator Installation,AS_SXU_INST_2810_Install Undulator - SXU_HE_28,Manufacturing,,SLAC,Labor
105731,1.03,1.03.06,1.03.06.20,1.03.06.20.03,1.03.06.20.03,SXR Undulator Installation,AS_SXU_INST_2805,PAMM Management - SXU_HE_28,3.0,6.0,6.0,6.0,01-26-26,01-28-26,0,0,SLAC,0%,52169.52169_METS Mechanical Engineer,52169_METS Mechanical Engineer,Labor,0.0d,3.0,3.0,At Completion Units,6/2/2025,6/4/2025,0,0,0,0,0,0,0,0,0,0,1.03_Accelerator Systems (AS),1.03.06_AS Soft X-Ray Undulator (SXR) - SLAC,1.03.06.20_AS Soft X-Ray Undulator Installation - SLAC,1.03.06.20.03_SXR Undulator Installation,AS_SXU_INST_2805_PAMM Management - SXU_HE_28,Mechanical,,SLAC,Labor
105732,1.03,1.03.06,1.03.06.20,1.03.06.20.03,1.03.06.20.03,SXR Undulator Installation,AS_SXU_INST_2800,Remove Undulator from Tunnel - SXU_REFB_S,1.0,15.0,15.0,15.0,01-06-25,01-06-25,0,0,SLAC,0%,52152.52152_FAC Fleet,52152_FAC Fleet,Labor,0.0d,1.0,1.0,At Completion Units,1/6/2025,1/6/2025,0,0,0,0,0,0,0,0,0,0,1.03_Accelerator Systems (AS),1.03.06_AS Soft X-Ray Undulator (SXR) - SLAC,1.03.06.20_AS Soft X-Ray Undulator Installation - SLAC,1.03.06.20.03_SXR Undulator Installation,AS_SXU_INST_2800_Remove Undulator from Tunnel - SXU_REFB_S,Support System,,SLAC,Labor
105733,1.03,1.03.06,1.03.06.20,1.03.06.20.03,1.03.06.20.03,SXR Undulator Installation,AS_SXU_INST_2800,Remove Undulator from Tunnel - SXU_REFB_S,1.0,6.0,6.0,6.0,01-06-25,01-06-25,0,0,SLAC,0%,52169.52169_METS Mechanical Engineer,52169_METS Mechanical Engineer,Labor,0.0d,1.0,1.0,At Completion Units,1/6/2025,1/6/2025,0,0,0,0,0,0,0,0,0,0,1.03_Accelerator Systems (AS),1.03.06_AS Soft X-Ray Undulator (SXR) - SLAC,1.03.06.20_AS Soft X-Ray Undulator Installation - SLAC,1.03.06.20.03_SXR Undulator Installation,AS_SXU_INST_2800_Remove Undulator from Tunnel - SXU_REFB_S,Mechanical,,SLAC,Labor
105734,1.03,1.03.06,1.03.06.20,1.03.06.20.03,1.03.06.20.03,SXR Undulator Installation,AS_SXU_INST_2800,Remove Undulator from Tunnel - SXU_REFB_S,1.0,40.0,40.0,40.0,01-06-25,01-06-25,0,0,SLAC,0%,52198.52198_METSMANF (METSD Manufacturing),52198_METSMANF (METSD Manufacturing),Labor,0.0d,1.0,1.0,At Completion Units,1/6/2025,1/6/2025,0,0,0,0,0,0,0,0,0,0,1.03_Accelerator Systems (AS),1.03.06_AS Soft X-Ray Undulator (SXR) - SLAC,1.03.06.20_AS Soft X-Ray Undulator Installation - SLAC,1.03.06.20.03_SXR Undulator Installation,AS_SXU_INST_2800_Remove Undulator from Tunnel - SXU_REFB_S,Manufacturing,,SLAC,Labor
105735,1.03,1.03.06,1.03.06.20,1.03.06.20.03,1.03.06.20.03,SXR Undulator Installation,AS_SXU_INST_2700,Remove Undulator from Tunnel - SXU_REFB_R,1.0,15.0,15.0,15.0,01-06-25,01-06-25,0,0,SLAC,0%,52152.52152_FAC Fleet,52152_FAC Fleet,Labor,0.0d,1.0,1.0,At Completion Units,1/6/2025,1/6/2025,0,0,0,0,0,0,0,0,0,0,1.03_Accelerator Systems (AS),1.03.06_AS Soft X-Ray Undulator (SXR) - SLAC,1.03.06.20_AS Soft X-Ray Undulator Installation - SLAC,1.03.06.20.03_SXR Undulator Installation,AS_SXU_INST_2700_Remove Undulator from Tunnel - SXU_REFB_R,Support System,,SLAC,Labor
105736,1.03,1.03.06,1.03.06.20,1.03.06.20.03,1.03.06.20.03,SXR Undulator Installation,AS_SXU_INST_2700,Remove Undulator from Tunnel - SXU_REFB_R,1.0,6.0,6.0,6.0,01-06-25,01-06-25,0,0,SLAC,0%,52169.52169_METS Mechanical Engineer,52169_METS Mechanical Engineer,Labor,0.0d,1.0,1.0,At Completion Units,1/6/2025,1/6/2025,0,0,0,0,0,0,0,0,0,0,1.03_Accelerator Systems (AS),1.03.06_AS Soft X-Ray Undulator (SXR) - SLAC,1.03.06.20_AS Soft X-Ray Undulator Installation - SLAC,1.03.06.20.03_SXR Undulator Installation,AS_SXU_INST_2700_Remove Undulator from Tunnel - SXU_REFB_R,Mechanical,,SLAC,Labor
105737,1.03,1.03.06,1.03.06.20,1.03.06.20.03,1.03.06.20.03,SXR Undulator Installation,AS_SXU_INST_2700,Remove Undulator from Tunnel - SXU_REFB_R,1.0,40.0,40.0,40.0,01-06-25,01-06-25,0,0,SLAC,0%,52198.52198_METSMANF (METSD Manufacturing),52198_METSMANF (METSD Manufacturing),Labor,0.0d,1.0,1.0,At Completion Units,1/6/2025,1/6/2025,0,0,0,0,0,0,0,0,0,0,1.03_Accelerator Systems (AS),1.03.06_AS Soft X-Ray Undulator (SXR) - SLAC,1.03.06.20_AS Soft X-Ray Undulator Installation - SLAC,1.03.06.20.03_SXR Undulator Installation,AS_SXU_INST_2700_Remove Undulator from Tunnel - SXU_REFB_R,Manufacturing,,SLAC,Labor
105738,1.03,1.03.06,1.03.06.20,1.03.06.20.03,1.03.06.20.03,SXR Undulator Installation,AS_SXU_INST_2710,Install Undulator - SXU_HE_27,1.0,2.0,2.0,2.0,12-19-25,12-19-25,0,0,SLAC,0%,52190.52190_METSTP Tech Planning - Reinstated FY16,52190_METSTP Tech Planning - Reinstated FY16,Labor,0.0d,1.0,1.0,At Completion Units,5/9/2025,5/9/2025,0,0,0,0,0,0,0,0,0,0,1.03_Accelerator Systems (AS),1.03.06_AS Soft X-Ray Undulator (SXR) - SLAC,1.03.06.20_AS Soft X-Ray Undulator Installation - SLAC,1.03.06.20.03_SXR Undulator Installation,AS_SXU_INST_2710_Install Undulator - SXU_HE_27,METSTPT Tech Planning,Tech,SLAC,Labor
105739,1.03,1.03.06,1.03.06.20,1.03.06.20.03,1.03.06.20.03,SXR Undulator Installation,AS_SXU_INST_2710,Install Undulator - SXU_HE_27,1.0,12.0,12.0,12.0,12-19-25,12-19-25,0,0,SLAC,0%,52152.52152_FAC Fleet,52152_FAC Fleet,Labor,0.0d,1.0,1.0,At Completion Units,5/9/2025,5/9/2025,0,0,0,0,0,0,0,0,0,0,1.03_Accelerator Systems (AS),1.03.06_AS Soft X-Ray Undulator (SXR) - SLAC,1.03.06.20_AS Soft X-Ray Undulator Installation - SLAC,1.03.06.20.03_SXR Undulator Installation,AS_SXU_INST_2710_Install Undulator - SXU_HE_27,Support System,,SLAC,Labor
105740,1.03,1.03.06,1.03.06.20,1.03.06.20.03,1.03.06.20.03,SXR Undulator Installation,AS_SXU_INST_2705,PAMM Management - SXU_HE_27,3.0,2.0,2.0,2.0,12-19-25,01-06-26,0,0,SLAC,0%,52155.52155_Health Physics Technician III,52155_Health Physics Technician III,Labor,0.0d,3.0,3.0,At Completion Units,5/9/2025,5/13/2025,0,0,0,0,0,0,0,0,0,0,1.03_Accelerator Systems (AS),1.03.06_AS Soft X-Ray Undulator (SXR) - SLAC,1.03.06.20_AS Soft X-Ray Undulator Installation - SLAC,1.03.06.20.03_SXR Undulator Installation,AS_SXU_INST_2705_PAMM Management - SXU_HE_27,Support System,Tech,SLAC,Labor
105741,1.03,1.03.06,1.03.06.20,1.03.06.20.03,1.03.06.20.03,SXR Undulator Installation,AS_SXU_INST_2730,Pre-beam checkout - SXU_HE_27,1.0,5.0,5.0,5.0,01-06-26,01-06-26,0,0,SLAC,0%,52213.52213_EEDHW (Electronics & Engineering Div - HW Engr),52213_EEDHW (Electronics & Engineering Div - HW Engr),Labor,0.0d,1.0,1.0,At Completion Units,5/13/2025,5/13/2025,0,0,0,0,0,0,0,0,0,0,1.03_Accelerator Systems (AS),1.03.06_AS Soft X-Ray Undulator (SXR) - SLAC,1.03.06.20_AS Soft X-Ray Undulator Installation - SLAC,1.03.06.20.03_SXR Undulator Installation,AS_SXU_INST_2730_Pre-beam checkout - SXU_HE_27,Electrical,,SLAC,Labor
105742,1.03,1.03.06,1.03.06.20,1.03.06.20.03,1.03.06.20.03,SXR Undulator Installation,AS_SXU_INST_2730,Pre-beam checkout - SXU_HE_27,1.0,2.0,2.0,2.0,01-06-26,01-06-26,0,0,SLAC,0%,52169.52169_METS Mechanical Engineer,52169_METS Mechanical Engineer,Labor,0.0d,1.0,1.0,At Completion Units,5/13/2025,5/13/2025,0,0,0,0,0,0,0,0,0,0,1.03_Accelerator Systems (AS),1.03.06_AS Soft X-Ray Undulator (SXR) - SLAC,1.03.06.20_AS Soft X-Ray Undulator Installation - SLAC,1.03.06.20.03_SXR Undulator Installation,AS_SXU_INST_2730_Pre-beam checkout - SXU_HE_27,Mechanical,,SLAC,Labor
105743,1.03,1.03.06,1.03.06.20,1.03.06.20.03,1.03.06.20.03,SXR Undulator Installation,AS_SXU_INST_2730,Pre-beam checkout - SXU_HE_27,1.0,8.0,8.0,8.0,01-06-26,01-06-26,0,0,SLAC,0%,0106.0106_Staff Scientist,0106_Staff Scientist,Labor,0.0d,1.0,1.0,At Completion Units,5/13/2025,5/13/2025,0,0,0,0,0,0,0,0,0,0,1.03_Accelerator Systems (AS),1.03.06_AS Soft X-Ray Undulator (SXR) - SLAC,1.03.06.20_AS Soft X-Ray Undulator Installation - SLAC,1.03.06.20.03_SXR Undulator Installation,AS_SXU_INST_2730_Pre-beam checkout - SXU_HE_27,Scientist,,SLAC,Labor
105744,1.03,1.03.06,1.03.06.20,1.03.06.20.03,1.03.06.20.03,SXR Undulator Installation,AS_SXU_INST_2730,Pre-beam checkout - SXU_HE_27,1.0,12.0,12.0,12.0,01-06-26,01-06-26,0,0,SLAC,0%,52191.52191_METSMET Metrology,52191_METSMET Metrology,Labor,0.0d,1.0,1.0,At Completion Units,5/13/2025,5/13/2025,0,0,0,0,0,0,0,0,0,0,1.03_Accelerator Systems (AS),1.03.06_AS Soft X-Ray Undulator (SXR) - SLAC,1.03.06.20_AS Soft X-Ray Undulator Installation - SLAC,1.03.06.20.03_SXR Undulator Installation,AS_SXU_INST_2730_Pre-beam checkout - SXU_HE_27,Metrology,,SLAC,Labor
105745,1.03,1.03.06,1.03.06.20,1.03.06.20.03,1.03.06.20.03,SXR Undulator Installation,AS_SXU_INST_2720,Perform technical checkouts - SXU_HE_27,1.0,4.0,4.0,4.0,01-05-26,01-05-26,0,0,SLAC,0%,52211.52211_EEDOPSE (Electronics & Engineering Div - Ops & PSE),52211_EEDOPSE (Electronics & Engineering Div - Ops & PSE),Labor,0.0d,1.0,1.0,At Completion Units,5/12/2025,5/12/2025,0,0,0,0,0,0,0,0,0,0,1.03_Accelerator Systems (AS),1.03.06_AS Soft X-Ray Undulator (SXR) - SLAC,1.03.06.20_AS Soft X-Ray Undulator Installation - SLAC,1.03.06.20.03_SXR Undulator Installation,AS_SXU_INST_2720_Perform technical checkouts - SXU_HE_27,Electrical,,SLAC,Labor
105746,1.03,1.03.06,1.03.06.20,1.03.06.20.03,1.03.06.20.03,SXR Undulator Installation,AS_SXU_INST_2720,Perform technical checkouts - SXU_HE_27,1.0,8.0,8.0,8.0,01-05-26,01-05-26,0,0,SLAC,0%,52127.52127_Research Electrical & SW Engineer,52127_Research Electrical & SW Engineer,Labor,0.0d,1.0,1.0,At Completion Units,5/12/2025,5/12/2025,0,0,0,0,0,0,0,0,0,0,1.03_Accelerator Systems (AS),1.03.06_AS Soft X-Ray Undulator (SXR) - SLAC,1.03.06.20_AS Soft X-Ray Undulator Installation - SLAC,1.03.06.20.03_SXR Undulator Installation,AS_SXU_INST_2720_Perform technical checkouts - SXU_HE_27,Electrical,,SLAC,Labor
105747,1.03,1.03.06,1.03.06.20,1.03.06.20.03,1.03.06.20.03,SXR Undulator Installation,AS_SXU_INST_2720,Perform technical checkouts - SXU_HE_27,1.0,20.0,20.0,20.0,01-05-26,01-05-26,0,0,SLAC,0%,52213.52213_EEDHW (Electronics & Engineering Div - HW Engr),52213_EEDHW (Electronics & Engineering Div - HW Engr),Labor,0.0d,1.0,1.0,At Completion Units,5/12/2025,5/12/2025,0,0,0,0,0,0,0,0,0,0,1.03_Accelerator Systems (AS),1.03.06_AS Soft X-Ray Undulator (SXR) - SLAC,1.03.06.20_AS Soft X-Ray Undulator Installation - SLAC,1.03.06.20.03_SXR Undulator Installation,AS_SXU_INST_2720_Perform technical checkouts - SXU_HE_27,Electrical,,SLAC,Labor
105748,1.03,1.03.06,1.03.06.20,1.03.06.20.03,1.03.06.20.03,SXR Undulator Installation,AS_SXU_INST_2720,Perform technical checkouts - SXU_HE_27,1.0,6.0,6.0,6.0,01-05-26,01-05-26,0,0,SLAC,0%,52169.52169_METS Mechanical Engineer,52169_METS Mechanical Engineer,Labor,0.0d,1.0,1.0,At Completion Units,5/12/2025,5/12/2025,0,0,0,0,0,0,0,0,0,0,1.03_Accelerator Systems (AS),1.03.06_AS Soft X-Ray Undulator (SXR) - SLAC,1.03.06.20_AS Soft X-Ray Undulator Installation - SLAC,1.03.06.20.03_SXR Undulator Installation,AS_SXU_INST_2720_Perform technical checkouts - SXU_HE_27,Mechanical,,SLAC,Labor
105749,1.03,1.03.06,1.03.06.20,1.03.06.20.03,1.03.06.20.03,SXR Undulator Installation,AS_SXU_INST_2720,Perform technical checkouts - SXU_HE_27,1.0,4.0,4.0,4.0,01-05-26,01-05-26,0,0,SLAC,0%,0106.0106_Staff Scientist,0106_Staff Scientist,Labor,0.0d,1.0,1.0,At Completion Units,5/12/2025,5/12/2025,0,0,0,0,0,0,0,0,0,0,1.03_Accelerator Systems (AS),1.03.06_AS Soft X-Ray Undulator (SXR) - SLAC,1.03.06.20_AS Soft X-Ray Undulator Installation - SLAC,1.03.06.20.03_SXR Undulator Installation,AS_SXU_INST_2720_Perform technical checkouts - SXU_HE_27,Scientist,,SLAC,Labor
105750,1.03,1.03.06,1.03.06.20,1.03.06.20.03,1.03.06.20.03,SXR Undulator Installation,AS_SXU_INST_2720,Perform technical checkouts - SXU_HE_27,1.0,4.0,4.0,4.0,01-05-26,01-05-26,0,0,SLAC,0%,52198.52198_METSMANF (METSD Manufacturing),52198_METSMANF (METSD Manufacturing),Labor,0.0d,1.0,1.0,At Completion Units,5/12/2025,5/12/2025,0,0,0,0,0,0,0,0,0,0,1.03_Accelerator Systems (AS),1.03.06_AS Soft X-Ray Undulator (SXR) - SLAC,1.03.06.20_AS Soft X-Ray Undulator Installation - SLAC,1.03.06.20.03_SXR Undulator Installation,AS_SXU_INST_2720_Perform technical checkouts - SXU_HE_27,Manufacturing,,SLAC,Labor
105751,1.03,1.03.06,1.03.06.20,1.03.06.20.03,1.03.06.20.03,SXR Undulator Installation,AS_SXU_INST_2710,Install Undulator - SXU_HE_27,1.0,12.0,12.0,12.0,12-19-25,12-19-25,0,0,SLAC,0%,52169.52169_METS Mechanical Engineer,52169_METS Mechanical Engineer,Labor,0.0d,1.0,1.0,At Completion Units,5/9/2025,5/9/2025,0,0,0,0,0,0,0,0,0,0,1.03_Accelerator Systems (AS),1.03.06_AS Soft X-Ray Undulator (SXR) - SLAC,1.03.06.20_AS Soft X-Ray Undulator Installation - SLAC,1.03.06.20.03_SXR Undulator Installation,AS_SXU_INST_2710_Install Undulator - SXU_HE_27,Mechanical,,SLAC,Labor
105752,1.03,1.03.06,1.03.06.20,1.03.06.20.03,1.03.06.20.03,SXR Undulator Installation,AS_SXU_INST_2710,Install Undulator - SXU_HE_27,1.0,4.0,4.0,4.0,12-19-25,12-19-25,0,0,SLAC,0%,0106.0106_Staff Scientist,0106_Staff Scientist,Labor,0.0d,1.0,1.0,At Completion Units,5/9/2025,5/9/2025,0,0,0,0,0,0,0,0,0,0,1.03_Accelerator Systems (AS),1.03.06_AS Soft X-Ray Undulator (SXR) - SLAC,1.03.06.20_AS Soft X-Ray Undulator Installation - SLAC,1.03.06.20.03_SXR Undulator Installation,AS_SXU_INST_2710_Install Undulator - SXU_HE_27,Scientist,,SLAC,Labor
105753,1.03,1.03.06,1.03.06.20,1.03.06.20.03,1.03.06.20.03,SXR Undulator Installation,AS_SXU_INST_2710,Install Undulator - SXU_HE_27,1.0,8.0,8.0,8.0,12-19-25,12-19-25,0,0,SLAC,0%,52191.52191_METSMET Metrology,52191_METSMET Metrology,Labor,0.0d,1.0,1.0,At Completion Units,5/9/2025,5/9/2025,0,0,0,0,0,0,0,0,0,0,1.03_Accelerator Systems (AS),1.03.06_AS Soft X-Ray Undulator (SXR) - SLAC,1.03.06.20_AS Soft X-Ray Undulator Installation - SLAC,1.03.06.20.03_SXR Undulator Installation,AS_SXU_INST_2710_Install Undulator - SXU_HE_27,Metrology,,SLAC,Labor
105754,1.03,1.03.06,1.03.06.20,1.03.06.20.03,1.03.06.20.03,SXR Undulator Installation,AS_SXU_INST_2710,Install Undulator - SXU_HE_27,1.0,34.0,34.0,34.0,12-19-25,12-19-25,0,0,SLAC,0%,52198.52198_METSMANF (METSD Manufacturing),52198_METSMANF (METSD Manufacturing),Labor,0.0d,1.0,1.0,At Completion Units,5/9/2025,5/9/2025,0,0,0,0,0,0,0,0,0,0,1.03_Accelerator Systems (AS),1.03.06_AS Soft X-Ray Undulator (SXR) - SLAC,1.03.06.20_AS Soft X-Ray Undulator Installation - SLAC,1.03.06.20.03_SXR Undulator Installation,AS_SXU_INST_2710_Install Undulator - SXU_HE_27,Manufacturing,,SLAC,Labor
105755,1.03,1.03.06,1.03.06.20,1.03.06.20.03,1.03.06.20.03,SXR Undulator Installation,AS_SXU_INST_2705,PAMM Management - SXU_HE_27,3.0,6.0,6.0,6.0,12-19-25,01-06-26,0,0,SLAC,0%,52169.52169_METS Mechanical Engineer,52169_METS Mechanical Engineer,Labor,0.0d,3.0,3.0,At Completion Units,5/9/2025,5/13/2025,0,0,0,0,0,0,0,0,0,0,1.03_Accelerator Systems (AS),1.03.06_AS Soft X-Ray Undulator (SXR) - SLAC,1.03.06.20_AS Soft X-Ray Undulator Installation - SLAC,1.03.06.20.03_SXR Undulator Installation,AS_SXU_INST_2705_PAMM Management - SXU_HE_27,Mechanical,,SLAC,Labor
105756,1.03,1.03.06,1.03.06.20,1.03.06.20.03,1.03.06.20.03,SXR Undulator Installation,AS_SXU_INST_2600,Remove Undulator from Tunnel - SXU_REFB_Q,1.0,15.0,15.0,15.0,11-05-24,11-06-24,0,0,SLAC,0%,52152.52152_FAC Fleet,52152_FAC Fleet,Labor,0.0d,1.0,1.0,At Completion Units,11/5/2024,11/6/2024,0,0,0,0,0,0,0,0,0,0,1.03_Accelerator Systems (AS),1.03.06_AS Soft X-Ray Undulator (SXR) - SLAC,1.03.06.20_AS Soft X-Ray Undulator Installation - SLAC,1.03.06.20.03_SXR Undulator Installation,AS_SXU_INST_2600_Remove Undulator from Tunnel - SXU_REFB_Q,Support System,,SLAC,Labor
105757,1.03,1.03.06,1.03.06.20,1.03.06.20.03,1.03.06.20.03,SXR Undulator Installation,AS_SXU_INST_2600,Remove Undulator from Tunnel - SXU_REFB_Q,1.0,6.0,6.0,6.0,11-05-24,11-06-24,0,0,SLAC,0%,52169.52169_METS Mechanical Engineer,52169_METS Mechanical Engineer,Labor,0.0d,1.0,1.0,At Completion Units,11/5/2024,11/6/2024,0,0,0,0,0,0,0,0,0,0,1.03_Accelerator Systems (AS),1.03.06_AS Soft X-Ray Undulator (SXR) - SLAC,1.03.06.20_AS Soft X-Ray Undulator Installation - SLAC,1.03.06.20.03_SXR Undulator Installation,AS_SXU_INST_2600_Remove Undulator from Tunnel - SXU_REFB_Q,Mechanical,,SLAC,Labor
105758,1.03,1.03.06,1.03.06.20,1.03.06.20.03,1.03.06.20.03,SXR Undulator Installation,AS_SXU_INST_2600,Remove Undulator from Tunnel - SXU_REFB_Q,1.0,40.0,40.0,40.0,11-05-24,11-06-24,0,0,SLAC,0%,52198.52198_METSMANF (METSD Manufacturing),52198_METSMANF (METSD Manufacturing),Labor,0.0d,1.0,1.0,At Completion Units,11/5/2024,11/6/2024,0,0,0,0,0,0,0,0,0,0,1.03_Accelerator Systems (AS),1.03.06_AS Soft X-Ray Undulator (SXR) - SLAC,1.03.06.20_AS Soft X-Ray Undulator Installation - SLAC,1.03.06.20.03_SXR Undulator Installation,AS_SXU_INST_2600_Remove Undulator from Tunnel - SXU_REFB_Q,Manufacturing,,SLAC,Labor
105759,1.03,1.03.06,1.03.06.20,1.03.06.20.03,1.03.06.20.03,SXR Undulator Installation,AS_SXU_INST_2610,Install Undulator - SXU_HE_26,1.0,2.0,2.0,2.0,11-26-25,11-26-25,0,0,SLAC,0%,52190.52190_METSTP Tech Planning - Reinstated FY16,52190_METSTP Tech Planning - Reinstated FY16,Labor,0.0d,1.0,1.0,At Completion Units,4/18/2025,4/18/2025,0,0,0,0,0,0,0,0,0,0,1.03_Accelerator Systems (AS),1.03.06_AS Soft X-Ray Undulator (SXR) - SLAC,1.03.06.20_AS Soft X-Ray Undulator Installation - SLAC,1.03.06.20.03_SXR Undulator Installation,AS_SXU_INST_2610_Install Undulator - SXU_HE_26,METSTPT Tech Planning,Tech,SLAC,Labor
105760,1.03,1.03.06,1.03.06.20,1.03.06.20.03,1.03.06.20.03,SXR Undulator Installation,AS_SXU_INST_2610,Install Undulator - SXU_HE_26,1.0,12.0,12.0,12.0,11-26-25,11-26-25,0,0,SLAC,0%,52152.52152_FAC Fleet,52152_FAC Fleet,Labor,0.0d,1.0,1.0,At Completion Units,4/18/2025,4/18/2025,0,0,0,0,0,0,0,0,0,0,1.03_Accelerator Systems (AS),1.03.06_AS Soft X-Ray Undulator (SXR) - SLAC,1.03.06.20_AS Soft X-Ray Undulator Installation - SLAC,1.03.06.20.03_SXR Undulator Installation,AS_SXU_INST_2610_Install Undulator - SXU_HE_26,Support System,,SLAC,Labor
105761,1.03,1.03.06,1.03.06.20,1.03.06.20.03,1.03.06.20.03,SXR Undulator Installation,AS_SXU_INST_2605,PAMM Management - SXU_HE_26,3.0,2.0,2.0,2.0,11-26-25,12-02-25,0,0,SLAC,0%,52155.52155_Health Physics Technician III,52155_Health Physics Technician III,Labor,0.0d,3.0,3.0,At Completion Units,4/18/2025,4/22/2025,0,0,0,0,0,0,0,0,0,0,1.03_Accelerator Systems (AS),1.03.06_AS Soft X-Ray Undulator (SXR) - SLAC,1.03.06.20_AS Soft X-Ray Undulator Installation - SLAC,1.03.06.20.03_SXR Undulator Installation,AS_SXU_INST_2605_PAMM Management - SXU_HE_26,Support System,Tech,SLAC,Labor
105762,1.03,1.03.06,1.03.06.20,1.03.06.20.03,1.03.06.20.03,SXR Undulator Installation,AS_SXU_INST_2630,Pre-beam checkout - SXU_HE_26,1.0,5.0,5.0,5.0,12-02-25,12-02-25,0,0,SLAC,0%,52213.52213_EEDHW (Electronics & Engineering Div - HW Engr),52213_EEDHW (Electronics & Engineering Div - HW Engr),Labor,0.0d,1.0,1.0,At Completion Units,4/22/2025,4/22/2025,0,0,0,0,0,0,0,0,0,0,1.03_Accelerator Systems (AS),1.03.06_AS Soft X-Ray Undulator (SXR) - SLAC,1.03.06.20_AS Soft X-Ray Undulator Installation - SLAC,1.03.06.20.03_SXR Undulator Installation,AS_SXU_INST_2630_Pre-beam checkout - SXU_HE_26,Electrical,,SLAC,Labor
105763,1.03,1.03.06,1.03.06.20,1.03.06.20.03,1.03.06.20.03,SXR Undulator Installation,AS_SXU_INST_2630,Pre-beam checkout - SXU_HE_26,1.0,2.0,2.0,2.0,12-02-25,12-02-25,0,0,SLAC,0%,52169.52169_METS Mechanical Engineer,52169_METS Mechanical Engineer,Labor,0.0d,1.0,1.0,At Completion Units,4/22/2025,4/22/2025,0,0,0,0,0,0,0,0,0,0,1.03_Accelerator Systems (AS),1.03.06_AS Soft X-Ray Undulator (SXR) - SLAC,1.03.06.20_AS Soft X-Ray Undulator Installation - SLAC,1.03.06.20.03_SXR Undulator Installation,AS_SXU_INST_2630_Pre-beam checkout - SXU_HE_26,Mechanical,,SLAC,Labor
105764,1.03,1.03.06,1.03.06.20,1.03.06.20.03,1.03.06.20.03,SXR Undulator Installation,AS_SXU_INST_2630,Pre-beam checkout - SXU_HE_26,1.0,8.0,8.0,8.0,12-02-25,12-02-25,0,0,SLAC,0%,0106.0106_Staff Scientist,0106_Staff Scientist,Labor,0.0d,1.0,1.0,At Completion Units,4/22/2025,4/22/2025,0,0,0,0,0,0,0,0,0,0,1.03_Accelerator Systems (AS),1.03.06_AS Soft X-Ray Undulator (SXR) - SLAC,1.03.06.20_AS Soft X-Ray Undulator Installation - SLAC,1.03.06.20.03_SXR Undulator Installation,AS_SXU_INST_2630_Pre-beam checkout - SXU_HE_26,Scientist,,SLAC,Labor
105765,1.03,1.03.06,1.03.06.20,1.03.06.20.03,1.03.06.20.03,SXR Undulator Installation,AS_SXU_INST_2630,Pre-beam checkout - SXU_HE_26,1.0,12.0,12.0,12.0,12-02-25,12-02-25,0,0,SLAC,0%,52191.52191_METSMET Metrology,52191_METSMET Metrology,Labor,0.0d,1.0,1.0,At Completion Units,4/22/2025,4/22/2025,0,0,0,0,0,0,0,0,0,0,1.03_Accelerator Systems (AS),1.03.06_AS Soft X-Ray Undulator (SXR) - SLAC,1.03.06.20_AS Soft X-Ray Undulator Installation - SLAC,1.03.06.20.03_SXR Undulator Installation,AS_SXU_INST_2630_Pre-beam checkout - SXU_HE_26,Metrology,,SLAC,Labor
105766,1.03,1.03.06,1.03.06.20,1.03.06.20.03,1.03.06.20.03,SXR Undulator Installation,AS_SXU_INST_2620,Perform technical checkouts - SXU_HE_26,1.0,4.0,4.0,4.0,12-01-25,12-01-25,0,0,SLAC,0%,52211.52211_EEDOPSE (Electronics & Engineering Div - Ops & PSE),52211_EEDOPSE (Electronics & Engineering Div - Ops & PSE),Labor,0.0d,1.0,1.0,At Completion Units,4/21/2025,4/21/2025,0,0,0,0,0,0,0,0,0,0,1.03_Accelerator Systems (AS),1.03.06_AS Soft X-Ray Undulator (SXR) - SLAC,1.03.06.20_AS Soft X-Ray Undulator Installation - SLAC,1.03.06.20.03_SXR Undulator Installation,AS_SXU_INST_2620_Perform technical checkouts - SXU_HE_26,Electrical,,SLAC,Labor
105767,1.03,1.03.06,1.03.06.20,1.03.06.20.03,1.03.06.20.03,SXR Undulator Installation,AS_SXU_INST_2620,Perform technical checkouts - SXU_HE_26,1.0,8.0,8.0,8.0,12-01-25,12-01-25,0,0,SLAC,0%,52127.52127_Research Electrical & SW Engineer,52127_Research Electrical & SW Engineer,Labor,0.0d,1.0,1.0,At Completion Units,4/21/2025,4/21/2025,0,0,0,0,0,0,0,0,0,0,1.03_Accelerator Systems (AS),1.03.06_AS Soft X-Ray Undulator (SXR) - SLAC,1.03.06.20_AS Soft X-Ray Undulator Installation - SLAC,1.03.06.20.03_SXR Undulator Installation,AS_SXU_INST_2620_Perform technical checkouts - SXU_HE_26,Electrical,,SLAC,Labor
105768,1.03,1.03.06,1.03.06.20,1.03.06.20.03,1.03.06.20.03,SXR Undulator Installation,AS_SXU_INST_2620,Perform technical checkouts - SXU_HE_26,1.0,20.0,20.0,20.0,12-01-25,12-01-25,0,0,SLAC,0%,52213.52213_EEDHW (Electronics & Engineering Div - HW Engr),52213_EEDHW (Electronics & Engineering Div - HW Engr),Labor,0.0d,1.0,1.0,At Completion Units,4/21/2025,4/21/2025,0,0,0,0,0,0,0,0,0,0,1.03_Accelerator Systems (AS),1.03.06_AS Soft X-Ray Undulator (SXR) - SLAC,1.03.06.20_AS Soft X-Ray Undulator Installation - SLAC,1.03.06.20.03_SXR Undulator Installation,AS_SXU_INST_2620_Perform technical checkouts - SXU_HE_26,Electrical,,SLAC,Labor
105769,1.03,1.03.06,1.03.06.20,1.03.06.20.03,1.03.06.20.03,SXR Undulator Installation,AS_SXU_INST_2620,Perform technical checkouts - SXU_HE_26,1.0,6.0,6.0,6.0,12-01-25,12-01-25,0,0,SLAC,0%,52169.52169_METS Mechanical Engineer,52169_METS Mechanical Engineer,Labor,0.0d,1.0,1.0,At Completion Units,4/21/2025,4/21/2025,0,0,0,0,0,0,0,0,0,0,1.03_Accelerator Systems (AS),1.03.06_AS Soft X-Ray Undulator (SXR) - SLAC,1.03.06.20_AS Soft X-Ray Undulator Installation - SLAC,1.03.06.20.03_SXR Undulator Installation,AS_SXU_INST_2620_Perform technical checkouts - SXU_HE_26,Mechanical,,SLAC,Labor
105770,1.03,1.03.06,1.03.06.20,1.03.06.20.03,1.03.06.20.03,SXR Undulator Installation,AS_SXU_INST_2620,Perform technical checkouts - SXU_HE_26,1.0,4.0,4.0,4.0,12-01-25,12-01-25,0,0,SLAC,0%,0106.0106_Staff Scientist,0106_Staff Scientist,Labor,0.0d,1.0,1.0,At Completion Units,4/21/2025,4/21/2025,0,0,0,0,0,0,0,0,0,0,1.03_Accelerator Systems (AS),1.03.06_AS Soft X-Ray Undulator (SXR) - SLAC,1.03.06.20_AS Soft X-Ray Undulator Installation - SLAC,1.03.06.20.03_SXR Undulator Installation,AS_SXU_INST_2620_Perform technical checkouts - SXU_HE_26,Scientist,,SLAC,Labor
105771,1.03,1.03.06,1.03.06.20,1.03.06.20.03,1.03.06.20.03,SXR Undulator Installation,AS_SXU_INST_2620,Perform technical checkouts - SXU_HE_26,1.0,4.0,4.0,4.0,12-01-25,12-01-25,0,0,SLAC,0%,52198.52198_METSMANF (METSD Manufacturing),52198_METSMANF (METSD Manufacturing),Labor,0.0d,1.0,1.0,At Completion Units,4/21/2025,4/21/2025,0,0,0,0,0,0,0,0,0,0,1.03_Accelerator Systems (AS),1.03.06_AS Soft X-Ray Undulator (SXR) - SLAC,1.03.06.20_AS Soft X-Ray Undulator Installation - SLAC,1.03.06.20.03_SXR Undulator Installation,AS_SXU_INST_2620_Perform technical checkouts - SXU_HE_26,Manufacturing,,SLAC,Labor
105772,1.03,1.03.06,1.03.06.20,1.03.06.20.03,1.03.06.20.03,SXR Undulator Installation,AS_SXU_INST_2610,Install Undulator - SXU_HE_26,1.0,12.0,12.0,12.0,11-26-25,11-26-25,0,0,SLAC,0%,52169.52169_METS Mechanical Engineer,52169_METS Mechanical Engineer,Labor,0.0d,1.0,1.0,At Completion Units,4/18/2025,4/18/2025,0,0,0,0,0,0,0,0,0,0,1.03_Accelerator Systems (AS),1.03.06_AS Soft X-Ray Undulator (SXR) - SLAC,1.03.06.20_AS Soft X-Ray Undulator Installation - SLAC,1.03.06.20.03_SXR Undulator Installation,AS_SXU_INST_2610_Install Undulator - SXU_HE_26,Mechanical,,SLAC,Labor
105773,1.03,1.03.06,1.03.06.20,1.03.06.20.03,1.03.06.20.03,SXR Undulator Installation,AS_SXU_INST_2610,Install Undulator - SXU_HE_26,1.0,4.0,4.0,4.0,11-26-25,11-26-25,0,0,SLAC,0%,0106.0106_Staff Scientist,0106_Staff Scientist,Labor,0.0d,1.0,1.0,At Completion Units,4/18/2025,4/18/2025,0,0,0,0,0,0,0,0,0,0,1.03_Accelerator Systems (AS),1.03.06_AS Soft X-Ray Undulator (SXR) - SLAC,1.03.06.20_AS Soft X-Ray Undulator Installation - SLAC,1.03.06.20.03_SXR Undulator Installation,AS_SXU_INST_2610_Install Undulator - SXU_HE_26,Scientist,,SLAC,Labor
105774,1.03,1.03.06,1.03.06.20,1.03.06.20.03,1.03.06.20.03,SXR Undulator Installation,AS_SXU_INST_2610,Install Undulator - SXU_HE_26,1.0,8.0,8.0,8.0,11-26-25,11-26-25,0,0,SLAC,0%,52191.52191_METSMET Metrology,52191_METSMET Metrology,Labor,0.0d,1.0,1.0,At Completion Units,4/18/2025,4/18/2025,0,0,0,0,0,0,0,0,0,0,1.03_Accelerator Systems (AS),1.03.06_AS Soft X-Ray Undulator (SXR) - SLAC,1.03.06.20_AS Soft X-Ray Undulator Installation - SLAC,1.03.06.20.03_SXR Undulator Installation,AS_SXU_INST_2610_Install Undulator - SXU_HE_26,Metrology,,SLAC,Labor
105775,1.03,1.03.06,1.03.06.20,1.03.06.20.03,1.03.06.20.03,SXR Undulator Installation,AS_SXU_INST_2610,Install Undulator - SXU_HE_26,1.0,34.0,34.0,34.0,11-26-25,11-26-25,0,0,SLAC,0%,52198.52198_METSMANF (METSD Manufacturing),52198_METSMANF (METSD Manufacturing),Labor,0.0d,1.0,1.0,At Completion Units,4/18/2025,4/18/2025,0,0,0,0,0,0,0,0,0,0,1.03_Accelerator Systems (AS),1.03.06_AS Soft X-Ray Undulator (SXR) - SLAC,1.03.06.20_AS Soft X-Ray Undulator Installation - SLAC,1.03.06.20.03_SXR Undulator Installation,AS_SXU_INST_2610_Install Undulator - SXU_HE_26,Manufacturing,,SLAC,Labor
105776,1.03,1.03.06,1.03.06.20,1.03.06.20.03,1.03.06.20.03,SXR Undulator Installation,AS_SXU_INST_2605,PAMM Management - SXU_HE_26,3.0,6.0,6.0,6.0,11-26-25,12-02-25,0,0,SLAC,0%,52169.52169_METS Mechanical Engineer,52169_METS Mechanical Engineer,Labor,0.0d,3.0,3.0,At Completion Units,4/18/2025,4/22/2025,0,0,0,0,0,0,0,0,0,0,1.03_Accelerator Systems (AS),1.03.06_AS Soft X-Ray Undulator (SXR) - SLAC,1.03.06.20_AS Soft X-Ray Undulator Installation - SLAC,1.03.06.20.03_SXR Undulator Installation,AS_SXU_INST_2605_PAMM Management - SXU_HE_26,Mechanical,,SLAC,Labor
105777,1.03,1.03.06,1.03.06.20,1.03.06.20.03,1.03.06.20.03,SXR Undulator Installation,AS_SXU_INST_2500,Remove Undulator from Tunnel - SXU_REFB_P,1.0,15.0,15.0,15.0,11-05-24,11-06-24,0,0,SLAC,0%,52152.52152_FAC Fleet,52152_FAC Fleet,Labor,0.0d,1.0,1.0,At Completion Units,11/5/2024,11/6/2024,0,0,0,0,0,0,0,0,0,0,1.03_Accelerator Systems (AS),1.03.06_AS Soft X-Ray Undulator (SXR) - SLAC,1.03.06.20_AS Soft X-Ray Undulator Installation - SLAC,1.03.06.20.03_SXR Undulator Installation,AS_SXU_INST_2500_Remove Undulator from Tunnel - SXU_REFB_P,Support System,,SLAC,Labor
105778,1.03,1.03.06,1.03.06.20,1.03.06.20.03,1.03.06.20.03,SXR Undulator Installation,AS_SXU_INST_2500,Remove Undulator from Tunnel - SXU_REFB_P,1.0,6.0,6.0,6.0,11-05-24,11-06-24,0,0,SLAC,0%,52169.52169_METS Mechanical Engineer,52169_METS Mechanical Engineer,Labor,0.0d,1.0,1.0,At Completion Units,11/5/2024,11/6/2024,0,0,0,0,0,0,0,0,0,0,1.03_Accelerator Systems (AS),1.03.06_AS Soft X-Ray Undulator (SXR) - SLAC,1.03.06.20_AS Soft X-Ray Undulator Installation - SLAC,1.03.06.20.03_SXR Undulator Installation,AS_SXU_INST_2500_Remove Undulator from Tunnel - SXU_REFB_P,Mechanical,,SLAC,Labor
105779,1.03,1.03.06,1.03.06.20,1.03.06.20.03,1.03.06.20.03,SXR Undulator Installation,AS_SXU_INST_2500,Remove Undulator from Tunnel - SXU_REFB_P,1.0,40.0,40.0,40.0,11-05-24,11-06-24,0,0,SLAC,0%,52198.52198_METSMANF (METSD Manufacturing),52198_METSMANF (METSD Manufacturing),Labor,0.0d,1.0,1.0,At Completion Units,11/5/2024,11/6/2024,0,0,0,0,0,0,0,0,0,0,1.03_Accelerator Systems (AS),1.03.06_AS Soft X-Ray Undulator (SXR) - SLAC,1.03.06.20_AS Soft X-Ray Undulator Installation - SLAC,1.03.06.20.03_SXR Undulator Installation,AS_SXU_INST_2500_Remove Undulator from Tunnel - SXU_REFB_P,Manufacturing,,SLAC,Labor
105780,1.03,1.03.06,1.03.06.20,1.03.06.20.03,1.03.06.20.03,SXR Undulator Installation,AS_SXU_INST_2510,Install Undulator - SXU_HE_25,1.0,2.0,2.0,2.0,11-05-25,11-05-25,0,0,SLAC,0%,52190.52190_METSTP Tech Planning - Reinstated FY16,52190_METSTP Tech Planning - Reinstated FY16,Labor,0.0d,1.0,1.0,At Completion Units,3/28/2025,3/28/2025,0,0,0,0,0,0,0,0,0,0,1.03_Accelerator Systems (AS),1.03.06_AS Soft X-Ray Undulator (SXR) - SLAC,1.03.06.20_AS Soft X-Ray Undulator Installation - SLAC,1.03.06.20.03_SXR Undulator Installation,AS_SXU_INST_2510_Install Undulator - SXU_HE_25,METSTPT Tech Planning,Tech,SLAC,Labor
105781,1.03,1.03.06,1.03.06.20,1.03.06.20.03,1.03.06.20.03,SXR Undulator Installation,AS_SXU_INST_2510,Install Undulator - SXU_HE_25,1.0,12.0,12.0,12.0,11-05-25,11-05-25,0,0,SLAC,0%,52152.52152_FAC Fleet,52152_FAC Fleet,Labor,0.0d,1.0,1.0,At Completion Units,3/28/2025,3/28/2025,0,0,0,0,0,0,0,0,0,0,1.03_Accelerator Systems (AS),1.03.06_AS Soft X-Ray Undulator (SXR) - SLAC,1.03.06.20_AS Soft X-Ray Undulator Installation - SLAC,1.03.06.20.03_SXR Undulator Installation,AS_SXU_INST_2510_Install Undulator - SXU_HE_25,Support System,,SLAC,Labor
105782,1.03,1.03.06,1.03.06.20,1.03.06.20.03,1.03.06.20.03,SXR Undulator Installation,AS_SXU_INST_2505,PAMM Management - SXU_HE_25,3.0,2.0,2.0,2.0,11-05-25,11-07-25,0,0,SLAC,0%,52155.52155_Health Physics Technician III,52155_Health Physics Technician III,Labor,0.0d,3.0,3.0,At Completion Units,3/28/2025,4/1/2025,0,0,0,0,0,0,0,0,0,0,1.03_Accelerator Systems (AS),1.03.06_AS Soft X-Ray Undulator (SXR) - SLAC,1.03.06.20_AS Soft X-Ray Undulator Installation - SLAC,1.03.06.20.03_SXR Undulator Installation,AS_SXU_INST_2505_PAMM Management - SXU_HE_25,Support System,Tech,SLAC,Labor
105783,1.03,1.03.06,1.03.06.20,1.03.06.20.03,1.03.06.20.03,SXR Undulator Installation,AS_SXU_INST_2530,Pre-beam checkout - SXU_HE_25,1.0,5.0,5.0,5.0,11-07-25,11-07-25,0,0,SLAC,0%,52213.52213_EEDHW (Electronics & Engineering Div - HW Engr),52213_EEDHW (Electronics & Engineering Div - HW Engr),Labor,0.0d,1.0,1.0,At Completion Units,4/1/2025,4/1/2025,0,0,0,0,0,0,0,0,0,0,1.03_Accelerator Systems (AS),1.03.06_AS Soft X-Ray Undulator (SXR) - SLAC,1.03.06.20_AS Soft X-Ray Undulator Installation - SLAC,1.03.06.20.03_SXR Undulator Installation,AS_SXU_INST_2530_Pre-beam checkout - SXU_HE_25,Electrical,,SLAC,Labor
105784,1.03,1.03.06,1.03.06.20,1.03.06.20.03,1.03.06.20.03,SXR Undulator Installation,AS_SXU_INST_2530,Pre-beam checkout - SXU_HE_25,1.0,2.0,2.0,2.0,11-07-25,11-07-25,0,0,SLAC,0%,52169.52169_METS Mechanical Engineer,52169_METS Mechanical Engineer,Labor,0.0d,1.0,1.0,At Completion Units,4/1/2025,4/1/2025,0,0,0,0,0,0,0,0,0,0,1.03_Accelerator Systems (AS),1.03.06_AS Soft X-Ray Undulator (SXR) - SLAC,1.03.06.20_AS Soft X-Ray Undulator Installation - SLAC,1.03.06.20.03_SXR Undulator Installation,AS_SXU_INST_2530_Pre-beam checkout - SXU_HE_25,Mechanical,,SLAC,Labor
105785,1.03,1.03.06,1.03.06.20,1.03.06.20.03,1.03.06.20.03,SXR Undulator Installation,AS_SXU_INST_2530,Pre-beam checkout - SXU_HE_25,1.0,8.0,8.0,8.0,11-07-25,11-07-25,0,0,SLAC,0%,0106.0106_Staff Scientist,0106_Staff Scientist,Labor,0.0d,1.0,1.0,At Completion Units,4/1/2025,4/1/2025,0,0,0,0,0,0,0,0,0,0,1.03_Accelerator Systems (AS),1.03.06_AS Soft X-Ray Undulator (SXR) - SLAC,1.03.06.20_AS Soft X-Ray Undulator Installation - SLAC,1.03.06.20.03_SXR Undulator Installation,AS_SXU_INST_2530_Pre-beam checkout - SXU_HE_25,Scientist,,SLAC,Labor
105786,1.03,1.03.06,1.03.06.20,1.03.06.20.03,1.03.06.20.03,SXR Undulator Installation,AS_SXU_INST_2530,Pre-beam checkout - SXU_HE_25,1.0,12.0,12.0,12.0,11-07-25,11-07-25,0,0,SLAC,0%,52191.52191_METSMET Metrology,52191_METSMET Metrology,Labor,0.0d,1.0,1.0,At Completion Units,4/1/2025,4/1/2025,0,0,0,0,0,0,0,0,0,0,1.03_Accelerator Systems (AS),1.03.06_AS Soft X-Ray Undulator (SXR) - SLAC,1.03.06.20_AS Soft X-Ray Undulator Installation - SLAC,1.03.06.20.03_SXR Undulator Installation,AS_SXU_INST_2530_Pre-beam checkout - SXU_HE_25,Metrology,,SLAC,Labor
105787,1.03,1.03.06,1.03.06.20,1.03.06.20.03,1.03.06.20.03,SXR Undulator Installation,AS_SXU_INST_2520,Perform technical checkouts - SXU_HE_25,1.0,4.0,4.0,4.0,11-06-25,11-06-25,0,0,SLAC,0%,52211.52211_EEDOPSE (Electronics & Engineering Div - Ops & PSE),52211_EEDOPSE (Electronics & Engineering Div - Ops & PSE),Labor,0.0d,1.0,1.0,At Completion Units,3/31/2025,3/31/2025,0,0,0,0,0,0,0,0,0,0,1.03_Accelerator Systems (AS),1.03.06_AS Soft X-Ray Undulator (SXR) - SLAC,1.03.06.20_AS Soft X-Ray Undulator Installation - SLAC,1.03.06.20.03_SXR Undulator Installation,AS_SXU_INST_2520_Perform technical checkouts - SXU_HE_25,Electrical,,SLAC,Labor
105788,1.03,1.03.06,1.03.06.20,1.03.06.20.03,1.03.06.20.03,SXR Undulator Installation,AS_SXU_INST_2520,Perform technical checkouts - SXU_HE_25,1.0,8.0,8.0,8.0,11-06-25,11-06-25,0,0,SLAC,0%,52127.52127_Research Electrical & SW Engineer,52127_Research Electrical & SW Engineer,Labor,0.0d,1.0,1.0,At Completion Units,3/31/2025,3/31/2025,0,0,0,0,0,0,0,0,0,0,1.03_Accelerator Systems (AS),1.03.06_AS Soft X-Ray Undulator (SXR) - SLAC,1.03.06.20_AS Soft X-Ray Undulator Installation - SLAC,1.03.06.20.03_SXR Undulator Installation,AS_SXU_INST_2520_Perform technical checkouts - SXU_HE_25,Electrical,,SLAC,Labor
105789,1.03,1.03.06,1.03.06.20,1.03.06.20.03,1.03.06.20.03,SXR Undulator Installation,AS_SXU_INST_2520,Perform technical checkouts - SXU_HE_25,1.0,20.0,20.0,20.0,11-06-25,11-06-25,0,0,SLAC,0%,52213.52213_EEDHW (Electronics & Engineering Div - HW Engr),52213_EEDHW (Electronics & Engineering Div - HW Engr),Labor,0.0d,1.0,1.0,At Completion Units,3/31/2025,3/31/2025,0,0,0,0,0,0,0,0,0,0,1.03_Accelerator Systems (AS),1.03.06_AS Soft X-Ray Undulator (SXR) - SLAC,1.03.06.20_AS Soft X-Ray Undulator Installation - SLAC,1.03.06.20.03_SXR Undulator Installation,AS_SXU_INST_2520_Perform technical checkouts - SXU_HE_25,Electrical,,SLAC,Labor
105790,1.03,1.03.06,1.03.06.20,1.03.06.20.03,1.03.06.20.03,SXR Undulator Installation,AS_SXU_INST_2520,Perform technical checkouts - SXU_HE_25,1.0,6.0,6.0,6.0,11-06-25,11-06-25,0,0,SLAC,0%,52169.52169_METS Mechanical Engineer,52169_METS Mechanical Engineer,Labor,0.0d,1.0,1.0,At Completion Units,3/31/2025,3/31/2025,0,0,0,0,0,0,0,0,0,0,1.03_Accelerator Systems (AS),1.03.06_AS Soft X-Ray Undulator (SXR) - SLAC,1.03.06.20_AS Soft X-Ray Undulator Installation - SLAC,1.03.06.20.03_SXR Undulator Installation,AS_SXU_INST_2520_Perform technical checkouts - SXU_HE_25,Mechanical,,SLAC,Labor
105791,1.03,1.03.06,1.03.06.20,1.03.06.20.03,1.03.06.20.03,SXR Undulator Installation,AS_SXU_INST_2520,Perform technical checkouts - SXU_HE_25,1.0,4.0,4.0,4.0,11-06-25,11-06-25,0,0,SLAC,0%,0106.0106_Staff Scientist,0106_Staff Scientist,Labor,0.0d,1.0,1.0,At Completion Units,3/31/2025,3/31/2025,0,0,0,0,0,0,0,0,0,0,1.03_Accelerator Systems (AS),1.03.06_AS Soft X-Ray Undulator (SXR) - SLAC,1.03.06.20_AS Soft X-Ray Undulator Installation - SLAC,1.03.06.20.03_SXR Undulator Installation,AS_SXU_INST_2520_Perform technical checkouts - SXU_HE_25,Scientist,,SLAC,Labor
105792,1.03,1.03.06,1.03.06.20,1.03.06.20.03,1.03.06.20.03,SXR Undulator Installation,AS_SXU_INST_2520,Perform technical checkouts - SXU_HE_25,1.0,4.0,4.0,4.0,11-06-25,11-06-25,0,0,SLAC,0%,52198.52198_METSMANF (METSD Manufacturing),52198_METSMANF (METSD Manufacturing),Labor,0.0d,1.0,1.0,At Completion Units,3/31/2025,3/31/2025,0,0,0,0,0,0,0,0,0,0,1.03_Accelerator Systems (AS),1.03.06_AS Soft X-Ray Undulator (SXR) - SLAC,1.03.06.20_AS Soft X-Ray Undulator Installation - SLAC,1.03.06.20.03_SXR Undulator Installation,AS_SXU_INST_2520_Perform technical checkouts - SXU_HE_25,Manufacturing,,SLAC,Labor
105793,1.03,1.03.06,1.03.06.20,1.03.06.20.03,1.03.06.20.03,SXR Undulator Installation,AS_SXU_INST_2510,Install Undulator - SXU_HE_25,1.0,12.0,12.0,12.0,11-05-25,11-05-25,0,0,SLAC,0%,52169.52169_METS Mechanical Engineer,52169_METS Mechanical Engineer,Labor,0.0d,1.0,1.0,At Completion Units,3/28/2025,3/28/2025,0,0,0,0,0,0,0,0,0,0,1.03_Accelerator Systems (AS),1.03.06_AS Soft X-Ray Undulator (SXR) - SLAC,1.03.06.20_AS Soft X-Ray Undulator Installation - SLAC,1.03.06.20.03_SXR Undulator Installation,AS_SXU_INST_2510_Install Undulator - SXU_HE_25,Mechanical,,SLAC,Labor
105794,1.03,1.03.06,1.03.06.20,1.03.06.20.03,1.03.06.20.03,SXR Undulator Installation,AS_SXU_INST_2510,Install Undulator - SXU_HE_25,1.0,4.0,4.0,4.0,11-05-25,11-05-25,0,0,SLAC,0%,0106.0106_Staff Scientist,0106_Staff Scientist,Labor,0.0d,1.0,1.0,At Completion Units,3/28/2025,3/28/2025,0,0,0,0,0,0,0,0,0,0,1.03_Accelerator Systems (AS),1.03.06_AS Soft X-Ray Undulator (SXR) - SLAC,1.03.06.20_AS Soft X-Ray Undulator Installation - SLAC,1.03.06.20.03_SXR Undulator Installation,AS_SXU_INST_2510_Install Undulator - SXU_HE_25,Scientist,,SLAC,Labor
105795,1.03,1.03.06,1.03.06.20,1.03.06.20.03,1.03.06.20.03,SXR Undulator Installation,AS_SXU_INST_2510,Install Undulator - SXU_HE_25,1.0,8.0,8.0,8.0,11-05-25,11-05-25,0,0,SLAC,0%,52191.52191_METSMET Metrology,52191_METSMET Metrology,Labor,0.0d,1.0,1.0,At Completion Units,3/28/2025,3/28/2025,0,0,0,0,0,0,0,0,0,0,1.03_Accelerator Systems (AS),1.03.06_AS Soft X-Ray Undulator (SXR) - SLAC,1.03.06.20_AS Soft X-Ray Undulator Installation - SLAC,1.03.06.20.03_SXR Undulator Installation,AS_SXU_INST_2510_Install Undulator - SXU_HE_25,Metrology,,SLAC,Labor
105796,1.03,1.03.06,1.03.06.20,1.03.06.20.03,1.03.06.20.03,SXR Undulator Installation,AS_SXU_INST_2510,Install Undulator - SXU_HE_25,1.0,34.0,34.0,34.0,11-05-25,11-05-25,0,0,SLAC,0%,52198.52198_METSMANF (METSD Manufacturing),52198_METSMANF (METSD Manufacturing),Labor,0.0d,1.0,1.0,At Completion Units,3/28/2025,3/28/2025,0,0,0,0,0,0,0,0,0,0,1.03_Accelerator Systems (AS),1.03.06_AS Soft X-Ray Undulator (SXR) - SLAC,1.03.06.20_AS Soft X-Ray Undulator Installation - SLAC,1.03.06.20.03_SXR Undulator Installation,AS_SXU_INST_2510_Install Undulator - SXU_HE_25,Manufacturing,,SLAC,Labor
105797,1.03,1.03.06,1.03.06.20,1.03.06.20.03,1.03.06.20.03,SXR Undulator Installation,AS_SXU_INST_2505,PAMM Management - SXU_HE_25,3.0,6.0,6.0,6.0,11-05-25,11-07-25,0,0,SLAC,0%,52169.52169_METS Mechanical Engineer,52169_METS Mechanical Engineer,Labor,0.0d,3.0,3.0,At Completion Units,3/28/2025,4/1/2025,0,0,0,0,0,0,0,0,0,0,1.03_Accelerator Systems (AS),1.03.06_AS Soft X-Ray Undulator (SXR) - SLAC,1.03.06.20_AS Soft X-Ray Undulator Installation - SLAC,1.03.06.20.03_SXR Undulator Installation,AS_SXU_INST_2505_PAMM Management - SXU_HE_25,Mechanical,,SLAC,Labor
105798,1.03,1.03.06,1.03.06.20,1.03.06.20.03,1.03.06.20.03,SXR Undulator Installation,AS_SXU_INST_2400,Remove Undulator from Tunnel - SXU_REFB_O,1.0,15.0,15.0,15.0,08-26-24,08-27-24,0,0,SLAC,0%,52152.52152_FAC Fleet,52152_FAC Fleet,Labor,0.0d,1.0,1.0,At Completion Units,8/26/2024,8/27/2024,0,0,0,0,0,0,0,0,0,0,1.03_Accelerator Systems (AS),1.03.06_AS Soft X-Ray Undulator (SXR) - SLAC,1.03.06.20_AS Soft X-Ray Undulator Installation - SLAC,1.03.06.20.03_SXR Undulator Installation,AS_SXU_INST_2400_Remove Undulator from Tunnel - SXU_REFB_O,Support System,,SLAC,Labor
105799,1.03,1.03.06,1.03.06.20,1.03.06.20.03,1.03.06.20.03,SXR Undulator Installation,AS_SXU_INST_2400,Remove Undulator from Tunnel - SXU_REFB_O,1.0,6.0,6.0,6.0,08-26-24,08-27-24,0,0,SLAC,0%,52169.52169_METS Mechanical Engineer,52169_METS Mechanical Engineer,Labor,0.0d,1.0,1.0,At Completion Units,8/26/2024,8/27/2024,0,0,0,0,0,0,0,0,0,0,1.03_Accelerator Systems (AS),1.03.06_AS Soft X-Ray Undulator (SXR) - SLAC,1.03.06.20_AS Soft X-Ray Undulator Installation - SLAC,1.03.06.20.03_SXR Undulator Installation,AS_SXU_INST_2400_Remove Undulator from Tunnel - SXU_REFB_O,Mechanical,,SLAC,Labor
105800,1.03,1.03.06,1.03.06.20,1.03.06.20.03,1.03.06.20.03,SXR Undulator Installation,AS_SXU_INST_2400,Remove Undulator from Tunnel - SXU_REFB_O,1.0,40.0,40.0,40.0,08-26-24,08-27-24,0,0,SLAC,0%,52198.52198_METSMANF (METSD Manufacturing),52198_METSMANF (METSD Manufacturing),Labor,0.0d,1.0,1.0,At Completion Units,8/26/2024,8/27/2024,0,0,0,0,0,0,0,0,0,0,1.03_Accelerator Systems (AS),1.03.06_AS Soft X-Ray Undulator (SXR) - SLAC,1.03.06.20_AS Soft X-Ray Undulator Installation - SLAC,1.03.06.20.03_SXR Undulator Installation,AS_SXU_INST_2400_Remove Undulator from Tunnel - SXU_REFB_O,Manufacturing,,SLAC,Labor
105801,1.03,1.03.06,1.03.06.20,1.03.06.20.03,1.03.06.20.03,SXR Undulator Installation,AS_SXU_INST_2410,Install Undulator - SXU_HE_24,1.0,2.0,2.0,2.0,10-15-25,10-15-25,0,0,SLAC,0%,52190.52190_METSTP Tech Planning - Reinstated FY16,52190_METSTP Tech Planning - Reinstated FY16,Labor,0.0d,1.0,1.0,At Completion Units,3/7/2025,3/7/2025,0,0,0,0,0,0,0,0,0,0,1.03_Accelerator Systems (AS),1.03.06_AS Soft X-Ray Undulator (SXR) - SLAC,1.03.06.20_AS Soft X-Ray Undulator Installation - SLAC,1.03.06.20.03_SXR Undulator Installation,AS_SXU_INST_2410_Install Undulator - SXU_HE_24,METSTPT Tech Planning,Tech,SLAC,Labor
105802,1.03,1.03.06,1.03.06.20,1.03.06.20.03,1.03.06.20.03,SXR Undulator Installation,AS_SXU_INST_2410,Install Undulator - SXU_HE_24,1.0,12.0,12.0,12.0,10-15-25,10-15-25,0,0,SLAC,0%,52152.52152_FAC Fleet,52152_FAC Fleet,Labor,0.0d,1.0,1.0,At Completion Units,3/7/2025,3/7/2025,0,0,0,0,0,0,0,0,0,0,1.03_Accelerator Systems (AS),1.03.06_AS Soft X-Ray Undulator (SXR) - SLAC,1.03.06.20_AS Soft X-Ray Undulator Installation - SLAC,1.03.06.20.03_SXR Undulator Installation,AS_SXU_INST_2410_Install Undulator - SXU_HE_24,Support System,,SLAC,Labor
105803,1.03,1.03.06,1.03.06.20,1.03.06.20.03,1.03.06.20.03,SXR Undulator Installation,AS_SXU_INST_2405,PAMM Management - SXU_HE_24,3.0,2.0,2.0,2.0,10-15-25,10-17-25,0,0,SLAC,0%,52155.52155_Health Physics Technician III,52155_Health Physics Technician III,Labor,0.0d,3.0,3.0,At Completion Units,3/7/2025,3/11/2025,0,0,0,0,0,0,0,0,0,0,1.03_Accelerator Systems (AS),1.03.06_AS Soft X-Ray Undulator (SXR) - SLAC,1.03.06.20_AS Soft X-Ray Undulator Installation - SLAC,1.03.06.20.03_SXR Undulator Installation,AS_SXU_INST_2405_PAMM Management - SXU_HE_24,Support System,Tech,SLAC,Labor
105804,1.03,1.03.06,1.03.06.20,1.03.06.20.03,1.03.06.20.03,SXR Undulator Installation,AS_SXU_INST_2430,Pre-beam checkout - SXU_HE_24,1.0,5.0,5.0,5.0,10-17-25,10-17-25,0,0,SLAC,0%,52213.52213_EEDHW (Electronics & Engineering Div - HW Engr),52213_EEDHW (Electronics & Engineering Div - HW Engr),Labor,0.0d,1.0,1.0,At Completion Units,3/11/2025,3/11/2025,0,0,0,0,0,0,0,0,0,0,1.03_Accelerator Systems (AS),1.03.06_AS Soft X-Ray Undulator (SXR) - SLAC,1.03.06.20_AS Soft X-Ray Undulator Installation - SLAC,1.03.06.20.03_SXR Undulator Installation,AS_SXU_INST_2430_Pre-beam checkout - SXU_HE_24,Electrical,,SLAC,Labor
105805,1.03,1.03.06,1.03.06.20,1.03.06.20.03,1.03.06.20.03,SXR Undulator Installation,AS_SXU_INST_2430,Pre-beam checkout - SXU_HE_24,1.0,2.0,2.0,2.0,10-17-25,10-17-25,0,0,SLAC,0%,52169.52169_METS Mechanical Engineer,52169_METS Mechanical Engineer,Labor,0.0d,1.0,1.0,At Completion Units,3/11/2025,3/11/2025,0,0,0,0,0,0,0,0,0,0,1.03_Accelerator Systems (AS),1.03.06_AS Soft X-Ray Undulator (SXR) - SLAC,1.03.06.20_AS Soft X-Ray Undulator Installation - SLAC,1.03.06.20.03_SXR Undulator Installation,AS_SXU_INST_2430_Pre-beam checkout - SXU_HE_24,Mechanical,,SLAC,Labor
105806,1.03,1.03.06,1.03.06.20,1.03.06.20.03,1.03.06.20.03,SXR Undulator Installation,AS_SXU_INST_2430,Pre-beam checkout - SXU_HE_24,1.0,8.0,8.0,8.0,10-17-25,10-17-25,0,0,SLAC,0%,0106.0106_Staff Scientist,0106_Staff Scientist,Labor,0.0d,1.0,1.0,At Completion Units,3/11/2025,3/11/2025,0,0,0,0,0,0,0,0,0,0,1.03_Accelerator Systems (AS),1.03.06_AS Soft X-Ray Undulator (SXR) - SLAC,1.03.06.20_AS Soft X-Ray Undulator Installation - SLAC,1.03.06.20.03_SXR Undulator Installation,AS_SXU_INST_2430_Pre-beam checkout - SXU_HE_24,Scientist,,SLAC,Labor
105807,1.03,1.03.06,1.03.06.20,1.03.06.20.03,1.03.06.20.03,SXR Undulator Installation,AS_SXU_INST_2430,Pre-beam checkout - SXU_HE_24,1.0,12.0,12.0,12.0,10-17-25,10-17-25,0,0,SLAC,0%,52191.52191_METSMET Metrology,52191_METSMET Metrology,Labor,0.0d,1.0,1.0,At Completion Units,3/11/2025,3/11/2025,0,0,0,0,0,0,0,0,0,0,1.03_Accelerator Systems (AS),1.03.06_AS Soft X-Ray Undulator (SXR) - SLAC,1.03.06.20_AS Soft X-Ray Undulator Installation - SLAC,1.03.06.20.03_SXR Undulator Installation,AS_SXU_INST_2430_Pre-beam checkout - SXU_HE_24,Metrology,,SLAC,Labor
105808,1.03,1.03.06,1.03.06.20,1.03.06.20.03,1.03.06.20.03,SXR Undulator Installation,AS_SXU_INST_2420,Perform technical checkouts - SXU_HE_24,1.0,4.0,4.0,4.0,10-16-25,10-16-25,0,0,SLAC,0%,52211.52211_EEDOPSE (Electronics & Engineering Div - Ops & PSE),52211_EEDOPSE (Electronics & Engineering Div - Ops & PSE),Labor,0.0d,1.0,1.0,At Completion Units,3/10/2025,3/10/2025,0,0,0,0,0,0,0,0,0,0,1.03_Accelerator Systems (AS),1.03.06_AS Soft X-Ray Undulator (SXR) - SLAC,1.03.06.20_AS Soft X-Ray Undulator Installation - SLAC,1.03.06.20.03_SXR Undulator Installation,AS_SXU_INST_2420_Perform technical checkouts - SXU_HE_24,Electrical,,SLAC,Labor
105809,1.03,1.03.06,1.03.06.20,1.03.06.20.03,1.03.06.20.03,SXR Undulator Installation,AS_SXU_INST_2420,Perform technical checkouts - SXU_HE_24,1.0,8.0,8.0,8.0,10-16-25,10-16-25,0,0,SLAC,0%,52127.52127_Research Electrical & SW Engineer,52127_Research Electrical & SW Engineer,Labor,0.0d,1.0,1.0,At Completion Units,3/10/2025,3/10/2025,0,0,0,0,0,0,0,0,0,0,1.03_Accelerator Systems (AS),1.03.06_AS Soft X-Ray Undulator (SXR) - SLAC,1.03.06.20_AS Soft X-Ray Undulator Installation - SLAC,1.03.06.20.03_SXR Undulator Installation,AS_SXU_INST_2420_Perform technical checkouts - SXU_HE_24,Electrical,,SLAC,Labor
105810,1.03,1.03.06,1.03.06.20,1.03.06.20.03,1.03.06.20.03,SXR Undulator Installation,AS_SXU_INST_2420,Perform technical checkouts - SXU_HE_24,1.0,20.0,20.0,20.0,10-16-25,10-16-25,0,0,SLAC,0%,52213.52213_EEDHW (Electronics & Engineering Div - HW Engr),52213_EEDHW (Electronics & Engineering Div - HW Engr),Labor,0.0d,1.0,1.0,At Completion Units,3/10/2025,3/10/2025,0,0,0,0,0,0,0,0,0,0,1.03_Accelerator Systems (AS),1.03.06_AS Soft X-Ray Undulator (SXR) - SLAC,1.03.06.20_AS Soft X-Ray Undulator Installation - SLAC,1.03.06.20.03_SXR Undulator Installation,AS_SXU_INST_2420_Perform technical checkouts - SXU_HE_24,Electrical,,SLAC,Labor
105811,1.03,1.03.06,1.03.06.20,1.03.06.20.03,1.03.06.20.03,SXR Undulator Installation,AS_SXU_INST_2420,Perform technical checkouts - SXU_HE_24,1.0,6.0,6.0,6.0,10-16-25,10-16-25,0,0,SLAC,0%,52169.52169_METS Mechanical Engineer,52169_METS Mechanical Engineer,Labor,0.0d,1.0,1.0,At Completion Units,3/10/2025,3/10/2025,0,0,0,0,0,0,0,0,0,0,1.03_Accelerator Systems (AS),1.03.06_AS Soft X-Ray Undulator (SXR) - SLAC,1.03.06.20_AS Soft X-Ray Undulator Installation - SLAC,1.03.06.20.03_SXR Undulator Installation,AS_SXU_INST_2420_Perform technical checkouts - SXU_HE_24,Mechanical,,SLAC,Labor
105812,1.03,1.03.06,1.03.06.20,1.03.06.20.03,1.03.06.20.03,SXR Undulator Installation,AS_SXU_INST_2420,Perform technical checkouts - SXU_HE_24,1.0,4.0,4.0,4.0,10-16-25,10-16-25,0,0,SLAC,0%,0106.0106_Staff Scientist,0106_Staff Scientist,Labor,0.0d,1.0,1.0,At Completion Units,3/10/2025,3/10/2025,0,0,0,0,0,0,0,0,0,0,1.03_Accelerator Systems (AS),1.03.06_AS Soft X-Ray Undulator (SXR) - SLAC,1.03.06.20_AS Soft X-Ray Undulator Installation - SLAC,1.03.06.20.03_SXR Undulator Installation,AS_SXU_INST_2420_Perform technical checkouts - SXU_HE_24,Scientist,,SLAC,Labor
105813,1.03,1.03.06,1.03.06.20,1.03.06.20.03,1.03.06.20.03,SXR Undulator Installation,AS_SXU_INST_2420,Perform technical checkouts - SXU_HE_24,1.0,4.0,4.0,4.0,10-16-25,10-16-25,0,0,SLAC,0%,52198.52198_METSMANF (METSD Manufacturing),52198_METSMANF (METSD Manufacturing),Labor,0.0d,1.0,1.0,At Completion Units,3/10/2025,3/10/2025,0,0,0,0,0,0,0,0,0,0,1.03_Accelerator Systems (AS),1.03.06_AS Soft X-Ray Undulator (SXR) - SLAC,1.03.06.20_AS Soft X-Ray Undulator Installation - SLAC,1.03.06.20.03_SXR Undulator Installation,AS_SXU_INST_2420_Perform technical checkouts - SXU_HE_24,Manufacturing,,SLAC,Labor
105814,1.03,1.03.06,1.03.06.20,1.03.06.20.03,1.03.06.20.03,SXR Undulator Installation,AS_SXU_INST_2410,Install Undulator - SXU_HE_24,1.0,12.0,12.0,12.0,10-15-25,10-15-25,0,0,SLAC,0%,52169.52169_METS Mechanical Engineer,52169_METS Mechanical Engineer,Labor,0.0d,1.0,1.0,At Completion Units,3/7/2025,3/7/2025,0,0,0,0,0,0,0,0,0,0,1.03_Accelerator Systems (AS),1.03.06_AS Soft X-Ray Undulator (SXR) - SLAC,1.03.06.20_AS Soft X-Ray Undulator Installation - SLAC,1.03.06.20.03_SXR Undulator Installation,AS_SXU_INST_2410_Install Undulator - SXU_HE_24,Mechanical,,SLAC,Labor
105815,1.03,1.03.06,1.03.06.20,1.03.06.20.03,1.03.06.20.03,SXR Undulator Installation,AS_SXU_INST_2410,Install Undulator - SXU_HE_24,1.0,4.0,4.0,4.0,10-15-25,10-15-25,0,0,SLAC,0%,0106.0106_Staff Scientist,0106_Staff Scientist,Labor,0.0d,1.0,1.0,At Completion Units,3/7/2025,3/7/2025,0,0,0,0,0,0,0,0,0,0,1.03_Accelerator Systems (AS),1.03.06_AS Soft X-Ray Undulator (SXR) - SLAC,1.03.06.20_AS Soft X-Ray Undulator Installation - SLAC,1.03.06.20.03_SXR Undulator Installation,AS_SXU_INST_2410_Install Undulator - SXU_HE_24,Scientist,,SLAC,Labor
105816,1.03,1.03.06,1.03.06.20,1.03.06.20.03,1.03.06.20.03,SXR Undulator Installation,AS_SXU_INST_2410,Install Undulator - SXU_HE_24,1.0,8.0,8.0,8.0,10-15-25,10-15-25,0,0,SLAC,0%,52191.52191_METSMET Metrology,52191_METSMET Metrology,Labor,0.0d,1.0,1.0,At Completion Units,3/7/2025,3/7/2025,0,0,0,0,0,0,0,0,0,0,1.03_Accelerator Systems (AS),1.03.06_AS Soft X-Ray Undulator (SXR) - SLAC,1.03.06.20_AS Soft X-Ray Undulator Installation - SLAC,1.03.06.20.03_SXR Undulator Installation,AS_SXU_INST_2410_Install Undulator - SXU_HE_24,Metrology,,SLAC,Labor
105817,1.03,1.03.06,1.03.06.20,1.03.06.20.03,1.03.06.20.03,SXR Undulator Installation,AS_SXU_INST_2410,Install Undulator - SXU_HE_24,1.0,34.0,34.0,34.0,10-15-25,10-15-25,0,0,SLAC,0%,52198.52198_METSMANF (METSD Manufacturing),52198_METSMANF (METSD Manufacturing),Labor,0.0d,1.0,1.0,At Completion Units,3/7/2025,3/7/2025,0,0,0,0,0,0,0,0,0,0,1.03_Accelerator Systems (AS),1.03.06_AS Soft X-Ray Undulator (SXR) - SLAC,1.03.06.20_AS Soft X-Ray Undulator Installation - SLAC,1.03.06.20.03_SXR Undulator Installation,AS_SXU_INST_2410_Install Undulator - SXU_HE_24,Manufacturing,,SLAC,Labor
105818,1.03,1.03.06,1.03.06.20,1.03.06.20.03,1.03.06.20.03,SXR Undulator Installation,AS_SXU_INST_2405,PAMM Management - SXU_HE_24,3.0,6.0,6.0,6.0,10-15-25,10-17-25,0,0,SLAC,0%,52169.52169_METS Mechanical Engineer,52169_METS Mechanical Engineer,Labor,0.0d,3.0,3.0,At Completion Units,3/7/2025,3/11/2025,0,0,0,0,0,0,0,0,0,0,1.03_Accelerator Systems (AS),1.03.06_AS Soft X-Ray Undulator (SXR) - SLAC,1.03.06.20_AS Soft X-Ray Undulator Installation - SLAC,1.03.06.20.03_SXR Undulator Installation,AS_SXU_INST_2405_PAMM Management - SXU_HE_24,Mechanical,,SLAC,Labor
105819,1.03,1.03.06,1.03.06.20,1.03.06.20.03,1.03.06.20.03,SXR Undulator Installation,AS_SXU_INST_2300,Remove Undulator from Tunnel - SXU_REFB_N,1.0,15.0,15.0,15.0,08-26-24,08-27-24,0,0,SLAC,0%,52152.52152_FAC Fleet,52152_FAC Fleet,Labor,0.0d,1.0,1.0,At Completion Units,8/26/2024,8/27/2024,0,0,0,0,0,0,0,0,0,0,1.03_Accelerator Systems (AS),1.03.06_AS Soft X-Ray Undulator (SXR) - SLAC,1.03.06.20_AS Soft X-Ray Undulator Installation - SLAC,1.03.06.20.03_SXR Undulator Installation,AS_SXU_INST_2300_Remove Undulator from Tunnel - SXU_REFB_N,Support System,,SLAC,Labor
105820,1.03,1.03.06,1.03.06.20,1.03.06.20.03,1.03.06.20.03,SXR Undulator Installation,AS_SXU_INST_2300,Remove Undulator from Tunnel - SXU_REFB_N,1.0,6.0,6.0,6.0,08-26-24,08-27-24,0,0,SLAC,0%,52169.52169_METS Mechanical Engineer,52169_METS Mechanical Engineer,Labor,0.0d,1.0,1.0,At Completion Units,8/26/2024,8/27/2024,0,0,0,0,0,0,0,0,0,0,1.03_Accelerator Systems (AS),1.03.06_AS Soft X-Ray Undulator (SXR) - SLAC,1.03.06.20_AS Soft X-Ray Undulator Installation - SLAC,1.03.06.20.03_SXR Undulator Installation,AS_SXU_INST_2300_Remove Undulator from Tunnel - SXU_REFB_N,Mechanical,,SLAC,Labor
105821,1.03,1.03.06,1.03.06.20,1.03.06.20.03,1.03.06.20.03,SXR Undulator Installation,AS_SXU_INST_2300,Remove Undulator from Tunnel - SXU_REFB_N,1.0,40.0,40.0,40.0,08-26-24,08-27-24,0,0,SLAC,0%,52198.52198_METSMANF (METSD Manufacturing),52198_METSMANF (METSD Manufacturing),Labor,0.0d,1.0,1.0,At Completion Units,8/26/2024,8/27/2024,0,0,0,0,0,0,0,0,0,0,1.03_Accelerator Systems (AS),1.03.06_AS Soft X-Ray Undulator (SXR) - SLAC,1.03.06.20_AS Soft X-Ray Undulator Installation - SLAC,1.03.06.20.03_SXR Undulator Installation,AS_SXU_INST_2300_Remove Undulator from Tunnel - SXU_REFB_N,Manufacturing,,SLAC,Labor
105822,1.03,1.03.06,1.03.06.20,1.03.06.20.03,1.03.06.20.03,SXR Undulator Installation,AS_SXU_INST_2310,Install Undulator - SXU_HE_23,1.0,2.0,2.0,2.0,09-24-25,09-24-25,0,0,SLAC,0%,52190.52190_METSTP Tech Planning - Reinstated FY16,52190_METSTP Tech Planning - Reinstated FY16,Labor,0.0d,1.0,1.0,At Completion Units,2/13/2025,2/13/2025,0,0,0,0,0,0,0,0,0,0,1.03_Accelerator Systems (AS),1.03.06_AS Soft X-Ray Undulator (SXR) - SLAC,1.03.06.20_AS Soft X-Ray Undulator Installation - SLAC,1.03.06.20.03_SXR Undulator Installation,AS_SXU_INST_2310_Install Undulator - SXU_HE_23,METSTPT Tech Planning,Tech,SLAC,Labor
105823,1.03,1.03.06,1.03.06.20,1.03.06.20.03,1.03.06.20.03,SXR Undulator Installation,AS_SXU_INST_2310,Install Undulator - SXU_HE_23,1.0,12.0,12.0,12.0,09-24-25,09-24-25,0,0,SLAC,0%,52152.52152_FAC Fleet,52152_FAC Fleet,Labor,0.0d,1.0,1.0,At Completion Units,2/13/2025,2/13/2025,0,0,0,0,0,0,0,0,0,0,1.03_Accelerator Systems (AS),1.03.06_AS Soft X-Ray Undulator (SXR) - SLAC,1.03.06.20_AS Soft X-Ray Undulator Installation - SLAC,1.03.06.20.03_SXR Undulator Installation,AS_SXU_INST_2310_Install Undulator - SXU_HE_23,Support System,,SLAC,Labor
105824,1.03,1.03.06,1.03.06.20,1.03.06.20.03,1.03.06.20.03,SXR Undulator Installation,AS_SXU_INST_2305,PAMM Management - SXU_HE_23,3.0,2.0,2.0,2.0,09-24-25,09-26-25,0,0,SLAC,0%,52155.52155_Health Physics Technician III,52155_Health Physics Technician III,Labor,0.0d,3.0,3.0,At Completion Units,2/13/2025,2/18/2025,0,0,0,0,0,0,0,0,0,0,1.03_Accelerator Systems (AS),1.03.06_AS Soft X-Ray Undulator (SXR) - SLAC,1.03.06.20_AS Soft X-Ray Undulator Installation - SLAC,1.03.06.20.03_SXR Undulator Installation,AS_SXU_INST_2305_PAMM Management - SXU_HE_23,Support System,Tech,SLAC,Labor
105825,1.03,1.03.06,1.03.06.20,1.03.06.20.03,1.03.06.20.03,SXR Undulator Installation,AS_SXU_INST_2330,Pre-beam checkout - SXU_HE_23,1.0,5.0,5.0,5.0,09-26-25,09-26-25,0,0,SLAC,0%,52213.52213_EEDHW (Electronics & Engineering Div - HW Engr),52213_EEDHW (Electronics & Engineering Div - HW Engr),Labor,0.0d,1.0,1.0,At Completion Units,2/18/2025,2/18/2025,0,0,0,0,0,0,0,0,0,0,1.03_Accelerator Systems (AS),1.03.06_AS Soft X-Ray Undulator (SXR) - SLAC,1.03.06.20_AS Soft X-Ray Undulator Installation - SLAC,1.03.06.20.03_SXR Undulator Installation,AS_SXU_INST_2330_Pre-beam checkout - SXU_HE_23,Electrical,,SLAC,Labor
105826,1.03,1.03.06,1.03.06.20,1.03.06.20.03,1.03.06.20.03,SXR Undulator Installation,AS_SXU_INST_2330,Pre-beam checkout - SXU_HE_23,1.0,2.0,2.0,2.0,09-26-25,09-26-25,0,0,SLAC,0%,52169.52169_METS Mechanical Engineer,52169_METS Mechanical Engineer,Labor,0.0d,1.0,1.0,At Completion Units,2/18/2025,2/18/2025,0,0,0,0,0,0,0,0,0,0,1.03_Accelerator Systems (AS),1.03.06_AS Soft X-Ray Undulator (SXR) - SLAC,1.03.06.20_AS Soft X-Ray Undulator Installation - SLAC,1.03.06.20.03_SXR Undulator Installation,AS_SXU_INST_2330_Pre-beam checkout - SXU_HE_23,Mechanical,,SLAC,Labor
105827,1.03,1.03.06,1.03.06.20,1.03.06.20.03,1.03.06.20.03,SXR Undulator Installation,AS_SXU_INST_2330,Pre-beam checkout - SXU_HE_23,1.0,8.0,8.0,8.0,09-26-25,09-26-25,0,0,SLAC,0%,0106.0106_Staff Scientist,0106_Staff Scientist,Labor,0.0d,1.0,1.0,At Completion Units,2/18/2025,2/18/2025,0,0,0,0,0,0,0,0,0,0,1.03_Accelerator Systems (AS),1.03.06_AS Soft X-Ray Undulator (SXR) - SLAC,1.03.06.20_AS Soft X-Ray Undulator Installation - SLAC,1.03.06.20.03_SXR Undulator Installation,AS_SXU_INST_2330_Pre-beam checkout - SXU_HE_23,Scientist,,SLAC,Labor
105828,1.03,1.03.06,1.03.06.20,1.03.06.20.03,1.03.06.20.03,SXR Undulator Installation,AS_SXU_INST_2330,Pre-beam checkout - SXU_HE_23,1.0,12.0,12.0,12.0,09-26-25,09-26-25,0,0,SLAC,0%,52191.52191_METSMET Metrology,52191_METSMET Metrology,Labor,0.0d,1.0,1.0,At Completion Units,2/18/2025,2/18/2025,0,0,0,0,0,0,0,0,0,0,1.03_Accelerator Systems (AS),1.03.06_AS Soft X-Ray Undulator (SXR) - SLAC,1.03.06.20_AS Soft X-Ray Undulator Installation - SLAC,1.03.06.20.03_SXR Undulator Installation,AS_SXU_INST_2330_Pre-beam checkout - SXU_HE_23,Metrology,,SLAC,Labor
105829,1.03,1.03.06,1.03.06.20,1.03.06.20.03,1.03.06.20.03,SXR Undulator Installation,AS_SXU_INST_2320,Perform technical checkouts - SXU_HE_23,1.0,4.0,4.0,4.0,09-25-25,09-25-25,0,0,SLAC,0%,52211.52211_EEDOPSE (Electronics & Engineering Div - Ops & PSE),52211_EEDOPSE (Electronics & Engineering Div - Ops & PSE),Labor,0.0d,1.0,1.0,At Completion Units,2/14/2025,2/14/2025,0,0,0,0,0,0,0,0,0,0,1.03_Accelerator Systems (AS),1.03.06_AS Soft X-Ray Undulator (SXR) - SLAC,1.03.06.20_AS Soft X-Ray Undulator Installation - SLAC,1.03.06.20.03_SXR Undulator Installation,AS_SXU_INST_2320_Perform technical checkouts - SXU_HE_23,Electrical,,SLAC,Labor
105830,1.03,1.03.06,1.03.06.20,1.03.06.20.03,1.03.06.20.03,SXR Undulator Installation,AS_SXU_INST_2320,Perform technical checkouts - SXU_HE_23,1.0,8.0,8.0,8.0,09-25-25,09-25-25,0,0,SLAC,0%,52127.52127_Research Electrical & SW Engineer,52127_Research Electrical & SW Engineer,Labor,0.0d,1.0,1.0,At Completion Units,2/14/2025,2/14/2025,0,0,0,0,0,0,0,0,0,0,1.03_Accelerator Systems (AS),1.03.06_AS Soft X-Ray Undulator (SXR) - SLAC,1.03.06.20_AS Soft X-Ray Undulator Installation - SLAC,1.03.06.20.03_SXR Undulator Installation,AS_SXU_INST_2320_Perform technical checkouts - SXU_HE_23,Electrical,,SLAC,Labor
105831,1.03,1.03.06,1.03.06.20,1.03.06.20.03,1.03.06.20.03,SXR Undulator Installation,AS_SXU_INST_2320,Perform technical checkouts - SXU_HE_23,1.0,20.0,20.0,20.0,09-25-25,09-25-25,0,0,SLAC,0%,52213.52213_EEDHW (Electronics & Engineering Div - HW Engr),52213_EEDHW (Electronics & Engineering Div - HW Engr),Labor,0.0d,1.0,1.0,At Completion Units,2/14/2025,2/14/2025,0,0,0,0,0,0,0,0,0,0,1.03_Accelerator Systems (AS),1.03.06_AS Soft X-Ray Undulator (SXR) - SLAC,1.03.06.20_AS Soft X-Ray Undulator Installation - SLAC,1.03.06.20.03_SXR Undulator Installation,AS_SXU_INST_2320_Perform technical checkouts - SXU_HE_23,Electrical,,SLAC,Labor
105832,1.03,1.03.06,1.03.06.20,1.03.06.20.03,1.03.06.20.03,SXR Undulator Installation,AS_SXU_INST_2320,Perform technical checkouts - SXU_HE_23,1.0,6.0,6.0,6.0,09-25-25,09-25-25,0,0,SLAC,0%,52169.52169_METS Mechanical Engineer,52169_METS Mechanical Engineer,Labor,0.0d,1.0,1.0,At Completion Units,2/14/2025,2/14/2025,0,0,0,0,0,0,0,0,0,0,1.03_Accelerator Systems (AS),1.03.06_AS Soft X-Ray Undulator (SXR) - SLAC,1.03.06.20_AS Soft X-Ray Undulator Installation - SLAC,1.03.06.20.03_SXR Undulator Installation,AS_SXU_INST_2320_Perform technical checkouts - SXU_HE_23,Mechanical,,SLAC,Labor
105833,1.03,1.03.06,1.03.06.20,1.03.06.20.03,1.03.06.20.03,SXR Undulator Installation,AS_SXU_INST_2320,Perform technical checkouts - SXU_HE_23,1.0,4.0,4.0,4.0,09-25-25,09-25-25,0,0,SLAC,0%,0106.0106_Staff Scientist,0106_Staff Scientist,Labor,0.0d,1.0,1.0,At Completion Units,2/14/2025,2/14/2025,0,0,0,0,0,0,0,0,0,0,1.03_Accelerator Systems (AS),1.03.06_AS Soft X-Ray Undulator (SXR) - SLAC,1.03.06.20_AS Soft X-Ray Undulator Installation - SLAC,1.03.06.20.03_SXR Undulator Installation,AS_SXU_INST_2320_Perform technical checkouts - SXU_HE_23,Scientist,,SLAC,Labor
105834,1.03,1.03.06,1.03.06.20,1.03.06.20.03,1.03.06.20.03,SXR Undulator Installation,AS_SXU_INST_2320,Perform technical checkouts - SXU_HE_23,1.0,4.0,4.0,4.0,09-25-25,09-25-25,0,0,SLAC,0%,52198.52198_METSMANF (METSD Manufacturing),52198_METSMANF (METSD Manufacturing),Labor,0.0d,1.0,1.0,At Completion Units,2/14/2025,2/14/2025,0,0,0,0,0,0,0,0,0,0,1.03_Accelerator Systems (AS),1.03.06_AS Soft X-Ray Undulator (SXR) - SLAC,1.03.06.20_AS Soft X-Ray Undulator Installation - SLAC,1.03.06.20.03_SXR Undulator Installation,AS_SXU_INST_2320_Perform technical checkouts - SXU_HE_23,Manufacturing,,SLAC,Labor
105835,1.03,1.03.06,1.03.06.20,1.03.06.20.03,1.03.06.20.03,SXR Undulator Installation,AS_SXU_INST_2310,Install Undulator - SXU_HE_23,1.0,12.0,12.0,12.0,09-24-25,09-24-25,0,0,SLAC,0%,52169.52169_METS Mechanical Engineer,52169_METS Mechanical Engineer,Labor,0.0d,1.0,1.0,At Completion Units,2/13/2025,2/13/2025,0,0,0,0,0,0,0,0,0,0,1.03_Accelerator Systems (AS),1.03.06_AS Soft X-Ray Undulator (SXR) - SLAC,1.03.06.20_AS Soft X-Ray Undulator Installation - SLAC,1.03.06.20.03_SXR Undulator Installation,AS_SXU_INST_2310_Install Undulator - SXU_HE_23,Mechanical,,SLAC,Labor
105836,1.03,1.03.06,1.03.06.20,1.03.06.20.03,1.03.06.20.03,SXR Undulator Installation,AS_SXU_INST_2310,Install Undulator - SXU_HE_23,1.0,4.0,4.0,4.0,09-24-25,09-24-25,0,0,SLAC,0%,0106.0106_Staff Scientist,0106_Staff Scientist,Labor,0.0d,1.0,1.0,At Completion Units,2/13/2025,2/13/2025,0,0,0,0,0,0,0,0,0,0,1.03_Accelerator Systems (AS),1.03.06_AS Soft X-Ray Undulator (SXR) - SLAC,1.03.06.20_AS Soft X-Ray Undulator Installation - SLAC,1.03.06.20.03_SXR Undulator Installation,AS_SXU_INST_2310_Install Undulator - SXU_HE_23,Scientist,,SLAC,Labor
105837,1.03,1.03.06,1.03.06.20,1.03.06.20.03,1.03.06.20.03,SXR Undulator Installation,AS_SXU_INST_2310,Install Undulator - SXU_HE_23,1.0,8.0,8.0,8.0,09-24-25,09-24-25,0,0,SLAC,0%,52191.52191_METSMET Metrology,52191_METSMET Metrology,Labor,0.0d,1.0,1.0,At Completion Units,2/13/2025,2/13/2025,0,0,0,0,0,0,0,0,0,0,1.03_Accelerator Systems (AS),1.03.06_AS Soft X-Ray Undulator (SXR) - SLAC,1.03.06.20_AS Soft X-Ray Undulator Installation - SLAC,1.03.06.20.03_SXR Undulator Installation,AS_SXU_INST_2310_Install Undulator - SXU_HE_23,Metrology,,SLAC,Labor
105838,1.03,1.03.06,1.03.06.20,1.03.06.20.03,1.03.06.20.03,SXR Undulator Installation,AS_SXU_INST_2310,Install Undulator - SXU_HE_23,1.0,34.0,34.0,34.0,09-24-25,09-24-25,0,0,SLAC,0%,52198.52198_METSMANF (METSD Manufacturing),52198_METSMANF (METSD Manufacturing),Labor,0.0d,1.0,1.0,At Completion Units,2/13/2025,2/13/2025,0,0,0,0,0,0,0,0,0,0,1.03_Accelerator Systems (AS),1.03.06_AS Soft X-Ray Undulator (SXR) - SLAC,1.03.06.20_AS Soft X-Ray Undulator Installation - SLAC,1.03.06.20.03_SXR Undulator Installation,AS_SXU_INST_2310_Install Undulator - SXU_HE_23,Manufacturing,,SLAC,Labor
105839,1.03,1.03.06,1.03.06.20,1.03.06.20.03,1.03.06.20.03,SXR Undulator Installation,AS_SXU_INST_2305,PAMM Management - SXU_HE_23,3.0,6.0,6.0,6.0,09-24-25,09-26-25,0,0,SLAC,0%,52169.52169_METS Mechanical Engineer,52169_METS Mechanical Engineer,Labor,0.0d,3.0,3.0,At Completion Units,2/13/2025,2/18/2025,0,0,0,0,0,0,0,0,0,0,1.03_Accelerator Systems (AS),1.03.06_AS Soft X-Ray Undulator (SXR) - SLAC,1.03.06.20_AS Soft X-Ray Undulator Installation - SLAC,1.03.06.20.03_SXR Undulator Installation,AS_SXU_INST_2305_PAMM Management - SXU_HE_23,Mechanical,,SLAC,Labor
105840,1.03,1.03.06,1.03.06.20,1.03.06.20.03,1.03.06.20.03,SXR Undulator Installation,AS_SXU_INST_2200,Remove Undulator from Tunnel - SXU_REFB_M,1.0,15.0,15.0,15.0,06-20-24,06-21-24,0,0,SLAC,0%,52152.52152_FAC Fleet,52152_FAC Fleet,Labor,0.0d,1.0,1.0,At Completion Units,6/20/2024,6/21/2024,0,0,0,0,0,0,0,0,0,0,1.03_Accelerator Systems (AS),1.03.06_AS Soft X-Ray Undulator (SXR) - SLAC,1.03.06.20_AS Soft X-Ray Undulator Installation - SLAC,1.03.06.20.03_SXR Undulator Installation,AS_SXU_INST_2200_Remove Undulator from Tunnel - SXU_REFB_M,Support System,,SLAC,Labor
105841,1.03,1.03.06,1.03.06.20,1.03.06.20.03,1.03.06.20.03,SXR Undulator Installation,AS_SXU_INST_2200,Remove Undulator from Tunnel - SXU_REFB_M,1.0,6.0,6.0,6.0,06-20-24,06-21-24,0,0,SLAC,0%,52169.52169_METS Mechanical Engineer,52169_METS Mechanical Engineer,Labor,0.0d,1.0,1.0,At Completion Units,6/20/2024,6/21/2024,0,0,0,0,0,0,0,0,0,0,1.03_Accelerator Systems (AS),1.03.06_AS Soft X-Ray Undulator (SXR) - SLAC,1.03.06.20_AS Soft X-Ray Undulator Installation - SLAC,1.03.06.20.03_SXR Undulator Installation,AS_SXU_INST_2200_Remove Undulator from Tunnel - SXU_REFB_M,Mechanical,,SLAC,Labor
105842,1.03,1.03.06,1.03.06.20,1.03.06.20.03,1.03.06.20.03,SXR Undulator Installation,AS_SXU_INST_2200,Remove Undulator from Tunnel - SXU_REFB_M,1.0,40.0,40.0,40.0,06-20-24,06-21-24,0,0,SLAC,0%,52198.52198_METSMANF (METSD Manufacturing),52198_METSMANF (METSD Manufacturing),Labor,0.0d,1.0,1.0,At Completion Units,6/20/2024,6/21/2024,0,0,0,0,0,0,0,0,0,0,1.03_Accelerator Systems (AS),1.03.06_AS Soft X-Ray Undulator (SXR) - SLAC,1.03.06.20_AS Soft X-Ray Undulator Installation - SLAC,1.03.06.20.03_SXR Undulator Installation,AS_SXU_INST_2200_Remove Undulator from Tunnel - SXU_REFB_M,Manufacturing,,SLAC,Labor
105843,1.03,1.03.06,1.03.06.20,1.03.06.20.03,1.03.06.20.03,SXR Undulator Installation,AS_SXU_INST_2210,Install Undulator - SXU_HE_22,1.0,2.0,2.0,2.0,08-15-25,08-15-25,0,0,SLAC,0%,52190.52190_METSTP Tech Planning - Reinstated FY16,52190_METSTP Tech Planning - Reinstated FY16,Labor,0.0d,1.0,1.0,At Completion Units,1/6/2025,1/6/2025,0,0,0,0,0,0,0,0,0,0,1.03_Accelerator Systems (AS),1.03.06_AS Soft X-Ray Undulator (SXR) - SLAC,1.03.06.20_AS Soft X-Ray Undulator Installation - SLAC,1.03.06.20.03_SXR Undulator Installation,AS_SXU_INST_2210_Install Undulator - SXU_HE_22,METSTPT Tech Planning,Tech,SLAC,Labor
105844,1.03,1.03.06,1.03.06.20,1.03.06.20.03,1.03.06.20.03,SXR Undulator Installation,AS_SXU_INST_2210,Install Undulator - SXU_HE_22,1.0,12.0,12.0,12.0,08-15-25,08-15-25,0,0,SLAC,0%,52152.52152_FAC Fleet,52152_FAC Fleet,Labor,0.0d,1.0,1.0,At Completion Units,1/6/2025,1/6/2025,0,0,0,0,0,0,0,0,0,0,1.03_Accelerator Systems (AS),1.03.06_AS Soft X-Ray Undulator (SXR) - SLAC,1.03.06.20_AS Soft X-Ray Undulator Installation - SLAC,1.03.06.20.03_SXR Undulator Installation,AS_SXU_INST_2210_Install Undulator - SXU_HE_22,Support System,,SLAC,Labor
105845,1.03,1.03.06,1.03.06.20,1.03.06.20.03,1.03.06.20.03,SXR Undulator Installation,AS_SXU_INST_2205,PAMM Management - SXU_HE_22,3.0,2.0,2.0,2.0,08-15-25,08-19-25,0,0,SLAC,0%,52155.52155_Health Physics Technician III,52155_Health Physics Technician III,Labor,0.0d,3.0,3.0,At Completion Units,1/6/2025,1/8/2025,0,0,0,0,0,0,0,0,0,0,1.03_Accelerator Systems (AS),1.03.06_AS Soft X-Ray Undulator (SXR) - SLAC,1.03.06.20_AS Soft X-Ray Undulator Installation - SLAC,1.03.06.20.03_SXR Undulator Installation,AS_SXU_INST_2205_PAMM Management - SXU_HE_22,Support System,Tech,SLAC,Labor
105846,1.03,1.03.06,1.03.06.20,1.03.06.20.03,1.03.06.20.03,SXR Undulator Installation,AS_SXU_INST_2230,Pre-beam checkout - SXU_HE_22,1.0,5.0,5.0,5.0,08-19-25,08-19-25,0,0,SLAC,0%,52213.52213_EEDHW (Electronics & Engineering Div - HW Engr),52213_EEDHW (Electronics & Engineering Div - HW Engr),Labor,0.0d,1.0,1.0,At Completion Units,1/8/2025,1/8/2025,0,0,0,0,0,0,0,0,0,0,1.03_Accelerator Systems (AS),1.03.06_AS Soft X-Ray Undulator (SXR) - SLAC,1.03.06.20_AS Soft X-Ray Undulator Installation - SLAC,1.03.06.20.03_SXR Undulator Installation,AS_SXU_INST_2230_Pre-beam checkout - SXU_HE_22,Electrical,,SLAC,Labor
105847,1.03,1.03.06,1.03.06.20,1.03.06.20.03,1.03.06.20.03,SXR Undulator Installation,AS_SXU_INST_2230,Pre-beam checkout - SXU_HE_22,1.0,2.0,2.0,2.0,08-19-25,08-19-25,0,0,SLAC,0%,52169.52169_METS Mechanical Engineer,52169_METS Mechanical Engineer,Labor,0.0d,1.0,1.0,At Completion Units,1/8/2025,1/8/2025,0,0,0,0,0,0,0,0,0,0,1.03_Accelerator Systems (AS),1.03.06_AS Soft X-Ray Undulator (SXR) - SLAC,1.03.06.20_AS Soft X-Ray Undulator Installation - SLAC,1.03.06.20.03_SXR Undulator Installation,AS_SXU_INST_2230_Pre-beam checkout - SXU_HE_22,Mechanical,,SLAC,Labor
105848,1.03,1.03.06,1.03.06.20,1.03.06.20.03,1.03.06.20.03,SXR Undulator Installation,AS_SXU_INST_2230,Pre-beam checkout - SXU_HE_22,1.0,8.0,8.0,8.0,08-19-25,08-19-25,0,0,SLAC,0%,0106.0106_Staff Scientist,0106_Staff Scientist,Labor,0.0d,1.0,1.0,At Completion Units,1/8/2025,1/8/2025,0,0,0,0,0,0,0,0,0,0,1.03_Accelerator Systems (AS),1.03.06_AS Soft X-Ray Undulator (SXR) - SLAC,1.03.06.20_AS Soft X-Ray Undulator Installation - SLAC,1.03.06.20.03_SXR Undulator Installation,AS_SXU_INST_2230_Pre-beam checkout - SXU_HE_22,Scientist,,SLAC,Labor
105849,1.03,1.03.06,1.03.06.20,1.03.06.20.03,1.03.06.20.03,SXR Undulator Installation,AS_SXU_INST_2230,Pre-beam checkout - SXU_HE_22,1.0,12.0,12.0,12.0,08-19-25,08-19-25,0,0,SLAC,0%,52191.52191_METSMET Metrology,52191_METSMET Metrology,Labor,0.0d,1.0,1.0,At Completion Units,1/8/2025,1/8/2025,0,0,0,0,0,0,0,0,0,0,1.03_Accelerator Systems (AS),1.03.06_AS Soft X-Ray Undulator (SXR) - SLAC,1.03.06.20_AS Soft X-Ray Undulator Installation - SLAC,1.03.06.20.03_SXR Undulator Installation,AS_SXU_INST_2230_Pre-beam checkout - SXU_HE_22,Metrology,,SLAC,Labor
105850,1.03,1.03.06,1.03.06.20,1.03.06.20.03,1.03.06.20.03,SXR Undulator Installation,AS_SXU_INST_2220,Perform technical checkouts - SXU_HE_22,1.0,4.0,4.0,4.0,08-18-25,08-18-25,0,0,SLAC,0%,52211.52211_EEDOPSE (Electronics & Engineering Div - Ops & PSE),52211_EEDOPSE (Electronics & Engineering Div - Ops & PSE),Labor,0.0d,1.0,1.0,At Completion Units,1/7/2025,1/7/2025,0,0,0,0,0,0,0,0,0,0,1.03_Accelerator Systems (AS),1.03.06_AS Soft X-Ray Undulator (SXR) - SLAC,1.03.06.20_AS Soft X-Ray Undulator Installation - SLAC,1.03.06.20.03_SXR Undulator Installation,AS_SXU_INST_2220_Perform technical checkouts - SXU_HE_22,Electrical,,SLAC,Labor
105851,1.03,1.03.06,1.03.06.20,1.03.06.20.03,1.03.06.20.03,SXR Undulator Installation,AS_SXU_INST_2220,Perform technical checkouts - SXU_HE_22,1.0,8.0,8.0,8.0,08-18-25,08-18-25,0,0,SLAC,0%,52127.52127_Research Electrical & SW Engineer,52127_Research Electrical & SW Engineer,Labor,0.0d,1.0,1.0,At Completion Units,1/7/2025,1/7/2025,0,0,0,0,0,0,0,0,0,0,1.03_Accelerator Systems (AS),1.03.06_AS Soft X-Ray Undulator (SXR) - SLAC,1.03.06.20_AS Soft X-Ray Undulator Installation - SLAC,1.03.06.20.03_SXR Undulator Installation,AS_SXU_INST_2220_Perform technical checkouts - SXU_HE_22,Electrical,,SLAC,Labor
105852,1.03,1.03.06,1.03.06.20,1.03.06.20.03,1.03.06.20.03,SXR Undulator Installation,AS_SXU_INST_2220,Perform technical checkouts - SXU_HE_22,1.0,20.0,20.0,20.0,08-18-25,08-18-25,0,0,SLAC,0%,52213.52213_EEDHW (Electronics & Engineering Div - HW Engr),52213_EEDHW (Electronics & Engineering Div - HW Engr),Labor,0.0d,1.0,1.0,At Completion Units,1/7/2025,1/7/2025,0,0,0,0,0,0,0,0,0,0,1.03_Accelerator Systems (AS),1.03.06_AS Soft X-Ray Undulator (SXR) - SLAC,1.03.06.20_AS Soft X-Ray Undulator Installation - SLAC,1.03.06.20.03_SXR Undulator Installation,AS_SXU_INST_2220_Perform technical checkouts - SXU_HE_22,Electrical,,SLAC,Labor
105853,1.03,1.03.06,1.03.06.20,1.03.06.20.03,1.03.06.20.03,SXR Undulator Installation,AS_SXU_INST_2220,Perform technical checkouts - SXU_HE_22,1.0,6.0,6.0,6.0,08-18-25,08-18-25,0,0,SLAC,0%,52169.52169_METS Mechanical Engineer,52169_METS Mechanical Engineer,Labor,0.0d,1.0,1.0,At Completion Units,1/7/2025,1/7/2025,0,0,0,0,0,0,0,0,0,0,1.03_Accelerator Systems (AS),1.03.06_AS Soft X-Ray Undulator (SXR) - SLAC,1.03.06.20_AS Soft X-Ray Undulator Installation - SLAC,1.03.06.20.03_SXR Undulator Installation,AS_SXU_INST_2220_Perform technical checkouts - SXU_HE_22,Mechanical,,SLAC,Labor
105854,1.03,1.03.06,1.03.06.20,1.03.06.20.03,1.03.06.20.03,SXR Undulator Installation,AS_SXU_INST_2220,Perform technical checkouts - SXU_HE_22,1.0,4.0,4.0,4.0,08-18-25,08-18-25,0,0,SLAC,0%,0106.0106_Staff Scientist,0106_Staff Scientist,Labor,0.0d,1.0,1.0,At Completion Units,1/7/2025,1/7/2025,0,0,0,0,0,0,0,0,0,0,1.03_Accelerator Systems (AS),1.03.06_AS Soft X-Ray Undulator (SXR) - SLAC,1.03.06.20_AS Soft X-Ray Undulator Installation - SLAC,1.03.06.20.03_SXR Undulator Installation,AS_SXU_INST_2220_Perform technical checkouts - SXU_HE_22,Scientist,,SLAC,Labor
105855,1.03,1.03.06,1.03.06.20,1.03.06.20.03,1.03.06.20.03,SXR Undulator Installation,AS_SXU_INST_2220,Perform technical checkouts - SXU_HE_22,1.0,4.0,4.0,4.0,08-18-25,08-18-25,0,0,SLAC,0%,52198.52198_METSMANF (METSD Manufacturing),52198_METSMANF (METSD Manufacturing),Labor,0.0d,1.0,1.0,At Completion Units,1/7/2025,1/7/2025,0,0,0,0,0,0,0,0,0,0,1.03_Accelerator Systems (AS),1.03.06_AS Soft X-Ray Undulator (SXR) - SLAC,1.03.06.20_AS Soft X-Ray Undulator Installation - SLAC,1.03.06.20.03_SXR Undulator Installation,AS_SXU_INST_2220_Perform technical checkouts - SXU_HE_22,Manufacturing,,SLAC,Labor
105856,1.03,1.03.06,1.03.06.20,1.03.06.20.03,1.03.06.20.03,SXR Undulator Installation,AS_SXU_INST_2210,Install Undulator - SXU_HE_22,1.0,12.0,12.0,12.0,08-15-25,08-15-25,0,0,SLAC,0%,52169.52169_METS Mechanical Engineer,52169_METS Mechanical Engineer,Labor,0.0d,1.0,1.0,At Completion Units,1/6/2025,1/6/2025,0,0,0,0,0,0,0,0,0,0,1.03_Accelerator Systems (AS),1.03.06_AS Soft X-Ray Undulator (SXR) - SLAC,1.03.06.20_AS Soft X-Ray Undulator Installation - SLAC,1.03.06.20.03_SXR Undulator Installation,AS_SXU_INST_2210_Install Undulator - SXU_HE_22,Mechanical,,SLAC,Labor
105857,1.03,1.03.06,1.03.06.20,1.03.06.20.03,1.03.06.20.03,SXR Undulator Installation,AS_SXU_INST_2210,Install Undulator - SXU_HE_22,1.0,4.0,4.0,4.0,08-15-25,08-15-25,0,0,SLAC,0%,0106.0106_Staff Scientist,0106_Staff Scientist,Labor,0.0d,1.0,1.0,At Completion Units,1/6/2025,1/6/2025,0,0,0,0,0,0,0,0,0,0,1.03_Accelerator Systems (AS),1.03.06_AS Soft X-Ray Undulator (SXR) - SLAC,1.03.06.20_AS Soft X-Ray Undulator Installation - SLAC,1.03.06.20.03_SXR Undulator Installation,AS_SXU_INST_2210_Install Undulator - SXU_HE_22,Scientist,,SLAC,Labor
105858,1.03,1.03.06,1.03.06.20,1.03.06.20.03,1.03.06.20.03,SXR Undulator Installation,AS_SXU_INST_2210,Install Undulator - SXU_HE_22,1.0,8.0,8.0,8.0,08-15-25,08-15-25,0,0,SLAC,0%,52191.52191_METSMET Metrology,52191_METSMET Metrology,Labor,0.0d,1.0,1.0,At Completion Units,1/6/2025,1/6/2025,0,0,0,0,0,0,0,0,0,0,1.03_Accelerator Systems (AS),1.03.06_AS Soft X-Ray Undulator (SXR) - SLAC,1.03.06.20_AS Soft X-Ray Undulator Installation - SLAC,1.03.06.20.03_SXR Undulator Installation,AS_SXU_INST_2210_Install Undulator - SXU_HE_22,Metrology,,SLAC,Labor
105859,1.03,1.03.06,1.03.06.20,1.03.06.20.03,1.03.06.20.03,SXR Undulator Installation,AS_SXU_INST_2210,Install Undulator - SXU_HE_22,1.0,34.0,34.0,34.0,08-15-25,08-15-25,0,0,SLAC,0%,52198.52198_METSMANF (METSD Manufacturing),52198_METSMANF (METSD Manufacturing),Labor,0.0d,1.0,1.0,At Completion Units,1/6/2025,1/6/2025,0,0,0,0,0,0,0,0,0,0,1.03_Accelerator Systems (AS),1.03.06_AS Soft X-Ray Undulator (SXR) - SLAC,1.03.06.20_AS Soft X-Ray Undulator Installation - SLAC,1.03.06.20.03_SXR Undulator Installation,AS_SXU_INST_2210_Install Undulator - SXU_HE_22,Manufacturing,,SLAC,Labor
105860,1.03,1.03.06,1.03.06.20,1.03.06.20.03,1.03.06.20.03,SXR Undulator Installation,AS_SXU_INST_2205,PAMM Management - SXU_HE_22,3.0,6.0,6.0,6.0,08-15-25,08-19-25,0,0,SLAC,0%,52169.52169_METS Mechanical Engineer,52169_METS Mechanical Engineer,Labor,0.0d,3.0,3.0,At Completion Units,1/6/2025,1/8/2025,0,0,0,0,0,0,0,0,0,0,1.03_Accelerator Systems (AS),1.03.06_AS Soft X-Ray Undulator (SXR) - SLAC,1.03.06.20_AS Soft X-Ray Undulator Installation - SLAC,1.03.06.20.03_SXR Undulator Installation,AS_SXU_INST_2205_PAMM Management - SXU_HE_22,Mechanical,,SLAC,Labor
105861,1.03,1.03.06,1.03.06.20,1.03.06.20.03,1.03.06.20.03,SXR Undulator Installation,AS_SXU_INST_2100,Remove Undulator from Tunnel - SXU_REFB_L,1.0,15.0,15.0,15.0,06-20-24,06-21-24,0,0,SLAC,0%,52152.52152_FAC Fleet,52152_FAC Fleet,Labor,0.0d,1.0,1.0,At Completion Units,6/20/2024,6/21/2024,0,0,0,0,0,0,0,0,0,0,1.03_Accelerator Systems (AS),1.03.06_AS Soft X-Ray Undulator (SXR) - SLAC,1.03.06.20_AS Soft X-Ray Undulator Installation - SLAC,1.03.06.20.03_SXR Undulator Installation,AS_SXU_INST_2100_Remove Undulator from Tunnel - SXU_REFB_L,Support System,,SLAC,Labor
105862,1.03,1.03.06,1.03.06.20,1.03.06.20.03,1.03.06.20.03,SXR Undulator Installation,AS_SXU_INST_2100,Remove Undulator from Tunnel - SXU_REFB_L,1.0,6.0,6.0,6.0,06-20-24,06-21-24,0,0,SLAC,0%,52169.52169_METS Mechanical Engineer,52169_METS Mechanical Engineer,Labor,0.0d,1.0,1.0,At Completion Units,6/20/2024,6/21/2024,0,0,0,0,0,0,0,0,0,0,1.03_Accelerator Systems (AS),1.03.06_AS Soft X-Ray Undulator (SXR) - SLAC,1.03.06.20_AS Soft X-Ray Undulator Installation - SLAC,1.03.06.20.03_SXR Undulator Installation,AS_SXU_INST_2100_Remove Undulator from Tunnel - SXU_REFB_L,Mechanical,,SLAC,Labor
105863,1.03,1.03.06,1.03.06.20,1.03.06.20.03,1.03.06.20.03,SXR Undulator Installation,AS_SXU_INST_2100,Remove Undulator from Tunnel - SXU_REFB_L,1.0,40.0,40.0,40.0,06-20-24,06-21-24,0,0,SLAC,0%,52198.52198_METSMANF (METSD Manufacturing),52198_METSMANF (METSD Manufacturing),Labor,0.0d,1.0,1.0,At Completion Units,6/20/2024,6/21/2024,0,0,0,0,0,0,0,0,0,0,1.03_Accelerator Systems (AS),1.03.06_AS Soft X-Ray Undulator (SXR) - SLAC,1.03.06.20_AS Soft X-Ray Undulator Installation - SLAC,1.03.06.20.03_SXR Undulator Installation,AS_SXU_INST_2100_Remove Undulator from Tunnel - SXU_REFB_L,Manufacturing,,SLAC,Labor
105864,1.03,1.03.06,1.03.06.20,1.03.06.20.03,1.03.06.20.03,SXR Undulator Installation,AS_SXU_INST_2110,Install Undulator - SXU_HE_21,1.0,2.0,2.0,2.0,07-09-25,07-09-25,0,0,SLAC,0%,52190.52190_METSTP Tech Planning - Reinstated FY16,52190_METSTP Tech Planning - Reinstated FY16,Labor,0.0d,1.0,1.0,At Completion Units,11/12/2024,11/12/2024,0,0,0,0,0,0,0,0,0,0,1.03_Accelerator Systems (AS),1.03.06_AS Soft X-Ray Undulator (SXR) - SLAC,1.03.06.20_AS Soft X-Ray Undulator Installation - SLAC,1.03.06.20.03_SXR Undulator Installation,AS_SXU_INST_2110_Install Undulator - SXU_HE_21,METSTPT Tech Planning,Tech,SLAC,Labor
105865,1.03,1.03.06,1.03.06.20,1.03.06.20.03,1.03.06.20.03,SXR Undulator Installation,AS_SXU_INST_2110,Install Undulator - SXU_HE_21,1.0,12.0,12.0,12.0,07-09-25,07-09-25,0,0,SLAC,0%,52152.52152_FAC Fleet,52152_FAC Fleet,Labor,0.0d,1.0,1.0,At Completion Units,11/12/2024,11/12/2024,0,0,0,0,0,0,0,0,0,0,1.03_Accelerator Systems (AS),1.03.06_AS Soft X-Ray Undulator (SXR) - SLAC,1.03.06.20_AS Soft X-Ray Undulator Installation - SLAC,1.03.06.20.03_SXR Undulator Installation,AS_SXU_INST_2110_Install Undulator - SXU_HE_21,Support System,,SLAC,Labor
105866,1.03,1.03.06,1.03.06.20,1.03.06.20.03,1.03.06.20.03,SXR Undulator Installation,AS_SXU_INST_2105,PAMM Management - SXU_HE_21,3.0,2.0,2.0,2.0,07-09-25,07-11-25,0,0,SLAC,0%,52155.52155_Health Physics Technician III,52155_Health Physics Technician III,Labor,0.0d,3.0,3.0,At Completion Units,11/12/2024,11/14/2024,0,0,0,0,0,0,0,0,0,0,1.03_Accelerator Systems (AS),1.03.06_AS Soft X-Ray Undulator (SXR) - SLAC,1.03.06.20_AS Soft X-Ray Undulator Installation - SLAC,1.03.06.20.03_SXR Undulator Installation,AS_SXU_INST_2105_PAMM Management - SXU_HE_21,Support System,Tech,SLAC,Labor
105867,1.03,1.03.06,1.03.06.20,1.03.06.20.03,1.03.06.20.03,SXR Undulator Installation,AS_SXU_INST_2130,Pre-beam checkout - SXU_HE_21,1.0,5.0,5.0,5.0,07-11-25,07-11-25,0,0,SLAC,0%,52213.52213_EEDHW (Electronics & Engineering Div - HW Engr),52213_EEDHW (Electronics & Engineering Div - HW Engr),Labor,0.0d,1.0,1.0,At Completion Units,11/14/2024,11/14/2024,0,0,0,0,0,0,0,0,0,0,1.03_Accelerator Systems (AS),1.03.06_AS Soft X-Ray Undulator (SXR) - SLAC,1.03.06.20_AS Soft X-Ray Undulator Installation - SLAC,1.03.06.20.03_SXR Undulator Installation,AS_SXU_INST_2130_Pre-beam checkout - SXU_HE_21,Electrical,,SLAC,Labor
105868,1.03,1.03.06,1.03.06.20,1.03.06.20.03,1.03.06.20.03,SXR Undulator Installation,AS_SXU_INST_2130,Pre-beam checkout - SXU_HE_21,1.0,2.0,2.0,2.0,07-11-25,07-11-25,0,0,SLAC,0%,52169.52169_METS Mechanical Engineer,52169_METS Mechanical Engineer,Labor,0.0d,1.0,1.0,At Completion Units,11/14/2024,11/14/2024,0,0,0,0,0,0,0,0,0,0,1.03_Accelerator Systems (AS),1.03.06_AS Soft X-Ray Undulator (SXR) - SLAC,1.03.06.20_AS Soft X-Ray Undulator Installation - SLAC,1.03.06.20.03_SXR Undulator Installation,AS_SXU_INST_2130_Pre-beam checkout - SXU_HE_21,Mechanical,,SLAC,Labor
105869,1.03,1.03.06,1.03.06.20,1.03.06.20.03,1.03.06.20.03,SXR Undulator Installation,AS_SXU_INST_2130,Pre-beam checkout - SXU_HE_21,1.0,8.0,8.0,8.0,07-11-25,07-11-25,0,0,SLAC,0%,0106.0106_Staff Scientist,0106_Staff Scientist,Labor,0.0d,1.0,1.0,At Completion Units,11/14/2024,11/14/2024,0,0,0,0,0,0,0,0,0,0,1.03_Accelerator Systems (AS),1.03.06_AS Soft X-Ray Undulator (SXR) - SLAC,1.03.06.20_AS Soft X-Ray Undulator Installation - SLAC,1.03.06.20.03_SXR Undulator Installation,AS_SXU_INST_2130_Pre-beam checkout - SXU_HE_21,Scientist,,SLAC,Labor
105870,1.03,1.03.06,1.03.06.20,1.03.06.20.03,1.03.06.20.03,SXR Undulator Installation,AS_SXU_INST_2130,Pre-beam checkout - SXU_HE_21,1.0,12.0,12.0,12.0,07-11-25,07-11-25,0,0,SLAC,0%,52191.52191_METSMET Metrology,52191_METSMET Metrology,Labor,0.0d,1.0,1.0,At Completion Units,11/14/2024,11/14/2024,0,0,0,0,0,0,0,0,0,0,1.03_Accelerator Systems (AS),1.03.06_AS Soft X-Ray Undulator (SXR) - SLAC,1.03.06.20_AS Soft X-Ray Undulator Installation - SLAC,1.03.06.20.03_SXR Undulator Installation,AS_SXU_INST_2130_Pre-beam checkout - SXU_HE_21,Metrology,,SLAC,Labor
105871,1.03,1.03.06,1.03.06.20,1.03.06.20.03,1.03.06.20.03,SXR Undulator Installation,AS_SXU_INST_2120,Perform technical checkouts - SXU_HE_21,1.0,4.0,4.0,4.0,07-10-25,07-10-25,0,0,SLAC,0%,52211.52211_EEDOPSE (Electronics & Engineering Div - Ops & PSE),52211_EEDOPSE (Electronics & Engineering Div - Ops & PSE),Labor,0.0d,1.0,1.0,At Completion Units,11/13/2024,11/13/2024,0,0,0,0,0,0,0,0,0,0,1.03_Accelerator Systems (AS),1.03.06_AS Soft X-Ray Undulator (SXR) - SLAC,1.03.06.20_AS Soft X-Ray Undulator Installation - SLAC,1.03.06.20.03_SXR Undulator Installation,AS_SXU_INST_2120_Perform technical checkouts - SXU_HE_21,Electrical,,SLAC,Labor
105872,1.03,1.03.06,1.03.06.20,1.03.06.20.03,1.03.06.20.03,SXR Undulator Installation,AS_SXU_INST_2120,Perform technical checkouts - SXU_HE_21,1.0,8.0,8.0,8.0,07-10-25,07-10-25,0,0,SLAC,0%,52127.52127_Research Electrical & SW Engineer,52127_Research Electrical & SW Engineer,Labor,0.0d,1.0,1.0,At Completion Units,11/13/2024,11/13/2024,0,0,0,0,0,0,0,0,0,0,1.03_Accelerator Systems (AS),1.03.06_AS Soft X-Ray Undulator (SXR) - SLAC,1.03.06.20_AS Soft X-Ray Undulator Installation - SLAC,1.03.06.20.03_SXR Undulator Installation,AS_SXU_INST_2120_Perform technical checkouts - SXU_HE_21,Electrical,,SLAC,Labor
105873,1.03,1.03.06,1.03.06.20,1.03.06.20.03,1.03.06.20.03,SXR Undulator Installation,AS_SXU_INST_2120,Perform technical checkouts - SXU_HE_21,1.0,20.0,20.0,20.0,07-10-25,07-10-25,0,0,SLAC,0%,52213.52213_EEDHW (Electronics & Engineering Div - HW Engr),52213_EEDHW (Electronics & Engineering Div - HW Engr),Labor,0.0d,1.0,1.0,At Completion Units,11/13/2024,11/13/2024,0,0,0,0,0,0,0,0,0,0,1.03_Accelerator Systems (AS),1.03.06_AS Soft X-Ray Undulator (SXR) - SLAC,1.03.06.20_AS Soft X-Ray Undulator Installation - SLAC,1.03.06.20.03_SXR Undulator Installation,AS_SXU_INST_2120_Perform technical checkouts - SXU_HE_21,Electrical,,SLAC,Labor
105874,1.03,1.03.06,1.03.06.20,1.03.06.20.03,1.03.06.20.03,SXR Undulator Installation,AS_SXU_INST_2120,Perform technical checkouts - SXU_HE_21,1.0,6.0,6.0,6.0,07-10-25,07-10-25,0,0,SLAC,0%,52169.52169_METS Mechanical Engineer,52169_METS Mechanical Engineer,Labor,0.0d,1.0,1.0,At Completion Units,11/13/2024,11/13/2024,0,0,0,0,0,0,0,0,0,0,1.03_Accelerator Systems (AS),1.03.06_AS Soft X-Ray Undulator (SXR) - SLAC,1.03.06.20_AS Soft X-Ray Undulator Installation - SLAC,1.03.06.20.03_SXR Undulator Installation,AS_SXU_INST_2120_Perform technical checkouts - SXU_HE_21,Mechanical,,SLAC,Labor
105875,1.03,1.03.06,1.03.06.20,1.03.06.20.03,1.03.06.20.03,SXR Undulator Installation,AS_SXU_INST_2120,Perform technical checkouts - SXU_HE_21,1.0,4.0,4.0,4.0,07-10-25,07-10-25,0,0,SLAC,0%,0106.0106_Staff Scientist,0106_Staff Scientist,Labor,0.0d,1.0,1.0,At Completion Units,11/13/2024,11/13/2024,0,0,0,0,0,0,0,0,0,0,1.03_Accelerator Systems (AS),1.03.06_AS Soft X-Ray Undulator (SXR) - SLAC,1.03.06.20_AS Soft X-Ray Undulator Installation - SLAC,1.03.06.20.03_SXR Undulator Installation,AS_SXU_INST_2120_Perform technical checkouts - SXU_HE_21,Scientist,,SLAC,Labor
105876,1.03,1.03.06,1.03.06.20,1.03.06.20.03,1.03.06.20.03,SXR Undulator Installation,AS_SXU_INST_2120,Perform technical checkouts - SXU_HE_21,1.0,4.0,4.0,4.0,07-10-25,07-10-25,0,0,SLAC,0%,52198.52198_METSMANF (METSD Manufacturing),52198_METSMANF (METSD Manufacturing),Labor,0.0d,1.0,1.0,At Completion Units,11/13/2024,11/13/2024,0,0,0,0,0,0,0,0,0,0,1.03_Accelerator Systems (AS),1.03.06_AS Soft X-Ray Undulator (SXR) - SLAC,1.03.06.20_AS Soft X-Ray Undulator Installation - SLAC,1.03.06.20.03_SXR Undulator Installation,AS_SXU_INST_2120_Perform technical checkouts - SXU_HE_21,Manufacturing,,SLAC,Labor
105877,1.03,1.03.06,1.03.06.20,1.03.06.20.03,1.03.06.20.03,SXR Undulator Installation,AS_SXU_INST_2110,Install Undulator - SXU_HE_21,1.0,12.0,12.0,12.0,07-09-25,07-09-25,0,0,SLAC,0%,52169.52169_METS Mechanical Engineer,52169_METS Mechanical Engineer,Labor,0.0d,1.0,1.0,At Completion Units,11/12/2024,11/12/2024,0,0,0,0,0,0,0,0,0,0,1.03_Accelerator Systems (AS),1.03.06_AS Soft X-Ray Undulator (SXR) - SLAC,1.03.06.20_AS Soft X-Ray Undulator Installation - SLAC,1.03.06.20.03_SXR Undulator Installation,AS_SXU_INST_2110_Install Undulator - SXU_HE_21,Mechanical,,SLAC,Labor
105878,1.03,1.03.06,1.03.06.20,1.03.06.20.03,1.03.06.20.03,SXR Undulator Installation,AS_SXU_INST_2110,Install Undulator - SXU_HE_21,1.0,4.0,4.0,4.0,07-09-25,07-09-25,0,0,SLAC,0%,0106.0106_Staff Scientist,0106_Staff Scientist,Labor,0.0d,1.0,1.0,At Completion Units,11/12/2024,11/12/2024,0,0,0,0,0,0,0,0,0,0,1.03_Accelerator Systems (AS),1.03.06_AS Soft X-Ray Undulator (SXR) - SLAC,1.03.06.20_AS Soft X-Ray Undulator Installation - SLAC,1.03.06.20.03_SXR Undulator Installation,AS_SXU_INST_2110_Install Undulator - SXU_HE_21,Scientist,,SLAC,Labor
105879,1.03,1.03.06,1.03.06.20,1.03.06.20.03,1.03.06.20.03,SXR Undulator Installation,AS_SXU_INST_2110,Install Undulator - SXU_HE_21,1.0,8.0,8.0,8.0,07-09-25,07-09-25,0,0,SLAC,0%,52191.52191_METSMET Metrology,52191_METSMET Metrology,Labor,0.0d,1.0,1.0,At Completion Units,11/12/2024,11/12/2024,0,0,0,0,0,0,0,0,0,0,1.03_Accelerator Systems (AS),1.03.06_AS Soft X-Ray Undulator (SXR) - SLAC,1.03.06.20_AS Soft X-Ray Undulator Installation - SLAC,1.03.06.20.03_SXR Undulator Installation,AS_SXU_INST_2110_Install Undulator - SXU_HE_21,Metrology,,SLAC,Labor
105880,1.03,1.03.06,1.03.06.20,1.03.06.20.03,1.03.06.20.03,SXR Undulator Installation,AS_SXU_INST_2110,Install Undulator - SXU_HE_21,1.0,34.0,34.0,34.0,07-09-25,07-09-25,0,0,SLAC,0%,52198.52198_METSMANF (METSD Manufacturing),52198_METSMANF (METSD Manufacturing),Labor,0.0d,1.0,1.0,At Completion Units,11/12/2024,11/12/2024,0,0,0,0,0,0,0,0,0,0,1.03_Accelerator Systems (AS),1.03.06_AS Soft X-Ray Undulator (SXR) - SLAC,1.03.06.20_AS Soft X-Ray Undulator Installation - SLAC,1.03.06.20.03_SXR Undulator Installation,AS_SXU_INST_2110_Install Undulator - SXU_HE_21,Manufacturing,,SLAC,Labor
105881,1.03,1.03.06,1.03.06.20,1.03.06.20.03,1.03.06.20.03,SXR Undulator Installation,AS_SXU_INST_2105,PAMM Management - SXU_HE_21,3.0,6.0,6.0,6.0,07-09-25,07-11-25,0,0,SLAC,0%,52169.52169_METS Mechanical Engineer,52169_METS Mechanical Engineer,Labor,0.0d,3.0,3.0,At Completion Units,11/12/2024,11/14/2024,0,0,0,0,0,0,0,0,0,0,1.03_Accelerator Systems (AS),1.03.06_AS Soft X-Ray Undulator (SXR) - SLAC,1.03.06.20_AS Soft X-Ray Undulator Installation - SLAC,1.03.06.20.03_SXR Undulator Installation,AS_SXU_INST_2105_PAMM Management - SXU_HE_21,Mechanical,,SLAC,Labor
105882,1.03,1.03.06,1.03.06.20,1.03.06.20.03,1.03.06.20.03,SXR Undulator Installation,AS_SXU_INST_2000,Remove Undulator from Tunnel - SXU_REFB_K,1.0,15.0,15.0,15.0,04-17-24,04-18-24,0,0,SLAC,0%,52152.52152_FAC Fleet,52152_FAC Fleet,Labor,0.0d,1.0,1.0,At Completion Units,4/17/2024,4/18/2024,0,0,0,0,0,0,0,0,0,0,1.03_Accelerator Systems (AS),1.03.06_AS Soft X-Ray Undulator (SXR) - SLAC,1.03.06.20_AS Soft X-Ray Undulator Installation - SLAC,1.03.06.20.03_SXR Undulator Installation,AS_SXU_INST_2000_Remove Undulator from Tunnel - SXU_REFB_K,Support System,,SLAC,Labor
105883,1.03,1.03.06,1.03.06.20,1.03.06.20.03,1.03.06.20.03,SXR Undulator Installation,AS_SXU_INST_2000,Remove Undulator from Tunnel - SXU_REFB_K,1.0,6.0,6.0,6.0,04-17-24,04-18-24,0,0,SLAC,0%,52169.52169_METS Mechanical Engineer,52169_METS Mechanical Engineer,Labor,0.0d,1.0,1.0,At Completion Units,4/17/2024,4/18/2024,0,0,0,0,0,0,0,0,0,0,1.03_Accelerator Systems (AS),1.03.06_AS Soft X-Ray Undulator (SXR) - SLAC,1.03.06.20_AS Soft X-Ray Undulator Installation - SLAC,1.03.06.20.03_SXR Undulator Installation,AS_SXU_INST_2000_Remove Undulator from Tunnel - SXU_REFB_K,Mechanical,,SLAC,Labor
105884,1.03,1.03.06,1.03.06.20,1.03.06.20.03,1.03.06.20.03,SXR Undulator Installation,AS_SXU_INST_2000,Remove Undulator from Tunnel - SXU_REFB_K,1.0,40.0,40.0,40.0,04-17-24,04-18-24,0,0,SLAC,0%,52198.52198_METSMANF (METSD Manufacturing),52198_METSMANF (METSD Manufacturing),Labor,0.0d,1.0,1.0,At Completion Units,4/17/2024,4/18/2024,0,0,0,0,0,0,0,0,0,0,1.03_Accelerator Systems (AS),1.03.06_AS Soft X-Ray Undulator (SXR) - SLAC,1.03.06.20_AS Soft X-Ray Undulator Installation - SLAC,1.03.06.20.03_SXR Undulator Installation,AS_SXU_INST_2000_Remove Undulator from Tunnel - SXU_REFB_K,Manufacturing,,SLAC,Labor
105885,1.03,1.03.06,1.03.06.20,1.03.06.20.03,1.03.06.20.03,SXR Undulator Installation,AS_SXU_INST_2010,Install Undulator - SXU_HE_20,1.0,2.0,2.0,2.0,05-30-25,05-30-25,0,0,SLAC,0%,52190.52190_METSTP Tech Planning - Reinstated FY16,52190_METSTP Tech Planning - Reinstated FY16,Labor,0.0d,1.0,1.0,At Completion Units,10/4/2024,10/4/2024,0,0,0,0,0,0,0,0,0,0,1.03_Accelerator Systems (AS),1.03.06_AS Soft X-Ray Undulator (SXR) - SLAC,1.03.06.20_AS Soft X-Ray Undulator Installation - SLAC,1.03.06.20.03_SXR Undulator Installation,AS_SXU_INST_2010_Install Undulator - SXU_HE_20,METSTPT Tech Planning,Tech,SLAC,Labor
105886,1.03,1.03.06,1.03.06.20,1.03.06.20.03,1.03.06.20.03,SXR Undulator Installation,AS_SXU_INST_2010,Install Undulator - SXU_HE_20,1.0,12.0,12.0,12.0,05-30-25,05-30-25,0,0,SLAC,0%,52152.52152_FAC Fleet,52152_FAC Fleet,Labor,0.0d,1.0,1.0,At Completion Units,10/4/2024,10/4/2024,0,0,0,0,0,0,0,0,0,0,1.03_Accelerator Systems (AS),1.03.06_AS Soft X-Ray Undulator (SXR) - SLAC,1.03.06.20_AS Soft X-Ray Undulator Installation - SLAC,1.03.06.20.03_SXR Undulator Installation,AS_SXU_INST_2010_Install Undulator - SXU_HE_20,Support System,,SLAC,Labor
105887,1.03,1.03.06,1.03.06.20,1.03.06.20.03,1.03.06.20.03,SXR Undulator Installation,AS_SXU_INST_2005,PAMM Management - SXU_HE_20,3.0,2.0,2.0,2.0,05-30-25,06-03-25,0,0,SLAC,0%,52155.52155_Health Physics Technician III,52155_Health Physics Technician III,Labor,0.0d,3.0,3.0,At Completion Units,10/4/2024,10/8/2024,0,0,0,0,0,0,0,0,0,0,1.03_Accelerator Systems (AS),1.03.06_AS Soft X-Ray Undulator (SXR) - SLAC,1.03.06.20_AS Soft X-Ray Undulator Installation - SLAC,1.03.06.20.03_SXR Undulator Installation,AS_SXU_INST_2005_PAMM Management - SXU_HE_20,Support System,Tech,SLAC,Labor
105888,1.03,1.03.06,1.03.06.20,1.03.06.20.03,1.03.06.20.03,SXR Undulator Installation,AS_SXU_INST_2030,Pre-beam checkout - SXU_HE_20,1.0,5.0,5.0,5.0,06-03-25,06-03-25,0,0,SLAC,0%,52213.52213_EEDHW (Electronics & Engineering Div - HW Engr),52213_EEDHW (Electronics & Engineering Div - HW Engr),Labor,0.0d,1.0,1.0,At Completion Units,10/8/2024,10/8/2024,0,0,0,0,0,0,0,0,0,0,1.03_Accelerator Systems (AS),1.03.06_AS Soft X-Ray Undulator (SXR) - SLAC,1.03.06.20_AS Soft X-Ray Undulator Installation - SLAC,1.03.06.20.03_SXR Undulator Installation,AS_SXU_INST_2030_Pre-beam checkout - SXU_HE_20,Electrical,,SLAC,Labor
105889,1.03,1.03.06,1.03.06.20,1.03.06.20.03,1.03.06.20.03,SXR Undulator Installation,AS_SXU_INST_2030,Pre-beam checkout - SXU_HE_20,1.0,2.0,2.0,2.0,06-03-25,06-03-25,0,0,SLAC,0%,52169.52169_METS Mechanical Engineer,52169_METS Mechanical Engineer,Labor,0.0d,1.0,1.0,At Completion Units,10/8/2024,10/8/2024,0,0,0,0,0,0,0,0,0,0,1.03_Accelerator Systems (AS),1.03.06_AS Soft X-Ray Undulator (SXR) - SLAC,1.03.06.20_AS Soft X-Ray Undulator Installation - SLAC,1.03.06.20.03_SXR Undulator Installation,AS_SXU_INST_2030_Pre-beam checkout - SXU_HE_20,Mechanical,,SLAC,Labor
105890,1.03,1.03.06,1.03.06.20,1.03.06.20.03,1.03.06.20.03,SXR Undulator Installation,AS_SXU_INST_2030,Pre-beam checkout - SXU_HE_20,1.0,8.0,8.0,8.0,06-03-25,06-03-25,0,0,SLAC,0%,0106.0106_Staff Scientist,0106_Staff Scientist,Labor,0.0d,1.0,1.0,At Completion Units,10/8/2024,10/8/2024,0,0,0,0,0,0,0,0,0,0,1.03_Accelerator Systems (AS),1.03.06_AS Soft X-Ray Undulator (SXR) - SLAC,1.03.06.20_AS Soft X-Ray Undulator Installation - SLAC,1.03.06.20.03_SXR Undulator Installation,AS_SXU_INST_2030_Pre-beam checkout - SXU_HE_20,Scientist,,SLAC,Labor
105891,1.03,1.03.06,1.03.06.20,1.03.06.20.03,1.03.06.20.03,SXR Undulator Installation,AS_SXU_INST_2030,Pre-beam checkout - SXU_HE_20,1.0,12.0,12.0,12.0,06-03-25,06-03-25,0,0,SLAC,0%,52191.52191_METSMET Metrology,52191_METSMET Metrology,Labor,0.0d,1.0,1.0,At Completion Units,10/8/2024,10/8/2024,0,0,0,0,0,0,0,0,0,0,1.03_Accelerator Systems (AS),1.03.06_AS Soft X-Ray Undulator (SXR) - SLAC,1.03.06.20_AS Soft X-Ray Undulator Installation - SLAC,1.03.06.20.03_SXR Undulator Installation,AS_SXU_INST_2030_Pre-beam checkout - SXU_HE_20,Metrology,,SLAC,Labor
105892,1.03,1.03.06,1.03.06.20,1.03.06.20.03,1.03.06.20.03,SXR Undulator Installation,AS_SXU_INST_2020,Perform technical checkouts - SXU_HE_20,1.0,4.0,4.0,4.0,06-02-25,06-02-25,0,0,SLAC,0%,52211.52211_EEDOPSE (Electronics & Engineering Div - Ops & PSE),52211_EEDOPSE (Electronics & Engineering Div - Ops & PSE),Labor,0.0d,1.0,1.0,At Completion Units,10/7/2024,10/7/2024,0,0,0,0,0,0,0,0,0,0,1.03_Accelerator Systems (AS),1.03.06_AS Soft X-Ray Undulator (SXR) - SLAC,1.03.06.20_AS Soft X-Ray Undulator Installation - SLAC,1.03.06.20.03_SXR Undulator Installation,AS_SXU_INST_2020_Perform technical checkouts - SXU_HE_20,Electrical,,SLAC,Labor
105893,1.03,1.03.06,1.03.06.20,1.03.06.20.03,1.03.06.20.03,SXR Undulator Installation,AS_SXU_INST_2020,Perform technical checkouts - SXU_HE_20,1.0,8.0,8.0,8.0,06-02-25,06-02-25,0,0,SLAC,0%,52127.52127_Research Electrical & SW Engineer,52127_Research Electrical & SW Engineer,Labor,0.0d,1.0,1.0,At Completion Units,10/7/2024,10/7/2024,0,0,0,0,0,0,0,0,0,0,1.03_Accelerator Systems (AS),1.03.06_AS Soft X-Ray Undulator (SXR) - SLAC,1.03.06.20_AS Soft X-Ray Undulator Installation - SLAC,1.03.06.20.03_SXR Undulator Installation,AS_SXU_INST_2020_Perform technical checkouts - SXU_HE_20,Electrical,,SLAC,Labor
105894,1.03,1.03.06,1.03.06.20,1.03.06.20.03,1.03.06.20.03,SXR Undulator Installation,AS_SXU_INST_2020,Perform technical checkouts - SXU_HE_20,1.0,20.0,20.0,20.0,06-02-25,06-02-25,0,0,SLAC,0%,52213.52213_EEDHW (Electronics & Engineering Div - HW Engr),52213_EEDHW (Electronics & Engineering Div - HW Engr),Labor,0.0d,1.0,1.0,At Completion Units,10/7/2024,10/7/2024,0,0,0,0,0,0,0,0,0,0,1.03_Accelerator Systems (AS),1.03.06_AS Soft X-Ray Undulator (SXR) - SLAC,1.03.06.20_AS Soft X-Ray Undulator Installation - SLAC,1.03.06.20.03_SXR Undulator Installation,AS_SXU_INST_2020_Perform technical checkouts - SXU_HE_20,Electrical,,SLAC,Labor
105895,1.03,1.03.06,1.03.06.20,1.03.06.20.03,1.03.06.20.03,SXR Undulator Installation,AS_SXU_INST_2020,Perform technical checkouts - SXU_HE_20,1.0,6.0,6.0,6.0,06-02-25,06-02-25,0,0,SLAC,0%,52169.52169_METS Mechanical Engineer,52169_METS Mechanical Engineer,Labor,0.0d,1.0,1.0,At Completion Units,10/7/2024,10/7/2024,0,0,0,0,0,0,0,0,0,0,1.03_Accelerator Systems (AS),1.03.06_AS Soft X-Ray Undulator (SXR) - SLAC,1.03.06.20_AS Soft X-Ray Undulator Installation - SLAC,1.03.06.20.03_SXR Undulator Installation,AS_SXU_INST_2020_Perform technical checkouts - SXU_HE_20,Mechanical,,SLAC,Labor
105896,1.03,1.03.06,1.03.06.20,1.03.06.20.03,1.03.06.20.03,SXR Undulator Installation,AS_SXU_INST_2020,Perform technical checkouts - SXU_HE_20,1.0,4.0,4.0,4.0,06-02-25,06-02-25,0,0,SLAC,0%,0106.0106_Staff Scientist,0106_Staff Scientist,Labor,0.0d,1.0,1.0,At Completion Units,10/7/2024,10/7/2024,0,0,0,0,0,0,0,0,0,0,1.03_Accelerator Systems (AS),1.03.06_AS Soft X-Ray Undulator (SXR) - SLAC,1.03.06.20_AS Soft X-Ray Undulator Installation - SLAC,1.03.06.20.03_SXR Undulator Installation,AS_SXU_INST_2020_Perform technical checkouts - SXU_HE_20,Scientist,,SLAC,Labor
105897,1.03,1.03.06,1.03.06.20,1.03.06.20.03,1.03.06.20.03,SXR Undulator Installation,AS_SXU_INST_2020,Perform technical checkouts - SXU_HE_20,1.0,4.0,4.0,4.0,06-02-25,06-02-25,0,0,SLAC,0%,52198.52198_METSMANF (METSD Manufacturing),52198_METSMANF (METSD Manufacturing),Labor,0.0d,1.0,1.0,At Completion Units,10/7/2024,10/7/2024,0,0,0,0,0,0,0,0,0,0,1.03_Accelerator Systems (AS),1.03.06_AS Soft X-Ray Undulator (SXR) - SLAC,1.03.06.20_AS Soft X-Ray Undulator Installation - SLAC,1.03.06.20.03_SXR Undulator Installation,AS_SXU_INST_2020_Perform technical checkouts - SXU_HE_20,Manufacturing,,SLAC,Labor
105898,1.03,1.03.06,1.03.06.20,1.03.06.20.03,1.03.06.20.03,SXR Undulator Installation,AS_SXU_INST_2010,Install Undulator - SXU_HE_20,1.0,12.0,12.0,12.0,05-30-25,05-30-25,0,0,SLAC,0%,52169.52169_METS Mechanical Engineer,52169_METS Mechanical Engineer,Labor,0.0d,1.0,1.0,At Completion Units,10/4/2024,10/4/2024,0,0,0,0,0,0,0,0,0,0,1.03_Accelerator Systems (AS),1.03.06_AS Soft X-Ray Undulator (SXR) - SLAC,1.03.06.20_AS Soft X-Ray Undulator Installation - SLAC,1.03.06.20.03_SXR Undulator Installation,AS_SXU_INST_2010_Install Undulator - SXU_HE_20,Mechanical,,SLAC,Labor
105899,1.03,1.03.06,1.03.06.20,1.03.06.20.03,1.03.06.20.03,SXR Undulator Installation,AS_SXU_INST_2010,Install Undulator - SXU_HE_20,1.0,4.0,4.0,4.0,05-30-25,05-30-25,0,0,SLAC,0%,0106.0106_Staff Scientist,0106_Staff Scientist,Labor,0.0d,1.0,1.0,At Completion Units,10/4/2024,10/4/2024,0,0,0,0,0,0,0,0,0,0,1.03_Accelerator Systems (AS),1.03.06_AS Soft X-Ray Undulator (SXR) - SLAC,1.03.06.20_AS Soft X-Ray Undulator Installation - SLAC,1.03.06.20.03_SXR Undulator Installation,AS_SXU_INST_2010_Install Undulator - SXU_HE_20,Scientist,,SLAC,Labor
105900,1.03,1.03.06,1.03.06.20,1.03.06.20.03,1.03.06.20.03,SXR Undulator Installation,AS_SXU_INST_2010,Install Undulator - SXU_HE_20,1.0,8.0,8.0,8.0,05-30-25,05-30-25,0,0,SLAC,0%,52191.52191_METSMET Metrology,52191_METSMET Metrology,Labor,0.0d,1.0,1.0,At Completion Units,10/4/2024,10/4/2024,0,0,0,0,0,0,0,0,0,0,1.03_Accelerator Systems (AS),1.03.06_AS Soft X-Ray Undulator (SXR) - SLAC,1.03.06.20_AS Soft X-Ray Undulator Installation - SLAC,1.03.06.20.03_SXR Undulator Installation,AS_SXU_INST_2010_Install Undulator - SXU_HE_20,Metrology,,SLAC,Labor
105901,1.03,1.03.06,1.03.06.20,1.03.06.20.03,1.03.06.20.03,SXR Undulator Installation,AS_SXU_INST_2010,Install Undulator - SXU_HE_20,1.0,34.0,34.0,34.0,05-30-25,05-30-25,0,0,SLAC,0%,52198.52198_METSMANF (METSD Manufacturing),52198_METSMANF (METSD Manufacturing),Labor,0.0d,1.0,1.0,At Completion Units,10/4/2024,10/4/2024,0,0,0,0,0,0,0,0,0,0,1.03_Accelerator Systems (AS),1.03.06_AS Soft X-Ray Undulator (SXR) - SLAC,1.03.06.20_AS Soft X-Ray Undulator Installation - SLAC,1.03.06.20.03_SXR Undulator Installation,AS_SXU_INST_2010_Install Undulator - SXU_HE_20,Manufacturing,,SLAC,Labor
105902,1.03,1.03.06,1.03.06.20,1.03.06.20.03,1.03.06.20.03,SXR Undulator Installation,AS_SXU_INST_2005,PAMM Management - SXU_HE_20,3.0,6.0,6.0,6.0,05-30-25,06-03-25,0,0,SLAC,0%,52169.52169_METS Mechanical Engineer,52169_METS Mechanical Engineer,Labor,0.0d,3.0,3.0,At Completion Units,10/4/2024,10/8/2024,0,0,0,0,0,0,0,0,0,0,1.03_Accelerator Systems (AS),1.03.06_AS Soft X-Ray Undulator (SXR) - SLAC,1.03.06.20_AS Soft X-Ray Undulator Installation - SLAC,1.03.06.20.03_SXR Undulator Installation,AS_SXU_INST_2005_PAMM Management - SXU_HE_20,Mechanical,,SLAC,Labor
105903,1.03,1.03.06,1.03.06.20,1.03.06.20.03,1.03.06.20.03,SXR Undulator Installation,AS_SXU_INST_1900,Remove Undulator from Tunnel - SXU_REFB_J,1.0,15.0,15.0,15.0,01-02-24,01-02-24,0,0,SLAC,0%,52152.52152_FAC Fleet,52152_FAC Fleet,Labor,0.0d,1.0,1.0,At Completion Units,1/2/2024,1/2/2024,0,0,0,0,0,0,0,0,0,0,1.03_Accelerator Systems (AS),1.03.06_AS Soft X-Ray Undulator (SXR) - SLAC,1.03.06.20_AS Soft X-Ray Undulator Installation - SLAC,1.03.06.20.03_SXR Undulator Installation,AS_SXU_INST_1900_Remove Undulator from Tunnel - SXU_REFB_J,Support System,,SLAC,Labor
105904,1.03,1.03.06,1.03.06.20,1.03.06.20.03,1.03.06.20.03,SXR Undulator Installation,AS_SXU_INST_1900,Remove Undulator from Tunnel - SXU_REFB_J,1.0,6.0,6.0,6.0,01-02-24,01-02-24,0,0,SLAC,0%,52169.52169_METS Mechanical Engineer,52169_METS Mechanical Engineer,Labor,0.0d,1.0,1.0,At Completion Units,1/2/2024,1/2/2024,0,0,0,0,0,0,0,0,0,0,1.03_Accelerator Systems (AS),1.03.06_AS Soft X-Ray Undulator (SXR) - SLAC,1.03.06.20_AS Soft X-Ray Undulator Installation - SLAC,1.03.06.20.03_SXR Undulator Installation,AS_SXU_INST_1900_Remove Undulator from Tunnel - SXU_REFB_J,Mechanical,,SLAC,Labor
105905,1.03,1.03.06,1.03.06.20,1.03.06.20.03,1.03.06.20.03,SXR Undulator Installation,AS_SXU_INST_1900,Remove Undulator from Tunnel - SXU_REFB_J,1.0,40.0,40.0,40.0,01-02-24,01-02-24,0,0,SLAC,0%,52198.52198_METSMANF (METSD Manufacturing),52198_METSMANF (METSD Manufacturing),Labor,0.0d,1.0,1.0,At Completion Units,1/2/2024,1/2/2024,0,0,0,0,0,0,0,0,0,0,1.03_Accelerator Systems (AS),1.03.06_AS Soft X-Ray Undulator (SXR) - SLAC,1.03.06.20_AS Soft X-Ray Undulator Installation - SLAC,1.03.06.20.03_SXR Undulator Installation,AS_SXU_INST_1900_Remove Undulator from Tunnel - SXU_REFB_J,Manufacturing,,SLAC,Labor
105906,1.03,1.03.06,1.03.06.20,1.03.06.20.03,1.03.06.20.03,SXR Undulator Installation,AS_SXU_INST_1910,Install Undulator - SXU_HE_19,1.0,2.0,2.0,2.0,04-22-25,04-22-25,0,0,SLAC,0%,52190.52190_METSTP Tech Planning - Reinstated FY16,52190_METSTP Tech Planning - Reinstated FY16,Labor,0.0d,1.0,1.0,At Completion Units,8/27/2024,8/27/2024,0,0,0,0,0,0,0,0,0,0,1.03_Accelerator Systems (AS),1.03.06_AS Soft X-Ray Undulator (SXR) - SLAC,1.03.06.20_AS Soft X-Ray Undulator Installation - SLAC,1.03.06.20.03_SXR Undulator Installation,AS_SXU_INST_1910_Install Undulator - SXU_HE_19,METSTPT Tech Planning,Tech,SLAC,Labor
105907,1.03,1.03.06,1.03.06.20,1.03.06.20.03,1.03.06.20.03,SXR Undulator Installation,AS_SXU_INST_1910,Install Undulator - SXU_HE_19,1.0,12.0,12.0,12.0,04-22-25,04-22-25,0,0,SLAC,0%,52152.52152_FAC Fleet,52152_FAC Fleet,Labor,0.0d,1.0,1.0,At Completion Units,8/27/2024,8/27/2024,0,0,0,0,0,0,0,0,0,0,1.03_Accelerator Systems (AS),1.03.06_AS Soft X-Ray Undulator (SXR) - SLAC,1.03.06.20_AS Soft X-Ray Undulator Installation - SLAC,1.03.06.20.03_SXR Undulator Installation,AS_SXU_INST_1910_Install Undulator - SXU_HE_19,Support System,,SLAC,Labor
105908,1.03,1.03.06,1.03.06.20,1.03.06.20.03,1.03.06.20.03,SXR Undulator Installation,AS_SXU_INST_1905,PAMM Management - SXU_HE_19,3.0,2.0,2.0,2.0,04-22-25,04-24-25,0,0,SLAC,0%,52155.52155_Health Physics Technician III,52155_Health Physics Technician III,Labor,0.0d,3.0,3.0,At Completion Units,8/27/2024,8/29/2024,0,0,0,0,0,0,0,0,0,0,1.03_Accelerator Systems (AS),1.03.06_AS Soft X-Ray Undulator (SXR) - SLAC,1.03.06.20_AS Soft X-Ray Undulator Installation - SLAC,1.03.06.20.03_SXR Undulator Installation,AS_SXU_INST_1905_PAMM Management - SXU_HE_19,Support System,Tech,SLAC,Labor
105909,1.03,1.03.06,1.03.06.20,1.03.06.20.03,1.03.06.20.03,SXR Undulator Installation,AS_SXU_INST_1930,Pre-beam checkout - SXU_HE_19,1.0,5.0,5.0,5.0,04-24-25,04-24-25,0,0,SLAC,0%,52213.52213_EEDHW (Electronics & Engineering Div - HW Engr),52213_EEDHW (Electronics & Engineering Div - HW Engr),Labor,0.0d,1.0,1.0,At Completion Units,8/29/2024,8/29/2024,0,0,0,0,0,0,0,0,0,0,1.03_Accelerator Systems (AS),1.03.06_AS Soft X-Ray Undulator (SXR) - SLAC,1.03.06.20_AS Soft X-Ray Undulator Installation - SLAC,1.03.06.20.03_SXR Undulator Installation,AS_SXU_INST_1930_Pre-beam checkout - SXU_HE_19,Electrical,,SLAC,Labor
105910,1.03,1.03.06,1.03.06.20,1.03.06.20.03,1.03.06.20.03,SXR Undulator Installation,AS_SXU_INST_1930,Pre-beam checkout - SXU_HE_19,1.0,2.0,2.0,2.0,04-24-25,04-24-25,0,0,SLAC,0%,52169.52169_METS Mechanical Engineer,52169_METS Mechanical Engineer,Labor,0.0d,1.0,1.0,At Completion Units,8/29/2024,8/29/2024,0,0,0,0,0,0,0,0,0,0,1.03_Accelerator Systems (AS),1.03.06_AS Soft X-Ray Undulator (SXR) - SLAC,1.03.06.20_AS Soft X-Ray Undulator Installation - SLAC,1.03.06.20.03_SXR Undulator Installation,AS_SXU_INST_1930_Pre-beam checkout - SXU_HE_19,Mechanical,,SLAC,Labor
105911,1.03,1.03.06,1.03.06.20,1.03.06.20.03,1.03.06.20.03,SXR Undulator Installation,AS_SXU_INST_1930,Pre-beam checkout - SXU_HE_19,1.0,8.0,8.0,8.0,04-24-25,04-24-25,0,0,SLAC,0%,0106.0106_Staff Scientist,0106_Staff Scientist,Labor,0.0d,1.0,1.0,At Completion Units,8/29/2024,8/29/2024,0,0,0,0,0,0,0,0,0,0,1.03_Accelerator Systems (AS),1.03.06_AS Soft X-Ray Undulator (SXR) - SLAC,1.03.06.20_AS Soft X-Ray Undulator Installation - SLAC,1.03.06.20.03_SXR Undulator Installation,AS_SXU_INST_1930_Pre-beam checkout - SXU_HE_19,Scientist,,SLAC,Labor
105912,1.03,1.03.06,1.03.06.20,1.03.06.20.03,1.03.06.20.03,SXR Undulator Installation,AS_SXU_INST_1930,Pre-beam checkout - SXU_HE_19,1.0,12.0,12.0,12.0,04-24-25,04-24-25,0,0,SLAC,0%,52191.52191_METSMET Metrology,52191_METSMET Metrology,Labor,0.0d,1.0,1.0,At Completion Units,8/29/2024,8/29/2024,0,0,0,0,0,0,0,0,0,0,1.03_Accelerator Systems (AS),1.03.06_AS Soft X-Ray Undulator (SXR) - SLAC,1.03.06.20_AS Soft X-Ray Undulator Installation - SLAC,1.03.06.20.03_SXR Undulator Installation,AS_SXU_INST_1930_Pre-beam checkout - SXU_HE_19,Metrology,,SLAC,Labor
105913,1.03,1.03.06,1.03.06.20,1.03.06.20.03,1.03.06.20.03,SXR Undulator Installation,AS_SXU_INST_1920,Perform technical checkouts - SXU_HE_19,1.0,4.0,4.0,4.0,04-23-25,04-23-25,0,0,SLAC,0%,52211.52211_EEDOPSE (Electronics & Engineering Div - Ops & PSE),52211_EEDOPSE (Electronics & Engineering Div - Ops & PSE),Labor,0.0d,1.0,1.0,At Completion Units,8/28/2024,8/28/2024,0,0,0,0,0,0,0,0,0,0,1.03_Accelerator Systems (AS),1.03.06_AS Soft X-Ray Undulator (SXR) - SLAC,1.03.06.20_AS Soft X-Ray Undulator Installation - SLAC,1.03.06.20.03_SXR Undulator Installation,AS_SXU_INST_1920_Perform technical checkouts - SXU_HE_19,Electrical,,SLAC,Labor
105914,1.03,1.03.06,1.03.06.20,1.03.06.20.03,1.03.06.20.03,SXR Undulator Installation,AS_SXU_INST_1920,Perform technical checkouts - SXU_HE_19,1.0,8.0,8.0,8.0,04-23-25,04-23-25,0,0,SLAC,0%,52127.52127_Research Electrical & SW Engineer,52127_Research Electrical & SW Engineer,Labor,0.0d,1.0,1.0,At Completion Units,8/28/2024,8/28/2024,0,0,0,0,0,0,0,0,0,0,1.03_Accelerator Systems (AS),1.03.06_AS Soft X-Ray Undulator (SXR) - SLAC,1.03.06.20_AS Soft X-Ray Undulator Installation - SLAC,1.03.06.20.03_SXR Undulator Installation,AS_SXU_INST_1920_Perform technical checkouts - SXU_HE_19,Electrical,,SLAC,Labor
105915,1.03,1.03.06,1.03.06.20,1.03.06.20.03,1.03.06.20.03,SXR Undulator Installation,AS_SXU_INST_1920,Perform technical checkouts - SXU_HE_19,1.0,20.0,20.0,20.0,04-23-25,04-23-25,0,0,SLAC,0%,52213.52213_EEDHW (Electronics & Engineering Div - HW Engr),52213_EEDHW (Electronics & Engineering Div - HW Engr),Labor,0.0d,1.0,1.0,At Completion Units,8/28/2024,8/28/2024,0,0,0,0,0,0,0,0,0,0,1.03_Accelerator Systems (AS),1.03.06_AS Soft X-Ray Undulator (SXR) - SLAC,1.03.06.20_AS Soft X-Ray Undulator Installation - SLAC,1.03.06.20.03_SXR Undulator Installation,AS_SXU_INST_1920_Perform technical checkouts - SXU_HE_19,Electrical,,SLAC,Labor
105916,1.03,1.03.06,1.03.06.20,1.03.06.20.03,1.03.06.20.03,SXR Undulator Installation,AS_SXU_INST_1920,Perform technical checkouts - SXU_HE_19,1.0,6.0,6.0,6.0,04-23-25,04-23-25,0,0,SLAC,0%,52169.52169_METS Mechanical Engineer,52169_METS Mechanical Engineer,Labor,0.0d,1.0,1.0,At Completion Units,8/28/2024,8/28/2024,0,0,0,0,0,0,0,0,0,0,1.03_Accelerator Systems (AS),1.03.06_AS Soft X-Ray Undulator (SXR) - SLAC,1.03.06.20_AS Soft X-Ray Undulator Installation - SLAC,1.03.06.20.03_SXR Undulator Installation,AS_SXU_INST_1920_Perform technical checkouts - SXU_HE_19,Mechanical,,SLAC,Labor
105917,1.03,1.03.06,1.03.06.20,1.03.06.20.03,1.03.06.20.03,SXR Undulator Installation,AS_SXU_INST_1920,Perform technical checkouts - SXU_HE_19,1.0,4.0,4.0,4.0,04-23-25,04-23-25,0,0,SLAC,0%,0106.0106_Staff Scientist,0106_Staff Scientist,Labor,0.0d,1.0,1.0,At Completion Units,8/28/2024,8/28/2024,0,0,0,0,0,0,0,0,0,0,1.03_Accelerator Systems (AS),1.03.06_AS Soft X-Ray Undulator (SXR) - SLAC,1.03.06.20_AS Soft X-Ray Undulator Installation - SLAC,1.03.06.20.03_SXR Undulator Installation,AS_SXU_INST_1920_Perform technical checkouts - SXU_HE_19,Scientist,,SLAC,Labor
105918,1.03,1.03.06,1.03.06.20,1.03.06.20.03,1.03.06.20.03,SXR Undulator Installation,AS_SXU_INST_1920,Perform technical checkouts - SXU_HE_19,1.0,4.0,4.0,4.0,04-23-25,04-23-25,0,0,SLAC,0%,52198.52198_METSMANF (METSD Manufacturing),52198_METSMANF (METSD Manufacturing),Labor,0.0d,1.0,1.0,At Completion Units,8/28/2024,8/28/2024,0,0,0,0,0,0,0,0,0,0,1.03_Accelerator Systems (AS),1.03.06_AS Soft X-Ray Undulator (SXR) - SLAC,1.03.06.20_AS Soft X-Ray Undulator Installation - SLAC,1.03.06.20.03_SXR Undulator Installation,AS_SXU_INST_1920_Perform technical checkouts - SXU_HE_19,Manufacturing,,SLAC,Labor
105919,1.03,1.03.06,1.03.06.20,1.03.06.20.03,1.03.06.20.03,SXR Undulator Installation,AS_SXU_INST_1910,Install Undulator - SXU_HE_19,1.0,12.0,12.0,12.0,04-22-25,04-22-25,0,0,SLAC,0%,52169.52169_METS Mechanical Engineer,52169_METS Mechanical Engineer,Labor,0.0d,1.0,1.0,At Completion Units,8/27/2024,8/27/2024,0,0,0,0,0,0,0,0,0,0,1.03_Accelerator Systems (AS),1.03.06_AS Soft X-Ray Undulator (SXR) - SLAC,1.03.06.20_AS Soft X-Ray Undulator Installation - SLAC,1.03.06.20.03_SXR Undulator Installation,AS_SXU_INST_1910_Install Undulator - SXU_HE_19,Mechanical,,SLAC,Labor
105920,1.03,1.03.06,1.03.06.20,1.03.06.20.03,1.03.06.20.03,SXR Undulator Installation,AS_SXU_INST_1910,Install Undulator - SXU_HE_19,1.0,4.0,4.0,4.0,04-22-25,04-22-25,0,0,SLAC,0%,0106.0106_Staff Scientist,0106_Staff Scientist,Labor,0.0d,1.0,1.0,At Completion Units,8/27/2024,8/27/2024,0,0,0,0,0,0,0,0,0,0,1.03_Accelerator Systems (AS),1.03.06_AS Soft X-Ray Undulator (SXR) - SLAC,1.03.06.20_AS Soft X-Ray Undulator Installation - SLAC,1.03.06.20.03_SXR Undulator Installation,AS_SXU_INST_1910_Install Undulator - SXU_HE_19,Scientist,,SLAC,Labor
105921,1.03,1.03.06,1.03.06.20,1.03.06.20.03,1.03.06.20.03,SXR Undulator Installation,AS_SXU_INST_1910,Install Undulator - SXU_HE_19,1.0,8.0,8.0,8.0,04-22-25,04-22-25,0,0,SLAC,0%,52191.52191_METSMET Metrology,52191_METSMET Metrology,Labor,0.0d,1.0,1.0,At Completion Units,8/27/2024,8/27/2024,0,0,0,0,0,0,0,0,0,0,1.03_Accelerator Systems (AS),1.03.06_AS Soft X-Ray Undulator (SXR) - SLAC,1.03.06.20_AS Soft X-Ray Undulator Installation - SLAC,1.03.06.20.03_SXR Undulator Installation,AS_SXU_INST_1910_Install Undulator - SXU_HE_19,Metrology,,SLAC,Labor
105922,1.03,1.03.06,1.03.06.20,1.03.06.20.03,1.03.06.20.03,SXR Undulator Installation,AS_SXU_INST_1910,Install Undulator - SXU_HE_19,1.0,34.0,34.0,34.0,04-22-25,04-22-25,0,0,SLAC,0%,52198.52198_METSMANF (METSD Manufacturing),52198_METSMANF (METSD Manufacturing),Labor,0.0d,1.0,1.0,At Completion Units,8/27/2024,8/27/2024,0,0,0,0,0,0,0,0,0,0,1.03_Accelerator Systems (AS),1.03.06_AS Soft X-Ray Undulator (SXR) - SLAC,1.03.06.20_AS Soft X-Ray Undulator Installation - SLAC,1.03.06.20.03_SXR Undulator Installation,AS_SXU_INST_1910_Install Undulator - SXU_HE_19,Manufacturing,,SLAC,Labor
105923,1.03,1.03.06,1.03.06.20,1.03.06.20.03,1.03.06.20.03,SXR Undulator Installation,AS_SXU_INST_1905,PAMM Management - SXU_HE_19,3.0,6.0,6.0,6.0,04-22-25,04-24-25,0,0,SLAC,0%,52169.52169_METS Mechanical Engineer,52169_METS Mechanical Engineer,Labor,0.0d,3.0,3.0,At Completion Units,8/27/2024,8/29/2024,0,0,0,0,0,0,0,0,0,0,1.03_Accelerator Systems (AS),1.03.06_AS Soft X-Ray Undulator (SXR) - SLAC,1.03.06.20_AS Soft X-Ray Undulator Installation - SLAC,1.03.06.20.03_SXR Undulator Installation,AS_SXU_INST_1905_PAMM Management - SXU_HE_19,Mechanical,,SLAC,Labor
105924,1.03,1.03.06,1.03.06.20,1.03.06.20.03,1.03.06.20.03,SXR Undulator Installation,AS_SXU_INST_1800,Remove Undulator from Tunnel - SXU_REFB_I,1.0,15.0,15.0,15.0,01-02-24,01-02-24,PM_PAMM_04: FS,"AS_SXU_INST_1702: FS, AS_SXU_MANF_1821: FS",SLAC,0%,52152.52152_FAC Fleet,52152_FAC Fleet,Labor,0.0d,1.0,1.0,At Completion Units,1/2/2024,1/2/2024,0,0,0,0,0,0,0,0,0,0,1.03_Accelerator Systems (AS),1.03.06_AS Soft X-Ray Undulator (SXR) - SLAC,1.03.06.20_AS Soft X-Ray Undulator Installation - SLAC,1.03.06.20.03_SXR Undulator Installation,AS_SXU_INST_1800_Remove Undulator from Tunnel - SXU_REFB_I,Support System,,SLAC,Labor
105925,1.03,1.03.06,1.03.06.20,1.03.06.20.03,1.03.06.20.03,SXR Undulator Installation,AS_SXU_INST_1800,Remove Undulator from Tunnel - SXU_REFB_I,1.0,6.0,6.0,6.0,01-02-24,01-02-24,PM_PAMM_04: FS,"AS_SXU_INST_1702: FS, AS_SXU_MANF_1821: FS",SLAC,0%,52169.52169_METS Mechanical Engineer,52169_METS Mechanical Engineer,Labor,0.0d,1.0,1.0,At Completion Units,1/2/2024,1/2/2024,0,0,0,0,0,0,0,0,0,0,1.03_Accelerator Systems (AS),1.03.06_AS Soft X-Ray Undulator (SXR) - SLAC,1.03.06.20_AS Soft X-Ray Undulator Installation - SLAC,1.03.06.20.03_SXR Undulator Installation,AS_SXU_INST_1800_Remove Undulator from Tunnel - SXU_REFB_I,Mechanical,,SLAC,Labor
105926,1.03,1.03.06,1.03.06.20,1.03.06.20.03,1.03.06.20.03,SXR Undulator Installation,AS_SXU_INST_1800,Remove Undulator from Tunnel - SXU_REFB_I,1.0,40.0,40.0,40.0,01-02-24,01-02-24,PM_PAMM_04: FS,"AS_SXU_INST_1702: FS, AS_SXU_MANF_1821: FS",SLAC,0%,52198.52198_METSMANF (METSD Manufacturing),52198_METSMANF (METSD Manufacturing),Labor,0.0d,1.0,1.0,At Completion Units,1/2/2024,1/2/2024,0,0,0,0,0,0,0,0,0,0,1.03_Accelerator Systems (AS),1.03.06_AS Soft X-Ray Undulator (SXR) - SLAC,1.03.06.20_AS Soft X-Ray Undulator Installation - SLAC,1.03.06.20.03_SXR Undulator Installation,AS_SXU_INST_1800_Remove Undulator from Tunnel - SXU_REFB_I,Manufacturing,,SLAC,Labor
105927,1.03,1.03.06,1.03.06.20,1.03.06.20.03,1.03.06.20.03,SXR Undulator Installation,AS_SXU_INST_1810,Install Undulator - SXU_HE_18,1.0,2.0,2.0,2.0,03-14-25,03-14-25,0,0,SLAC,0%,52190.52190_METSTP Tech Planning - Reinstated FY16,52190_METSTP Tech Planning - Reinstated FY16,Labor,0.0d,1.0,1.0,At Completion Units,7/19/2024,7/19/2024,0,0,0,0,0,0,0,0,0,0,1.03_Accelerator Systems (AS),1.03.06_AS Soft X-Ray Undulator (SXR) - SLAC,1.03.06.20_AS Soft X-Ray Undulator Installation - SLAC,1.03.06.20.03_SXR Undulator Installation,AS_SXU_INST_1810_Install Undulator - SXU_HE_18,METSTPT Tech Planning,Tech,SLAC,Labor
105928,1.03,1.03.06,1.03.06.20,1.03.06.20.03,1.03.06.20.03,SXR Undulator Installation,AS_SXU_INST_1810,Install Undulator - SXU_HE_18,1.0,12.0,12.0,12.0,03-14-25,03-14-25,0,0,SLAC,0%,52152.52152_FAC Fleet,52152_FAC Fleet,Labor,0.0d,1.0,1.0,At Completion Units,7/19/2024,7/19/2024,0,0,0,0,0,0,0,0,0,0,1.03_Accelerator Systems (AS),1.03.06_AS Soft X-Ray Undulator (SXR) - SLAC,1.03.06.20_AS Soft X-Ray Undulator Installation - SLAC,1.03.06.20.03_SXR Undulator Installation,AS_SXU_INST_1810_Install Undulator - SXU_HE_18,Support System,,SLAC,Labor
105929,1.03,1.03.06,1.03.06.20,1.03.06.20.03,1.03.06.20.03,SXR Undulator Installation,AS_SXU_INST_1805,PAMM Management - SXU_HE_18,3.0,2.0,2.0,2.0,03-14-25,03-18-25,0,0,SLAC,0%,52155.52155_Health Physics Technician III,52155_Health Physics Technician III,Labor,0.0d,3.0,3.0,At Completion Units,7/19/2024,7/23/2024,0,0,0,0,0,0,0,0,0,0,1.03_Accelerator Systems (AS),1.03.06_AS Soft X-Ray Undulator (SXR) - SLAC,1.03.06.20_AS Soft X-Ray Undulator Installation - SLAC,1.03.06.20.03_SXR Undulator Installation,AS_SXU_INST_1805_PAMM Management - SXU_HE_18,Support System,Tech,SLAC,Labor
105930,1.03,1.03.06,1.03.06.20,1.03.06.20.03,1.03.06.20.03,SXR Undulator Installation,AS_SXU_INST_1830,Pre-beam checkout - SXU_HE_18,1.0,5.0,5.0,5.0,03-18-25,03-18-25,0,0,SLAC,0%,52213.52213_EEDHW (Electronics & Engineering Div - HW Engr),52213_EEDHW (Electronics & Engineering Div - HW Engr),Labor,0.0d,1.0,1.0,At Completion Units,7/23/2024,7/23/2024,0,0,0,0,0,0,0,0,0,0,1.03_Accelerator Systems (AS),1.03.06_AS Soft X-Ray Undulator (SXR) - SLAC,1.03.06.20_AS Soft X-Ray Undulator Installation - SLAC,1.03.06.20.03_SXR Undulator Installation,AS_SXU_INST_1830_Pre-beam checkout - SXU_HE_18,Electrical,,SLAC,Labor
105931,1.03,1.03.06,1.03.06.20,1.03.06.20.03,1.03.06.20.03,SXR Undulator Installation,AS_SXU_INST_1830,Pre-beam checkout - SXU_HE_18,1.0,2.0,2.0,2.0,03-18-25,03-18-25,0,0,SLAC,0%,52169.52169_METS Mechanical Engineer,52169_METS Mechanical Engineer,Labor,0.0d,1.0,1.0,At Completion Units,7/23/2024,7/23/2024,0,0,0,0,0,0,0,0,0,0,1.03_Accelerator Systems (AS),1.03.06_AS Soft X-Ray Undulator (SXR) - SLAC,1.03.06.20_AS Soft X-Ray Undulator Installation - SLAC,1.03.06.20.03_SXR Undulator Installation,AS_SXU_INST_1830_Pre-beam checkout - SXU_HE_18,Mechanical,,SLAC,Labor
105932,1.03,1.03.06,1.03.06.20,1.03.06.20.03,1.03.06.20.03,SXR Undulator Installation,AS_SXU_INST_1830,Pre-beam checkout - SXU_HE_18,1.0,8.0,8.0,8.0,03-18-25,03-18-25,0,0,SLAC,0%,0106.0106_Staff Scientist,0106_Staff Scientist,Labor,0.0d,1.0,1.0,At Completion Units,7/23/2024,7/23/2024,0,0,0,0,0,0,0,0,0,0,1.03_Accelerator Systems (AS),1.03.06_AS Soft X-Ray Undulator (SXR) - SLAC,1.03.06.20_AS Soft X-Ray Undulator Installation - SLAC,1.03.06.20.03_SXR Undulator Installation,AS_SXU_INST_1830_Pre-beam checkout - SXU_HE_18,Scientist,,SLAC,Labor
105933,1.03,1.03.06,1.03.06.20,1.03.06.20.03,1.03.06.20.03,SXR Undulator Installation,AS_SXU_INST_1830,Pre-beam checkout - SXU_HE_18,1.0,12.0,12.0,12.0,03-18-25,03-18-25,0,0,SLAC,0%,52191.52191_METSMET Metrology,52191_METSMET Metrology,Labor,0.0d,1.0,1.0,At Completion Units,7/23/2024,7/23/2024,0,0,0,0,0,0,0,0,0,0,1.03_Accelerator Systems (AS),1.03.06_AS Soft X-Ray Undulator (SXR) - SLAC,1.03.06.20_AS Soft X-Ray Undulator Installation - SLAC,1.03.06.20.03_SXR Undulator Installation,AS_SXU_INST_1830_Pre-beam checkout - SXU_HE_18,Metrology,,SLAC,Labor
105934,1.03,1.03.06,1.03.06.20,1.03.06.20.03,1.03.06.20.03,SXR Undulator Installation,AS_SXU_INST_1820,Perform technical checkouts - SXU_HE_18,1.0,4.0,4.0,4.0,03-17-25,03-17-25,0,0,SLAC,0%,52211.52211_EEDOPSE (Electronics & Engineering Div - Ops & PSE),52211_EEDOPSE (Electronics & Engineering Div - Ops & PSE),Labor,0.0d,1.0,1.0,At Completion Units,7/22/2024,7/22/2024,0,0,0,0,0,0,0,0,0,0,1.03_Accelerator Systems (AS),1.03.06_AS Soft X-Ray Undulator (SXR) - SLAC,1.03.06.20_AS Soft X-Ray Undulator Installation - SLAC,1.03.06.20.03_SXR Undulator Installation,AS_SXU_INST_1820_Perform technical checkouts - SXU_HE_18,Electrical,,SLAC,Labor
105935,1.03,1.03.06,1.03.06.20,1.03.06.20.03,1.03.06.20.03,SXR Undulator Installation,AS_SXU_INST_1820,Perform technical checkouts - SXU_HE_18,1.0,8.0,8.0,8.0,03-17-25,03-17-25,0,0,SLAC,0%,52127.52127_Research Electrical & SW Engineer,52127_Research Electrical & SW Engineer,Labor,0.0d,1.0,1.0,At Completion Units,7/22/2024,7/22/2024,0,0,0,0,0,0,0,0,0,0,1.03_Accelerator Systems (AS),1.03.06_AS Soft X-Ray Undulator (SXR) - SLAC,1.03.06.20_AS Soft X-Ray Undulator Installation - SLAC,1.03.06.20.03_SXR Undulator Installation,AS_SXU_INST_1820_Perform technical checkouts - SXU_HE_18,Electrical,,SLAC,Labor
105936,1.03,1.03.06,1.03.06.20,1.03.06.20.03,1.03.06.20.03,SXR Undulator Installation,AS_SXU_INST_1820,Perform technical checkouts - SXU_HE_18,1.0,20.0,20.0,20.0,03-17-25,03-17-25,0,0,SLAC,0%,52213.52213_EEDHW (Electronics & Engineering Div - HW Engr),52213_EEDHW (Electronics & Engineering Div - HW Engr),Labor,0.0d,1.0,1.0,At Completion Units,7/22/2024,7/22/2024,0,0,0,0,0,0,0,0,0,0,1.03_Accelerator Systems (AS),1.03.06_AS Soft X-Ray Undulator (SXR) - SLAC,1.03.06.20_AS Soft X-Ray Undulator Installation - SLAC,1.03.06.20.03_SXR Undulator Installation,AS_SXU_INST_1820_Perform technical checkouts - SXU_HE_18,Electrical,,SLAC,Labor
105937,1.03,1.03.06,1.03.06.20,1.03.06.20.03,1.03.06.20.03,SXR Undulator Installation,AS_SXU_INST_1820,Perform technical checkouts - SXU_HE_18,1.0,6.0,6.0,6.0,03-17-25,03-17-25,0,0,SLAC,0%,52169.52169_METS Mechanical Engineer,52169_METS Mechanical Engineer,Labor,0.0d,1.0,1.0,At Completion Units,7/22/2024,7/22/2024,0,0,0,0,0,0,0,0,0,0,1.03_Accelerator Systems (AS),1.03.06_AS Soft X-Ray Undulator (SXR) - SLAC,1.03.06.20_AS Soft X-Ray Undulator Installation - SLAC,1.03.06.20.03_SXR Undulator Installation,AS_SXU_INST_1820_Perform technical checkouts - SXU_HE_18,Mechanical,,SLAC,Labor
105938,1.03,1.03.06,1.03.06.20,1.03.06.20.03,1.03.06.20.03,SXR Undulator Installation,AS_SXU_INST_1820,Perform technical checkouts - SXU_HE_18,1.0,4.0,4.0,4.0,03-17-25,03-17-25,0,0,SLAC,0%,0106.0106_Staff Scientist,0106_Staff Scientist,Labor,0.0d,1.0,1.0,At Completion Units,7/22/2024,7/22/2024,0,0,0,0,0,0,0,0,0,0,1.03_Accelerator Systems (AS),1.03.06_AS Soft X-Ray Undulator (SXR) - SLAC,1.03.06.20_AS Soft X-Ray Undulator Installation - SLAC,1.03.06.20.03_SXR Undulator Installation,AS_SXU_INST_1820_Perform technical checkouts - SXU_HE_18,Scientist,,SLAC,Labor
105939,1.03,1.03.06,1.03.06.20,1.03.06.20.03,1.03.06.20.03,SXR Undulator Installation,AS_SXU_INST_1820,Perform technical checkouts - SXU_HE_18,1.0,4.0,4.0,4.0,03-17-25,03-17-25,0,0,SLAC,0%,52198.52198_METSMANF (METSD Manufacturing),52198_METSMANF (METSD Manufacturing),Labor,0.0d,1.0,1.0,At Completion Units,7/22/2024,7/22/2024,0,0,0,0,0,0,0,0,0,0,1.03_Accelerator Systems (AS),1.03.06_AS Soft X-Ray Undulator (SXR) - SLAC,1.03.06.20_AS Soft X-Ray Undulator Installation - SLAC,1.03.06.20.03_SXR Undulator Installation,AS_SXU_INST_1820_Perform technical checkouts - SXU_HE_18,Manufacturing,,SLAC,Labor
105940,1.03,1.03.06,1.03.06.20,1.03.06.20.03,1.03.06.20.03,SXR Undulator Installation,AS_SXU_INST_1810,Install Undulator - SXU_HE_18,1.0,12.0,12.0,12.0,03-14-25,03-14-25,0,0,SLAC,0%,52169.52169_METS Mechanical Engineer,52169_METS Mechanical Engineer,Labor,0.0d,1.0,1.0,At Completion Units,7/19/2024,7/19/2024,0,0,0,0,0,0,0,0,0,0,1.03_Accelerator Systems (AS),1.03.06_AS Soft X-Ray Undulator (SXR) - SLAC,1.03.06.20_AS Soft X-Ray Undulator Installation - SLAC,1.03.06.20.03_SXR Undulator Installation,AS_SXU_INST_1810_Install Undulator - SXU_HE_18,Mechanical,,SLAC,Labor
105941,1.03,1.03.06,1.03.06.20,1.03.06.20.03,1.03.06.20.03,SXR Undulator Installation,AS_SXU_INST_1810,Install Undulator - SXU_HE_18,1.0,4.0,4.0,4.0,03-14-25,03-14-25,0,0,SLAC,0%,0106.0106_Staff Scientist,0106_Staff Scientist,Labor,0.0d,1.0,1.0,At Completion Units,7/19/2024,7/19/2024,0,0,0,0,0,0,0,0,0,0,1.03_Accelerator Systems (AS),1.03.06_AS Soft X-Ray Undulator (SXR) - SLAC,1.03.06.20_AS Soft X-Ray Undulator Installation - SLAC,1.03.06.20.03_SXR Undulator Installation,AS_SXU_INST_1810_Install Undulator - SXU_HE_18,Scientist,,SLAC,Labor
105942,1.03,1.03.06,1.03.06.20,1.03.06.20.03,1.03.06.20.03,SXR Undulator Installation,AS_SXU_INST_1810,Install Undulator - SXU_HE_18,1.0,8.0,8.0,8.0,03-14-25,03-14-25,0,0,SLAC,0%,52191.52191_METSMET Metrology,52191_METSMET Metrology,Labor,0.0d,1.0,1.0,At Completion Units,7/19/2024,7/19/2024,0,0,0,0,0,0,0,0,0,0,1.03_Accelerator Systems (AS),1.03.06_AS Soft X-Ray Undulator (SXR) - SLAC,1.03.06.20_AS Soft X-Ray Undulator Installation - SLAC,1.03.06.20.03_SXR Undulator Installation,AS_SXU_INST_1810_Install Undulator - SXU_HE_18,Metrology,,SLAC,Labor
105943,1.03,1.03.06,1.03.06.20,1.03.06.20.03,1.03.06.20.03,SXR Undulator Installation,AS_SXU_INST_1810,Install Undulator - SXU_HE_18,1.0,34.0,34.0,34.0,03-14-25,03-14-25,0,0,SLAC,0%,52198.52198_METSMANF (METSD Manufacturing),52198_METSMANF (METSD Manufacturing),Labor,0.0d,1.0,1.0,At Completion Units,7/19/2024,7/19/2024,0,0,0,0,0,0,0,0,0,0,1.03_Accelerator Systems (AS),1.03.06_AS Soft X-Ray Undulator (SXR) - SLAC,1.03.06.20_AS Soft X-Ray Undulator Installation - SLAC,1.03.06.20.03_SXR Undulator Installation,AS_SXU_INST_1810_Install Undulator - SXU_HE_18,Manufacturing,,SLAC,Labor
105944,1.03,1.03.06,1.03.06.20,1.03.06.20.03,1.03.06.20.03,SXR Undulator Installation,AS_SXU_INST_1805,PAMM Management - SXU_HE_18,3.0,6.0,6.0,6.0,03-14-25,03-18-25,0,0,SLAC,0%,52169.52169_METS Mechanical Engineer,52169_METS Mechanical Engineer,Labor,0.0d,3.0,3.0,At Completion Units,7/19/2024,7/23/2024,0,0,0,0,0,0,0,0,0,0,1.03_Accelerator Systems (AS),1.03.06_AS Soft X-Ray Undulator (SXR) - SLAC,1.03.06.20_AS Soft X-Ray Undulator Installation - SLAC,1.03.06.20.03_SXR Undulator Installation,AS_SXU_INST_1805_PAMM Management - SXU_HE_18,Mechanical,,SLAC,Labor
105945,1.03,1.03.06,1.03.06.20,1.03.06.20.03,1.03.06.20.03,SXR Undulator Installation,AS_SXU_INST_1700,Remove Undulator from Tunnel - SXU_REFB_H,1.0,15.0,15.0,15.0,11-21-23,11-22-23,PM_PAMM_03: FS,"AS_SXU_INST_1602: FS, AS_SXU_MANF_1721: FS",SLAC,0%,52152.52152_FAC Fleet,52152_FAC Fleet,Labor,0.0d,1.0,1.0,At Completion Units,11/21/2023,11/22/2023,0,0,0,0,0,0,0,0,0,0,1.03_Accelerator Systems (AS),1.03.06_AS Soft X-Ray Undulator (SXR) - SLAC,1.03.06.20_AS Soft X-Ray Undulator Installation - SLAC,1.03.06.20.03_SXR Undulator Installation,AS_SXU_INST_1700_Remove Undulator from Tunnel - SXU_REFB_H,Support System,,SLAC,Labor
105946,1.03,1.03.06,1.03.06.20,1.03.06.20.03,1.03.06.20.03,SXR Undulator Installation,AS_SXU_INST_1700,Remove Undulator from Tunnel - SXU_REFB_H,1.0,6.0,6.0,6.0,11-21-23,11-22-23,PM_PAMM_03: FS,"AS_SXU_INST_1602: FS, AS_SXU_MANF_1721: FS",SLAC,0%,52169.52169_METS Mechanical Engineer,52169_METS Mechanical Engineer,Labor,0.0d,1.0,1.0,At Completion Units,11/21/2023,11/22/2023,0,0,0,0,0,0,0,0,0,0,1.03_Accelerator Systems (AS),1.03.06_AS Soft X-Ray Undulator (SXR) - SLAC,1.03.06.20_AS Soft X-Ray Undulator Installation - SLAC,1.03.06.20.03_SXR Undulator Installation,AS_SXU_INST_1700_Remove Undulator from Tunnel - SXU_REFB_H,Mechanical,,SLAC,Labor
105947,1.03,1.03.06,1.03.06.20,1.03.06.20.03,1.03.06.20.03,SXR Undulator Installation,AS_SXU_INST_1700,Remove Undulator from Tunnel - SXU_REFB_H,1.0,40.0,40.0,40.0,11-21-23,11-22-23,PM_PAMM_03: FS,"AS_SXU_INST_1602: FS, AS_SXU_MANF_1721: FS",SLAC,0%,52198.52198_METSMANF (METSD Manufacturing),52198_METSMANF (METSD Manufacturing),Labor,0.0d,1.0,1.0,At Completion Units,11/21/2023,11/22/2023,0,0,0,0,0,0,0,0,0,0,1.03_Accelerator Systems (AS),1.03.06_AS Soft X-Ray Undulator (SXR) - SLAC,1.03.06.20_AS Soft X-Ray Undulator Installation - SLAC,1.03.06.20.03_SXR Undulator Installation,AS_SXU_INST_1700_Remove Undulator from Tunnel - SXU_REFB_H,Manufacturing,,SLAC,Labor
105948,1.03,1.03.06,1.03.06.20,1.03.06.20.03,1.03.06.20.03,SXR Undulator Installation,AS_SXU_INST_1710,Install Undulator - SXU_HE_17,1.0,2.0,2.0,2.0,02-04-25,02-04-25,0,0,SLAC,0%,52190.52190_METSTP Tech Planning - Reinstated FY16,52190_METSTP Tech Planning - Reinstated FY16,Labor,0.0d,1.0,1.0,At Completion Units,6/11/2024,6/11/2024,0,0,0,0,0,0,0,0,0,0,1.03_Accelerator Systems (AS),1.03.06_AS Soft X-Ray Undulator (SXR) - SLAC,1.03.06.20_AS Soft X-Ray Undulator Installation - SLAC,1.03.06.20.03_SXR Undulator Installation,AS_SXU_INST_1710_Install Undulator - SXU_HE_17,METSTPT Tech Planning,Tech,SLAC,Labor
105949,1.03,1.03.06,1.03.06.20,1.03.06.20.03,1.03.06.20.03,SXR Undulator Installation,AS_SXU_INST_1710,Install Undulator - SXU_HE_17,1.0,12.0,12.0,12.0,02-04-25,02-04-25,0,0,SLAC,0%,52152.52152_FAC Fleet,52152_FAC Fleet,Labor,0.0d,1.0,1.0,At Completion Units,6/11/2024,6/11/2024,0,0,0,0,0,0,0,0,0,0,1.03_Accelerator Systems (AS),1.03.06_AS Soft X-Ray Undulator (SXR) - SLAC,1.03.06.20_AS Soft X-Ray Undulator Installation - SLAC,1.03.06.20.03_SXR Undulator Installation,AS_SXU_INST_1710_Install Undulator - SXU_HE_17,Support System,,SLAC,Labor
105950,1.03,1.03.06,1.03.06.20,1.03.06.20.03,1.03.06.20.03,SXR Undulator Installation,AS_SXU_INST_1705,PAMM Management - SXU_HE_17,3.0,2.0,2.0,2.0,02-04-25,02-06-25,0,0,SLAC,0%,52155.52155_Health Physics Technician III,52155_Health Physics Technician III,Labor,0.0d,3.0,3.0,At Completion Units,6/11/2024,6/13/2024,0,0,0,0,0,0,0,0,0,0,1.03_Accelerator Systems (AS),1.03.06_AS Soft X-Ray Undulator (SXR) - SLAC,1.03.06.20_AS Soft X-Ray Undulator Installation - SLAC,1.03.06.20.03_SXR Undulator Installation,AS_SXU_INST_1705_PAMM Management - SXU_HE_17,Support System,Tech,SLAC,Labor
105951,1.03,1.03.06,1.03.06.20,1.03.06.20.03,1.03.06.20.03,SXR Undulator Installation,AS_SXU_INST_1730,Pre-beam checkout - SXU_HE_17,1.0,5.0,5.0,5.0,02-06-25,02-06-25,0,0,SLAC,0%,52213.52213_EEDHW (Electronics & Engineering Div - HW Engr),52213_EEDHW (Electronics & Engineering Div - HW Engr),Labor,0.0d,1.0,1.0,At Completion Units,6/13/2024,6/13/2024,0,0,0,0,0,0,0,0,0,0,1.03_Accelerator Systems (AS),1.03.06_AS Soft X-Ray Undulator (SXR) - SLAC,1.03.06.20_AS Soft X-Ray Undulator Installation - SLAC,1.03.06.20.03_SXR Undulator Installation,AS_SXU_INST_1730_Pre-beam checkout - SXU_HE_17,Electrical,,SLAC,Labor
105952,1.03,1.03.06,1.03.06.20,1.03.06.20.03,1.03.06.20.03,SXR Undulator Installation,AS_SXU_INST_1730,Pre-beam checkout - SXU_HE_17,1.0,2.0,2.0,2.0,02-06-25,02-06-25,0,0,SLAC,0%,52169.52169_METS Mechanical Engineer,52169_METS Mechanical Engineer,Labor,0.0d,1.0,1.0,At Completion Units,6/13/2024,6/13/2024,0,0,0,0,0,0,0,0,0,0,1.03_Accelerator Systems (AS),1.03.06_AS Soft X-Ray Undulator (SXR) - SLAC,1.03.06.20_AS Soft X-Ray Undulator Installation - SLAC,1.03.06.20.03_SXR Undulator Installation,AS_SXU_INST_1730_Pre-beam checkout - SXU_HE_17,Mechanical,,SLAC,Labor
105953,1.03,1.03.06,1.03.06.20,1.03.06.20.03,1.03.06.20.03,SXR Undulator Installation,AS_SXU_INST_1730,Pre-beam checkout - SXU_HE_17,1.0,8.0,8.0,8.0,02-06-25,02-06-25,0,0,SLAC,0%,0106.0106_Staff Scientist,0106_Staff Scientist,Labor,0.0d,1.0,1.0,At Completion Units,6/13/2024,6/13/2024,0,0,0,0,0,0,0,0,0,0,1.03_Accelerator Systems (AS),1.03.06_AS Soft X-Ray Undulator (SXR) - SLAC,1.03.06.20_AS Soft X-Ray Undulator Installation - SLAC,1.03.06.20.03_SXR Undulator Installation,AS_SXU_INST_1730_Pre-beam checkout - SXU_HE_17,Scientist,,SLAC,Labor
105954,1.03,1.03.06,1.03.06.20,1.03.06.20.03,1.03.06.20.03,SXR Undulator Installation,AS_SXU_INST_1730,Pre-beam checkout - SXU_HE_17,1.0,12.0,12.0,12.0,02-06-25,02-06-25,0,0,SLAC,0%,52191.52191_METSMET Metrology,52191_METSMET Metrology,Labor,0.0d,1.0,1.0,At Completion Units,6/13/2024,6/13/2024,0,0,0,0,0,0,0,0,0,0,1.03_Accelerator Systems (AS),1.03.06_AS Soft X-Ray Undulator (SXR) - SLAC,1.03.06.20_AS Soft X-Ray Undulator Installation - SLAC,1.03.06.20.03_SXR Undulator Installation,AS_SXU_INST_1730_Pre-beam checkout - SXU_HE_17,Metrology,,SLAC,Labor
105955,1.03,1.03.06,1.03.06.20,1.03.06.20.03,1.03.06.20.03,SXR Undulator Installation,AS_SXU_INST_1720,Perform technical checkouts - SXU_HE_17,1.0,4.0,4.0,4.0,02-05-25,02-05-25,0,0,SLAC,0%,52211.52211_EEDOPSE (Electronics & Engineering Div - Ops & PSE),52211_EEDOPSE (Electronics & Engineering Div - Ops & PSE),Labor,0.0d,1.0,1.0,At Completion Units,6/12/2024,6/12/2024,0,0,0,0,0,0,0,0,0,0,1.03_Accelerator Systems (AS),1.03.06_AS Soft X-Ray Undulator (SXR) - SLAC,1.03.06.20_AS Soft X-Ray Undulator Installation - SLAC,1.03.06.20.03_SXR Undulator Installation,AS_SXU_INST_1720_Perform technical checkouts - SXU_HE_17,Electrical,,SLAC,Labor
105956,1.03,1.03.06,1.03.06.20,1.03.06.20.03,1.03.06.20.03,SXR Undulator Installation,AS_SXU_INST_1720,Perform technical checkouts - SXU_HE_17,1.0,8.0,8.0,8.0,02-05-25,02-05-25,0,0,SLAC,0%,52127.52127_Research Electrical & SW Engineer,52127_Research Electrical & SW Engineer,Labor,0.0d,1.0,1.0,At Completion Units,6/12/2024,6/12/2024,0,0,0,0,0,0,0,0,0,0,1.03_Accelerator Systems (AS),1.03.06_AS Soft X-Ray Undulator (SXR) - SLAC,1.03.06.20_AS Soft X-Ray Undulator Installation - SLAC,1.03.06.20.03_SXR Undulator Installation,AS_SXU_INST_1720_Perform technical checkouts - SXU_HE_17,Electrical,,SLAC,Labor
105957,1.03,1.03.06,1.03.06.20,1.03.06.20.03,1.03.06.20.03,SXR Undulator Installation,AS_SXU_INST_1720,Perform technical checkouts - SXU_HE_17,1.0,20.0,20.0,20.0,02-05-25,02-05-25,0,0,SLAC,0%,52213.52213_EEDHW (Electronics & Engineering Div - HW Engr),52213_EEDHW (Electronics & Engineering Div - HW Engr),Labor,0.0d,1.0,1.0,At Completion Units,6/12/2024,6/12/2024,0,0,0,0,0,0,0,0,0,0,1.03_Accelerator Systems (AS),1.03.06_AS Soft X-Ray Undulator (SXR) - SLAC,1.03.06.20_AS Soft X-Ray Undulator Installation - SLAC,1.03.06.20.03_SXR Undulator Installation,AS_SXU_INST_1720_Perform technical checkouts - SXU_HE_17,Electrical,,SLAC,Labor
105958,1.03,1.03.06,1.03.06.20,1.03.06.20.03,1.03.06.20.03,SXR Undulator Installation,AS_SXU_INST_1720,Perform technical checkouts - SXU_HE_17,1.0,6.0,6.0,6.0,02-05-25,02-05-25,0,0,SLAC,0%,52169.52169_METS Mechanical Engineer,52169_METS Mechanical Engineer,Labor,0.0d,1.0,1.0,At Completion Units,6/12/2024,6/12/2024,0,0,0,0,0,0,0,0,0,0,1.03_Accelerator Systems (AS),1.03.06_AS Soft X-Ray Undulator (SXR) - SLAC,1.03.06.20_AS Soft X-Ray Undulator Installation - SLAC,1.03.06.20.03_SXR Undulator Installation,AS_SXU_INST_1720_Perform technical checkouts - SXU_HE_17,Mechanical,,SLAC,Labor
105959,1.03,1.03.06,1.03.06.20,1.03.06.20.03,1.03.06.20.03,SXR Undulator Installation,AS_SXU_INST_1720,Perform technical checkouts - SXU_HE_17,1.0,4.0,4.0,4.0,02-05-25,02-05-25,0,0,SLAC,0%,0106.0106_Staff Scientist,0106_Staff Scientist,Labor,0.0d,1.0,1.0,At Completion Units,6/12/2024,6/12/2024,0,0,0,0,0,0,0,0,0,0,1.03_Accelerator Systems (AS),1.03.06_AS Soft X-Ray Undulator (SXR) - SLAC,1.03.06.20_AS Soft X-Ray Undulator Installation - SLAC,1.03.06.20.03_SXR Undulator Installation,AS_SXU_INST_1720_Perform technical checkouts - SXU_HE_17,Scientist,,SLAC,Labor
105960,1.03,1.03.06,1.03.06.20,1.03.06.20.03,1.03.06.20.03,SXR Undulator Installation,AS_SXU_INST_1720,Perform technical checkouts - SXU_HE_17,1.0,4.0,4.0,4.0,02-05-25,02-05-25,0,0,SLAC,0%,52198.52198_METSMANF (METSD Manufacturing),52198_METSMANF (METSD Manufacturing),Labor,0.0d,1.0,1.0,At Completion Units,6/12/2024,6/12/2024,0,0,0,0,0,0,0,0,0,0,1.03_Accelerator Systems (AS),1.03.06_AS Soft X-Ray Undulator (SXR) - SLAC,1.03.06.20_AS Soft X-Ray Undulator Installation - SLAC,1.03.06.20.03_SXR Undulator Installation,AS_SXU_INST_1720_Perform technical checkouts - SXU_HE_17,Manufacturing,,SLAC,Labor
105961,1.03,1.03.06,1.03.06.20,1.03.06.20.03,1.03.06.20.03,SXR Undulator Installation,AS_SXU_INST_1710,Install Undulator - SXU_HE_17,1.0,12.0,12.0,12.0,02-04-25,02-04-25,0,0,SLAC,0%,52169.52169_METS Mechanical Engineer,52169_METS Mechanical Engineer,Labor,0.0d,1.0,1.0,At Completion Units,6/11/2024,6/11/2024,0,0,0,0,0,0,0,0,0,0,1.03_Accelerator Systems (AS),1.03.06_AS Soft X-Ray Undulator (SXR) - SLAC,1.03.06.20_AS Soft X-Ray Undulator Installation - SLAC,1.03.06.20.03_SXR Undulator Installation,AS_SXU_INST_1710_Install Undulator - SXU_HE_17,Mechanical,,SLAC,Labor
105962,1.03,1.03.06,1.03.06.20,1.03.06.20.03,1.03.06.20.03,SXR Undulator Installation,AS_SXU_INST_1710,Install Undulator - SXU_HE_17,1.0,4.0,4.0,4.0,02-04-25,02-04-25,0,0,SLAC,0%,0106.0106_Staff Scientist,0106_Staff Scientist,Labor,0.0d,1.0,1.0,At Completion Units,6/11/2024,6/11/2024,0,0,0,0,0,0,0,0,0,0,1.03_Accelerator Systems (AS),1.03.06_AS Soft X-Ray Undulator (SXR) - SLAC,1.03.06.20_AS Soft X-Ray Undulator Installation - SLAC,1.03.06.20.03_SXR Undulator Installation,AS_SXU_INST_1710_Install Undulator - SXU_HE_17,Scientist,,SLAC,Labor
105963,1.03,1.03.06,1.03.06.20,1.03.06.20.03,1.03.06.20.03,SXR Undulator Installation,AS_SXU_INST_1710,Install Undulator - SXU_HE_17,1.0,8.0,8.0,8.0,02-04-25,02-04-25,0,0,SLAC,0%,52191.52191_METSMET Metrology,52191_METSMET Metrology,Labor,0.0d,1.0,1.0,At Completion Units,6/11/2024,6/11/2024,0,0,0,0,0,0,0,0,0,0,1.03_Accelerator Systems (AS),1.03.06_AS Soft X-Ray Undulator (SXR) - SLAC,1.03.06.20_AS Soft X-Ray Undulator Installation - SLAC,1.03.06.20.03_SXR Undulator Installation,AS_SXU_INST_1710_Install Undulator - SXU_HE_17,Metrology,,SLAC,Labor
105964,1.03,1.03.06,1.03.06.20,1.03.06.20.03,1.03.06.20.03,SXR Undulator Installation,AS_SXU_INST_1710,Install Undulator - SXU_HE_17,1.0,34.0,34.0,34.0,02-04-25,02-04-25,0,0,SLAC,0%,52198.52198_METSMANF (METSD Manufacturing),52198_METSMANF (METSD Manufacturing),Labor,0.0d,1.0,1.0,At Completion Units,6/11/2024,6/11/2024,0,0,0,0,0,0,0,0,0,0,1.03_Accelerator Systems (AS),1.03.06_AS Soft X-Ray Undulator (SXR) - SLAC,1.03.06.20_AS Soft X-Ray Undulator Installation - SLAC,1.03.06.20.03_SXR Undulator Installation,AS_SXU_INST_1710_Install Undulator - SXU_HE_17,Manufacturing,,SLAC,Labor
105965,1.03,1.03.06,1.03.06.20,1.03.06.20.03,1.03.06.20.03,SXR Undulator Installation,AS_SXU_INST_1705,PAMM Management - SXU_HE_17,3.0,6.0,6.0,6.0,02-04-25,02-06-25,0,0,SLAC,0%,52169.52169_METS Mechanical Engineer,52169_METS Mechanical Engineer,Labor,0.0d,3.0,3.0,At Completion Units,6/11/2024,6/13/2024,0,0,0,0,0,0,0,0,0,0,1.03_Accelerator Systems (AS),1.03.06_AS Soft X-Ray Undulator (SXR) - SLAC,1.03.06.20_AS Soft X-Ray Undulator Installation - SLAC,1.03.06.20.03_SXR Undulator Installation,AS_SXU_INST_1705_PAMM Management - SXU_HE_17,Mechanical,,SLAC,Labor
105966,1.03,1.03.06,1.03.06.20,1.03.06.20.03,1.03.06.20.03,SXR Undulator Installation,AS_SXU_INST_1600,Remove Undulator from Tunnel - SXU_REFB_G,1.0,15.0,15.0,15.0,11-21-23,11-22-23,PM_PAMM_03: FS,"AS_SXU_INST_1502: FS, AS_SXU_MANF_1621: FS",SLAC,0%,52152.52152_FAC Fleet,52152_FAC Fleet,Labor,0.0d,1.0,1.0,At Completion Units,11/21/2023,11/22/2023,0,0,0,0,0,0,0,0,0,0,1.03_Accelerator Systems (AS),1.03.06_AS Soft X-Ray Undulator (SXR) - SLAC,1.03.06.20_AS Soft X-Ray Undulator Installation - SLAC,1.03.06.20.03_SXR Undulator Installation,AS_SXU_INST_1600_Remove Undulator from Tunnel - SXU_REFB_G,Support System,,SLAC,Labor
105967,1.03,1.03.06,1.03.06.20,1.03.06.20.03,1.03.06.20.03,SXR Undulator Installation,AS_SXU_INST_1600,Remove Undulator from Tunnel - SXU_REFB_G,1.0,6.0,6.0,6.0,11-21-23,11-22-23,PM_PAMM_03: FS,"AS_SXU_INST_1502: FS, AS_SXU_MANF_1621: FS",SLAC,0%,52169.52169_METS Mechanical Engineer,52169_METS Mechanical Engineer,Labor,0.0d,1.0,1.0,At Completion Units,11/21/2023,11/22/2023,0,0,0,0,0,0,0,0,0,0,1.03_Accelerator Systems (AS),1.03.06_AS Soft X-Ray Undulator (SXR) - SLAC,1.03.06.20_AS Soft X-Ray Undulator Installation - SLAC,1.03.06.20.03_SXR Undulator Installation,AS_SXU_INST_1600_Remove Undulator from Tunnel - SXU_REFB_G,Mechanical,,SLAC,Labor
105968,1.03,1.03.06,1.03.06.20,1.03.06.20.03,1.03.06.20.03,SXR Undulator Installation,AS_SXU_INST_1600,Remove Undulator from Tunnel - SXU_REFB_G,1.0,40.0,40.0,40.0,11-21-23,11-22-23,PM_PAMM_03: FS,"AS_SXU_INST_1502: FS, AS_SXU_MANF_1621: FS",SLAC,0%,52198.52198_METSMANF (METSD Manufacturing),52198_METSMANF (METSD Manufacturing),Labor,0.0d,1.0,1.0,At Completion Units,11/21/2023,11/22/2023,0,0,0,0,0,0,0,0,0,0,1.03_Accelerator Systems (AS),1.03.06_AS Soft X-Ray Undulator (SXR) - SLAC,1.03.06.20_AS Soft X-Ray Undulator Installation - SLAC,1.03.06.20.03_SXR Undulator Installation,AS_SXU_INST_1600_Remove Undulator from Tunnel - SXU_REFB_G,Manufacturing,,SLAC,Labor
105969,1.03,1.03.06,1.03.06.20,1.03.06.20.03,1.03.06.20.03,SXR Undulator Installation,AS_SXU_INST_1610,Install Undulator - SXU_HE_16,1.0,2.0,2.0,2.0,12-12-24,12-12-24,0,0,SLAC,0%,52190.52190_METSTP Tech Planning - Reinstated FY16,52190_METSTP Tech Planning - Reinstated FY16,Labor,0.0d,1.0,1.0,At Completion Units,5/2/2024,5/2/2024,0,0,0,0,0,0,0,0,0,0,1.03_Accelerator Systems (AS),1.03.06_AS Soft X-Ray Undulator (SXR) - SLAC,1.03.06.20_AS Soft X-Ray Undulator Installation - SLAC,1.03.06.20.03_SXR Undulator Installation,AS_SXU_INST_1610_Install Undulator - SXU_HE_16,METSTPT Tech Planning,Tech,SLAC,Labor
105970,1.03,1.03.06,1.03.06.20,1.03.06.20.03,1.03.06.20.03,SXR Undulator Installation,AS_SXU_INST_1610,Install Undulator - SXU_HE_16,1.0,12.0,12.0,12.0,12-12-24,12-12-24,0,0,SLAC,0%,52152.52152_FAC Fleet,52152_FAC Fleet,Labor,0.0d,1.0,1.0,At Completion Units,5/2/2024,5/2/2024,0,0,0,0,0,0,0,0,0,0,1.03_Accelerator Systems (AS),1.03.06_AS Soft X-Ray Undulator (SXR) - SLAC,1.03.06.20_AS Soft X-Ray Undulator Installation - SLAC,1.03.06.20.03_SXR Undulator Installation,AS_SXU_INST_1610_Install Undulator - SXU_HE_16,Support System,,SLAC,Labor
105971,1.03,1.03.06,1.03.06.20,1.03.06.20.03,1.03.06.20.03,SXR Undulator Installation,AS_SXU_INST_1605,PAMM Management - SXU_HE_16,3.0,2.0,2.0,2.0,12-12-24,12-16-24,0,0,SLAC,0%,52155.52155_Health Physics Technician III,52155_Health Physics Technician III,Labor,0.0d,3.0,3.0,At Completion Units,5/2/2024,5/6/2024,0,0,0,0,0,0,0,0,0,0,1.03_Accelerator Systems (AS),1.03.06_AS Soft X-Ray Undulator (SXR) - SLAC,1.03.06.20_AS Soft X-Ray Undulator Installation - SLAC,1.03.06.20.03_SXR Undulator Installation,AS_SXU_INST_1605_PAMM Management - SXU_HE_16,Support System,Tech,SLAC,Labor
105972,1.03,1.03.06,1.03.06.20,1.03.06.20.03,1.03.06.20.03,SXR Undulator Installation,AS_SXU_INST_1630,Pre-beam checkout - SXU_HE_16,1.0,5.0,5.0,5.0,12-16-24,12-16-24,0,0,SLAC,0%,52213.52213_EEDHW (Electronics & Engineering Div - HW Engr),52213_EEDHW (Electronics & Engineering Div - HW Engr),Labor,0.0d,1.0,1.0,At Completion Units,5/6/2024,5/6/2024,0,0,0,0,0,0,0,0,0,0,1.03_Accelerator Systems (AS),1.03.06_AS Soft X-Ray Undulator (SXR) - SLAC,1.03.06.20_AS Soft X-Ray Undulator Installation - SLAC,1.03.06.20.03_SXR Undulator Installation,AS_SXU_INST_1630_Pre-beam checkout - SXU_HE_16,Electrical,,SLAC,Labor
105973,1.03,1.03.06,1.03.06.20,1.03.06.20.03,1.03.06.20.03,SXR Undulator Installation,AS_SXU_INST_1630,Pre-beam checkout - SXU_HE_16,1.0,2.0,2.0,2.0,12-16-24,12-16-24,0,0,SLAC,0%,52169.52169_METS Mechanical Engineer,52169_METS Mechanical Engineer,Labor,0.0d,1.0,1.0,At Completion Units,5/6/2024,5/6/2024,0,0,0,0,0,0,0,0,0,0,1.03_Accelerator Systems (AS),1.03.06_AS Soft X-Ray Undulator (SXR) - SLAC,1.03.06.20_AS Soft X-Ray Undulator Installation - SLAC,1.03.06.20.03_SXR Undulator Installation,AS_SXU_INST_1630_Pre-beam checkout - SXU_HE_16,Mechanical,,SLAC,Labor
105974,1.03,1.03.06,1.03.06.20,1.03.06.20.03,1.03.06.20.03,SXR Undulator Installation,AS_SXU_INST_1630,Pre-beam checkout - SXU_HE_16,1.0,8.0,8.0,8.0,12-16-24,12-16-24,0,0,SLAC,0%,0106.0106_Staff Scientist,0106_Staff Scientist,Labor,0.0d,1.0,1.0,At Completion Units,5/6/2024,5/6/2024,0,0,0,0,0,0,0,0,0,0,1.03_Accelerator Systems (AS),1.03.06_AS Soft X-Ray Undulator (SXR) - SLAC,1.03.06.20_AS Soft X-Ray Undulator Installation - SLAC,1.03.06.20.03_SXR Undulator Installation,AS_SXU_INST_1630_Pre-beam checkout - SXU_HE_16,Scientist,,SLAC,Labor
105975,1.03,1.03.06,1.03.06.20,1.03.06.20.03,1.03.06.20.03,SXR Undulator Installation,AS_SXU_INST_1630,Pre-beam checkout - SXU_HE_16,1.0,12.0,12.0,12.0,12-16-24,12-16-24,0,0,SLAC,0%,52191.52191_METSMET Metrology,52191_METSMET Metrology,Labor,0.0d,1.0,1.0,At Completion Units,5/6/2024,5/6/2024,0,0,0,0,0,0,0,0,0,0,1.03_Accelerator Systems (AS),1.03.06_AS Soft X-Ray Undulator (SXR) - SLAC,1.03.06.20_AS Soft X-Ray Undulator Installation - SLAC,1.03.06.20.03_SXR Undulator Installation,AS_SXU_INST_1630_Pre-beam checkout - SXU_HE_16,Metrology,,SLAC,Labor
105976,1.03,1.03.06,1.03.06.20,1.03.06.20.03,1.03.06.20.03,SXR Undulator Installation,AS_SXU_INST_1620,Perform technical checkouts - SXU_HE_16,1.0,4.0,4.0,4.0,12-13-24,12-13-24,0,0,SLAC,0%,52211.52211_EEDOPSE (Electronics & Engineering Div - Ops & PSE),52211_EEDOPSE (Electronics & Engineering Div - Ops & PSE),Labor,0.0d,1.0,1.0,At Completion Units,5/3/2024,5/3/2024,0,0,0,0,0,0,0,0,0,0,1.03_Accelerator Systems (AS),1.03.06_AS Soft X-Ray Undulator (SXR) - SLAC,1.03.06.20_AS Soft X-Ray Undulator Installation - SLAC,1.03.06.20.03_SXR Undulator Installation,AS_SXU_INST_1620_Perform technical checkouts - SXU_HE_16,Electrical,,SLAC,Labor
105977,1.03,1.03.06,1.03.06.20,1.03.06.20.03,1.03.06.20.03,SXR Undulator Installation,AS_SXU_INST_1620,Perform technical checkouts - SXU_HE_16,1.0,8.0,8.0,8.0,12-13-24,12-13-24,0,0,SLAC,0%,52127.52127_Research Electrical & SW Engineer,52127_Research Electrical & SW Engineer,Labor,0.0d,1.0,1.0,At Completion Units,5/3/2024,5/3/2024,0,0,0,0,0,0,0,0,0,0,1.03_Accelerator Systems (AS),1.03.06_AS Soft X-Ray Undulator (SXR) - SLAC,1.03.06.20_AS Soft X-Ray Undulator Installation - SLAC,1.03.06.20.03_SXR Undulator Installation,AS_SXU_INST_1620_Perform technical checkouts - SXU_HE_16,Electrical,,SLAC,Labor
105978,1.03,1.03.06,1.03.06.20,1.03.06.20.03,1.03.06.20.03,SXR Undulator Installation,AS_SXU_INST_1620,Perform technical checkouts - SXU_HE_16,1.0,20.0,20.0,20.0,12-13-24,12-13-24,0,0,SLAC,0%,52213.52213_EEDHW (Electronics & Engineering Div - HW Engr),52213_EEDHW (Electronics & Engineering Div - HW Engr),Labor,0.0d,1.0,1.0,At Completion Units,5/3/2024,5/3/2024,0,0,0,0,0,0,0,0,0,0,1.03_Accelerator Systems (AS),1.03.06_AS Soft X-Ray Undulator (SXR) - SLAC,1.03.06.20_AS Soft X-Ray Undulator Installation - SLAC,1.03.06.20.03_SXR Undulator Installation,AS_SXU_INST_1620_Perform technical checkouts - SXU_HE_16,Electrical,,SLAC,Labor
105979,1.03,1.03.06,1.03.06.20,1.03.06.20.03,1.03.06.20.03,SXR Undulator Installation,AS_SXU_INST_1620,Perform technical checkouts - SXU_HE_16,1.0,6.0,6.0,6.0,12-13-24,12-13-24,0,0,SLAC,0%,52169.52169_METS Mechanical Engineer,52169_METS Mechanical Engineer,Labor,0.0d,1.0,1.0,At Completion Units,5/3/2024,5/3/2024,0,0,0,0,0,0,0,0,0,0,1.03_Accelerator Systems (AS),1.03.06_AS Soft X-Ray Undulator (SXR) - SLAC,1.03.06.20_AS Soft X-Ray Undulator Installation - SLAC,1.03.06.20.03_SXR Undulator Installation,AS_SXU_INST_1620_Perform technical checkouts - SXU_HE_16,Mechanical,,SLAC,Labor
105980,1.03,1.03.06,1.03.06.20,1.03.06.20.03,1.03.06.20.03,SXR Undulator Installation,AS_SXU_INST_1620,Perform technical checkouts - SXU_HE_16,1.0,4.0,4.0,4.0,12-13-24,12-13-24,0,0,SLAC,0%,0106.0106_Staff Scientist,0106_Staff Scientist,Labor,0.0d,1.0,1.0,At Completion Units,5/3/2024,5/3/2024,0,0,0,0,0,0,0,0,0,0,1.03_Accelerator Systems (AS),1.03.06_AS Soft X-Ray Undulator (SXR) - SLAC,1.03.06.20_AS Soft X-Ray Undulator Installation - SLAC,1.03.06.20.03_SXR Undulator Installation,AS_SXU_INST_1620_Perform technical checkouts - SXU_HE_16,Scientist,,SLAC,Labor
105981,1.03,1.03.06,1.03.06.20,1.03.06.20.03,1.03.06.20.03,SXR Undulator Installation,AS_SXU_INST_1620,Perform technical checkouts - SXU_HE_16,1.0,4.0,4.0,4.0,12-13-24,12-13-24,0,0,SLAC,0%,52198.52198_METSMANF (METSD Manufacturing),52198_METSMANF (METSD Manufacturing),Labor,0.0d,1.0,1.0,At Completion Units,5/3/2024,5/3/2024,0,0,0,0,0,0,0,0,0,0,1.03_Accelerator Systems (AS),1.03.06_AS Soft X-Ray Undulator (SXR) - SLAC,1.03.06.20_AS Soft X-Ray Undulator Installation - SLAC,1.03.06.20.03_SXR Undulator Installation,AS_SXU_INST_1620_Perform technical checkouts - SXU_HE_16,Manufacturing,,SLAC,Labor
105982,1.03,1.03.06,1.03.06.20,1.03.06.20.03,1.03.06.20.03,SXR Undulator Installation,AS_SXU_INST_1610,Install Undulator - SXU_HE_16,1.0,12.0,12.0,12.0,12-12-24,12-12-24,0,0,SLAC,0%,52169.52169_METS Mechanical Engineer,52169_METS Mechanical Engineer,Labor,0.0d,1.0,1.0,At Completion Units,5/2/2024,5/2/2024,0,0,0,0,0,0,0,0,0,0,1.03_Accelerator Systems (AS),1.03.06_AS Soft X-Ray Undulator (SXR) - SLAC,1.03.06.20_AS Soft X-Ray Undulator Installation - SLAC,1.03.06.20.03_SXR Undulator Installation,AS_SXU_INST_1610_Install Undulator - SXU_HE_16,Mechanical,,SLAC,Labor
105983,1.03,1.03.06,1.03.06.20,1.03.06.20.03,1.03.06.20.03,SXR Undulator Installation,AS_SXU_INST_1610,Install Undulator - SXU_HE_16,1.0,4.0,4.0,4.0,12-12-24,12-12-24,0,0,SLAC,0%,0106.0106_Staff Scientist,0106_Staff Scientist,Labor,0.0d,1.0,1.0,At Completion Units,5/2/2024,5/2/2024,0,0,0,0,0,0,0,0,0,0,1.03_Accelerator Systems (AS),1.03.06_AS Soft X-Ray Undulator (SXR) - SLAC,1.03.06.20_AS Soft X-Ray Undulator Installation - SLAC,1.03.06.20.03_SXR Undulator Installation,AS_SXU_INST_1610_Install Undulator - SXU_HE_16,Scientist,,SLAC,Labor
105984,1.03,1.03.06,1.03.06.20,1.03.06.20.03,1.03.06.20.03,SXR Undulator Installation,AS_SXU_INST_1610,Install Undulator - SXU_HE_16,1.0,8.0,8.0,8.0,12-12-24,12-12-24,0,0,SLAC,0%,52191.52191_METSMET Metrology,52191_METSMET Metrology,Labor,0.0d,1.0,1.0,At Completion Units,5/2/2024,5/2/2024,0,0,0,0,0,0,0,0,0,0,1.03_Accelerator Systems (AS),1.03.06_AS Soft X-Ray Undulator (SXR) - SLAC,1.03.06.20_AS Soft X-Ray Undulator Installation - SLAC,1.03.06.20.03_SXR Undulator Installation,AS_SXU_INST_1610_Install Undulator - SXU_HE_16,Metrology,,SLAC,Labor
105985,1.03,1.03.06,1.03.06.20,1.03.06.20.03,1.03.06.20.03,SXR Undulator Installation,AS_SXU_INST_1610,Install Undulator - SXU_HE_16,1.0,34.0,34.0,34.0,12-12-24,12-12-24,0,0,SLAC,0%,52198.52198_METSMANF (METSD Manufacturing),52198_METSMANF (METSD Manufacturing),Labor,0.0d,1.0,1.0,At Completion Units,5/2/2024,5/2/2024,0,0,0,0,0,0,0,0,0,0,1.03_Accelerator Systems (AS),1.03.06_AS Soft X-Ray Undulator (SXR) - SLAC,1.03.06.20_AS Soft X-Ray Undulator Installation - SLAC,1.03.06.20.03_SXR Undulator Installation,AS_SXU_INST_1610_Install Undulator - SXU_HE_16,Manufacturing,,SLAC,Labor
105986,1.03,1.03.06,1.03.06.20,1.03.06.20.03,1.03.06.20.03,SXR Undulator Installation,AS_SXU_INST_1605,PAMM Management - SXU_HE_16,3.0,6.0,6.0,6.0,12-12-24,12-16-24,0,0,SLAC,0%,52169.52169_METS Mechanical Engineer,52169_METS Mechanical Engineer,Labor,0.0d,3.0,3.0,At Completion Units,5/2/2024,5/6/2024,0,0,0,0,0,0,0,0,0,0,1.03_Accelerator Systems (AS),1.03.06_AS Soft X-Ray Undulator (SXR) - SLAC,1.03.06.20_AS Soft X-Ray Undulator Installation - SLAC,1.03.06.20.03_SXR Undulator Installation,AS_SXU_INST_1605_PAMM Management - SXU_HE_16,Mechanical,,SLAC,Labor
105987,1.03,1.03.06,1.03.06.20,1.03.06.20.03,1.03.06.20.03,SXR Undulator Installation,AS_SXU_INST_1500,Remove Undulator from Tunnel - SXU_REFB_F,1.0,15.0,15.0,15.0,10-12-23,10-13-23,PM_PAMM_02: FS,"AS_SXU_INST_1402: FS, AS_SXU_MANF_1521: FS",SLAC,0%,52152.52152_FAC Fleet,52152_FAC Fleet,Labor,0.0d,1.0,1.0,At Completion Units,10/12/2023,10/13/2023,0,0,0,0,0,0,0,0,0,0,1.03_Accelerator Systems (AS),1.03.06_AS Soft X-Ray Undulator (SXR) - SLAC,1.03.06.20_AS Soft X-Ray Undulator Installation - SLAC,1.03.06.20.03_SXR Undulator Installation,AS_SXU_INST_1500_Remove Undulator from Tunnel - SXU_REFB_F,Support System,,SLAC,Labor
105988,1.03,1.03.06,1.03.06.20,1.03.06.20.03,1.03.06.20.03,SXR Undulator Installation,AS_SXU_INST_1500,Remove Undulator from Tunnel - SXU_REFB_F,1.0,6.0,6.0,6.0,10-12-23,10-13-23,PM_PAMM_02: FS,"AS_SXU_INST_1402: FS, AS_SXU_MANF_1521: FS",SLAC,0%,52169.52169_METS Mechanical Engineer,52169_METS Mechanical Engineer,Labor,0.0d,1.0,1.0,At Completion Units,10/12/2023,10/13/2023,0,0,0,0,0,0,0,0,0,0,1.03_Accelerator Systems (AS),1.03.06_AS Soft X-Ray Undulator (SXR) - SLAC,1.03.06.20_AS Soft X-Ray Undulator Installation - SLAC,1.03.06.20.03_SXR Undulator Installation,AS_SXU_INST_1500_Remove Undulator from Tunnel - SXU_REFB_F,Mechanical,,SLAC,Labor
105989,1.03,1.03.06,1.03.06.20,1.03.06.20.03,1.03.06.20.03,SXR Undulator Installation,AS_SXU_INST_1500,Remove Undulator from Tunnel - SXU_REFB_F,1.0,40.0,40.0,40.0,10-12-23,10-13-23,PM_PAMM_02: FS,"AS_SXU_INST_1402: FS, AS_SXU_MANF_1521: FS",SLAC,0%,52198.52198_METSMANF (METSD Manufacturing),52198_METSMANF (METSD Manufacturing),Labor,0.0d,1.0,1.0,At Completion Units,10/12/2023,10/13/2023,0,0,0,0,0,0,0,0,0,0,1.03_Accelerator Systems (AS),1.03.06_AS Soft X-Ray Undulator (SXR) - SLAC,1.03.06.20_AS Soft X-Ray Undulator Installation - SLAC,1.03.06.20.03_SXR Undulator Installation,AS_SXU_INST_1500_Remove Undulator from Tunnel - SXU_REFB_F,Manufacturing,,SLAC,Labor
105990,1.03,1.03.06,1.03.06.20,1.03.06.20.03,1.03.06.20.03,SXR Undulator Installation,AS_SXU_INST_1510,Install Undulator - SXU_HE_15,1.0,2.0,2.0,2.0,11-01-24,11-01-24,0,0,SLAC,0%,52190.52190_METSTP Tech Planning - Reinstated FY16,52190_METSTP Tech Planning - Reinstated FY16,Labor,0.0d,1.0,1.0,At Completion Units,3/26/2024,3/26/2024,0,0,0,0,0,0,0,0,0,0,1.03_Accelerator Systems (AS),1.03.06_AS Soft X-Ray Undulator (SXR) - SLAC,1.03.06.20_AS Soft X-Ray Undulator Installation - SLAC,1.03.06.20.03_SXR Undulator Installation,AS_SXU_INST_1510_Install Undulator - SXU_HE_15,METSTPT Tech Planning,Tech,SLAC,Labor
105991,1.03,1.03.06,1.03.06.20,1.03.06.20.03,1.03.06.20.03,SXR Undulator Installation,AS_SXU_INST_1510,Install Undulator - SXU_HE_15,1.0,12.0,12.0,12.0,11-01-24,11-01-24,0,0,SLAC,0%,52152.52152_FAC Fleet,52152_FAC Fleet,Labor,0.0d,1.0,1.0,At Completion Units,3/26/2024,3/26/2024,0,0,0,0,0,0,0,0,0,0,1.03_Accelerator Systems (AS),1.03.06_AS Soft X-Ray Undulator (SXR) - SLAC,1.03.06.20_AS Soft X-Ray Undulator Installation - SLAC,1.03.06.20.03_SXR Undulator Installation,AS_SXU_INST_1510_Install Undulator - SXU_HE_15,Support System,,SLAC,Labor
105992,1.03,1.03.06,1.03.06.20,1.03.06.20.03,1.03.06.20.03,SXR Undulator Installation,AS_SXU_INST_1505,PAMM Management - SXU_HE_15,3.0,2.0,2.0,2.0,11-01-24,11-05-24,0,0,SLAC,0%,52155.52155_Health Physics Technician III,52155_Health Physics Technician III,Labor,0.0d,3.0,3.0,At Completion Units,3/26/2024,3/28/2024,0,0,0,0,0,0,0,0,0,0,1.03_Accelerator Systems (AS),1.03.06_AS Soft X-Ray Undulator (SXR) - SLAC,1.03.06.20_AS Soft X-Ray Undulator Installation - SLAC,1.03.06.20.03_SXR Undulator Installation,AS_SXU_INST_1505_PAMM Management - SXU_HE_15,Support System,Tech,SLAC,Labor
105993,1.03,1.03.06,1.03.06.20,1.03.06.20.03,1.03.06.20.03,SXR Undulator Installation,AS_SXU_INST_1530,Pre-beam checkout - SXU_HE_15,1.0,5.0,5.0,5.0,11-05-24,11-05-24,0,0,SLAC,0%,52213.52213_EEDHW (Electronics & Engineering Div - HW Engr),52213_EEDHW (Electronics & Engineering Div - HW Engr),Labor,0.0d,1.0,1.0,At Completion Units,3/28/2024,3/28/2024,0,0,0,0,0,0,0,0,0,0,1.03_Accelerator Systems (AS),1.03.06_AS Soft X-Ray Undulator (SXR) - SLAC,1.03.06.20_AS Soft X-Ray Undulator Installation - SLAC,1.03.06.20.03_SXR Undulator Installation,AS_SXU_INST_1530_Pre-beam checkout - SXU_HE_15,Electrical,,SLAC,Labor
105994,1.03,1.03.06,1.03.06.20,1.03.06.20.03,1.03.06.20.03,SXR Undulator Installation,AS_SXU_INST_1530,Pre-beam checkout - SXU_HE_15,1.0,2.0,2.0,2.0,11-05-24,11-05-24,0,0,SLAC,0%,52169.52169_METS Mechanical Engineer,52169_METS Mechanical Engineer,Labor,0.0d,1.0,1.0,At Completion Units,3/28/2024,3/28/2024,0,0,0,0,0,0,0,0,0,0,1.03_Accelerator Systems (AS),1.03.06_AS Soft X-Ray Undulator (SXR) - SLAC,1.03.06.20_AS Soft X-Ray Undulator Installation - SLAC,1.03.06.20.03_SXR Undulator Installation,AS_SXU_INST_1530_Pre-beam checkout - SXU_HE_15,Mechanical,,SLAC,Labor
105995,1.03,1.03.06,1.03.06.20,1.03.06.20.03,1.03.06.20.03,SXR Undulator Installation,AS_SXU_INST_1530,Pre-beam checkout - SXU_HE_15,1.0,8.0,8.0,8.0,11-05-24,11-05-24,0,0,SLAC,0%,0106.0106_Staff Scientist,0106_Staff Scientist,Labor,0.0d,1.0,1.0,At Completion Units,3/28/2024,3/28/2024,0,0,0,0,0,0,0,0,0,0,1.03_Accelerator Systems (AS),1.03.06_AS Soft X-Ray Undulator (SXR) - SLAC,1.03.06.20_AS Soft X-Ray Undulator Installation - SLAC,1.03.06.20.03_SXR Undulator Installation,AS_SXU_INST_1530_Pre-beam checkout - SXU_HE_15,Scientist,,SLAC,Labor
105996,1.03,1.03.06,1.03.06.20,1.03.06.20.03,1.03.06.20.03,SXR Undulator Installation,AS_SXU_INST_1530,Pre-beam checkout - SXU_HE_15,1.0,12.0,12.0,12.0,11-05-24,11-05-24,0,0,SLAC,0%,52191.52191_METSMET Metrology,52191_METSMET Metrology,Labor,0.0d,1.0,1.0,At Completion Units,3/28/2024,3/28/2024,0,0,0,0,0,0,0,0,0,0,1.03_Accelerator Systems (AS),1.03.06_AS Soft X-Ray Undulator (SXR) - SLAC,1.03.06.20_AS Soft X-Ray Undulator Installation - SLAC,1.03.06.20.03_SXR Undulator Installation,AS_SXU_INST_1530_Pre-beam checkout - SXU_HE_15,Metrology,,SLAC,Labor
105997,1.03,1.03.06,1.03.06.20,1.03.06.20.03,1.03.06.20.03,SXR Undulator Installation,AS_SXU_INST_1520,Perform technical checkouts - SXU_HE_15,1.0,4.0,4.0,4.0,11-04-24,11-04-24,0,0,SLAC,0%,52211.52211_EEDOPSE (Electronics & Engineering Div - Ops & PSE),52211_EEDOPSE (Electronics & Engineering Div - Ops & PSE),Labor,0.0d,1.0,1.0,At Completion Units,3/27/2024,3/27/2024,0,0,0,0,0,0,0,0,0,0,1.03_Accelerator Systems (AS),1.03.06_AS Soft X-Ray Undulator (SXR) - SLAC,1.03.06.20_AS Soft X-Ray Undulator Installation - SLAC,1.03.06.20.03_SXR Undulator Installation,AS_SXU_INST_1520_Perform technical checkouts - SXU_HE_15,Electrical,,SLAC,Labor
105998,1.03,1.03.06,1.03.06.20,1.03.06.20.03,1.03.06.20.03,SXR Undulator Installation,AS_SXU_INST_1520,Perform technical checkouts - SXU_HE_15,1.0,8.0,8.0,8.0,11-04-24,11-04-24,0,0,SLAC,0%,52127.52127_Research Electrical & SW Engineer,52127_Research Electrical & SW Engineer,Labor,0.0d,1.0,1.0,At Completion Units,3/27/2024,3/27/2024,0,0,0,0,0,0,0,0,0,0,1.03_Accelerator Systems (AS),1.03.06_AS Soft X-Ray Undulator (SXR) - SLAC,1.03.06.20_AS Soft X-Ray Undulator Installation - SLAC,1.03.06.20.03_SXR Undulator Installation,AS_SXU_INST_1520_Perform technical checkouts - SXU_HE_15,Electrical,,SLAC,Labor
105999,1.03,1.03.06,1.03.06.20,1.03.06.20.03,1.03.06.20.03,SXR Undulator Installation,AS_SXU_INST_1520,Perform technical checkouts - SXU_HE_15,1.0,20.0,20.0,20.0,11-04-24,11-04-24,0,0,SLAC,0%,52213.52213_EEDHW (Electronics & Engineering Div - HW Engr),52213_EEDHW (Electronics & Engineering Div - HW Engr),Labor,0.0d,1.0,1.0,At Completion Units,3/27/2024,3/27/2024,0,0,0,0,0,0,0,0,0,0,1.03_Accelerator Systems (AS),1.03.06_AS Soft X-Ray Undulator (SXR) - SLAC,1.03.06.20_AS Soft X-Ray Undulator Installation - SLAC,1.03.06.20.03_SXR Undulator Installation,AS_SXU_INST_1520_Perform technical checkouts - SXU_HE_15,Electrical,,SLAC,Labor
106000,1.03,1.03.06,1.03.06.20,1.03.06.20.03,1.03.06.20.03,SXR Undulator Installation,AS_SXU_INST_1520,Perform technical checkouts - SXU_HE_15,1.0,6.0,6.0,6.0,11-04-24,11-04-24,0,0,SLAC,0%,52169.52169_METS Mechanical Engineer,52169_METS Mechanical Engineer,Labor,0.0d,1.0,1.0,At Completion Units,3/27/2024,3/27/2024,0,0,0,0,0,0,0,0,0,0,1.03_Accelerator Systems (AS),1.03.06_AS Soft X-Ray Undulator (SXR) - SLAC,1.03.06.20_AS Soft X-Ray Undulator Installation - SLAC,1.03.06.20.03_SXR Undulator Installation,AS_SXU_INST_1520_Perform technical checkouts - SXU_HE_15,Mechanical,,SLAC,Labor
106001,1.03,1.03.06,1.03.06.20,1.03.06.20.03,1.03.06.20.03,SXR Undulator Installation,AS_SXU_INST_1520,Perform technical checkouts - SXU_HE_15,1.0,4.0,4.0,4.0,11-04-24,11-04-24,0,0,SLAC,0%,0106.0106_Staff Scientist,0106_Staff Scientist,Labor,0.0d,1.0,1.0,At Completion Units,3/27/2024,3/27/2024,0,0,0,0,0,0,0,0,0,0,1.03_Accelerator Systems (AS),1.03.06_AS Soft X-Ray Undulator (SXR) - SLAC,1.03.06.20_AS Soft X-Ray Undulator Installation - SLAC,1.03.06.20.03_SXR Undulator Installation,AS_SXU_INST_1520_Perform technical checkouts - SXU_HE_15,Scientist,,SLAC,Labor
106002,1.03,1.03.06,1.03.06.20,1.03.06.20.03,1.03.06.20.03,SXR Undulator Installation,AS_SXU_INST_1520,Perform technical checkouts - SXU_HE_15,1.0,4.0,4.0,4.0,11-04-24,11-04-24,0,0,SLAC,0%,52198.52198_METSMANF (METSD Manufacturing),52198_METSMANF (METSD Manufacturing),Labor,0.0d,1.0,1.0,At Completion Units,3/27/2024,3/27/2024,0,0,0,0,0,0,0,0,0,0,1.03_Accelerator Systems (AS),1.03.06_AS Soft X-Ray Undulator (SXR) - SLAC,1.03.06.20_AS Soft X-Ray Undulator Installation - SLAC,1.03.06.20.03_SXR Undulator Installation,AS_SXU_INST_1520_Perform technical checkouts - SXU_HE_15,Manufacturing,,SLAC,Labor
106003,1.03,1.03.06,1.03.06.20,1.03.06.20.03,1.03.06.20.03,SXR Undulator Installation,AS_SXU_INST_1510,Install Undulator - SXU_HE_15,1.0,12.0,12.0,12.0,11-01-24,11-01-24,0,0,SLAC,0%,52169.52169_METS Mechanical Engineer,52169_METS Mechanical Engineer,Labor,0.0d,1.0,1.0,At Completion Units,3/26/2024,3/26/2024,0,0,0,0,0,0,0,0,0,0,1.03_Accelerator Systems (AS),1.03.06_AS Soft X-Ray Undulator (SXR) - SLAC,1.03.06.20_AS Soft X-Ray Undulator Installation - SLAC,1.03.06.20.03_SXR Undulator Installation,AS_SXU_INST_1510_Install Undulator - SXU_HE_15,Mechanical,,SLAC,Labor
106004,1.03,1.03.06,1.03.06.20,1.03.06.20.03,1.03.06.20.03,SXR Undulator Installation,AS_SXU_INST_1510,Install Undulator - SXU_HE_15,1.0,4.0,4.0,4.0,11-01-24,11-01-24,0,0,SLAC,0%,0106.0106_Staff Scientist,0106_Staff Scientist,Labor,0.0d,1.0,1.0,At Completion Units,3/26/2024,3/26/2024,0,0,0,0,0,0,0,0,0,0,1.03_Accelerator Systems (AS),1.03.06_AS Soft X-Ray Undulator (SXR) - SLAC,1.03.06.20_AS Soft X-Ray Undulator Installation - SLAC,1.03.06.20.03_SXR Undulator Installation,AS_SXU_INST_1510_Install Undulator - SXU_HE_15,Scientist,,SLAC,Labor
106005,1.03,1.03.06,1.03.06.20,1.03.06.20.03,1.03.06.20.03,SXR Undulator Installation,AS_SXU_INST_1510,Install Undulator - SXU_HE_15,1.0,8.0,8.0,8.0,11-01-24,11-01-24,0,0,SLAC,0%,52191.52191_METSMET Metrology,52191_METSMET Metrology,Labor,0.0d,1.0,1.0,At Completion Units,3/26/2024,3/26/2024,0,0,0,0,0,0,0,0,0,0,1.03_Accelerator Systems (AS),1.03.06_AS Soft X-Ray Undulator (SXR) - SLAC,1.03.06.20_AS Soft X-Ray Undulator Installation - SLAC,1.03.06.20.03_SXR Undulator Installation,AS_SXU_INST_1510_Install Undulator - SXU_HE_15,Metrology,,SLAC,Labor
106006,1.03,1.03.06,1.03.06.20,1.03.06.20.03,1.03.06.20.03,SXR Undulator Installation,AS_SXU_INST_1510,Install Undulator - SXU_HE_15,1.0,34.0,34.0,34.0,11-01-24,11-01-24,0,0,SLAC,0%,52198.52198_METSMANF (METSD Manufacturing),52198_METSMANF (METSD Manufacturing),Labor,0.0d,1.0,1.0,At Completion Units,3/26/2024,3/26/2024,0,0,0,0,0,0,0,0,0,0,1.03_Accelerator Systems (AS),1.03.06_AS Soft X-Ray Undulator (SXR) - SLAC,1.03.06.20_AS Soft X-Ray Undulator Installation - SLAC,1.03.06.20.03_SXR Undulator Installation,AS_SXU_INST_1510_Install Undulator - SXU_HE_15,Manufacturing,,SLAC,Labor
106007,1.03,1.03.06,1.03.06.20,1.03.06.20.03,1.03.06.20.03,SXR Undulator Installation,AS_SXU_INST_1505,PAMM Management - SXU_HE_15,3.0,6.0,6.0,6.0,11-01-24,11-05-24,0,0,SLAC,0%,52169.52169_METS Mechanical Engineer,52169_METS Mechanical Engineer,Labor,0.0d,3.0,3.0,At Completion Units,3/26/2024,3/28/2024,0,0,0,0,0,0,0,0,0,0,1.03_Accelerator Systems (AS),1.03.06_AS Soft X-Ray Undulator (SXR) - SLAC,1.03.06.20_AS Soft X-Ray Undulator Installation - SLAC,1.03.06.20.03_SXR Undulator Installation,AS_SXU_INST_1505_PAMM Management - SXU_HE_15,Mechanical,,SLAC,Labor
106008,1.03,1.03.06,1.03.06.20,1.03.06.20.03,1.03.06.20.03,SXR Undulator Installation,AS_SXU_INST_1400,Remove Undulator from Tunnel - SXU_REFB_E,1.0,15.0,15.0,15.0,10-12-23,10-13-23,PM_PAMM_02: FS,"AS_SXU_INST_1302: FS, AS_SXU_MANF_1421: FS",SLAC,0%,52152.52152_FAC Fleet,52152_FAC Fleet,Labor,0.0d,1.0,1.0,At Completion Units,10/12/2023,10/13/2023,0,0,0,0,0,0,0,0,0,0,1.03_Accelerator Systems (AS),1.03.06_AS Soft X-Ray Undulator (SXR) - SLAC,1.03.06.20_AS Soft X-Ray Undulator Installation - SLAC,1.03.06.20.03_SXR Undulator Installation,AS_SXU_INST_1400_Remove Undulator from Tunnel - SXU_REFB_E,Support System,,SLAC,Labor
106009,1.03,1.03.06,1.03.06.20,1.03.06.20.03,1.03.06.20.03,SXR Undulator Installation,AS_SXU_INST_1400,Remove Undulator from Tunnel - SXU_REFB_E,1.0,6.0,6.0,6.0,10-12-23,10-13-23,PM_PAMM_02: FS,"AS_SXU_INST_1302: FS, AS_SXU_MANF_1421: FS",SLAC,0%,52169.52169_METS Mechanical Engineer,52169_METS Mechanical Engineer,Labor,0.0d,1.0,1.0,At Completion Units,10/12/2023,10/13/2023,0,0,0,0,0,0,0,0,0,0,1.03_Accelerator Systems (AS),1.03.06_AS Soft X-Ray Undulator (SXR) - SLAC,1.03.06.20_AS Soft X-Ray Undulator Installation - SLAC,1.03.06.20.03_SXR Undulator Installation,AS_SXU_INST_1400_Remove Undulator from Tunnel - SXU_REFB_E,Mechanical,,SLAC,Labor
106010,1.03,1.03.06,1.03.06.20,1.03.06.20.03,1.03.06.20.03,SXR Undulator Installation,AS_SXU_INST_1400,Remove Undulator from Tunnel - SXU_REFB_E,1.0,40.0,40.0,40.0,10-12-23,10-13-23,PM_PAMM_02: FS,"AS_SXU_INST_1302: FS, AS_SXU_MANF_1421: FS",SLAC,0%,52198.52198_METSMANF (METSD Manufacturing),52198_METSMANF (METSD Manufacturing),Labor,0.0d,1.0,1.0,At Completion Units,10/12/2023,10/13/2023,0,0,0,0,0,0,0,0,0,0,1.03_Accelerator Systems (AS),1.03.06_AS Soft X-Ray Undulator (SXR) - SLAC,1.03.06.20_AS Soft X-Ray Undulator Installation - SLAC,1.03.06.20.03_SXR Undulator Installation,AS_SXU_INST_1400_Remove Undulator from Tunnel - SXU_REFB_E,Manufacturing,,SLAC,Labor
106011,1.03,1.03.06,1.03.06.20,1.03.06.20.03,1.03.06.20.03,SXR Undulator Installation,AS_SXU_INST_1410,Install Undulator - SXU_HE_14,1.0,2.0,2.0,2.0,10-09-24,10-09-24,0,0,SLAC,0%,52190.52190_METSTP Tech Planning - Reinstated FY16,52190_METSTP Tech Planning - Reinstated FY16,Labor,0.0d,1.0,1.0,At Completion Units,3/1/2024,3/1/2024,0,0,0,0,0,0,0,0,0,0,1.03_Accelerator Systems (AS),1.03.06_AS Soft X-Ray Undulator (SXR) - SLAC,1.03.06.20_AS Soft X-Ray Undulator Installation - SLAC,1.03.06.20.03_SXR Undulator Installation,AS_SXU_INST_1410_Install Undulator - SXU_HE_14,METSTPT Tech Planning,Tech,SLAC,Labor
106012,1.03,1.03.06,1.03.06.20,1.03.06.20.03,1.03.06.20.03,SXR Undulator Installation,AS_SXU_INST_1410,Install Undulator - SXU_HE_14,1.0,12.0,12.0,12.0,10-09-24,10-09-24,0,0,SLAC,0%,52152.52152_FAC Fleet,52152_FAC Fleet,Labor,0.0d,1.0,1.0,At Completion Units,3/1/2024,3/1/2024,0,0,0,0,0,0,0,0,0,0,1.03_Accelerator Systems (AS),1.03.06_AS Soft X-Ray Undulator (SXR) - SLAC,1.03.06.20_AS Soft X-Ray Undulator Installation - SLAC,1.03.06.20.03_SXR Undulator Installation,AS_SXU_INST_1410_Install Undulator - SXU_HE_14,Support System,,SLAC,Labor
106013,1.03,1.03.06,1.03.06.20,1.03.06.20.03,1.03.06.20.03,SXR Undulator Installation,AS_SXU_INST_1405,PAMM Management - SXU_HE_14,3.0,2.0,2.0,2.0,10-09-24,10-11-24,0,0,SLAC,0%,52155.52155_Health Physics Technician III,52155_Health Physics Technician III,Labor,0.0d,3.0,3.0,At Completion Units,3/1/2024,3/5/2024,0,0,0,0,0,0,0,0,0,0,1.03_Accelerator Systems (AS),1.03.06_AS Soft X-Ray Undulator (SXR) - SLAC,1.03.06.20_AS Soft X-Ray Undulator Installation - SLAC,1.03.06.20.03_SXR Undulator Installation,AS_SXU_INST_1405_PAMM Management - SXU_HE_14,Support System,Tech,SLAC,Labor
106014,1.03,1.03.06,1.03.06.20,1.03.06.20.03,1.03.06.20.03,SXR Undulator Installation,AS_SXU_INST_1430,Pre-beam checkout - SXU_HE_14,1.0,5.0,5.0,5.0,10-11-24,10-11-24,0,0,SLAC,0%,52213.52213_EEDHW (Electronics & Engineering Div - HW Engr),52213_EEDHW (Electronics & Engineering Div - HW Engr),Labor,0.0d,1.0,1.0,At Completion Units,3/5/2024,3/5/2024,0,0,0,0,0,0,0,0,0,0,1.03_Accelerator Systems (AS),1.03.06_AS Soft X-Ray Undulator (SXR) - SLAC,1.03.06.20_AS Soft X-Ray Undulator Installation - SLAC,1.03.06.20.03_SXR Undulator Installation,AS_SXU_INST_1430_Pre-beam checkout - SXU_HE_14,Electrical,,SLAC,Labor
106015,1.03,1.03.06,1.03.06.20,1.03.06.20.03,1.03.06.20.03,SXR Undulator Installation,AS_SXU_INST_1430,Pre-beam checkout - SXU_HE_14,1.0,2.0,2.0,2.0,10-11-24,10-11-24,0,0,SLAC,0%,52169.52169_METS Mechanical Engineer,52169_METS Mechanical Engineer,Labor,0.0d,1.0,1.0,At Completion Units,3/5/2024,3/5/2024,0,0,0,0,0,0,0,0,0,0,1.03_Accelerator Systems (AS),1.03.06_AS Soft X-Ray Undulator (SXR) - SLAC,1.03.06.20_AS Soft X-Ray Undulator Installation - SLAC,1.03.06.20.03_SXR Undulator Installation,AS_SXU_INST_1430_Pre-beam checkout - SXU_HE_14,Mechanical,,SLAC,Labor
106016,1.03,1.03.06,1.03.06.20,1.03.06.20.03,1.03.06.20.03,SXR Undulator Installation,AS_SXU_INST_1430,Pre-beam checkout - SXU_HE_14,1.0,8.0,8.0,8.0,10-11-24,10-11-24,0,0,SLAC,0%,0106.0106_Staff Scientist,0106_Staff Scientist,Labor,0.0d,1.0,1.0,At Completion Units,3/5/2024,3/5/2024,0,0,0,0,0,0,0,0,0,0,1.03_Accelerator Systems (AS),1.03.06_AS Soft X-Ray Undulator (SXR) - SLAC,1.03.06.20_AS Soft X-Ray Undulator Installation - SLAC,1.03.06.20.03_SXR Undulator Installation,AS_SXU_INST_1430_Pre-beam checkout - SXU_HE_14,Scientist,,SLAC,Labor
106017,1.03,1.03.06,1.03.06.20,1.03.06.20.03,1.03.06.20.03,SXR Undulator Installation,AS_SXU_INST_1430,Pre-beam checkout - SXU_HE_14,1.0,12.0,12.0,12.0,10-11-24,10-11-24,0,0,SLAC,0%,52191.52191_METSMET Metrology,52191_METSMET Metrology,Labor,0.0d,1.0,1.0,At Completion Units,3/5/2024,3/5/2024,0,0,0,0,0,0,0,0,0,0,1.03_Accelerator Systems (AS),1.03.06_AS Soft X-Ray Undulator (SXR) - SLAC,1.03.06.20_AS Soft X-Ray Undulator Installation - SLAC,1.03.06.20.03_SXR Undulator Installation,AS_SXU_INST_1430_Pre-beam checkout - SXU_HE_14,Metrology,,SLAC,Labor
106018,1.03,1.03.06,1.03.06.20,1.03.06.20.03,1.03.06.20.03,SXR Undulator Installation,AS_SXU_INST_1420,Perform technical checkouts - SXU_HE_14,1.0,4.0,4.0,4.0,10-10-24,10-10-24,0,0,SLAC,0%,52211.52211_EEDOPSE (Electronics & Engineering Div - Ops & PSE),52211_EEDOPSE (Electronics & Engineering Div - Ops & PSE),Labor,0.0d,1.0,1.0,At Completion Units,3/4/2024,3/4/2024,0,0,0,0,0,0,0,0,0,0,1.03_Accelerator Systems (AS),1.03.06_AS Soft X-Ray Undulator (SXR) - SLAC,1.03.06.20_AS Soft X-Ray Undulator Installation - SLAC,1.03.06.20.03_SXR Undulator Installation,AS_SXU_INST_1420_Perform technical checkouts - SXU_HE_14,Electrical,,SLAC,Labor
106019,1.03,1.03.06,1.03.06.20,1.03.06.20.03,1.03.06.20.03,SXR Undulator Installation,AS_SXU_INST_1420,Perform technical checkouts - SXU_HE_14,1.0,8.0,8.0,8.0,10-10-24,10-10-24,0,0,SLAC,0%,52127.52127_Research Electrical & SW Engineer,52127_Research Electrical & SW Engineer,Labor,0.0d,1.0,1.0,At Completion Units,3/4/2024,3/4/2024,0,0,0,0,0,0,0,0,0,0,1.03_Accelerator Systems (AS),1.03.06_AS Soft X-Ray Undulator (SXR) - SLAC,1.03.06.20_AS Soft X-Ray Undulator Installation - SLAC,1.03.06.20.03_SXR Undulator Installation,AS_SXU_INST_1420_Perform technical checkouts - SXU_HE_14,Electrical,,SLAC,Labor
106020,1.03,1.03.06,1.03.06.20,1.03.06.20.03,1.03.06.20.03,SXR Undulator Installation,AS_SXU_INST_1420,Perform technical checkouts - SXU_HE_14,1.0,20.0,20.0,20.0,10-10-24,10-10-24,0,0,SLAC,0%,52213.52213_EEDHW (Electronics & Engineering Div - HW Engr),52213_EEDHW (Electronics & Engineering Div - HW Engr),Labor,0.0d,1.0,1.0,At Completion Units,3/4/2024,3/4/2024,0,0,0,0,0,0,0,0,0,0,1.03_Accelerator Systems (AS),1.03.06_AS Soft X-Ray Undulator (SXR) - SLAC,1.03.06.20_AS Soft X-Ray Undulator Installation - SLAC,1.03.06.20.03_SXR Undulator Installation,AS_SXU_INST_1420_Perform technical checkouts - SXU_HE_14,Electrical,,SLAC,Labor
106021,1.03,1.03.06,1.03.06.20,1.03.06.20.03,1.03.06.20.03,SXR Undulator Installation,AS_SXU_INST_1420,Perform technical checkouts - SXU_HE_14,1.0,6.0,6.0,6.0,10-10-24,10-10-24,0,0,SLAC,0%,52169.52169_METS Mechanical Engineer,52169_METS Mechanical Engineer,Labor,0.0d,1.0,1.0,At Completion Units,3/4/2024,3/4/2024,0,0,0,0,0,0,0,0,0,0,1.03_Accelerator Systems (AS),1.03.06_AS Soft X-Ray Undulator (SXR) - SLAC,1.03.06.20_AS Soft X-Ray Undulator Installation - SLAC,1.03.06.20.03_SXR Undulator Installation,AS_SXU_INST_1420_Perform technical checkouts - SXU_HE_14,Mechanical,,SLAC,Labor
106022,1.03,1.03.06,1.03.06.20,1.03.06.20.03,1.03.06.20.03,SXR Undulator Installation,AS_SXU_INST_1420,Perform technical checkouts - SXU_HE_14,1.0,4.0,4.0,4.0,10-10-24,10-10-24,0,0,SLAC,0%,0106.0106_Staff Scientist,0106_Staff Scientist,Labor,0.0d,1.0,1.0,At Completion Units,3/4/2024,3/4/2024,0,0,0,0,0,0,0,0,0,0,1.03_Accelerator Systems (AS),1.03.06_AS Soft X-Ray Undulator (SXR) - SLAC,1.03.06.20_AS Soft X-Ray Undulator Installation - SLAC,1.03.06.20.03_SXR Undulator Installation,AS_SXU_INST_1420_Perform technical checkouts - SXU_HE_14,Scientist,,SLAC,Labor
106023,1.03,1.03.06,1.03.06.20,1.03.06.20.03,1.03.06.20.03,SXR Undulator Installation,AS_SXU_INST_1420,Perform technical checkouts - SXU_HE_14,1.0,4.0,4.0,4.0,10-10-24,10-10-24,0,0,SLAC,0%,52198.52198_METSMANF (METSD Manufacturing),52198_METSMANF (METSD Manufacturing),Labor,0.0d,1.0,1.0,At Completion Units,3/4/2024,3/4/2024,0,0,0,0,0,0,0,0,0,0,1.03_Accelerator Systems (AS),1.03.06_AS Soft X-Ray Undulator (SXR) - SLAC,1.03.06.20_AS Soft X-Ray Undulator Installation - SLAC,1.03.06.20.03_SXR Undulator Installation,AS_SXU_INST_1420_Perform technical checkouts - SXU_HE_14,Manufacturing,,SLAC,Labor
106024,1.03,1.03.06,1.03.06.20,1.03.06.20.03,1.03.06.20.03,SXR Undulator Installation,AS_SXU_INST_1410,Install Undulator - SXU_HE_14,1.0,12.0,12.0,12.0,10-09-24,10-09-24,0,0,SLAC,0%,52169.52169_METS Mechanical Engineer,52169_METS Mechanical Engineer,Labor,0.0d,1.0,1.0,At Completion Units,3/1/2024,3/1/2024,0,0,0,0,0,0,0,0,0,0,1.03_Accelerator Systems (AS),1.03.06_AS Soft X-Ray Undulator (SXR) - SLAC,1.03.06.20_AS Soft X-Ray Undulator Installation - SLAC,1.03.06.20.03_SXR Undulator Installation,AS_SXU_INST_1410_Install Undulator - SXU_HE_14,Mechanical,,SLAC,Labor
106025,1.03,1.03.06,1.03.06.20,1.03.06.20.03,1.03.06.20.03,SXR Undulator Installation,AS_SXU_INST_1410,Install Undulator - SXU_HE_14,1.0,4.0,4.0,4.0,10-09-24,10-09-24,0,0,SLAC,0%,0106.0106_Staff Scientist,0106_Staff Scientist,Labor,0.0d,1.0,1.0,At Completion Units,3/1/2024,3/1/2024,0,0,0,0,0,0,0,0,0,0,1.03_Accelerator Systems (AS),1.03.06_AS Soft X-Ray Undulator (SXR) - SLAC,1.03.06.20_AS Soft X-Ray Undulator Installation - SLAC,1.03.06.20.03_SXR Undulator Installation,AS_SXU_INST_1410_Install Undulator - SXU_HE_14,Scientist,,SLAC,Labor
106026,1.03,1.03.06,1.03.06.20,1.03.06.20.03,1.03.06.20.03,SXR Undulator Installation,AS_SXU_INST_1410,Install Undulator - SXU_HE_14,1.0,8.0,8.0,8.0,10-09-24,10-09-24,0,0,SLAC,0%,52191.52191_METSMET Metrology,52191_METSMET Metrology,Labor,0.0d,1.0,1.0,At Completion Units,3/1/2024,3/1/2024,0,0,0,0,0,0,0,0,0,0,1.03_Accelerator Systems (AS),1.03.06_AS Soft X-Ray Undulator (SXR) - SLAC,1.03.06.20_AS Soft X-Ray Undulator Installation - SLAC,1.03.06.20.03_SXR Undulator Installation,AS_SXU_INST_1410_Install Undulator - SXU_HE_14,Metrology,,SLAC,Labor
106027,1.03,1.03.06,1.03.06.20,1.03.06.20.03,1.03.06.20.03,SXR Undulator Installation,AS_SXU_INST_1410,Install Undulator - SXU_HE_14,1.0,34.0,34.0,34.0,10-09-24,10-09-24,0,0,SLAC,0%,52198.52198_METSMANF (METSD Manufacturing),52198_METSMANF (METSD Manufacturing),Labor,0.0d,1.0,1.0,At Completion Units,3/1/2024,3/1/2024,0,0,0,0,0,0,0,0,0,0,1.03_Accelerator Systems (AS),1.03.06_AS Soft X-Ray Undulator (SXR) - SLAC,1.03.06.20_AS Soft X-Ray Undulator Installation - SLAC,1.03.06.20.03_SXR Undulator Installation,AS_SXU_INST_1410_Install Undulator - SXU_HE_14,Manufacturing,,SLAC,Labor
106028,1.03,1.03.06,1.03.06.20,1.03.06.20.03,1.03.06.20.03,SXR Undulator Installation,AS_SXU_INST_1405,PAMM Management - SXU_HE_14,3.0,6.0,6.0,6.0,10-09-24,10-11-24,0,0,SLAC,0%,52169.52169_METS Mechanical Engineer,52169_METS Mechanical Engineer,Labor,0.0d,3.0,3.0,At Completion Units,3/1/2024,3/5/2024,0,0,0,0,0,0,0,0,0,0,1.03_Accelerator Systems (AS),1.03.06_AS Soft X-Ray Undulator (SXR) - SLAC,1.03.06.20_AS Soft X-Ray Undulator Installation - SLAC,1.03.06.20.03_SXR Undulator Installation,AS_SXU_INST_1405_PAMM Management - SXU_HE_14,Mechanical,,SLAC,Labor
106029,1.03,1.03.06,1.03.06.20,1.03.06.20.03,1.03.06.20.03,SXR Undulator Installation,AS_SXU_INST_1300,Remove Undulator from Tunnel - SXU_REFB_D,1.0,15.0,15.0,15.0,07-14-23,07-17-23,PM_PAMM_01: FS,"AS_SXU_INST_1202: FS, AS_SXU_MANF_1321: FS",SLAC,0%,52152.52152_FAC Fleet,52152_FAC Fleet,Labor,0.0d,1.0,1.0,At Completion Units,7/14/2023,7/17/2023,0,0,0,0,0,0,0,0,0,0,1.03_Accelerator Systems (AS),1.03.06_AS Soft X-Ray Undulator (SXR) - SLAC,1.03.06.20_AS Soft X-Ray Undulator Installation - SLAC,1.03.06.20.03_SXR Undulator Installation,AS_SXU_INST_1300_Remove Undulator from Tunnel - SXU_REFB_D,Support System,,SLAC,Labor
106030,1.03,1.03.06,1.03.06.20,1.03.06.20.03,1.03.06.20.03,SXR Undulator Installation,AS_SXU_INST_1300,Remove Undulator from Tunnel - SXU_REFB_D,1.0,6.0,6.0,6.0,07-14-23,07-17-23,PM_PAMM_01: FS,"AS_SXU_INST_1202: FS, AS_SXU_MANF_1321: FS",SLAC,0%,52169.52169_METS Mechanical Engineer,52169_METS Mechanical Engineer,Labor,0.0d,1.0,1.0,At Completion Units,7/14/2023,7/17/2023,0,0,0,0,0,0,0,0,0,0,1.03_Accelerator Systems (AS),1.03.06_AS Soft X-Ray Undulator (SXR) - SLAC,1.03.06.20_AS Soft X-Ray Undulator Installation - SLAC,1.03.06.20.03_SXR Undulator Installation,AS_SXU_INST_1300_Remove Undulator from Tunnel - SXU_REFB_D,Mechanical,,SLAC,Labor
106031,1.03,1.03.06,1.03.06.20,1.03.06.20.03,1.03.06.20.03,SXR Undulator Installation,AS_SXU_INST_1300,Remove Undulator from Tunnel - SXU_REFB_D,1.0,40.0,40.0,40.0,07-14-23,07-17-23,PM_PAMM_01: FS,"AS_SXU_INST_1202: FS, AS_SXU_MANF_1321: FS",SLAC,0%,52198.52198_METSMANF (METSD Manufacturing),52198_METSMANF (METSD Manufacturing),Labor,0.0d,1.0,1.0,At Completion Units,7/14/2023,7/17/2023,0,0,0,0,0,0,0,0,0,0,1.03_Accelerator Systems (AS),1.03.06_AS Soft X-Ray Undulator (SXR) - SLAC,1.03.06.20_AS Soft X-Ray Undulator Installation - SLAC,1.03.06.20.03_SXR Undulator Installation,AS_SXU_INST_1300_Remove Undulator from Tunnel - SXU_REFB_D,Manufacturing,,SLAC,Labor
106032,1.03,1.03.06,1.03.06.20,1.03.06.20.03,1.03.06.20.03,SXR Undulator Installation,AS_SXU_INST_1310,Install Undulator - SXU_HE_13,1.0,2.0,2.0,2.0,09-18-24,09-18-24,0,0,SLAC,0%,52190.52190_METSTP Tech Planning - Reinstated FY16,52190_METSTP Tech Planning - Reinstated FY16,Labor,0.0d,1.0,1.0,At Completion Units,2/8/2024,2/8/2024,0,0,0,0,0,0,0,0,0,0,1.03_Accelerator Systems (AS),1.03.06_AS Soft X-Ray Undulator (SXR) - SLAC,1.03.06.20_AS Soft X-Ray Undulator Installation - SLAC,1.03.06.20.03_SXR Undulator Installation,AS_SXU_INST_1310_Install Undulator - SXU_HE_13,METSTPT Tech Planning,Tech,SLAC,Labor
106033,1.03,1.03.06,1.03.06.20,1.03.06.20.03,1.03.06.20.03,SXR Undulator Installation,AS_SXU_INST_1310,Install Undulator - SXU_HE_13,1.0,12.0,12.0,12.0,09-18-24,09-18-24,0,0,SLAC,0%,52152.52152_FAC Fleet,52152_FAC Fleet,Labor,0.0d,1.0,1.0,At Completion Units,2/8/2024,2/8/2024,0,0,0,0,0,0,0,0,0,0,1.03_Accelerator Systems (AS),1.03.06_AS Soft X-Ray Undulator (SXR) - SLAC,1.03.06.20_AS Soft X-Ray Undulator Installation - SLAC,1.03.06.20.03_SXR Undulator Installation,AS_SXU_INST_1310_Install Undulator - SXU_HE_13,Support System,,SLAC,Labor
106034,1.03,1.03.06,1.03.06.20,1.03.06.20.03,1.03.06.20.03,SXR Undulator Installation,AS_SXU_INST_1305,PAMM Management - SXU_HE_13,3.0,2.0,2.0,2.0,09-18-24,09-20-24,0,0,SLAC,0%,52155.52155_Health Physics Technician III,52155_Health Physics Technician III,Labor,0.0d,3.0,3.0,At Completion Units,2/8/2024,2/12/2024,0,0,0,0,0,0,0,0,0,0,1.03_Accelerator Systems (AS),1.03.06_AS Soft X-Ray Undulator (SXR) - SLAC,1.03.06.20_AS Soft X-Ray Undulator Installation - SLAC,1.03.06.20.03_SXR Undulator Installation,AS_SXU_INST_1305_PAMM Management - SXU_HE_13,Support System,Tech,SLAC,Labor
106035,1.03,1.03.06,1.03.06.20,1.03.06.20.03,1.03.06.20.03,SXR Undulator Installation,AS_SXU_INST_1330,Pre-beam checkout - SXU_HE_13,1.0,5.0,5.0,5.0,09-20-24,09-20-24,0,0,SLAC,0%,52213.52213_EEDHW (Electronics & Engineering Div - HW Engr),52213_EEDHW (Electronics & Engineering Div - HW Engr),Labor,0.0d,1.0,1.0,At Completion Units,2/12/2024,2/12/2024,0,0,0,0,0,0,0,0,0,0,1.03_Accelerator Systems (AS),1.03.06_AS Soft X-Ray Undulator (SXR) - SLAC,1.03.06.20_AS Soft X-Ray Undulator Installation - SLAC,1.03.06.20.03_SXR Undulator Installation,AS_SXU_INST_1330_Pre-beam checkout - SXU_HE_13,Electrical,,SLAC,Labor
106036,1.03,1.03.06,1.03.06.20,1.03.06.20.03,1.03.06.20.03,SXR Undulator Installation,AS_SXU_INST_1330,Pre-beam checkout - SXU_HE_13,1.0,2.0,2.0,2.0,09-20-24,09-20-24,0,0,SLAC,0%,52169.52169_METS Mechanical Engineer,52169_METS Mechanical Engineer,Labor,0.0d,1.0,1.0,At Completion Units,2/12/2024,2/12/2024,0,0,0,0,0,0,0,0,0,0,1.03_Accelerator Systems (AS),1.03.06_AS Soft X-Ray Undulator (SXR) - SLAC,1.03.06.20_AS Soft X-Ray Undulator Installation - SLAC,1.03.06.20.03_SXR Undulator Installation,AS_SXU_INST_1330_Pre-beam checkout - SXU_HE_13,Mechanical,,SLAC,Labor
106037,1.03,1.03.06,1.03.06.20,1.03.06.20.03,1.03.06.20.03,SXR Undulator Installation,AS_SXU_INST_1330,Pre-beam checkout - SXU_HE_13,1.0,8.0,8.0,8.0,09-20-24,09-20-24,0,0,SLAC,0%,0106.0106_Staff Scientist,0106_Staff Scientist,Labor,0.0d,1.0,1.0,At Completion Units,2/12/2024,2/12/2024,0,0,0,0,0,0,0,0,0,0,1.03_Accelerator Systems (AS),1.03.06_AS Soft X-Ray Undulator (SXR) - SLAC,1.03.06.20_AS Soft X-Ray Undulator Installation - SLAC,1.03.06.20.03_SXR Undulator Installation,AS_SXU_INST_1330_Pre-beam checkout - SXU_HE_13,Scientist,,SLAC,Labor
106038,1.03,1.03.06,1.03.06.20,1.03.06.20.03,1.03.06.20.03,SXR Undulator Installation,AS_SXU_INST_1330,Pre-beam checkout - SXU_HE_13,1.0,12.0,12.0,12.0,09-20-24,09-20-24,0,0,SLAC,0%,52191.52191_METSMET Metrology,52191_METSMET Metrology,Labor,0.0d,1.0,1.0,At Completion Units,2/12/2024,2/12/2024,0,0,0,0,0,0,0,0,0,0,1.03_Accelerator Systems (AS),1.03.06_AS Soft X-Ray Undulator (SXR) - SLAC,1.03.06.20_AS Soft X-Ray Undulator Installation - SLAC,1.03.06.20.03_SXR Undulator Installation,AS_SXU_INST_1330_Pre-beam checkout - SXU_HE_13,Metrology,,SLAC,Labor
106039,1.03,1.03.06,1.03.06.20,1.03.06.20.03,1.03.06.20.03,SXR Undulator Installation,AS_SXU_INST_1320,Perform technical checkouts - SXU_HE_13,1.0,4.0,4.0,4.0,09-19-24,09-19-24,0,0,SLAC,0%,52211.52211_EEDOPSE (Electronics & Engineering Div - Ops & PSE),52211_EEDOPSE (Electronics & Engineering Div - Ops & PSE),Labor,0.0d,1.0,1.0,At Completion Units,2/9/2024,2/9/2024,0,0,0,0,0,0,0,0,0,0,1.03_Accelerator Systems (AS),1.03.06_AS Soft X-Ray Undulator (SXR) - SLAC,1.03.06.20_AS Soft X-Ray Undulator Installation - SLAC,1.03.06.20.03_SXR Undulator Installation,AS_SXU_INST_1320_Perform technical checkouts - SXU_HE_13,Electrical,,SLAC,Labor
106040,1.03,1.03.06,1.03.06.20,1.03.06.20.03,1.03.06.20.03,SXR Undulator Installation,AS_SXU_INST_1320,Perform technical checkouts - SXU_HE_13,1.0,8.0,8.0,8.0,09-19-24,09-19-24,0,0,SLAC,0%,52127.52127_Research Electrical & SW Engineer,52127_Research Electrical & SW Engineer,Labor,0.0d,1.0,1.0,At Completion Units,2/9/2024,2/9/2024,0,0,0,0,0,0,0,0,0,0,1.03_Accelerator Systems (AS),1.03.06_AS Soft X-Ray Undulator (SXR) - SLAC,1.03.06.20_AS Soft X-Ray Undulator Installation - SLAC,1.03.06.20.03_SXR Undulator Installation,AS_SXU_INST_1320_Perform technical checkouts - SXU_HE_13,Electrical,,SLAC,Labor
106041,1.03,1.03.06,1.03.06.20,1.03.06.20.03,1.03.06.20.03,SXR Undulator Installation,AS_SXU_INST_1320,Perform technical checkouts - SXU_HE_13,1.0,20.0,20.0,20.0,09-19-24,09-19-24,0,0,SLAC,0%,52213.52213_EEDHW (Electronics & Engineering Div - HW Engr),52213_EEDHW (Electronics & Engineering Div - HW Engr),Labor,0.0d,1.0,1.0,At Completion Units,2/9/2024,2/9/2024,0,0,0,0,0,0,0,0,0,0,1.03_Accelerator Systems (AS),1.03.06_AS Soft X-Ray Undulator (SXR) - SLAC,1.03.06.20_AS Soft X-Ray Undulator Installation - SLAC,1.03.06.20.03_SXR Undulator Installation,AS_SXU_INST_1320_Perform technical checkouts - SXU_HE_13,Electrical,,SLAC,Labor
106042,1.03,1.03.06,1.03.06.20,1.03.06.20.03,1.03.06.20.03,SXR Undulator Installation,AS_SXU_INST_1320,Perform technical checkouts - SXU_HE_13,1.0,6.0,6.0,6.0,09-19-24,09-19-24,0,0,SLAC,0%,52169.52169_METS Mechanical Engineer,52169_METS Mechanical Engineer,Labor,0.0d,1.0,1.0,At Completion Units,2/9/2024,2/9/2024,0,0,0,0,0,0,0,0,0,0,1.03_Accelerator Systems (AS),1.03.06_AS Soft X-Ray Undulator (SXR) - SLAC,1.03.06.20_AS Soft X-Ray Undulator Installation - SLAC,1.03.06.20.03_SXR Undulator Installation,AS_SXU_INST_1320_Perform technical checkouts - SXU_HE_13,Mechanical,,SLAC,Labor
106043,1.03,1.03.06,1.03.06.20,1.03.06.20.03,1.03.06.20.03,SXR Undulator Installation,AS_SXU_INST_1320,Perform technical checkouts - SXU_HE_13,1.0,4.0,4.0,4.0,09-19-24,09-19-24,0,0,SLAC,0%,0106.0106_Staff Scientist,0106_Staff Scientist,Labor,0.0d,1.0,1.0,At Completion Units,2/9/2024,2/9/2024,0,0,0,0,0,0,0,0,0,0,1.03_Accelerator Systems (AS),1.03.06_AS Soft X-Ray Undulator (SXR) - SLAC,1.03.06.20_AS Soft X-Ray Undulator Installation - SLAC,1.03.06.20.03_SXR Undulator Installation,AS_SXU_INST_1320_Perform technical checkouts - SXU_HE_13,Scientist,,SLAC,Labor
106044,1.03,1.03.06,1.03.06.20,1.03.06.20.03,1.03.06.20.03,SXR Undulator Installation,AS_SXU_INST_1320,Perform technical checkouts - SXU_HE_13,1.0,4.0,4.0,4.0,09-19-24,09-19-24,0,0,SLAC,0%,52198.52198_METSMANF (METSD Manufacturing),52198_METSMANF (METSD Manufacturing),Labor,0.0d,1.0,1.0,At Completion Units,2/9/2024,2/9/2024,0,0,0,0,0,0,0,0,0,0,1.03_Accelerator Systems (AS),1.03.06_AS Soft X-Ray Undulator (SXR) - SLAC,1.03.06.20_AS Soft X-Ray Undulator Installation - SLAC,1.03.06.20.03_SXR Undulator Installation,AS_SXU_INST_1320_Perform technical checkouts - SXU_HE_13,Manufacturing,,SLAC,Labor
106045,1.03,1.03.06,1.03.06.20,1.03.06.20.03,1.03.06.20.03,SXR Undulator Installation,AS_SXU_INST_1310,Install Undulator - SXU_HE_13,1.0,12.0,12.0,12.0,09-18-24,09-18-24,0,0,SLAC,0%,52169.52169_METS Mechanical Engineer,52169_METS Mechanical Engineer,Labor,0.0d,1.0,1.0,At Completion Units,2/8/2024,2/8/2024,0,0,0,0,0,0,0,0,0,0,1.03_Accelerator Systems (AS),1.03.06_AS Soft X-Ray Undulator (SXR) - SLAC,1.03.06.20_AS Soft X-Ray Undulator Installation - SLAC,1.03.06.20.03_SXR Undulator Installation,AS_SXU_INST_1310_Install Undulator - SXU_HE_13,Mechanical,,SLAC,Labor
106046,1.03,1.03.06,1.03.06.20,1.03.06.20.03,1.03.06.20.03,SXR Undulator Installation,AS_SXU_INST_1310,Install Undulator - SXU_HE_13,1.0,4.0,4.0,4.0,09-18-24,09-18-24,0,0,SLAC,0%,0106.0106_Staff Scientist,0106_Staff Scientist,Labor,0.0d,1.0,1.0,At Completion Units,2/8/2024,2/8/2024,0,0,0,0,0,0,0,0,0,0,1.03_Accelerator Systems (AS),1.03.06_AS Soft X-Ray Undulator (SXR) - SLAC,1.03.06.20_AS Soft X-Ray Undulator Installation - SLAC,1.03.06.20.03_SXR Undulator Installation,AS_SXU_INST_1310_Install Undulator - SXU_HE_13,Scientist,,SLAC,Labor
106047,1.03,1.03.06,1.03.06.20,1.03.06.20.03,1.03.06.20.03,SXR Undulator Installation,AS_SXU_INST_1310,Install Undulator - SXU_HE_13,1.0,8.0,8.0,8.0,09-18-24,09-18-24,0,0,SLAC,0%,52191.52191_METSMET Metrology,52191_METSMET Metrology,Labor,0.0d,1.0,1.0,At Completion Units,2/8/2024,2/8/2024,0,0,0,0,0,0,0,0,0,0,1.03_Accelerator Systems (AS),1.03.06_AS Soft X-Ray Undulator (SXR) - SLAC,1.03.06.20_AS Soft X-Ray Undulator Installation - SLAC,1.03.06.20.03_SXR Undulator Installation,AS_SXU_INST_1310_Install Undulator - SXU_HE_13,Metrology,,SLAC,Labor
106048,1.03,1.03.06,1.03.06.20,1.03.06.20.03,1.03.06.20.03,SXR Undulator Installation,AS_SXU_INST_1310,Install Undulator - SXU_HE_13,1.0,34.0,34.0,34.0,09-18-24,09-18-24,0,0,SLAC,0%,52198.52198_METSMANF (METSD Manufacturing),52198_METSMANF (METSD Manufacturing),Labor,0.0d,1.0,1.0,At Completion Units,2/8/2024,2/8/2024,0,0,0,0,0,0,0,0,0,0,1.03_Accelerator Systems (AS),1.03.06_AS Soft X-Ray Undulator (SXR) - SLAC,1.03.06.20_AS Soft X-Ray Undulator Installation - SLAC,1.03.06.20.03_SXR Undulator Installation,AS_SXU_INST_1310_Install Undulator - SXU_HE_13,Manufacturing,,SLAC,Labor
106049,1.03,1.03.06,1.03.06.20,1.03.06.20.03,1.03.06.20.03,SXR Undulator Installation,AS_SXU_INST_1305,PAMM Management - SXU_HE_13,3.0,6.0,6.0,6.0,09-18-24,09-20-24,0,0,SLAC,0%,52169.52169_METS Mechanical Engineer,52169_METS Mechanical Engineer,Labor,0.0d,3.0,3.0,At Completion Units,2/8/2024,2/12/2024,0,0,0,0,0,0,0,0,0,0,1.03_Accelerator Systems (AS),1.03.06_AS Soft X-Ray Undulator (SXR) - SLAC,1.03.06.20_AS Soft X-Ray Undulator Installation - SLAC,1.03.06.20.03_SXR Undulator Installation,AS_SXU_INST_1305_PAMM Management - SXU_HE_13,Mechanical,,SLAC,Labor
106050,1.03,1.03.06,1.03.06.20,1.03.06.20.03,1.03.06.20.03,SXR Undulator Installation,AS_SXU_INST_1200,Remove Undulator from Tunnel - SXU_REFB_C,1.0,15.0,15.0,15.0,07-14-23,07-17-23,PM_PAMM_01: FS,"AS_SXU_INST_1102: FS, AS_SXU_MANF_1221: FS",SLAC,0%,52152.52152_FAC Fleet,52152_FAC Fleet,Labor,0.0d,1.0,1.0,At Completion Units,7/14/2023,7/17/2023,0,0,0,0,0,0,0,0,0,0,1.03_Accelerator Systems (AS),1.03.06_AS Soft X-Ray Undulator (SXR) - SLAC,1.03.06.20_AS Soft X-Ray Undulator Installation - SLAC,1.03.06.20.03_SXR Undulator Installation,AS_SXU_INST_1200_Remove Undulator from Tunnel - SXU_REFB_C,Support System,,SLAC,Labor
106051,1.03,1.03.06,1.03.06.20,1.03.06.20.03,1.03.06.20.03,SXR Undulator Installation,AS_SXU_INST_1200,Remove Undulator from Tunnel - SXU_REFB_C,1.0,6.0,6.0,6.0,07-14-23,07-17-23,PM_PAMM_01: FS,"AS_SXU_INST_1102: FS, AS_SXU_MANF_1221: FS",SLAC,0%,52169.52169_METS Mechanical Engineer,52169_METS Mechanical Engineer,Labor,0.0d,1.0,1.0,At Completion Units,7/14/2023,7/17/2023,0,0,0,0,0,0,0,0,0,0,1.03_Accelerator Systems (AS),1.03.06_AS Soft X-Ray Undulator (SXR) - SLAC,1.03.06.20_AS Soft X-Ray Undulator Installation - SLAC,1.03.06.20.03_SXR Undulator Installation,AS_SXU_INST_1200_Remove Undulator from Tunnel - SXU_REFB_C,Mechanical,,SLAC,Labor
106052,1.03,1.03.06,1.03.06.20,1.03.06.20.03,1.03.06.20.03,SXR Undulator Installation,AS_SXU_INST_1200,Remove Undulator from Tunnel - SXU_REFB_C,1.0,40.0,40.0,40.0,07-14-23,07-17-23,PM_PAMM_01: FS,"AS_SXU_INST_1102: FS, AS_SXU_MANF_1221: FS",SLAC,0%,52198.52198_METSMANF (METSD Manufacturing),52198_METSMANF (METSD Manufacturing),Labor,0.0d,1.0,1.0,At Completion Units,7/14/2023,7/17/2023,0,0,0,0,0,0,0,0,0,0,1.03_Accelerator Systems (AS),1.03.06_AS Soft X-Ray Undulator (SXR) - SLAC,1.03.06.20_AS Soft X-Ray Undulator Installation - SLAC,1.03.06.20.03_SXR Undulator Installation,AS_SXU_INST_1200_Remove Undulator from Tunnel - SXU_REFB_C,Manufacturing,,SLAC,Labor
106053,1.03,1.03.06,1.03.06.20,1.03.06.20.03,1.03.06.20.03,SXR Undulator Installation,AS_SXU_INST_1210,Install Undulator - SXU_HE_12,1.0,2.0,2.0,2.0,08-22-24,08-22-24,0,0,SLAC,0%,52190.52190_METSTP Tech Planning - Reinstated FY16,52190_METSTP Tech Planning - Reinstated FY16,Labor,0.0d,1.0,1.0,At Completion Units,1/12/2024,1/12/2024,0,0,0,0,0,0,0,0,0,0,1.03_Accelerator Systems (AS),1.03.06_AS Soft X-Ray Undulator (SXR) - SLAC,1.03.06.20_AS Soft X-Ray Undulator Installation - SLAC,1.03.06.20.03_SXR Undulator Installation,AS_SXU_INST_1210_Install Undulator - SXU_HE_12,METSTPT Tech Planning,Tech,SLAC,Labor
106054,1.03,1.03.06,1.03.06.20,1.03.06.20.03,1.03.06.20.03,SXR Undulator Installation,AS_SXU_INST_1210,Install Undulator - SXU_HE_12,1.0,12.0,12.0,12.0,08-22-24,08-22-24,0,0,SLAC,0%,52152.52152_FAC Fleet,52152_FAC Fleet,Labor,0.0d,1.0,1.0,At Completion Units,1/12/2024,1/12/2024,0,0,0,0,0,0,0,0,0,0,1.03_Accelerator Systems (AS),1.03.06_AS Soft X-Ray Undulator (SXR) - SLAC,1.03.06.20_AS Soft X-Ray Undulator Installation - SLAC,1.03.06.20.03_SXR Undulator Installation,AS_SXU_INST_1210_Install Undulator - SXU_HE_12,Support System,,SLAC,Labor
106055,1.03,1.03.06,1.03.06.20,1.03.06.20.03,1.03.06.20.03,SXR Undulator Installation,AS_SXU_INST_1205,PAMM Management - SXU_HE_12,3.0,2.0,2.0,2.0,08-22-24,08-26-24,0,0,SLAC,0%,52155.52155_Health Physics Technician III,52155_Health Physics Technician III,Labor,0.0d,3.0,3.0,At Completion Units,1/12/2024,1/17/2024,0,0,0,0,0,0,0,0,0,0,1.03_Accelerator Systems (AS),1.03.06_AS Soft X-Ray Undulator (SXR) - SLAC,1.03.06.20_AS Soft X-Ray Undulator Installation - SLAC,1.03.06.20.03_SXR Undulator Installation,AS_SXU_INST_1205_PAMM Management - SXU_HE_12,Support System,Tech,SLAC,Labor
106056,1.03,1.03.06,1.03.06.20,1.03.06.20.03,1.03.06.20.03,SXR Undulator Installation,AS_SXU_INST_1230,Pre-beam checkout - SXU_HE_12,1.0,5.0,5.0,5.0,08-26-24,08-26-24,0,0,SLAC,0%,52213.52213_EEDHW (Electronics & Engineering Div - HW Engr),52213_EEDHW (Electronics & Engineering Div - HW Engr),Labor,0.0d,1.0,1.0,At Completion Units,1/17/2024,1/17/2024,0,0,0,0,0,0,0,0,0,0,1.03_Accelerator Systems (AS),1.03.06_AS Soft X-Ray Undulator (SXR) - SLAC,1.03.06.20_AS Soft X-Ray Undulator Installation - SLAC,1.03.06.20.03_SXR Undulator Installation,AS_SXU_INST_1230_Pre-beam checkout - SXU_HE_12,Electrical,,SLAC,Labor
106057,1.03,1.03.06,1.03.06.20,1.03.06.20.03,1.03.06.20.03,SXR Undulator Installation,AS_SXU_INST_1230,Pre-beam checkout - SXU_HE_12,1.0,2.0,2.0,2.0,08-26-24,08-26-24,0,0,SLAC,0%,52169.52169_METS Mechanical Engineer,52169_METS Mechanical Engineer,Labor,0.0d,1.0,1.0,At Completion Units,1/17/2024,1/17/2024,0,0,0,0,0,0,0,0,0,0,1.03_Accelerator Systems (AS),1.03.06_AS Soft X-Ray Undulator (SXR) - SLAC,1.03.06.20_AS Soft X-Ray Undulator Installation - SLAC,1.03.06.20.03_SXR Undulator Installation,AS_SXU_INST_1230_Pre-beam checkout - SXU_HE_12,Mechanical,,SLAC,Labor
106058,1.03,1.03.06,1.03.06.20,1.03.06.20.03,1.03.06.20.03,SXR Undulator Installation,AS_SXU_INST_1230,Pre-beam checkout - SXU_HE_12,1.0,8.0,8.0,8.0,08-26-24,08-26-24,0,0,SLAC,0%,0106.0106_Staff Scientist,0106_Staff Scientist,Labor,0.0d,1.0,1.0,At Completion Units,1/17/2024,1/17/2024,0,0,0,0,0,0,0,0,0,0,1.03_Accelerator Systems (AS),1.03.06_AS Soft X-Ray Undulator (SXR) - SLAC,1.03.06.20_AS Soft X-Ray Undulator Installation - SLAC,1.03.06.20.03_SXR Undulator Installation,AS_SXU_INST_1230_Pre-beam checkout - SXU_HE_12,Scientist,,SLAC,Labor
106059,1.03,1.03.06,1.03.06.20,1.03.06.20.03,1.03.06.20.03,SXR Undulator Installation,AS_SXU_INST_1230,Pre-beam checkout - SXU_HE_12,1.0,12.0,12.0,12.0,08-26-24,08-26-24,0,0,SLAC,0%,52191.52191_METSMET Metrology,52191_METSMET Metrology,Labor,0.0d,1.0,1.0,At Completion Units,1/17/2024,1/17/2024,0,0,0,0,0,0,0,0,0,0,1.03_Accelerator Systems (AS),1.03.06_AS Soft X-Ray Undulator (SXR) - SLAC,1.03.06.20_AS Soft X-Ray Undulator Installation - SLAC,1.03.06.20.03_SXR Undulator Installation,AS_SXU_INST_1230_Pre-beam checkout - SXU_HE_12,Metrology,,SLAC,Labor
106060,1.03,1.03.06,1.03.06.20,1.03.06.20.03,1.03.06.20.03,SXR Undulator Installation,AS_SXU_INST_1220,Perform technical checkouts - SXU_HE_12,1.0,4.0,4.0,4.0,08-23-24,08-23-24,0,0,SLAC,0%,52211.52211_EEDOPSE (Electronics & Engineering Div - Ops & PSE),52211_EEDOPSE (Electronics & Engineering Div - Ops & PSE),Labor,0.0d,1.0,1.0,At Completion Units,1/16/2024,1/16/2024,0,0,0,0,0,0,0,0,0,0,1.03_Accelerator Systems (AS),1.03.06_AS Soft X-Ray Undulator (SXR) - SLAC,1.03.06.20_AS Soft X-Ray Undulator Installation - SLAC,1.03.06.20.03_SXR Undulator Installation,AS_SXU_INST_1220_Perform technical checkouts - SXU_HE_12,Electrical,,SLAC,Labor
106061,1.03,1.03.06,1.03.06.20,1.03.06.20.03,1.03.06.20.03,SXR Undulator Installation,AS_SXU_INST_1220,Perform technical checkouts - SXU_HE_12,1.0,8.0,8.0,8.0,08-23-24,08-23-24,0,0,SLAC,0%,52127.52127_Research Electrical & SW Engineer,52127_Research Electrical & SW Engineer,Labor,0.0d,1.0,1.0,At Completion Units,1/16/2024,1/16/2024,0,0,0,0,0,0,0,0,0,0,1.03_Accelerator Systems (AS),1.03.06_AS Soft X-Ray Undulator (SXR) - SLAC,1.03.06.20_AS Soft X-Ray Undulator Installation - SLAC,1.03.06.20.03_SXR Undulator Installation,AS_SXU_INST_1220_Perform technical checkouts - SXU_HE_12,Electrical,,SLAC,Labor
106062,1.03,1.03.06,1.03.06.20,1.03.06.20.03,1.03.06.20.03,SXR Undulator Installation,AS_SXU_INST_1220,Perform technical checkouts - SXU_HE_12,1.0,20.0,20.0,20.0,08-23-24,08-23-24,0,0,SLAC,0%,52213.52213_EEDHW (Electronics & Engineering Div - HW Engr),52213_EEDHW (Electronics & Engineering Div - HW Engr),Labor,0.0d,1.0,1.0,At Completion Units,1/16/2024,1/16/2024,0,0,0,0,0,0,0,0,0,0,1.03_Accelerator Systems (AS),1.03.06_AS Soft X-Ray Undulator (SXR) - SLAC,1.03.06.20_AS Soft X-Ray Undulator Installation - SLAC,1.03.06.20.03_SXR Undulator Installation,AS_SXU_INST_1220_Perform technical checkouts - SXU_HE_12,Electrical,,SLAC,Labor
106063,1.03,1.03.06,1.03.06.20,1.03.06.20.03,1.03.06.20.03,SXR Undulator Installation,AS_SXU_INST_1220,Perform technical checkouts - SXU_HE_12,1.0,6.0,6.0,6.0,08-23-24,08-23-24,0,0,SLAC,0%,52169.52169_METS Mechanical Engineer,52169_METS Mechanical Engineer,Labor,0.0d,1.0,1.0,At Completion Units,1/16/2024,1/16/2024,0,0,0,0,0,0,0,0,0,0,1.03_Accelerator Systems (AS),1.03.06_AS Soft X-Ray Undulator (SXR) - SLAC,1.03.06.20_AS Soft X-Ray Undulator Installation - SLAC,1.03.06.20.03_SXR Undulator Installation,AS_SXU_INST_1220_Perform technical checkouts - SXU_HE_12,Mechanical,,SLAC,Labor
106064,1.03,1.03.06,1.03.06.20,1.03.06.20.03,1.03.06.20.03,SXR Undulator Installation,AS_SXU_INST_1220,Perform technical checkouts - SXU_HE_12,1.0,4.0,4.0,4.0,08-23-24,08-23-24,0,0,SLAC,0%,0106.0106_Staff Scientist,0106_Staff Scientist,Labor,0.0d,1.0,1.0,At Completion Units,1/16/2024,1/16/2024,0,0,0,0,0,0,0,0,0,0,1.03_Accelerator Systems (AS),1.03.06_AS Soft X-Ray Undulator (SXR) - SLAC,1.03.06.20_AS Soft X-Ray Undulator Installation - SLAC,1.03.06.20.03_SXR Undulator Installation,AS_SXU_INST_1220_Perform technical checkouts - SXU_HE_12,Scientist,,SLAC,Labor
106065,1.03,1.03.06,1.03.06.20,1.03.06.20.03,1.03.06.20.03,SXR Undulator Installation,AS_SXU_INST_1220,Perform technical checkouts - SXU_HE_12,1.0,4.0,4.0,4.0,08-23-24,08-23-24,0,0,SLAC,0%,52198.52198_METSMANF (METSD Manufacturing),52198_METSMANF (METSD Manufacturing),Labor,0.0d,1.0,1.0,At Completion Units,1/16/2024,1/16/2024,0,0,0,0,0,0,0,0,0,0,1.03_Accelerator Systems (AS),1.03.06_AS Soft X-Ray Undulator (SXR) - SLAC,1.03.06.20_AS Soft X-Ray Undulator Installation - SLAC,1.03.06.20.03_SXR Undulator Installation,AS_SXU_INST_1220_Perform technical checkouts - SXU_HE_12,Manufacturing,,SLAC,Labor
106066,1.03,1.03.06,1.03.06.20,1.03.06.20.03,1.03.06.20.03,SXR Undulator Installation,AS_SXU_INST_1210,Install Undulator - SXU_HE_12,1.0,12.0,12.0,12.0,08-22-24,08-22-24,0,0,SLAC,0%,52169.52169_METS Mechanical Engineer,52169_METS Mechanical Engineer,Labor,0.0d,1.0,1.0,At Completion Units,1/12/2024,1/12/2024,0,0,0,0,0,0,0,0,0,0,1.03_Accelerator Systems (AS),1.03.06_AS Soft X-Ray Undulator (SXR) - SLAC,1.03.06.20_AS Soft X-Ray Undulator Installation - SLAC,1.03.06.20.03_SXR Undulator Installation,AS_SXU_INST_1210_Install Undulator - SXU_HE_12,Mechanical,,SLAC,Labor
106067,1.03,1.03.06,1.03.06.20,1.03.06.20.03,1.03.06.20.03,SXR Undulator Installation,AS_SXU_INST_1210,Install Undulator - SXU_HE_12,1.0,4.0,4.0,4.0,08-22-24,08-22-24,0,0,SLAC,0%,0106.0106_Staff Scientist,0106_Staff Scientist,Labor,0.0d,1.0,1.0,At Completion Units,1/12/2024,1/12/2024,0,0,0,0,0,0,0,0,0,0,1.03_Accelerator Systems (AS),1.03.06_AS Soft X-Ray Undulator (SXR) - SLAC,1.03.06.20_AS Soft X-Ray Undulator Installation - SLAC,1.03.06.20.03_SXR Undulator Installation,AS_SXU_INST_1210_Install Undulator - SXU_HE_12,Scientist,,SLAC,Labor
106068,1.03,1.03.06,1.03.06.20,1.03.06.20.03,1.03.06.20.03,SXR Undulator Installation,AS_SXU_INST_1210,Install Undulator - SXU_HE_12,1.0,8.0,8.0,8.0,08-22-24,08-22-24,0,0,SLAC,0%,52191.52191_METSMET Metrology,52191_METSMET Metrology,Labor,0.0d,1.0,1.0,At Completion Units,1/12/2024,1/12/2024,0,0,0,0,0,0,0,0,0,0,1.03_Accelerator Systems (AS),1.03.06_AS Soft X-Ray Undulator (SXR) - SLAC,1.03.06.20_AS Soft X-Ray Undulator Installation - SLAC,1.03.06.20.03_SXR Undulator Installation,AS_SXU_INST_1210_Install Undulator - SXU_HE_12,Metrology,,SLAC,Labor
106069,1.03,1.03.06,1.03.06.20,1.03.06.20.03,1.03.06.20.03,SXR Undulator Installation,AS_SXU_INST_1210,Install Undulator - SXU_HE_12,1.0,34.0,34.0,34.0,08-22-24,08-22-24,0,0,SLAC,0%,52198.52198_METSMANF (METSD Manufacturing),52198_METSMANF (METSD Manufacturing),Labor,0.0d,1.0,1.0,At Completion Units,1/12/2024,1/12/2024,0,0,0,0,0,0,0,0,0,0,1.03_Accelerator Systems (AS),1.03.06_AS Soft X-Ray Undulator (SXR) - SLAC,1.03.06.20_AS Soft X-Ray Undulator Installation - SLAC,1.03.06.20.03_SXR Undulator Installation,AS_SXU_INST_1210_Install Undulator - SXU_HE_12,Manufacturing,,SLAC,Labor
106070,1.03,1.03.06,1.03.06.20,1.03.06.20.03,1.03.06.20.03,SXR Undulator Installation,AS_SXU_INST_1205,PAMM Management - SXU_HE_12,3.0,6.0,6.0,6.0,08-22-24,08-26-24,0,0,SLAC,0%,52169.52169_METS Mechanical Engineer,52169_METS Mechanical Engineer,Labor,0.0d,3.0,3.0,At Completion Units,1/12/2024,1/17/2024,0,0,0,0,0,0,0,0,0,0,1.03_Accelerator Systems (AS),1.03.06_AS Soft X-Ray Undulator (SXR) - SLAC,1.03.06.20_AS Soft X-Ray Undulator Installation - SLAC,1.03.06.20.03_SXR Undulator Installation,AS_SXU_INST_1205_PAMM Management - SXU_HE_12,Mechanical,,SLAC,Labor
106071,1.03,1.03.06,1.03.06.20,1.03.06.20.03,1.03.06.20.03,SXR Undulator Installation,AS_SXU_INST_1100,Remove Undulator from Tunnel - SXU_REFB_B,1.0,15.0,15.0,15.0,07-14-23,07-17-23,PM_PAMM_01: FS,"AS_SXU_INST_1002: FS, AS_SXU_MANF_1121: FS",SLAC,0%,52152.52152_FAC Fleet,52152_FAC Fleet,Labor,0.0d,1.0,1.0,At Completion Units,7/14/2023,7/17/2023,0,0,0,0,0,0,0,0,0,0,1.03_Accelerator Systems (AS),1.03.06_AS Soft X-Ray Undulator (SXR) - SLAC,1.03.06.20_AS Soft X-Ray Undulator Installation - SLAC,1.03.06.20.03_SXR Undulator Installation,AS_SXU_INST_1100_Remove Undulator from Tunnel - SXU_REFB_B,Support System,,SLAC,Labor
106072,1.03,1.03.06,1.03.06.20,1.03.06.20.03,1.03.06.20.03,SXR Undulator Installation,AS_SXU_INST_1100,Remove Undulator from Tunnel - SXU_REFB_B,1.0,6.0,6.0,6.0,07-14-23,07-17-23,PM_PAMM_01: FS,"AS_SXU_INST_1002: FS, AS_SXU_MANF_1121: FS",SLAC,0%,52169.52169_METS Mechanical Engineer,52169_METS Mechanical Engineer,Labor,0.0d,1.0,1.0,At Completion Units,7/14/2023,7/17/2023,0,0,0,0,0,0,0,0,0,0,1.03_Accelerator Systems (AS),1.03.06_AS Soft X-Ray Undulator (SXR) - SLAC,1.03.06.20_AS Soft X-Ray Undulator Installation - SLAC,1.03.06.20.03_SXR Undulator Installation,AS_SXU_INST_1100_Remove Undulator from Tunnel - SXU_REFB_B,Mechanical,,SLAC,Labor
106073,1.03,1.03.06,1.03.06.20,1.03.06.20.03,1.03.06.20.03,SXR Undulator Installation,AS_SXU_INST_1100,Remove Undulator from Tunnel - SXU_REFB_B,1.0,40.0,40.0,40.0,07-14-23,07-17-23,PM_PAMM_01: FS,"AS_SXU_INST_1002: FS, AS_SXU_MANF_1121: FS",SLAC,0%,52198.52198_METSMANF (METSD Manufacturing),52198_METSMANF (METSD Manufacturing),Labor,0.0d,1.0,1.0,At Completion Units,7/14/2023,7/17/2023,0,0,0,0,0,0,0,0,0,0,1.03_Accelerator Systems (AS),1.03.06_AS Soft X-Ray Undulator (SXR) - SLAC,1.03.06.20_AS Soft X-Ray Undulator Installation - SLAC,1.03.06.20.03_SXR Undulator Installation,AS_SXU_INST_1100_Remove Undulator from Tunnel - SXU_REFB_B,Manufacturing,,SLAC,Labor
106074,1.03,1.03.06,1.03.06.20,1.03.06.20.03,1.03.06.20.03,SXR Undulator Installation,AS_SXU_INST_1110,Install Undulator - SXU_HE_11,1.0,2.0,2.0,2.0,08-01-24,08-01-24,0,0,SLAC,0%,52190.52190_METSTP Tech Planning - Reinstated FY16,52190_METSTP Tech Planning - Reinstated FY16,Labor,0.0d,1.0,1.0,At Completion Units,12/7/2023,12/7/2023,0,0,0,0,0,0,0,0,0,0,1.03_Accelerator Systems (AS),1.03.06_AS Soft X-Ray Undulator (SXR) - SLAC,1.03.06.20_AS Soft X-Ray Undulator Installation - SLAC,1.03.06.20.03_SXR Undulator Installation,AS_SXU_INST_1110_Install Undulator - SXU_HE_11,METSTPT Tech Planning,Tech,SLAC,Labor
106075,1.03,1.03.06,1.03.06.20,1.03.06.20.03,1.03.06.20.03,SXR Undulator Installation,AS_SXU_INST_1110,Install Undulator - SXU_HE_11,1.0,12.0,12.0,12.0,08-01-24,08-01-24,0,0,SLAC,0%,52152.52152_FAC Fleet,52152_FAC Fleet,Labor,0.0d,1.0,1.0,At Completion Units,12/7/2023,12/7/2023,0,0,0,0,0,0,0,0,0,0,1.03_Accelerator Systems (AS),1.03.06_AS Soft X-Ray Undulator (SXR) - SLAC,1.03.06.20_AS Soft X-Ray Undulator Installation - SLAC,1.03.06.20.03_SXR Undulator Installation,AS_SXU_INST_1110_Install Undulator - SXU_HE_11,Support System,,SLAC,Labor
106076,1.03,1.03.06,1.03.06.20,1.03.06.20.03,1.03.06.20.03,SXR Undulator Installation,AS_SXU_INST_1105,PAMM Management - SXU_HE_11,3.0,2.0,2.0,2.0,08-01-24,08-05-24,0,0,SLAC,0%,52155.52155_Health Physics Technician III,52155_Health Physics Technician III,Labor,0.0d,3.0,3.0,At Completion Units,12/7/2023,12/11/2023,0,0,0,0,0,0,0,0,0,0,1.03_Accelerator Systems (AS),1.03.06_AS Soft X-Ray Undulator (SXR) - SLAC,1.03.06.20_AS Soft X-Ray Undulator Installation - SLAC,1.03.06.20.03_SXR Undulator Installation,AS_SXU_INST_1105_PAMM Management - SXU_HE_11,Support System,Tech,SLAC,Labor
106077,1.03,1.03.06,1.03.06.20,1.03.06.20.03,1.03.06.20.03,SXR Undulator Installation,AS_SXU_INST_1130,Pre-beam checkout - SXU_HE_11,1.0,5.0,5.0,5.0,08-05-24,08-05-24,0,0,SLAC,0%,52213.52213_EEDHW (Electronics & Engineering Div - HW Engr),52213_EEDHW (Electronics & Engineering Div - HW Engr),Labor,0.0d,1.0,1.0,At Completion Units,12/11/2023,12/11/2023,0,0,0,0,0,0,0,0,0,0,1.03_Accelerator Systems (AS),1.03.06_AS Soft X-Ray Undulator (SXR) - SLAC,1.03.06.20_AS Soft X-Ray Undulator Installation - SLAC,1.03.06.20.03_SXR Undulator Installation,AS_SXU_INST_1130_Pre-beam checkout - SXU_HE_11,Electrical,,SLAC,Labor
106078,1.03,1.03.06,1.03.06.20,1.03.06.20.03,1.03.06.20.03,SXR Undulator Installation,AS_SXU_INST_1130,Pre-beam checkout - SXU_HE_11,1.0,2.0,2.0,2.0,08-05-24,08-05-24,0,0,SLAC,0%,52169.52169_METS Mechanical Engineer,52169_METS Mechanical Engineer,Labor,0.0d,1.0,1.0,At Completion Units,12/11/2023,12/11/2023,0,0,0,0,0,0,0,0,0,0,1.03_Accelerator Systems (AS),1.03.06_AS Soft X-Ray Undulator (SXR) - SLAC,1.03.06.20_AS Soft X-Ray Undulator Installation - SLAC,1.03.06.20.03_SXR Undulator Installation,AS_SXU_INST_1130_Pre-beam checkout - SXU_HE_11,Mechanical,,SLAC,Labor
106079,1.03,1.03.06,1.03.06.20,1.03.06.20.03,1.03.06.20.03,SXR Undulator Installation,AS_SXU_INST_1130,Pre-beam checkout - SXU_HE_11,1.0,8.0,8.0,8.0,08-05-24,08-05-24,0,0,SLAC,0%,0106.0106_Staff Scientist,0106_Staff Scientist,Labor,0.0d,1.0,1.0,At Completion Units,12/11/2023,12/11/2023,0,0,0,0,0,0,0,0,0,0,1.03_Accelerator Systems (AS),1.03.06_AS Soft X-Ray Undulator (SXR) - SLAC,1.03.06.20_AS Soft X-Ray Undulator Installation - SLAC,1.03.06.20.03_SXR Undulator Installation,AS_SXU_INST_1130_Pre-beam checkout - SXU_HE_11,Scientist,,SLAC,Labor
106080,1.03,1.03.06,1.03.06.20,1.03.06.20.03,1.03.06.20.03,SXR Undulator Installation,AS_SXU_INST_1130,Pre-beam checkout - SXU_HE_11,1.0,12.0,12.0,12.0,08-05-24,08-05-24,0,0,SLAC,0%,52191.52191_METSMET Metrology,52191_METSMET Metrology,Labor,0.0d,1.0,1.0,At Completion Units,12/11/2023,12/11/2023,0,0,0,0,0,0,0,0,0,0,1.03_Accelerator Systems (AS),1.03.06_AS Soft X-Ray Undulator (SXR) - SLAC,1.03.06.20_AS Soft X-Ray Undulator Installation - SLAC,1.03.06.20.03_SXR Undulator Installation,AS_SXU_INST_1130_Pre-beam checkout - SXU_HE_11,Metrology,,SLAC,Labor
106081,1.03,1.03.06,1.03.06.20,1.03.06.20.03,1.03.06.20.03,SXR Undulator Installation,AS_SXU_INST_1120,Perform technical checkouts - SXU_HE_11,1.0,4.0,4.0,4.0,08-02-24,08-02-24,0,0,SLAC,0%,52211.52211_EEDOPSE (Electronics & Engineering Div - Ops & PSE),52211_EEDOPSE (Electronics & Engineering Div - Ops & PSE),Labor,0.0d,1.0,1.0,At Completion Units,12/8/2023,12/8/2023,0,0,0,0,0,0,0,0,0,0,1.03_Accelerator Systems (AS),1.03.06_AS Soft X-Ray Undulator (SXR) - SLAC,1.03.06.20_AS Soft X-Ray Undulator Installation - SLAC,1.03.06.20.03_SXR Undulator Installation,AS_SXU_INST_1120_Perform technical checkouts - SXU_HE_11,Electrical,,SLAC,Labor
106082,1.03,1.03.06,1.03.06.20,1.03.06.20.03,1.03.06.20.03,SXR Undulator Installation,AS_SXU_INST_1120,Perform technical checkouts - SXU_HE_11,1.0,8.0,8.0,8.0,08-02-24,08-02-24,0,0,SLAC,0%,52127.52127_Research Electrical & SW Engineer,52127_Research Electrical & SW Engineer,Labor,0.0d,1.0,1.0,At Completion Units,12/8/2023,12/8/2023,0,0,0,0,0,0,0,0,0,0,1.03_Accelerator Systems (AS),1.03.06_AS Soft X-Ray Undulator (SXR) - SLAC,1.03.06.20_AS Soft X-Ray Undulator Installation - SLAC,1.03.06.20.03_SXR Undulator Installation,AS_SXU_INST_1120_Perform technical checkouts - SXU_HE_11,Electrical,,SLAC,Labor
106083,1.03,1.03.06,1.03.06.20,1.03.06.20.03,1.03.06.20.03,SXR Undulator Installation,AS_SXU_INST_1120,Perform technical checkouts - SXU_HE_11,1.0,20.0,20.0,20.0,08-02-24,08-02-24,0,0,SLAC,0%,52213.52213_EEDHW (Electronics & Engineering Div - HW Engr),52213_EEDHW (Electronics & Engineering Div - HW Engr),Labor,0.0d,1.0,1.0,At Completion Units,12/8/2023,12/8/2023,0,0,0,0,0,0,0,0,0,0,1.03_Accelerator Systems (AS),1.03.06_AS Soft X-Ray Undulator (SXR) - SLAC,1.03.06.20_AS Soft X-Ray Undulator Installation - SLAC,1.03.06.20.03_SXR Undulator Installation,AS_SXU_INST_1120_Perform technical checkouts - SXU_HE_11,Electrical,,SLAC,Labor
106084,1.03,1.03.06,1.03.06.20,1.03.06.20.03,1.03.06.20.03,SXR Undulator Installation,AS_SXU_INST_1120,Perform technical checkouts - SXU_HE_11,1.0,6.0,6.0,6.0,08-02-24,08-02-24,0,0,SLAC,0%,52169.52169_METS Mechanical Engineer,52169_METS Mechanical Engineer,Labor,0.0d,1.0,1.0,At Completion Units,12/8/2023,12/8/2023,0,0,0,0,0,0,0,0,0,0,1.03_Accelerator Systems (AS),1.03.06_AS Soft X-Ray Undulator (SXR) - SLAC,1.03.06.20_AS Soft X-Ray Undulator Installation - SLAC,1.03.06.20.03_SXR Undulator Installation,AS_SXU_INST_1120_Perform technical checkouts - SXU_HE_11,Mechanical,,SLAC,Labor
106085,1.03,1.03.06,1.03.06.20,1.03.06.20.03,1.03.06.20.03,SXR Undulator Installation,AS_SXU_INST_1120,Perform technical checkouts - SXU_HE_11,1.0,4.0,4.0,4.0,08-02-24,08-02-24,0,0,SLAC,0%,0106.0106_Staff Scientist,0106_Staff Scientist,Labor,0.0d,1.0,1.0,At Completion Units,12/8/2023,12/8/2023,0,0,0,0,0,0,0,0,0,0,1.03_Accelerator Systems (AS),1.03.06_AS Soft X-Ray Undulator (SXR) - SLAC,1.03.06.20_AS Soft X-Ray Undulator Installation - SLAC,1.03.06.20.03_SXR Undulator Installation,AS_SXU_INST_1120_Perform technical checkouts - SXU_HE_11,Scientist,,SLAC,Labor
106086,1.03,1.03.06,1.03.06.20,1.03.06.20.03,1.03.06.20.03,SXR Undulator Installation,AS_SXU_INST_1120,Perform technical checkouts - SXU_HE_11,1.0,4.0,4.0,4.0,08-02-24,08-02-24,0,0,SLAC,0%,52198.52198_METSMANF (METSD Manufacturing),52198_METSMANF (METSD Manufacturing),Labor,0.0d,1.0,1.0,At Completion Units,12/8/2023,12/8/2023,0,0,0,0,0,0,0,0,0,0,1.03_Accelerator Systems (AS),1.03.06_AS Soft X-Ray Undulator (SXR) - SLAC,1.03.06.20_AS Soft X-Ray Undulator Installation - SLAC,1.03.06.20.03_SXR Undulator Installation,AS_SXU_INST_1120_Perform technical checkouts - SXU_HE_11,Manufacturing,,SLAC,Labor
106087,1.03,1.03.06,1.03.06.20,1.03.06.20.03,1.03.06.20.03,SXR Undulator Installation,AS_SXU_INST_1110,Install Undulator - SXU_HE_11,1.0,12.0,12.0,12.0,08-01-24,08-01-24,0,0,SLAC,0%,52169.52169_METS Mechanical Engineer,52169_METS Mechanical Engineer,Labor,0.0d,1.0,1.0,At Completion Units,12/7/2023,12/7/2023,0,0,0,0,0,0,0,0,0,0,1.03_Accelerator Systems (AS),1.03.06_AS Soft X-Ray Undulator (SXR) - SLAC,1.03.06.20_AS Soft X-Ray Undulator Installation - SLAC,1.03.06.20.03_SXR Undulator Installation,AS_SXU_INST_1110_Install Undulator - SXU_HE_11,Mechanical,,SLAC,Labor
106088,1.03,1.03.06,1.03.06.20,1.03.06.20.03,1.03.06.20.03,SXR Undulator Installation,AS_SXU_INST_1110,Install Undulator - SXU_HE_11,1.0,4.0,4.0,4.0,08-01-24,08-01-24,0,0,SLAC,0%,0106.0106_Staff Scientist,0106_Staff Scientist,Labor,0.0d,1.0,1.0,At Completion Units,12/7/2023,12/7/2023,0,0,0,0,0,0,0,0,0,0,1.03_Accelerator Systems (AS),1.03.06_AS Soft X-Ray Undulator (SXR) - SLAC,1.03.06.20_AS Soft X-Ray Undulator Installation - SLAC,1.03.06.20.03_SXR Undulator Installation,AS_SXU_INST_1110_Install Undulator - SXU_HE_11,Scientist,,SLAC,Labor
106089,1.03,1.03.06,1.03.06.20,1.03.06.20.03,1.03.06.20.03,SXR Undulator Installation,AS_SXU_INST_1110,Install Undulator - SXU_HE_11,1.0,8.0,8.0,8.0,08-01-24,08-01-24,0,0,SLAC,0%,52191.52191_METSMET Metrology,52191_METSMET Metrology,Labor,0.0d,1.0,1.0,At Completion Units,12/7/2023,12/7/2023,0,0,0,0,0,0,0,0,0,0,1.03_Accelerator Systems (AS),1.03.06_AS Soft X-Ray Undulator (SXR) - SLAC,1.03.06.20_AS Soft X-Ray Undulator Installation - SLAC,1.03.06.20.03_SXR Undulator Installation,AS_SXU_INST_1110_Install Undulator - SXU_HE_11,Metrology,,SLAC,Labor
106090,1.03,1.03.06,1.03.06.20,1.03.06.20.03,1.03.06.20.03,SXR Undulator Installation,AS_SXU_INST_1110,Install Undulator - SXU_HE_11,1.0,34.0,34.0,34.0,08-01-24,08-01-24,0,0,SLAC,0%,52198.52198_METSMANF (METSD Manufacturing),52198_METSMANF (METSD Manufacturing),Labor,0.0d,1.0,1.0,At Completion Units,12/7/2023,12/7/2023,0,0,0,0,0,0,0,0,0,0,1.03_Accelerator Systems (AS),1.03.06_AS Soft X-Ray Undulator (SXR) - SLAC,1.03.06.20_AS Soft X-Ray Undulator Installation - SLAC,1.03.06.20.03_SXR Undulator Installation,AS_SXU_INST_1110_Install Undulator - SXU_HE_11,Manufacturing,,SLAC,Labor
106091,1.03,1.03.06,1.03.06.20,1.03.06.20.03,1.03.06.20.03,SXR Undulator Installation,AS_SXU_INST_1105,PAMM Management - SXU_HE_11,3.0,6.0,6.0,6.0,08-01-24,08-05-24,0,0,SLAC,0%,52169.52169_METS Mechanical Engineer,52169_METS Mechanical Engineer,Labor,0.0d,3.0,3.0,At Completion Units,12/7/2023,12/11/2023,0,0,0,0,0,0,0,0,0,0,1.03_Accelerator Systems (AS),1.03.06_AS Soft X-Ray Undulator (SXR) - SLAC,1.03.06.20_AS Soft X-Ray Undulator Installation - SLAC,1.03.06.20.03_SXR Undulator Installation,AS_SXU_INST_1105_PAMM Management - SXU_HE_11,Mechanical,,SLAC,Labor
106092,1.03,1.03.06,1.03.06.20,1.03.06.20.03,1.03.06.20.03,SXR Undulator Installation,AS_SXU_INST_1010,Install Undulator - SXU_HE_10,1.0,2.0,2.0,2.0,07-14-23,07-17-23,"AS_SXU_MANF_1056: FS, PM_PAMM_01: FS",AS_SXU_INST_1020: FS,SLAC,0%,52190.52190_METSTP Tech Planning - Reinstated FY16,52190_METSTP Tech Planning - Reinstated FY16,Labor,0.0d,1.0,1.0,At Completion Units,7/14/2023,7/17/2023,0,0,0,0,0,0,0,0,0,0,1.03_Accelerator Systems (AS),1.03.06_AS Soft X-Ray Undulator (SXR) - SLAC,1.03.06.20_AS Soft X-Ray Undulator Installation - SLAC,1.03.06.20.03_SXR Undulator Installation,AS_SXU_INST_1010_Install Undulator - SXU_HE_10,METSTPT Tech Planning,Tech,SLAC,Labor
106093,1.03,1.03.06,1.03.06.20,1.03.06.20.03,1.03.06.20.03,SXR Undulator Installation,AS_SXU_INST_1010,Install Undulator - SXU_HE_10,1.0,12.0,12.0,12.0,07-14-23,07-17-23,"AS_SXU_MANF_1056: FS, PM_PAMM_01: FS",AS_SXU_INST_1020: FS,SLAC,0%,52152.52152_FAC Fleet,52152_FAC Fleet,Labor,0.0d,1.0,1.0,At Completion Units,7/14/2023,7/17/2023,0,0,0,0,0,0,0,0,0,0,1.03_Accelerator Systems (AS),1.03.06_AS Soft X-Ray Undulator (SXR) - SLAC,1.03.06.20_AS Soft X-Ray Undulator Installation - SLAC,1.03.06.20.03_SXR Undulator Installation,AS_SXU_INST_1010_Install Undulator - SXU_HE_10,Support System,,SLAC,Labor
106094,1.03,1.03.06,1.03.06.20,1.03.06.20.03,1.03.06.20.03,SXR Undulator Installation,AS_SXU_INST_1005,PAMM Management - SXU_HE_10,3.0,2.0,2.0,2.0,07-14-23,07-19-23,"AS_SXU_MANF_1056: FS, PM_PAMM_01: FS","AS_SXU_INST_1040: FS, AS_LBL_INST_140: FS",SLAC,0%,52155.52155_Health Physics Technician III,52155_Health Physics Technician III,Labor,0.0d,3.0,3.0,At Completion Units,7/14/2023,7/19/2023,0,0,0,0,0,0,0,0,0,0,1.03_Accelerator Systems (AS),1.03.06_AS Soft X-Ray Undulator (SXR) - SLAC,1.03.06.20_AS Soft X-Ray Undulator Installation - SLAC,1.03.06.20.03_SXR Undulator Installation,AS_SXU_INST_1005_PAMM Management - SXU_HE_10,Support System,Tech,SLAC,Labor
106095,1.03,1.03.06,1.03.06.20,1.03.06.20.03,1.03.06.20.03,SXR Undulator Installation,AS_SXU_INST_1030,Pre-beam checkout - SXU_HE_10,1.0,5.0,5.0,5.0,05-16-24,05-16-24,0,0,SLAC,0%,52213.52213_EEDHW (Electronics & Engineering Div - HW Engr),52213_EEDHW (Electronics & Engineering Div - HW Engr),Labor,0.0d,1.0,1.0,At Completion Units,8/24/2023,8/24/2023,0,0,0,0,0,0,0,0,0,0,1.03_Accelerator Systems (AS),1.03.06_AS Soft X-Ray Undulator (SXR) - SLAC,1.03.06.20_AS Soft X-Ray Undulator Installation - SLAC,1.03.06.20.03_SXR Undulator Installation,AS_SXU_INST_1030_Pre-beam checkout - SXU_HE_10,Electrical,,SLAC,Labor
106096,1.03,1.03.06,1.03.06.20,1.03.06.20.03,1.03.06.20.03,SXR Undulator Installation,AS_SXU_INST_1030,Pre-beam checkout - SXU_HE_10,1.0,2.0,2.0,2.0,05-16-24,05-16-24,0,0,SLAC,0%,52169.52169_METS Mechanical Engineer,52169_METS Mechanical Engineer,Labor,0.0d,1.0,1.0,At Completion Units,8/24/2023,8/24/2023,0,0,0,0,0,0,0,0,0,0,1.03_Accelerator Systems (AS),1.03.06_AS Soft X-Ray Undulator (SXR) - SLAC,1.03.06.20_AS Soft X-Ray Undulator Installation - SLAC,1.03.06.20.03_SXR Undulator Installation,AS_SXU_INST_1030_Pre-beam checkout - SXU_HE_10,Mechanical,,SLAC,Labor
106097,1.03,1.03.06,1.03.06.20,1.03.06.20.03,1.03.06.20.03,SXR Undulator Installation,AS_SXU_INST_1030,Pre-beam checkout - SXU_HE_10,1.0,8.0,8.0,8.0,05-16-24,05-16-24,0,0,SLAC,0%,0106.0106_Staff Scientist,0106_Staff Scientist,Labor,0.0d,1.0,1.0,At Completion Units,8/24/2023,8/24/2023,0,0,0,0,0,0,0,0,0,0,1.03_Accelerator Systems (AS),1.03.06_AS Soft X-Ray Undulator (SXR) - SLAC,1.03.06.20_AS Soft X-Ray Undulator Installation - SLAC,1.03.06.20.03_SXR Undulator Installation,AS_SXU_INST_1030_Pre-beam checkout - SXU_HE_10,Scientist,,SLAC,Labor
106098,1.03,1.03.06,1.03.06.20,1.03.06.20.03,1.03.06.20.03,SXR Undulator Installation,AS_SXU_INST_1030,Pre-beam checkout - SXU_HE_10,1.0,12.0,12.0,12.0,05-16-24,05-16-24,0,0,SLAC,0%,52191.52191_METSMET Metrology,52191_METSMET Metrology,Labor,0.0d,1.0,1.0,At Completion Units,8/24/2023,8/24/2023,0,0,0,0,0,0,0,0,0,0,1.03_Accelerator Systems (AS),1.03.06_AS Soft X-Ray Undulator (SXR) - SLAC,1.03.06.20_AS Soft X-Ray Undulator Installation - SLAC,1.03.06.20.03_SXR Undulator Installation,AS_SXU_INST_1030_Pre-beam checkout - SXU_HE_10,Metrology,,SLAC,Labor
106099,1.03,1.03.06,1.03.06.20,1.03.06.20.03,1.03.06.20.03,SXR Undulator Installation,AS_SXU_INST_1020,Perform technical checkouts - SXU_HE_10,1.0,4.0,4.0,4.0,05-15-24,05-15-24,0,0,SLAC,0%,52211.52211_EEDOPSE (Electronics & Engineering Div - Ops & PSE),52211_EEDOPSE (Electronics & Engineering Div - Ops & PSE),Labor,0.0d,1.0,1.0,At Completion Units,8/23/2023,8/23/2023,0,0,0,0,0,0,0,0,0,0,1.03_Accelerator Systems (AS),1.03.06_AS Soft X-Ray Undulator (SXR) - SLAC,1.03.06.20_AS Soft X-Ray Undulator Installation - SLAC,1.03.06.20.03_SXR Undulator Installation,AS_SXU_INST_1020_Perform technical checkouts - SXU_HE_10,Electrical,,SLAC,Labor
106100,1.03,1.03.06,1.03.06.20,1.03.06.20.03,1.03.06.20.03,SXR Undulator Installation,AS_SXU_INST_1020,Perform technical checkouts - SXU_HE_10,1.0,8.0,8.0,8.0,05-15-24,05-15-24,0,0,SLAC,0%,52127.52127_Research Electrical & SW Engineer,52127_Research Electrical & SW Engineer,Labor,0.0d,1.0,1.0,At Completion Units,8/23/2023,8/23/2023,0,0,0,0,0,0,0,0,0,0,1.03_Accelerator Systems (AS),1.03.06_AS Soft X-Ray Undulator (SXR) - SLAC,1.03.06.20_AS Soft X-Ray Undulator Installation - SLAC,1.03.06.20.03_SXR Undulator Installation,AS_SXU_INST_1020_Perform technical checkouts - SXU_HE_10,Electrical,,SLAC,Labor
106101,1.03,1.03.06,1.03.06.20,1.03.06.20.03,1.03.06.20.03,SXR Undulator Installation,AS_SXU_INST_1020,Perform technical checkouts - SXU_HE_10,1.0,20.0,20.0,20.0,05-15-24,05-15-24,0,0,SLAC,0%,52213.52213_EEDHW (Electronics & Engineering Div - HW Engr),52213_EEDHW (Electronics & Engineering Div - HW Engr),Labor,0.0d,1.0,1.0,At Completion Units,8/23/2023,8/23/2023,0,0,0,0,0,0,0,0,0,0,1.03_Accelerator Systems (AS),1.03.06_AS Soft X-Ray Undulator (SXR) - SLAC,1.03.06.20_AS Soft X-Ray Undulator Installation - SLAC,1.03.06.20.03_SXR Undulator Installation,AS_SXU_INST_1020_Perform technical checkouts - SXU_HE_10,Electrical,,SLAC,Labor
106102,1.03,1.03.06,1.03.06.20,1.03.06.20.03,1.03.06.20.03,SXR Undulator Installation,AS_SXU_INST_1020,Perform technical checkouts - SXU_HE_10,1.0,6.0,6.0,6.0,05-15-24,05-15-24,0,0,SLAC,0%,52169.52169_METS Mechanical Engineer,52169_METS Mechanical Engineer,Labor,0.0d,1.0,1.0,At Completion Units,8/23/2023,8/23/2023,0,0,0,0,0,0,0,0,0,0,1.03_Accelerator Systems (AS),1.03.06_AS Soft X-Ray Undulator (SXR) - SLAC,1.03.06.20_AS Soft X-Ray Undulator Installation - SLAC,1.03.06.20.03_SXR Undulator Installation,AS_SXU_INST_1020_Perform technical checkouts - SXU_HE_10,Mechanical,,SLAC,Labor
106103,1.03,1.03.06,1.03.06.20,1.03.06.20.03,1.03.06.20.03,SXR Undulator Installation,AS_SXU_INST_1020,Perform technical checkouts - SXU_HE_10,1.0,4.0,4.0,4.0,05-15-24,05-15-24,0,0,SLAC,0%,0106.0106_Staff Scientist,0106_Staff Scientist,Labor,0.0d,1.0,1.0,At Completion Units,8/23/2023,8/23/2023,0,0,0,0,0,0,0,0,0,0,1.03_Accelerator Systems (AS),1.03.06_AS Soft X-Ray Undulator (SXR) - SLAC,1.03.06.20_AS Soft X-Ray Undulator Installation - SLAC,1.03.06.20.03_SXR Undulator Installation,AS_SXU_INST_1020_Perform technical checkouts - SXU_HE_10,Scientist,,SLAC,Labor
106104,1.03,1.03.06,1.03.06.20,1.03.06.20.03,1.03.06.20.03,SXR Undulator Installation,AS_SXU_INST_1020,Perform technical checkouts - SXU_HE_10,1.0,4.0,4.0,4.0,05-15-24,05-15-24,0,0,SLAC,0%,52198.52198_METSMANF (METSD Manufacturing),52198_METSMANF (METSD Manufacturing),Labor,0.0d,1.0,1.0,At Completion Units,8/23/2023,8/23/2023,0,0,0,0,0,0,0,0,0,0,1.03_Accelerator Systems (AS),1.03.06_AS Soft X-Ray Undulator (SXR) - SLAC,1.03.06.20_AS Soft X-Ray Undulator Installation - SLAC,1.03.06.20.03_SXR Undulator Installation,AS_SXU_INST_1020_Perform technical checkouts - SXU_HE_10,Manufacturing,,SLAC,Labor
106105,1.03,1.03.06,1.03.06.20,1.03.06.20.03,1.03.06.20.03,SXR Undulator Installation,AS_SXU_INST_1010,Install Undulator - SXU_HE_10,1.0,12.0,12.0,12.0,07-14-23,07-17-23,"AS_SXU_MANF_1056: FS, PM_PAMM_01: FS",AS_SXU_INST_1020: FS,SLAC,0%,52169.52169_METS Mechanical Engineer,52169_METS Mechanical Engineer,Labor,0.0d,1.0,1.0,At Completion Units,7/14/2023,7/17/2023,0,0,0,0,0,0,0,0,0,0,1.03_Accelerator Systems (AS),1.03.06_AS Soft X-Ray Undulator (SXR) - SLAC,1.03.06.20_AS Soft X-Ray Undulator Installation - SLAC,1.03.06.20.03_SXR Undulator Installation,AS_SXU_INST_1010_Install Undulator - SXU_HE_10,Mechanical,,SLAC,Labor
106106,1.03,1.03.06,1.03.06.20,1.03.06.20.03,1.03.06.20.03,SXR Undulator Installation,AS_SXU_INST_1010,Install Undulator - SXU_HE_10,1.0,4.0,4.0,4.0,07-14-23,07-17-23,"AS_SXU_MANF_1056: FS, PM_PAMM_01: FS",AS_SXU_INST_1020: FS,SLAC,0%,0106.0106_Staff Scientist,0106_Staff Scientist,Labor,0.0d,1.0,1.0,At Completion Units,7/14/2023,7/17/2023,0,0,0,0,0,0,0,0,0,0,1.03_Accelerator Systems (AS),1.03.06_AS Soft X-Ray Undulator (SXR) - SLAC,1.03.06.20_AS Soft X-Ray Undulator Installation - SLAC,1.03.06.20.03_SXR Undulator Installation,AS_SXU_INST_1010_Install Undulator - SXU_HE_10,Scientist,,SLAC,Labor
106107,1.03,1.03.06,1.03.06.20,1.03.06.20.03,1.03.06.20.03,SXR Undulator Installation,AS_SXU_INST_1010,Install Undulator - SXU_HE_10,1.0,8.0,8.0,8.0,07-14-23,07-17-23,"AS_SXU_MANF_1056: FS, PM_PAMM_01: FS",AS_SXU_INST_1020: FS,SLAC,0%,52191.52191_METSMET Metrology,52191_METSMET Metrology,Labor,0.0d,1.0,1.0,At Completion Units,7/14/2023,7/17/2023,0,0,0,0,0,0,0,0,0,0,1.03_Accelerator Systems (AS),1.03.06_AS Soft X-Ray Undulator (SXR) - SLAC,1.03.06.20_AS Soft X-Ray Undulator Installation - SLAC,1.03.06.20.03_SXR Undulator Installation,AS_SXU_INST_1010_Install Undulator - SXU_HE_10,Metrology,,SLAC,Labor
106108,1.03,1.03.06,1.03.06.20,1.03.06.20.03,1.03.06.20.03,SXR Undulator Installation,AS_SXU_INST_1010,Install Undulator - SXU_HE_10,1.0,34.0,34.0,34.0,07-14-23,07-17-23,"AS_SXU_MANF_1056: FS, PM_PAMM_01: FS",AS_SXU_INST_1020: FS,SLAC,0%,52198.52198_METSMANF (METSD Manufacturing),52198_METSMANF (METSD Manufacturing),Labor,0.0d,1.0,1.0,At Completion Units,7/14/2023,7/17/2023,0,0,0,0,0,0,0,0,0,0,1.03_Accelerator Systems (AS),1.03.06_AS Soft X-Ray Undulator (SXR) - SLAC,1.03.06.20_AS Soft X-Ray Undulator Installation - SLAC,1.03.06.20.03_SXR Undulator Installation,AS_SXU_INST_1010_Install Undulator - SXU_HE_10,Manufacturing,,SLAC,Labor
106109,1.03,1.03.06,1.03.06.20,1.03.06.20.03,1.03.06.20.03,SXR Undulator Installation,AS_SXU_INST_1005,PAMM Management - SXU_HE_10,3.0,6.0,6.0,6.0,07-14-23,07-19-23,"AS_SXU_MANF_1056: FS, PM_PAMM_01: FS","AS_SXU_INST_1040: FS, AS_LBL_INST_140: FS",SLAC,0%,52169.52169_METS Mechanical Engineer,52169_METS Mechanical Engineer,Labor,0.0d,3.0,3.0,At Completion Units,7/14/2023,7/19/2023,0,0,0,0,0,0,0,0,0,0,1.03_Accelerator Systems (AS),1.03.06_AS Soft X-Ray Undulator (SXR) - SLAC,1.03.06.20_AS Soft X-Ray Undulator Installation - SLAC,1.03.06.20.03_SXR Undulator Installation,AS_SXU_INST_1005_PAMM Management - SXU_HE_10,Mechanical,,SLAC,Labor
106110,1.03,1.03.06,1.03.06.20,1.03.06.20.03,1.03.06.20.03,SXR Undulator Installation,AS_SXU_INST_0910,Install Undulator - SXU_HE_09,1.0,2.0,2.0,2.0,01-23-26,01-23-26,0,0,SLAC,0%,52190.52190_METSTP Tech Planning - Reinstated FY16,52190_METSTP Tech Planning - Reinstated FY16,Labor,0.0d,1.0,1.0,At Completion Units,3/19/2025,3/19/2025,0,0,0,0,0,0,0,0,0,0,1.03_Accelerator Systems (AS),1.03.06_AS Soft X-Ray Undulator (SXR) - SLAC,1.03.06.20_AS Soft X-Ray Undulator Installation - SLAC,1.03.06.20.03_SXR Undulator Installation,AS_SXU_INST_0910_Install Undulator - SXU_HE_09,METSTPT Tech Planning,Tech,SLAC,Labor
106111,1.03,1.03.06,1.03.06.20,1.03.06.20.03,1.03.06.20.03,SXR Undulator Installation,AS_SXU_INST_0910,Install Undulator - SXU_HE_09,1.0,12.0,12.0,12.0,01-23-26,01-23-26,0,0,SLAC,0%,52152.52152_FAC Fleet,52152_FAC Fleet,Labor,0.0d,1.0,1.0,At Completion Units,3/19/2025,3/19/2025,0,0,0,0,0,0,0,0,0,0,1.03_Accelerator Systems (AS),1.03.06_AS Soft X-Ray Undulator (SXR) - SLAC,1.03.06.20_AS Soft X-Ray Undulator Installation - SLAC,1.03.06.20.03_SXR Undulator Installation,AS_SXU_INST_0910_Install Undulator - SXU_HE_09,Support System,,SLAC,Labor
106112,1.03,1.03.06,1.03.06.20,1.03.06.20.03,1.03.06.20.03,SXR Undulator Installation,AS_SXU_INST_0905,PAMM Management - SXU_HE_09,3.0,2.0,2.0,2.0,01-23-26,01-27-26,0,0,SLAC,0%,52155.52155_Health Physics Technician III,52155_Health Physics Technician III,Labor,0.0d,3.0,3.0,At Completion Units,3/19/2025,3/21/2025,0,0,0,0,0,0,0,0,0,0,1.03_Accelerator Systems (AS),1.03.06_AS Soft X-Ray Undulator (SXR) - SLAC,1.03.06.20_AS Soft X-Ray Undulator Installation - SLAC,1.03.06.20.03_SXR Undulator Installation,AS_SXU_INST_0905_PAMM Management - SXU_HE_09,Support System,Tech,SLAC,Labor
106113,1.03,1.03.06,1.03.06.20,1.03.06.20.03,1.03.06.20.03,SXR Undulator Installation,AS_SXU_INST_0930,Pre-beam checkout - SXU_HE_09,1.0,5.0,5.0,5.0,01-27-26,01-27-26,0,0,SLAC,0%,52213.52213_EEDHW (Electronics & Engineering Div - HW Engr),52213_EEDHW (Electronics & Engineering Div - HW Engr),Labor,0.0d,1.0,1.0,At Completion Units,3/21/2025,3/21/2025,0,0,0,0,0,0,0,0,0,0,1.03_Accelerator Systems (AS),1.03.06_AS Soft X-Ray Undulator (SXR) - SLAC,1.03.06.20_AS Soft X-Ray Undulator Installation - SLAC,1.03.06.20.03_SXR Undulator Installation,AS_SXU_INST_0930_Pre-beam checkout - SXU_HE_09,Electrical,,SLAC,Labor
106114,1.03,1.03.06,1.03.06.20,1.03.06.20.03,1.03.06.20.03,SXR Undulator Installation,AS_SXU_INST_0930,Pre-beam checkout - SXU_HE_09,1.0,2.0,2.0,2.0,01-27-26,01-27-26,0,0,SLAC,0%,52169.52169_METS Mechanical Engineer,52169_METS Mechanical Engineer,Labor,0.0d,1.0,1.0,At Completion Units,3/21/2025,3/21/2025,0,0,0,0,0,0,0,0,0,0,1.03_Accelerator Systems (AS),1.03.06_AS Soft X-Ray Undulator (SXR) - SLAC,1.03.06.20_AS Soft X-Ray Undulator Installation - SLAC,1.03.06.20.03_SXR Undulator Installation,AS_SXU_INST_0930_Pre-beam checkout - SXU_HE_09,Mechanical,,SLAC,Labor
106115,1.03,1.03.06,1.03.06.20,1.03.06.20.03,1.03.06.20.03,SXR Undulator Installation,AS_SXU_INST_0930,Pre-beam checkout - SXU_HE_09,1.0,8.0,8.0,8.0,01-27-26,01-27-26,0,0,SLAC,0%,0106.0106_Staff Scientist,0106_Staff Scientist,Labor,0.0d,1.0,1.0,At Completion Units,3/21/2025,3/21/2025,0,0,0,0,0,0,0,0,0,0,1.03_Accelerator Systems (AS),1.03.06_AS Soft X-Ray Undulator (SXR) - SLAC,1.03.06.20_AS Soft X-Ray Undulator Installation - SLAC,1.03.06.20.03_SXR Undulator Installation,AS_SXU_INST_0930_Pre-beam checkout - SXU_HE_09,Scientist,,SLAC,Labor
106116,1.03,1.03.06,1.03.06.20,1.03.06.20.03,1.03.06.20.03,SXR Undulator Installation,AS_SXU_INST_0930,Pre-beam checkout - SXU_HE_09,1.0,12.0,12.0,12.0,01-27-26,01-27-26,0,0,SLAC,0%,52191.52191_METSMET Metrology,52191_METSMET Metrology,Labor,0.0d,1.0,1.0,At Completion Units,3/21/2025,3/21/2025,0,0,0,0,0,0,0,0,0,0,1.03_Accelerator Systems (AS),1.03.06_AS Soft X-Ray Undulator (SXR) - SLAC,1.03.06.20_AS Soft X-Ray Undulator Installation - SLAC,1.03.06.20.03_SXR Undulator Installation,AS_SXU_INST_0930_Pre-beam checkout - SXU_HE_09,Metrology,,SLAC,Labor
106117,1.03,1.03.06,1.03.06.20,1.03.06.20.03,1.03.06.20.03,SXR Undulator Installation,AS_SXU_INST_0920,Perform technical checkouts - SXU_HE_09,1.0,4.0,4.0,4.0,01-26-26,01-26-26,0,0,SLAC,0%,52211.52211_EEDOPSE (Electronics & Engineering Div - Ops & PSE),52211_EEDOPSE (Electronics & Engineering Div - Ops & PSE),Labor,0.0d,1.0,1.0,At Completion Units,3/20/2025,3/20/2025,0,0,0,0,0,0,0,0,0,0,1.03_Accelerator Systems (AS),1.03.06_AS Soft X-Ray Undulator (SXR) - SLAC,1.03.06.20_AS Soft X-Ray Undulator Installation - SLAC,1.03.06.20.03_SXR Undulator Installation,AS_SXU_INST_0920_Perform technical checkouts - SXU_HE_09,Electrical,,SLAC,Labor
106118,1.03,1.03.06,1.03.06.20,1.03.06.20.03,1.03.06.20.03,SXR Undulator Installation,AS_SXU_INST_0920,Perform technical checkouts - SXU_HE_09,1.0,8.0,8.0,8.0,01-26-26,01-26-26,0,0,SLAC,0%,52127.52127_Research Electrical & SW Engineer,52127_Research Electrical & SW Engineer,Labor,0.0d,1.0,1.0,At Completion Units,3/20/2025,3/20/2025,0,0,0,0,0,0,0,0,0,0,1.03_Accelerator Systems (AS),1.03.06_AS Soft X-Ray Undulator (SXR) - SLAC,1.03.06.20_AS Soft X-Ray Undulator Installation - SLAC,1.03.06.20.03_SXR Undulator Installation,AS_SXU_INST_0920_Perform technical checkouts - SXU_HE_09,Electrical,,SLAC,Labor
106119,1.03,1.03.06,1.03.06.20,1.03.06.20.03,1.03.06.20.03,SXR Undulator Installation,AS_SXU_INST_0920,Perform technical checkouts - SXU_HE_09,1.0,20.0,20.0,20.0,01-26-26,01-26-26,0,0,SLAC,0%,52213.52213_EEDHW (Electronics & Engineering Div - HW Engr),52213_EEDHW (Electronics & Engineering Div - HW Engr),Labor,0.0d,1.0,1.0,At Completion Units,3/20/2025,3/20/2025,0,0,0,0,0,0,0,0,0,0,1.03_Accelerator Systems (AS),1.03.06_AS Soft X-Ray Undulator (SXR) - SLAC,1.03.06.20_AS Soft X-Ray Undulator Installation - SLAC,1.03.06.20.03_SXR Undulator Installation,AS_SXU_INST_0920_Perform technical checkouts - SXU_HE_09,Electrical,,SLAC,Labor
106120,1.03,1.03.06,1.03.06.20,1.03.06.20.03,1.03.06.20.03,SXR Undulator Installation,AS_SXU_INST_0920,Perform technical checkouts - SXU_HE_09,1.0,6.0,6.0,6.0,01-26-26,01-26-26,0,0,SLAC,0%,52169.52169_METS Mechanical Engineer,52169_METS Mechanical Engineer,Labor,0.0d,1.0,1.0,At Completion Units,3/20/2025,3/20/2025,0,0,0,0,0,0,0,0,0,0,1.03_Accelerator Systems (AS),1.03.06_AS Soft X-Ray Undulator (SXR) - SLAC,1.03.06.20_AS Soft X-Ray Undulator Installation - SLAC,1.03.06.20.03_SXR Undulator Installation,AS_SXU_INST_0920_Perform technical checkouts - SXU_HE_09,Mechanical,,SLAC,Labor
106121,1.03,1.03.06,1.03.06.20,1.03.06.20.03,1.03.06.20.03,SXR Undulator Installation,AS_SXU_INST_0920,Perform technical checkouts - SXU_HE_09,1.0,4.0,4.0,4.0,01-26-26,01-26-26,0,0,SLAC,0%,0106.0106_Staff Scientist,0106_Staff Scientist,Labor,0.0d,1.0,1.0,At Completion Units,3/20/2025,3/20/2025,0,0,0,0,0,0,0,0,0,0,1.03_Accelerator Systems (AS),1.03.06_AS Soft X-Ray Undulator (SXR) - SLAC,1.03.06.20_AS Soft X-Ray Undulator Installation - SLAC,1.03.06.20.03_SXR Undulator Installation,AS_SXU_INST_0920_Perform technical checkouts - SXU_HE_09,Scientist,,SLAC,Labor
106122,1.03,1.03.06,1.03.06.20,1.03.06.20.03,1.03.06.20.03,SXR Undulator Installation,AS_SXU_INST_0920,Perform technical checkouts - SXU_HE_09,1.0,4.0,4.0,4.0,01-26-26,01-26-26,0,0,SLAC,0%,52198.52198_METSMANF (METSD Manufacturing),52198_METSMANF (METSD Manufacturing),Labor,0.0d,1.0,1.0,At Completion Units,3/20/2025,3/20/2025,0,0,0,0,0,0,0,0,0,0,1.03_Accelerator Systems (AS),1.03.06_AS Soft X-Ray Undulator (SXR) - SLAC,1.03.06.20_AS Soft X-Ray Undulator Installation - SLAC,1.03.06.20.03_SXR Undulator Installation,AS_SXU_INST_0920_Perform technical checkouts - SXU_HE_09,Manufacturing,,SLAC,Labor
106123,1.03,1.03.06,1.03.06.20,1.03.06.20.03,1.03.06.20.03,SXR Undulator Installation,AS_SXU_INST_0910,Install Undulator - SXU_HE_09,1.0,12.0,12.0,12.0,01-23-26,01-23-26,0,0,SLAC,0%,52169.52169_METS Mechanical Engineer,52169_METS Mechanical Engineer,Labor,0.0d,1.0,1.0,At Completion Units,3/19/2025,3/19/2025,0,0,0,0,0,0,0,0,0,0,1.03_Accelerator Systems (AS),1.03.06_AS Soft X-Ray Undulator (SXR) - SLAC,1.03.06.20_AS Soft X-Ray Undulator Installation - SLAC,1.03.06.20.03_SXR Undulator Installation,AS_SXU_INST_0910_Install Undulator - SXU_HE_09,Mechanical,,SLAC,Labor
106124,1.03,1.03.06,1.03.06.20,1.03.06.20.03,1.03.06.20.03,SXR Undulator Installation,AS_SXU_INST_0910,Install Undulator - SXU_HE_09,1.0,4.0,4.0,4.0,01-23-26,01-23-26,0,0,SLAC,0%,0106.0106_Staff Scientist,0106_Staff Scientist,Labor,0.0d,1.0,1.0,At Completion Units,3/19/2025,3/19/2025,0,0,0,0,0,0,0,0,0,0,1.03_Accelerator Systems (AS),1.03.06_AS Soft X-Ray Undulator (SXR) - SLAC,1.03.06.20_AS Soft X-Ray Undulator Installation - SLAC,1.03.06.20.03_SXR Undulator Installation,AS_SXU_INST_0910_Install Undulator - SXU_HE_09,Scientist,,SLAC,Labor
106125,1.03,1.03.06,1.03.06.20,1.03.06.20.03,1.03.06.20.03,SXR Undulator Installation,AS_SXU_INST_0910,Install Undulator - SXU_HE_09,1.0,8.0,8.0,8.0,01-23-26,01-23-26,0,0,SLAC,0%,52191.52191_METSMET Metrology,52191_METSMET Metrology,Labor,0.0d,1.0,1.0,At Completion Units,3/19/2025,3/19/2025,0,0,0,0,0,0,0,0,0,0,1.03_Accelerator Systems (AS),1.03.06_AS Soft X-Ray Undulator (SXR) - SLAC,1.03.06.20_AS Soft X-Ray Undulator Installation - SLAC,1.03.06.20.03_SXR Undulator Installation,AS_SXU_INST_0910_Install Undulator - SXU_HE_09,Metrology,,SLAC,Labor
106126,1.03,1.03.06,1.03.06.20,1.03.06.20.03,1.03.06.20.03,SXR Undulator Installation,AS_SXU_INST_0910,Install Undulator - SXU_HE_09,1.0,34.0,34.0,34.0,01-23-26,01-23-26,0,0,SLAC,0%,52198.52198_METSMANF (METSD Manufacturing),52198_METSMANF (METSD Manufacturing),Labor,0.0d,1.0,1.0,At Completion Units,3/19/2025,3/19/2025,0,0,0,0,0,0,0,0,0,0,1.03_Accelerator Systems (AS),1.03.06_AS Soft X-Ray Undulator (SXR) - SLAC,1.03.06.20_AS Soft X-Ray Undulator Installation - SLAC,1.03.06.20.03_SXR Undulator Installation,AS_SXU_INST_0910_Install Undulator - SXU_HE_09,Manufacturing,,SLAC,Labor
106127,1.03,1.03.06,1.03.06.20,1.03.06.20.03,1.03.06.20.03,SXR Undulator Installation,AS_SXU_INST_0905,PAMM Management - SXU_HE_09,3.0,6.0,6.0,6.0,01-23-26,01-27-26,0,0,SLAC,0%,52169.52169_METS Mechanical Engineer,52169_METS Mechanical Engineer,Labor,0.0d,3.0,3.0,At Completion Units,3/19/2025,3/21/2025,0,0,0,0,0,0,0,0,0,0,1.03_Accelerator Systems (AS),1.03.06_AS Soft X-Ray Undulator (SXR) - SLAC,1.03.06.20_AS Soft X-Ray Undulator Installation - SLAC,1.03.06.20.03_SXR Undulator Installation,AS_SXU_INST_0905_PAMM Management - SXU_HE_09,Mechanical,,SLAC,Labor
106128,1.03,1.03.06,1.03.06.20,1.03.06.20.03,1.03.06.20.03,SXR Undulator Installation,AS_SXU_INST_0810,Install Undulator - SXU_HE_08,1.0,2.0,2.0,2.0,12-04-25,12-04-25,0,0,SLAC,0%,52190.52190_METSTP Tech Planning - Reinstated FY16,52190_METSTP Tech Planning - Reinstated FY16,Labor,0.0d,1.0,1.0,At Completion Units,2/11/2025,2/11/2025,0,0,0,0,0,0,0,0,0,0,1.03_Accelerator Systems (AS),1.03.06_AS Soft X-Ray Undulator (SXR) - SLAC,1.03.06.20_AS Soft X-Ray Undulator Installation - SLAC,1.03.06.20.03_SXR Undulator Installation,AS_SXU_INST_0810_Install Undulator - SXU_HE_08,METSTPT Tech Planning,Tech,SLAC,Labor
106129,1.03,1.03.06,1.03.06.20,1.03.06.20.03,1.03.06.20.03,SXR Undulator Installation,AS_SXU_INST_0810,Install Undulator - SXU_HE_08,1.0,12.0,12.0,12.0,12-04-25,12-04-25,0,0,SLAC,0%,52152.52152_FAC Fleet,52152_FAC Fleet,Labor,0.0d,1.0,1.0,At Completion Units,2/11/2025,2/11/2025,0,0,0,0,0,0,0,0,0,0,1.03_Accelerator Systems (AS),1.03.06_AS Soft X-Ray Undulator (SXR) - SLAC,1.03.06.20_AS Soft X-Ray Undulator Installation - SLAC,1.03.06.20.03_SXR Undulator Installation,AS_SXU_INST_0810_Install Undulator - SXU_HE_08,Support System,,SLAC,Labor
106130,1.03,1.03.06,1.03.06.20,1.03.06.20.03,1.03.06.20.03,SXR Undulator Installation,AS_SXU_INST_0805,PAMM Management - SXU_HE_08,3.0,2.0,2.0,2.0,12-04-25,12-08-25,0,0,SLAC,0%,52155.52155_Health Physics Technician III,52155_Health Physics Technician III,Labor,0.0d,3.0,3.0,At Completion Units,2/11/2025,2/13/2025,0,0,0,0,0,0,0,0,0,0,1.03_Accelerator Systems (AS),1.03.06_AS Soft X-Ray Undulator (SXR) - SLAC,1.03.06.20_AS Soft X-Ray Undulator Installation - SLAC,1.03.06.20.03_SXR Undulator Installation,AS_SXU_INST_0805_PAMM Management - SXU_HE_08,Support System,Tech,SLAC,Labor
106131,1.03,1.03.06,1.03.06.20,1.03.06.20.03,1.03.06.20.03,SXR Undulator Installation,AS_SXU_INST_0830,Pre-beam checkout - SXU_HE_08,1.0,5.0,5.0,5.0,12-08-25,12-08-25,0,0,SLAC,0%,52213.52213_EEDHW (Electronics & Engineering Div - HW Engr),52213_EEDHW (Electronics & Engineering Div - HW Engr),Labor,0.0d,1.0,1.0,At Completion Units,2/13/2025,2/13/2025,0,0,0,0,0,0,0,0,0,0,1.03_Accelerator Systems (AS),1.03.06_AS Soft X-Ray Undulator (SXR) - SLAC,1.03.06.20_AS Soft X-Ray Undulator Installation - SLAC,1.03.06.20.03_SXR Undulator Installation,AS_SXU_INST_0830_Pre-beam checkout - SXU_HE_08,Electrical,,SLAC,Labor
106132,1.03,1.03.06,1.03.06.20,1.03.06.20.03,1.03.06.20.03,SXR Undulator Installation,AS_SXU_INST_0830,Pre-beam checkout - SXU_HE_08,1.0,2.0,2.0,2.0,12-08-25,12-08-25,0,0,SLAC,0%,52169.52169_METS Mechanical Engineer,52169_METS Mechanical Engineer,Labor,0.0d,1.0,1.0,At Completion Units,2/13/2025,2/13/2025,0,0,0,0,0,0,0,0,0,0,1.03_Accelerator Systems (AS),1.03.06_AS Soft X-Ray Undulator (SXR) - SLAC,1.03.06.20_AS Soft X-Ray Undulator Installation - SLAC,1.03.06.20.03_SXR Undulator Installation,AS_SXU_INST_0830_Pre-beam checkout - SXU_HE_08,Mechanical,,SLAC,Labor
106133,1.03,1.03.06,1.03.06.20,1.03.06.20.03,1.03.06.20.03,SXR Undulator Installation,AS_SXU_INST_0830,Pre-beam checkout - SXU_HE_08,1.0,8.0,8.0,8.0,12-08-25,12-08-25,0,0,SLAC,0%,0106.0106_Staff Scientist,0106_Staff Scientist,Labor,0.0d,1.0,1.0,At Completion Units,2/13/2025,2/13/2025,0,0,0,0,0,0,0,0,0,0,1.03_Accelerator Systems (AS),1.03.06_AS Soft X-Ray Undulator (SXR) - SLAC,1.03.06.20_AS Soft X-Ray Undulator Installation - SLAC,1.03.06.20.03_SXR Undulator Installation,AS_SXU_INST_0830_Pre-beam checkout - SXU_HE_08,Scientist,,SLAC,Labor
106134,1.03,1.03.06,1.03.06.20,1.03.06.20.03,1.03.06.20.03,SXR Undulator Installation,AS_SXU_INST_0830,Pre-beam checkout - SXU_HE_08,1.0,12.0,12.0,12.0,12-08-25,12-08-25,0,0,SLAC,0%,52191.52191_METSMET Metrology,52191_METSMET Metrology,Labor,0.0d,1.0,1.0,At Completion Units,2/13/2025,2/13/2025,0,0,0,0,0,0,0,0,0,0,1.03_Accelerator Systems (AS),1.03.06_AS Soft X-Ray Undulator (SXR) - SLAC,1.03.06.20_AS Soft X-Ray Undulator Installation - SLAC,1.03.06.20.03_SXR Undulator Installation,AS_SXU_INST_0830_Pre-beam checkout - SXU_HE_08,Metrology,,SLAC,Labor
106135,1.03,1.03.06,1.03.06.20,1.03.06.20.03,1.03.06.20.03,SXR Undulator Installation,AS_SXU_INST_0820,Perform technical checkouts - SXU_HE_08,1.0,4.0,4.0,4.0,12-05-25,12-05-25,0,0,SLAC,0%,52211.52211_EEDOPSE (Electronics & Engineering Div - Ops & PSE),52211_EEDOPSE (Electronics & Engineering Div - Ops & PSE),Labor,0.0d,1.0,1.0,At Completion Units,2/12/2025,2/12/2025,0,0,0,0,0,0,0,0,0,0,1.03_Accelerator Systems (AS),1.03.06_AS Soft X-Ray Undulator (SXR) - SLAC,1.03.06.20_AS Soft X-Ray Undulator Installation - SLAC,1.03.06.20.03_SXR Undulator Installation,AS_SXU_INST_0820_Perform technical checkouts - SXU_HE_08,Electrical,,SLAC,Labor
106136,1.03,1.03.06,1.03.06.20,1.03.06.20.03,1.03.06.20.03,SXR Undulator Installation,AS_SXU_INST_0820,Perform technical checkouts - SXU_HE_08,1.0,8.0,8.0,8.0,12-05-25,12-05-25,0,0,SLAC,0%,52127.52127_Research Electrical & SW Engineer,52127_Research Electrical & SW Engineer,Labor,0.0d,1.0,1.0,At Completion Units,2/12/2025,2/12/2025,0,0,0,0,0,0,0,0,0,0,1.03_Accelerator Systems (AS),1.03.06_AS Soft X-Ray Undulator (SXR) - SLAC,1.03.06.20_AS Soft X-Ray Undulator Installation - SLAC,1.03.06.20.03_SXR Undulator Installation,AS_SXU_INST_0820_Perform technical checkouts - SXU_HE_08,Electrical,,SLAC,Labor
106137,1.03,1.03.06,1.03.06.20,1.03.06.20.03,1.03.06.20.03,SXR Undulator Installation,AS_SXU_INST_0820,Perform technical checkouts - SXU_HE_08,1.0,20.0,20.0,20.0,12-05-25,12-05-25,0,0,SLAC,0%,52213.52213_EEDHW (Electronics & Engineering Div - HW Engr),52213_EEDHW (Electronics & Engineering Div - HW Engr),Labor,0.0d,1.0,1.0,At Completion Units,2/12/2025,2/12/2025,0,0,0,0,0,0,0,0,0,0,1.03_Accelerator Systems (AS),1.03.06_AS Soft X-Ray Undulator (SXR) - SLAC,1.03.06.20_AS Soft X-Ray Undulator Installation - SLAC,1.03.06.20.03_SXR Undulator Installation,AS_SXU_INST_0820_Perform technical checkouts - SXU_HE_08,Electrical,,SLAC,Labor
106138,1.03,1.03.06,1.03.06.20,1.03.06.20.03,1.03.06.20.03,SXR Undulator Installation,AS_SXU_INST_0820,Perform technical checkouts - SXU_HE_08,1.0,6.0,6.0,6.0,12-05-25,12-05-25,0,0,SLAC,0%,52169.52169_METS Mechanical Engineer,52169_METS Mechanical Engineer,Labor,0.0d,1.0,1.0,At Completion Units,2/12/2025,2/12/2025,0,0,0,0,0,0,0,0,0,0,1.03_Accelerator Systems (AS),1.03.06_AS Soft X-Ray Undulator (SXR) - SLAC,1.03.06.20_AS Soft X-Ray Undulator Installation - SLAC,1.03.06.20.03_SXR Undulator Installation,AS_SXU_INST_0820_Perform technical checkouts - SXU_HE_08,Mechanical,,SLAC,Labor
106139,1.03,1.03.06,1.03.06.20,1.03.06.20.03,1.03.06.20.03,SXR Undulator Installation,AS_SXU_INST_0820,Perform technical checkouts - SXU_HE_08,1.0,4.0,4.0,4.0,12-05-25,12-05-25,0,0,SLAC,0%,0106.0106_Staff Scientist,0106_Staff Scientist,Labor,0.0d,1.0,1.0,At Completion Units,2/12/2025,2/12/2025,0,0,0,0,0,0,0,0,0,0,1.03_Accelerator Systems (AS),1.03.06_AS Soft X-Ray Undulator (SXR) - SLAC,1.03.06.20_AS Soft X-Ray Undulator Installation - SLAC,1.03.06.20.03_SXR Undulator Installation,AS_SXU_INST_0820_Perform technical checkouts - SXU_HE_08,Scientist,,SLAC,Labor
106140,1.03,1.03.06,1.03.06.20,1.03.06.20.03,1.03.06.20.03,SXR Undulator Installation,AS_SXU_INST_0820,Perform technical checkouts - SXU_HE_08,1.0,4.0,4.0,4.0,12-05-25,12-05-25,0,0,SLAC,0%,52198.52198_METSMANF (METSD Manufacturing),52198_METSMANF (METSD Manufacturing),Labor,0.0d,1.0,1.0,At Completion Units,2/12/2025,2/12/2025,0,0,0,0,0,0,0,0,0,0,1.03_Accelerator Systems (AS),1.03.06_AS Soft X-Ray Undulator (SXR) - SLAC,1.03.06.20_AS Soft X-Ray Undulator Installation - SLAC,1.03.06.20.03_SXR Undulator Installation,AS_SXU_INST_0820_Perform technical checkouts - SXU_HE_08,Manufacturing,,SLAC,Labor
106141,1.03,1.03.06,1.03.06.20,1.03.06.20.03,1.03.06.20.03,SXR Undulator Installation,AS_SXU_INST_0810,Install Undulator - SXU_HE_08,1.0,12.0,12.0,12.0,12-04-25,12-04-25,0,0,SLAC,0%,52169.52169_METS Mechanical Engineer,52169_METS Mechanical Engineer,Labor,0.0d,1.0,1.0,At Completion Units,2/11/2025,2/11/2025,0,0,0,0,0,0,0,0,0,0,1.03_Accelerator Systems (AS),1.03.06_AS Soft X-Ray Undulator (SXR) - SLAC,1.03.06.20_AS Soft X-Ray Undulator Installation - SLAC,1.03.06.20.03_SXR Undulator Installation,AS_SXU_INST_0810_Install Undulator - SXU_HE_08,Mechanical,,SLAC,Labor
106142,1.03,1.03.06,1.03.06.20,1.03.06.20.03,1.03.06.20.03,SXR Undulator Installation,AS_SXU_INST_0810,Install Undulator - SXU_HE_08,1.0,4.0,4.0,4.0,12-04-25,12-04-25,0,0,SLAC,0%,0106.0106_Staff Scientist,0106_Staff Scientist,Labor,0.0d,1.0,1.0,At Completion Units,2/11/2025,2/11/2025,0,0,0,0,0,0,0,0,0,0,1.03_Accelerator Systems (AS),1.03.06_AS Soft X-Ray Undulator (SXR) - SLAC,1.03.06.20_AS Soft X-Ray Undulator Installation - SLAC,1.03.06.20.03_SXR Undulator Installation,AS_SXU_INST_0810_Install Undulator - SXU_HE_08,Scientist,,SLAC,Labor
106143,1.03,1.03.06,1.03.06.20,1.03.06.20.03,1.03.06.20.03,SXR Undulator Installation,AS_SXU_INST_0810,Install Undulator - SXU_HE_08,1.0,8.0,8.0,8.0,12-04-25,12-04-25,0,0,SLAC,0%,52191.52191_METSMET Metrology,52191_METSMET Metrology,Labor,0.0d,1.0,1.0,At Completion Units,2/11/2025,2/11/2025,0,0,0,0,0,0,0,0,0,0,1.03_Accelerator Systems (AS),1.03.06_AS Soft X-Ray Undulator (SXR) - SLAC,1.03.06.20_AS Soft X-Ray Undulator Installation - SLAC,1.03.06.20.03_SXR Undulator Installation,AS_SXU_INST_0810_Install Undulator - SXU_HE_08,Metrology,,SLAC,Labor
106144,1.03,1.03.06,1.03.06.20,1.03.06.20.03,1.03.06.20.03,SXR Undulator Installation,AS_SXU_INST_0810,Install Undulator - SXU_HE_08,1.0,34.0,34.0,34.0,12-04-25,12-04-25,0,0,SLAC,0%,52198.52198_METSMANF (METSD Manufacturing),52198_METSMANF (METSD Manufacturing),Labor,0.0d,1.0,1.0,At Completion Units,2/11/2025,2/11/2025,0,0,0,0,0,0,0,0,0,0,1.03_Accelerator Systems (AS),1.03.06_AS Soft X-Ray Undulator (SXR) - SLAC,1.03.06.20_AS Soft X-Ray Undulator Installation - SLAC,1.03.06.20.03_SXR Undulator Installation,AS_SXU_INST_0810_Install Undulator - SXU_HE_08,Manufacturing,,SLAC,Labor
106145,1.03,1.03.06,1.03.06.20,1.03.06.20.03,1.03.06.20.03,SXR Undulator Installation,AS_SXU_INST_0805,PAMM Management - SXU_HE_08,3.0,6.0,6.0,6.0,12-04-25,12-08-25,0,0,SLAC,0%,52169.52169_METS Mechanical Engineer,52169_METS Mechanical Engineer,Labor,0.0d,3.0,3.0,At Completion Units,2/11/2025,2/13/2025,0,0,0,0,0,0,0,0,0,0,1.03_Accelerator Systems (AS),1.03.06_AS Soft X-Ray Undulator (SXR) - SLAC,1.03.06.20_AS Soft X-Ray Undulator Installation - SLAC,1.03.06.20.03_SXR Undulator Installation,AS_SXU_INST_0805_PAMM Management - SXU_HE_08,Mechanical,,SLAC,Labor
106146,1.03,1.03.06,1.03.06.20,1.03.06.20.03,1.03.06.20.03,SXR Undulator Installation,AS_SXU_INST_0710,Install Undulator - SXU_HE_07,1.0,2.0,2.0,2.0,10-28-25,10-28-25,0,0,SLAC,0%,52190.52190_METSTP Tech Planning - Reinstated FY16,52190_METSTP Tech Planning - Reinstated FY16,Labor,0.0d,1.0,1.0,At Completion Units,1/6/2025,1/6/2025,0,0,0,0,0,0,0,0,0,0,1.03_Accelerator Systems (AS),1.03.06_AS Soft X-Ray Undulator (SXR) - SLAC,1.03.06.20_AS Soft X-Ray Undulator Installation - SLAC,1.03.06.20.03_SXR Undulator Installation,AS_SXU_INST_0710_Install Undulator - SXU_HE_07,METSTPT Tech Planning,Tech,SLAC,Labor
106147,1.03,1.03.06,1.03.06.20,1.03.06.20.03,1.03.06.20.03,SXR Undulator Installation,AS_SXU_INST_0710,Install Undulator - SXU_HE_07,1.0,12.0,12.0,12.0,10-28-25,10-28-25,0,0,SLAC,0%,52152.52152_FAC Fleet,52152_FAC Fleet,Labor,0.0d,1.0,1.0,At Completion Units,1/6/2025,1/6/2025,0,0,0,0,0,0,0,0,0,0,1.03_Accelerator Systems (AS),1.03.06_AS Soft X-Ray Undulator (SXR) - SLAC,1.03.06.20_AS Soft X-Ray Undulator Installation - SLAC,1.03.06.20.03_SXR Undulator Installation,AS_SXU_INST_0710_Install Undulator - SXU_HE_07,Support System,,SLAC,Labor
106148,1.03,1.03.06,1.03.06.20,1.03.06.20.03,1.03.06.20.03,SXR Undulator Installation,AS_SXU_INST_0705,PAMM Management - SXU_HE_07,3.0,2.0,2.0,2.0,10-28-25,10-30-25,0,0,SLAC,0%,52155.52155_Health Physics Technician III,52155_Health Physics Technician III,Labor,0.0d,3.0,3.0,At Completion Units,1/6/2025,1/8/2025,0,0,0,0,0,0,0,0,0,0,1.03_Accelerator Systems (AS),1.03.06_AS Soft X-Ray Undulator (SXR) - SLAC,1.03.06.20_AS Soft X-Ray Undulator Installation - SLAC,1.03.06.20.03_SXR Undulator Installation,AS_SXU_INST_0705_PAMM Management - SXU_HE_07,Support System,Tech,SLAC,Labor
106149,1.03,1.03.06,1.03.06.20,1.03.06.20.03,1.03.06.20.03,SXR Undulator Installation,AS_SXU_INST_0730,Pre-beam checkout - SXU_HE_07,1.0,5.0,5.0,5.0,10-30-25,10-30-25,0,0,SLAC,0%,52213.52213_EEDHW (Electronics & Engineering Div - HW Engr),52213_EEDHW (Electronics & Engineering Div - HW Engr),Labor,0.0d,1.0,1.0,At Completion Units,1/8/2025,1/8/2025,0,0,0,0,0,0,0,0,0,0,1.03_Accelerator Systems (AS),1.03.06_AS Soft X-Ray Undulator (SXR) - SLAC,1.03.06.20_AS Soft X-Ray Undulator Installation - SLAC,1.03.06.20.03_SXR Undulator Installation,AS_SXU_INST_0730_Pre-beam checkout - SXU_HE_07,Electrical,,SLAC,Labor
106150,1.03,1.03.06,1.03.06.20,1.03.06.20.03,1.03.06.20.03,SXR Undulator Installation,AS_SXU_INST_0730,Pre-beam checkout - SXU_HE_07,1.0,2.0,2.0,2.0,10-30-25,10-30-25,0,0,SLAC,0%,52169.52169_METS Mechanical Engineer,52169_METS Mechanical Engineer,Labor,0.0d,1.0,1.0,At Completion Units,1/8/2025,1/8/2025,0,0,0,0,0,0,0,0,0,0,1.03_Accelerator Systems (AS),1.03.06_AS Soft X-Ray Undulator (SXR) - SLAC,1.03.06.20_AS Soft X-Ray Undulator Installation - SLAC,1.03.06.20.03_SXR Undulator Installation,AS_SXU_INST_0730_Pre-beam checkout - SXU_HE_07,Mechanical,,SLAC,Labor
106151,1.03,1.03.06,1.03.06.20,1.03.06.20.03,1.03.06.20.03,SXR Undulator Installation,AS_SXU_INST_0730,Pre-beam checkout - SXU_HE_07,1.0,8.0,8.0,8.0,10-30-25,10-30-25,0,0,SLAC,0%,0106.0106_Staff Scientist,0106_Staff Scientist,Labor,0.0d,1.0,1.0,At Completion Units,1/8/2025,1/8/2025,0,0,0,0,0,0,0,0,0,0,1.03_Accelerator Systems (AS),1.03.06_AS Soft X-Ray Undulator (SXR) - SLAC,1.03.06.20_AS Soft X-Ray Undulator Installation - SLAC,1.03.06.20.03_SXR Undulator Installation,AS_SXU_INST_0730_Pre-beam checkout - SXU_HE_07,Scientist,,SLAC,Labor
106152,1.03,1.03.06,1.03.06.20,1.03.06.20.03,1.03.06.20.03,SXR Undulator Installation,AS_SXU_INST_0730,Pre-beam checkout - SXU_HE_07,1.0,12.0,12.0,12.0,10-30-25,10-30-25,0,0,SLAC,0%,52191.52191_METSMET Metrology,52191_METSMET Metrology,Labor,0.0d,1.0,1.0,At Completion Units,1/8/2025,1/8/2025,0,0,0,0,0,0,0,0,0,0,1.03_Accelerator Systems (AS),1.03.06_AS Soft X-Ray Undulator (SXR) - SLAC,1.03.06.20_AS Soft X-Ray Undulator Installation - SLAC,1.03.06.20.03_SXR Undulator Installation,AS_SXU_INST_0730_Pre-beam checkout - SXU_HE_07,Metrology,,SLAC,Labor
106153,1.03,1.03.06,1.03.06.20,1.03.06.20.03,1.03.06.20.03,SXR Undulator Installation,AS_SXU_INST_0720,Perform technical checkouts - SXU_HE_07,1.0,4.0,4.0,4.0,10-29-25,10-29-25,0,0,SLAC,0%,52211.52211_EEDOPSE (Electronics & Engineering Div - Ops & PSE),52211_EEDOPSE (Electronics & Engineering Div - Ops & PSE),Labor,0.0d,1.0,1.0,At Completion Units,1/7/2025,1/7/2025,0,0,0,0,0,0,0,0,0,0,1.03_Accelerator Systems (AS),1.03.06_AS Soft X-Ray Undulator (SXR) - SLAC,1.03.06.20_AS Soft X-Ray Undulator Installation - SLAC,1.03.06.20.03_SXR Undulator Installation,AS_SXU_INST_0720_Perform technical checkouts - SXU_HE_07,Electrical,,SLAC,Labor
106154,1.03,1.03.06,1.03.06.20,1.03.06.20.03,1.03.06.20.03,SXR Undulator Installation,AS_SXU_INST_0720,Perform technical checkouts - SXU_HE_07,1.0,8.0,8.0,8.0,10-29-25,10-29-25,0,0,SLAC,0%,52127.52127_Research Electrical & SW Engineer,52127_Research Electrical & SW Engineer,Labor,0.0d,1.0,1.0,At Completion Units,1/7/2025,1/7/2025,0,0,0,0,0,0,0,0,0,0,1.03_Accelerator Systems (AS),1.03.06_AS Soft X-Ray Undulator (SXR) - SLAC,1.03.06.20_AS Soft X-Ray Undulator Installation - SLAC,1.03.06.20.03_SXR Undulator Installation,AS_SXU_INST_0720_Perform technical checkouts - SXU_HE_07,Electrical,,SLAC,Labor
106155,1.03,1.03.06,1.03.06.20,1.03.06.20.03,1.03.06.20.03,SXR Undulator Installation,AS_SXU_INST_0720,Perform technical checkouts - SXU_HE_07,1.0,20.0,20.0,20.0,10-29-25,10-29-25,0,0,SLAC,0%,52213.52213_EEDHW (Electronics & Engineering Div - HW Engr),52213_EEDHW (Electronics & Engineering Div - HW Engr),Labor,0.0d,1.0,1.0,At Completion Units,1/7/2025,1/7/2025,0,0,0,0,0,0,0,0,0,0,1.03_Accelerator Systems (AS),1.03.06_AS Soft X-Ray Undulator (SXR) - SLAC,1.03.06.20_AS Soft X-Ray Undulator Installation - SLAC,1.03.06.20.03_SXR Undulator Installation,AS_SXU_INST_0720_Perform technical checkouts - SXU_HE_07,Electrical,,SLAC,Labor
106156,1.03,1.03.06,1.03.06.20,1.03.06.20.03,1.03.06.20.03,SXR Undulator Installation,AS_SXU_INST_0720,Perform technical checkouts - SXU_HE_07,1.0,6.0,6.0,6.0,10-29-25,10-29-25,0,0,SLAC,0%,52169.52169_METS Mechanical Engineer,52169_METS Mechanical Engineer,Labor,0.0d,1.0,1.0,At Completion Units,1/7/2025,1/7/2025,0,0,0,0,0,0,0,0,0,0,1.03_Accelerator Systems (AS),1.03.06_AS Soft X-Ray Undulator (SXR) - SLAC,1.03.06.20_AS Soft X-Ray Undulator Installation - SLAC,1.03.06.20.03_SXR Undulator Installation,AS_SXU_INST_0720_Perform technical checkouts - SXU_HE_07,Mechanical,,SLAC,Labor
106157,1.03,1.03.06,1.03.06.20,1.03.06.20.03,1.03.06.20.03,SXR Undulator Installation,AS_SXU_INST_0720,Perform technical checkouts - SXU_HE_07,1.0,4.0,4.0,4.0,10-29-25,10-29-25,0,0,SLAC,0%,0106.0106_Staff Scientist,0106_Staff Scientist,Labor,0.0d,1.0,1.0,At Completion Units,1/7/2025,1/7/2025,0,0,0,0,0,0,0,0,0,0,1.03_Accelerator Systems (AS),1.03.06_AS Soft X-Ray Undulator (SXR) - SLAC,1.03.06.20_AS Soft X-Ray Undulator Installation - SLAC,1.03.06.20.03_SXR Undulator Installation,AS_SXU_INST_0720_Perform technical checkouts - SXU_HE_07,Scientist,,SLAC,Labor
106158,1.03,1.03.06,1.03.06.20,1.03.06.20.03,1.03.06.20.03,SXR Undulator Installation,AS_SXU_INST_0720,Perform technical checkouts - SXU_HE_07,1.0,4.0,4.0,4.0,10-29-25,10-29-25,0,0,SLAC,0%,52198.52198_METSMANF (METSD Manufacturing),52198_METSMANF (METSD Manufacturing),Labor,0.0d,1.0,1.0,At Completion Units,1/7/2025,1/7/2025,0,0,0,0,0,0,0,0,0,0,1.03_Accelerator Systems (AS),1.03.06_AS Soft X-Ray Undulator (SXR) - SLAC,1.03.06.20_AS Soft X-Ray Undulator Installation - SLAC,1.03.06.20.03_SXR Undulator Installation,AS_SXU_INST_0720_Perform technical checkouts - SXU_HE_07,Manufacturing,,SLAC,Labor
106159,1.03,1.03.06,1.03.06.20,1.03.06.20.03,1.03.06.20.03,SXR Undulator Installation,AS_SXU_INST_0710,Install Undulator - SXU_HE_07,1.0,12.0,12.0,12.0,10-28-25,10-28-25,0,0,SLAC,0%,52169.52169_METS Mechanical Engineer,52169_METS Mechanical Engineer,Labor,0.0d,1.0,1.0,At Completion Units,1/6/2025,1/6/2025,0,0,0,0,0,0,0,0,0,0,1.03_Accelerator Systems (AS),1.03.06_AS Soft X-Ray Undulator (SXR) - SLAC,1.03.06.20_AS Soft X-Ray Undulator Installation - SLAC,1.03.06.20.03_SXR Undulator Installation,AS_SXU_INST_0710_Install Undulator - SXU_HE_07,Mechanical,,SLAC,Labor
106160,1.03,1.03.06,1.03.06.20,1.03.06.20.03,1.03.06.20.03,SXR Undulator Installation,AS_SXU_INST_0710,Install Undulator - SXU_HE_07,1.0,4.0,4.0,4.0,10-28-25,10-28-25,0,0,SLAC,0%,0106.0106_Staff Scientist,0106_Staff Scientist,Labor,0.0d,1.0,1.0,At Completion Units,1/6/2025,1/6/2025,0,0,0,0,0,0,0,0,0,0,1.03_Accelerator Systems (AS),1.03.06_AS Soft X-Ray Undulator (SXR) - SLAC,1.03.06.20_AS Soft X-Ray Undulator Installation - SLAC,1.03.06.20.03_SXR Undulator Installation,AS_SXU_INST_0710_Install Undulator - SXU_HE_07,Scientist,,SLAC,Labor
106161,1.03,1.03.06,1.03.06.20,1.03.06.20.03,1.03.06.20.03,SXR Undulator Installation,AS_SXU_INST_0710,Install Undulator - SXU_HE_07,1.0,8.0,8.0,8.0,10-28-25,10-28-25,0,0,SLAC,0%,52191.52191_METSMET Metrology,52191_METSMET Metrology,Labor,0.0d,1.0,1.0,At Completion Units,1/6/2025,1/6/2025,0,0,0,0,0,0,0,0,0,0,1.03_Accelerator Systems (AS),1.03.06_AS Soft X-Ray Undulator (SXR) - SLAC,1.03.06.20_AS Soft X-Ray Undulator Installation - SLAC,1.03.06.20.03_SXR Undulator Installation,AS_SXU_INST_0710_Install Undulator - SXU_HE_07,Metrology,,SLAC,Labor
106162,1.03,1.03.06,1.03.06.20,1.03.06.20.03,1.03.06.20.03,SXR Undulator Installation,AS_SXU_INST_0710,Install Undulator - SXU_HE_07,1.0,34.0,34.0,34.0,10-28-25,10-28-25,0,0,SLAC,0%,52198.52198_METSMANF (METSD Manufacturing),52198_METSMANF (METSD Manufacturing),Labor,0.0d,1.0,1.0,At Completion Units,1/6/2025,1/6/2025,0,0,0,0,0,0,0,0,0,0,1.03_Accelerator Systems (AS),1.03.06_AS Soft X-Ray Undulator (SXR) - SLAC,1.03.06.20_AS Soft X-Ray Undulator Installation - SLAC,1.03.06.20.03_SXR Undulator Installation,AS_SXU_INST_0710_Install Undulator - SXU_HE_07,Manufacturing,,SLAC,Labor
106163,1.03,1.03.06,1.03.06.20,1.03.06.20.03,1.03.06.20.03,SXR Undulator Installation,AS_SXU_INST_0705,PAMM Management - SXU_HE_07,3.0,6.0,6.0,6.0,10-28-25,10-30-25,0,0,SLAC,0%,52169.52169_METS Mechanical Engineer,52169_METS Mechanical Engineer,Labor,0.0d,3.0,3.0,At Completion Units,1/6/2025,1/8/2025,0,0,0,0,0,0,0,0,0,0,1.03_Accelerator Systems (AS),1.03.06_AS Soft X-Ray Undulator (SXR) - SLAC,1.03.06.20_AS Soft X-Ray Undulator Installation - SLAC,1.03.06.20.03_SXR Undulator Installation,AS_SXU_INST_0705_PAMM Management - SXU_HE_07,Mechanical,,SLAC,Labor
106164,1.03,1.03.06,1.03.06.20,1.03.06.20.03,1.03.06.20.03,SXR Undulator Installation,AS_SXU_INST_0610,Install Undulator - SXU_HE_06,1.0,2.0,2.0,2.0,09-23-25,09-23-25,0,0,SLAC,0%,52190.52190_METSTP Tech Planning - Reinstated FY16,52190_METSTP Tech Planning - Reinstated FY16,Labor,0.0d,1.0,1.0,At Completion Units,11/14/2024,11/14/2024,0,0,0,0,0,0,0,0,0,0,1.03_Accelerator Systems (AS),1.03.06_AS Soft X-Ray Undulator (SXR) - SLAC,1.03.06.20_AS Soft X-Ray Undulator Installation - SLAC,1.03.06.20.03_SXR Undulator Installation,AS_SXU_INST_0610_Install Undulator - SXU_HE_06,METSTPT Tech Planning,Tech,SLAC,Labor
106165,1.03,1.03.06,1.03.06.20,1.03.06.20.03,1.03.06.20.03,SXR Undulator Installation,AS_SXU_INST_0610,Install Undulator - SXU_HE_06,1.0,12.0,12.0,12.0,09-23-25,09-23-25,0,0,SLAC,0%,52152.52152_FAC Fleet,52152_FAC Fleet,Labor,0.0d,1.0,1.0,At Completion Units,11/14/2024,11/14/2024,0,0,0,0,0,0,0,0,0,0,1.03_Accelerator Systems (AS),1.03.06_AS Soft X-Ray Undulator (SXR) - SLAC,1.03.06.20_AS Soft X-Ray Undulator Installation - SLAC,1.03.06.20.03_SXR Undulator Installation,AS_SXU_INST_0610_Install Undulator - SXU_HE_06,Support System,,SLAC,Labor
106166,1.03,1.03.06,1.03.06.20,1.03.06.20.03,1.03.06.20.03,SXR Undulator Installation,AS_SXU_INST_0605,PAMM Management - SXU_HE_06,3.0,2.0,2.0,2.0,09-23-25,09-25-25,0,0,SLAC,0%,52155.52155_Health Physics Technician III,52155_Health Physics Technician III,Labor,0.0d,3.0,3.0,At Completion Units,11/14/2024,11/18/2024,0,0,0,0,0,0,0,0,0,0,1.03_Accelerator Systems (AS),1.03.06_AS Soft X-Ray Undulator (SXR) - SLAC,1.03.06.20_AS Soft X-Ray Undulator Installation - SLAC,1.03.06.20.03_SXR Undulator Installation,AS_SXU_INST_0605_PAMM Management - SXU_HE_06,Support System,Tech,SLAC,Labor
106167,1.03,1.03.06,1.03.06.20,1.03.06.20.03,1.03.06.20.03,SXR Undulator Installation,AS_SXU_INST_0630,Pre-beam checkout - SXU_HE_06,1.0,5.0,5.0,5.0,09-25-25,09-25-25,0,0,SLAC,0%,52213.52213_EEDHW (Electronics & Engineering Div - HW Engr),52213_EEDHW (Electronics & Engineering Div - HW Engr),Labor,0.0d,1.0,1.0,At Completion Units,11/18/2024,11/18/2024,0,0,0,0,0,0,0,0,0,0,1.03_Accelerator Systems (AS),1.03.06_AS Soft X-Ray Undulator (SXR) - SLAC,1.03.06.20_AS Soft X-Ray Undulator Installation - SLAC,1.03.06.20.03_SXR Undulator Installation,AS_SXU_INST_0630_Pre-beam checkout - SXU_HE_06,Electrical,,SLAC,Labor
106168,1.03,1.03.06,1.03.06.20,1.03.06.20.03,1.03.06.20.03,SXR Undulator Installation,AS_SXU_INST_0630,Pre-beam checkout - SXU_HE_06,1.0,2.0,2.0,2.0,09-25-25,09-25-25,0,0,SLAC,0%,52169.52169_METS Mechanical Engineer,52169_METS Mechanical Engineer,Labor,0.0d,1.0,1.0,At Completion Units,11/18/2024,11/18/2024,0,0,0,0,0,0,0,0,0,0,1.03_Accelerator Systems (AS),1.03.06_AS Soft X-Ray Undulator (SXR) - SLAC,1.03.06.20_AS Soft X-Ray Undulator Installation - SLAC,1.03.06.20.03_SXR Undulator Installation,AS_SXU_INST_0630_Pre-beam checkout - SXU_HE_06,Mechanical,,SLAC,Labor
106169,1.03,1.03.06,1.03.06.20,1.03.06.20.03,1.03.06.20.03,SXR Undulator Installation,AS_SXU_INST_0630,Pre-beam checkout - SXU_HE_06,1.0,8.0,8.0,8.0,09-25-25,09-25-25,0,0,SLAC,0%,0106.0106_Staff Scientist,0106_Staff Scientist,Labor,0.0d,1.0,1.0,At Completion Units,11/18/2024,11/18/2024,0,0,0,0,0,0,0,0,0,0,1.03_Accelerator Systems (AS),1.03.06_AS Soft X-Ray Undulator (SXR) - SLAC,1.03.06.20_AS Soft X-Ray Undulator Installation - SLAC,1.03.06.20.03_SXR Undulator Installation,AS_SXU_INST_0630_Pre-beam checkout - SXU_HE_06,Scientist,,SLAC,Labor
106170,1.03,1.03.06,1.03.06.20,1.03.06.20.03,1.03.06.20.03,SXR Undulator Installation,AS_SXU_INST_0630,Pre-beam checkout - SXU_HE_06,1.0,12.0,12.0,12.0,09-25-25,09-25-25,0,0,SLAC,0%,52191.52191_METSMET Metrology,52191_METSMET Metrology,Labor,0.0d,1.0,1.0,At Completion Units,11/18/2024,11/18/2024,0,0,0,0,0,0,0,0,0,0,1.03_Accelerator Systems (AS),1.03.06_AS Soft X-Ray Undulator (SXR) - SLAC,1.03.06.20_AS Soft X-Ray Undulator Installation - SLAC,1.03.06.20.03_SXR Undulator Installation,AS_SXU_INST_0630_Pre-beam checkout - SXU_HE_06,Metrology,,SLAC,Labor
106171,1.03,1.03.06,1.03.06.20,1.03.06.20.03,1.03.06.20.03,SXR Undulator Installation,AS_SXU_INST_0620,Perform technical checkouts - SXU_HE_06,1.0,4.0,4.0,4.0,09-24-25,09-24-25,0,0,SLAC,0%,52211.52211_EEDOPSE (Electronics & Engineering Div - Ops & PSE),52211_EEDOPSE (Electronics & Engineering Div - Ops & PSE),Labor,0.0d,1.0,1.0,At Completion Units,11/15/2024,11/15/2024,0,0,0,0,0,0,0,0,0,0,1.03_Accelerator Systems (AS),1.03.06_AS Soft X-Ray Undulator (SXR) - SLAC,1.03.06.20_AS Soft X-Ray Undulator Installation - SLAC,1.03.06.20.03_SXR Undulator Installation,AS_SXU_INST_0620_Perform technical checkouts - SXU_HE_06,Electrical,,SLAC,Labor
106172,1.03,1.03.06,1.03.06.20,1.03.06.20.03,1.03.06.20.03,SXR Undulator Installation,AS_SXU_INST_0620,Perform technical checkouts - SXU_HE_06,1.0,8.0,8.0,8.0,09-24-25,09-24-25,0,0,SLAC,0%,52127.52127_Research Electrical & SW Engineer,52127_Research Electrical & SW Engineer,Labor,0.0d,1.0,1.0,At Completion Units,11/15/2024,11/15/2024,0,0,0,0,0,0,0,0,0,0,1.03_Accelerator Systems (AS),1.03.06_AS Soft X-Ray Undulator (SXR) - SLAC,1.03.06.20_AS Soft X-Ray Undulator Installation - SLAC,1.03.06.20.03_SXR Undulator Installation,AS_SXU_INST_0620_Perform technical checkouts - SXU_HE_06,Electrical,,SLAC,Labor
106173,1.03,1.03.06,1.03.06.20,1.03.06.20.03,1.03.06.20.03,SXR Undulator Installation,AS_SXU_INST_0620,Perform technical checkouts - SXU_HE_06,1.0,20.0,20.0,20.0,09-24-25,09-24-25,0,0,SLAC,0%,52213.52213_EEDHW (Electronics & Engineering Div - HW Engr),52213_EEDHW (Electronics & Engineering Div - HW Engr),Labor,0.0d,1.0,1.0,At Completion Units,11/15/2024,11/15/2024,0,0,0,0,0,0,0,0,0,0,1.03_Accelerator Systems (AS),1.03.06_AS Soft X-Ray Undulator (SXR) - SLAC,1.03.06.20_AS Soft X-Ray Undulator Installation - SLAC,1.03.06.20.03_SXR Undulator Installation,AS_SXU_INST_0620_Perform technical checkouts - SXU_HE_06,Electrical,,SLAC,Labor
106174,1.03,1.03.06,1.03.06.20,1.03.06.20.03,1.03.06.20.03,SXR Undulator Installation,AS_SXU_INST_0620,Perform technical checkouts - SXU_HE_06,1.0,6.0,6.0,6.0,09-24-25,09-24-25,0,0,SLAC,0%,52169.52169_METS Mechanical Engineer,52169_METS Mechanical Engineer,Labor,0.0d,1.0,1.0,At Completion Units,11/15/2024,11/15/2024,0,0,0,0,0,0,0,0,0,0,1.03_Accelerator Systems (AS),1.03.06_AS Soft X-Ray Undulator (SXR) - SLAC,1.03.06.20_AS Soft X-Ray Undulator Installation - SLAC,1.03.06.20.03_SXR Undulator Installation,AS_SXU_INST_0620_Perform technical checkouts - SXU_HE_06,Mechanical,,SLAC,Labor
106175,1.03,1.03.06,1.03.06.20,1.03.06.20.03,1.03.06.20.03,SXR Undulator Installation,AS_SXU_INST_0620,Perform technical checkouts - SXU_HE_06,1.0,4.0,4.0,4.0,09-24-25,09-24-25,0,0,SLAC,0%,0106.0106_Staff Scientist,0106_Staff Scientist,Labor,0.0d,1.0,1.0,At Completion Units,11/15/2024,11/15/2024,0,0,0,0,0,0,0,0,0,0,1.03_Accelerator Systems (AS),1.03.06_AS Soft X-Ray Undulator (SXR) - SLAC,1.03.06.20_AS Soft X-Ray Undulator Installation - SLAC,1.03.06.20.03_SXR Undulator Installation,AS_SXU_INST_0620_Perform technical checkouts - SXU_HE_06,Scientist,,SLAC,Labor
106176,1.03,1.03.06,1.03.06.20,1.03.06.20.03,1.03.06.20.03,SXR Undulator Installation,AS_SXU_INST_0620,Perform technical checkouts - SXU_HE_06,1.0,4.0,4.0,4.0,09-24-25,09-24-25,0,0,SLAC,0%,52198.52198_METSMANF (METSD Manufacturing),52198_METSMANF (METSD Manufacturing),Labor,0.0d,1.0,1.0,At Completion Units,11/15/2024,11/15/2024,0,0,0,0,0,0,0,0,0,0,1.03_Accelerator Systems (AS),1.03.06_AS Soft X-Ray Undulator (SXR) - SLAC,1.03.06.20_AS Soft X-Ray Undulator Installation - SLAC,1.03.06.20.03_SXR Undulator Installation,AS_SXU_INST_0620_Perform technical checkouts - SXU_HE_06,Manufacturing,,SLAC,Labor
106177,1.03,1.03.06,1.03.06.20,1.03.06.20.03,1.03.06.20.03,SXR Undulator Installation,AS_SXU_INST_0610,Install Undulator - SXU_HE_06,1.0,12.0,12.0,12.0,09-23-25,09-23-25,0,0,SLAC,0%,52169.52169_METS Mechanical Engineer,52169_METS Mechanical Engineer,Labor,0.0d,1.0,1.0,At Completion Units,11/14/2024,11/14/2024,0,0,0,0,0,0,0,0,0,0,1.03_Accelerator Systems (AS),1.03.06_AS Soft X-Ray Undulator (SXR) - SLAC,1.03.06.20_AS Soft X-Ray Undulator Installation - SLAC,1.03.06.20.03_SXR Undulator Installation,AS_SXU_INST_0610_Install Undulator - SXU_HE_06,Mechanical,,SLAC,Labor
106178,1.03,1.03.06,1.03.06.20,1.03.06.20.03,1.03.06.20.03,SXR Undulator Installation,AS_SXU_INST_0610,Install Undulator - SXU_HE_06,1.0,4.0,4.0,4.0,09-23-25,09-23-25,0,0,SLAC,0%,0106.0106_Staff Scientist,0106_Staff Scientist,Labor,0.0d,1.0,1.0,At Completion Units,11/14/2024,11/14/2024,0,0,0,0,0,0,0,0,0,0,1.03_Accelerator Systems (AS),1.03.06_AS Soft X-Ray Undulator (SXR) - SLAC,1.03.06.20_AS Soft X-Ray Undulator Installation - SLAC,1.03.06.20.03_SXR Undulator Installation,AS_SXU_INST_0610_Install Undulator - SXU_HE_06,Scientist,,SLAC,Labor
106179,1.03,1.03.06,1.03.06.20,1.03.06.20.03,1.03.06.20.03,SXR Undulator Installation,AS_SXU_INST_0610,Install Undulator - SXU_HE_06,1.0,8.0,8.0,8.0,09-23-25,09-23-25,0,0,SLAC,0%,52191.52191_METSMET Metrology,52191_METSMET Metrology,Labor,0.0d,1.0,1.0,At Completion Units,11/14/2024,11/14/2024,0,0,0,0,0,0,0,0,0,0,1.03_Accelerator Systems (AS),1.03.06_AS Soft X-Ray Undulator (SXR) - SLAC,1.03.06.20_AS Soft X-Ray Undulator Installation - SLAC,1.03.06.20.03_SXR Undulator Installation,AS_SXU_INST_0610_Install Undulator - SXU_HE_06,Metrology,,SLAC,Labor
106180,1.03,1.03.06,1.03.06.20,1.03.06.20.03,1.03.06.20.03,SXR Undulator Installation,AS_SXU_INST_0610,Install Undulator - SXU_HE_06,1.0,34.0,34.0,34.0,09-23-25,09-23-25,0,0,SLAC,0%,52198.52198_METSMANF (METSD Manufacturing),52198_METSMANF (METSD Manufacturing),Labor,0.0d,1.0,1.0,At Completion Units,11/14/2024,11/14/2024,0,0,0,0,0,0,0,0,0,0,1.03_Accelerator Systems (AS),1.03.06_AS Soft X-Ray Undulator (SXR) - SLAC,1.03.06.20_AS Soft X-Ray Undulator Installation - SLAC,1.03.06.20.03_SXR Undulator Installation,AS_SXU_INST_0610_Install Undulator - SXU_HE_06,Manufacturing,,SLAC,Labor
106181,1.03,1.03.06,1.03.06.20,1.03.06.20.03,1.03.06.20.03,SXR Undulator Installation,AS_SXU_INST_0605,PAMM Management - SXU_HE_06,3.0,6.0,6.0,6.0,09-23-25,09-25-25,0,0,SLAC,0%,52169.52169_METS Mechanical Engineer,52169_METS Mechanical Engineer,Labor,0.0d,3.0,3.0,At Completion Units,11/14/2024,11/18/2024,0,0,0,0,0,0,0,0,0,0,1.03_Accelerator Systems (AS),1.03.06_AS Soft X-Ray Undulator (SXR) - SLAC,1.03.06.20_AS Soft X-Ray Undulator Installation - SLAC,1.03.06.20.03_SXR Undulator Installation,AS_SXU_INST_0605_PAMM Management - SXU_HE_06,Mechanical,,SLAC,Labor
106182,1.03,1.03.06,1.03.06.20,1.03.06.20.03,1.03.06.20.03,SXR Undulator Installation,AS_SXU_INST_0510,Install Undulator - SXU_HE_05,1.0,2.0,2.0,2.0,08-08-25,08-08-25,0,0,SLAC,0%,52190.52190_METSTP Tech Planning - Reinstated FY16,52190_METSTP Tech Planning - Reinstated FY16,Labor,0.0d,1.0,1.0,At Completion Units,11/5/2024,11/6/2024,0,0,0,0,0,0,0,0,0,0,1.03_Accelerator Systems (AS),1.03.06_AS Soft X-Ray Undulator (SXR) - SLAC,1.03.06.20_AS Soft X-Ray Undulator Installation - SLAC,1.03.06.20.03_SXR Undulator Installation,AS_SXU_INST_0510_Install Undulator - SXU_HE_05,METSTPT Tech Planning,Tech,SLAC,Labor
106183,1.03,1.03.06,1.03.06.20,1.03.06.20.03,1.03.06.20.03,SXR Undulator Installation,AS_SXU_INST_0510,Install Undulator - SXU_HE_05,1.0,12.0,12.0,12.0,08-08-25,08-08-25,0,0,SLAC,0%,52152.52152_FAC Fleet,52152_FAC Fleet,Labor,0.0d,1.0,1.0,At Completion Units,11/5/2024,11/6/2024,0,0,0,0,0,0,0,0,0,0,1.03_Accelerator Systems (AS),1.03.06_AS Soft X-Ray Undulator (SXR) - SLAC,1.03.06.20_AS Soft X-Ray Undulator Installation - SLAC,1.03.06.20.03_SXR Undulator Installation,AS_SXU_INST_0510_Install Undulator - SXU_HE_05,Support System,,SLAC,Labor
106184,1.03,1.03.06,1.03.06.20,1.03.06.20.03,1.03.06.20.03,SXR Undulator Installation,AS_SXU_INST_0505,PAMM Management - SXU_HE_05,3.0,2.0,2.0,2.0,08-08-25,08-12-25,0,0,SLAC,0%,52155.52155_Health Physics Technician III,52155_Health Physics Technician III,Labor,0.0d,3.0,3.0,At Completion Units,11/5/2024,11/8/2024,0,0,0,0,0,0,0,0,0,0,1.03_Accelerator Systems (AS),1.03.06_AS Soft X-Ray Undulator (SXR) - SLAC,1.03.06.20_AS Soft X-Ray Undulator Installation - SLAC,1.03.06.20.03_SXR Undulator Installation,AS_SXU_INST_0505_PAMM Management - SXU_HE_05,Support System,Tech,SLAC,Labor
106185,1.03,1.03.06,1.03.06.20,1.03.06.20.03,1.03.06.20.03,SXR Undulator Installation,AS_SXU_INST_0530,Pre-beam checkout - SXU_HE_05,1.0,5.0,5.0,5.0,08-12-25,08-12-25,0,0,SLAC,0%,52213.52213_EEDHW (Electronics & Engineering Div - HW Engr),52213_EEDHW (Electronics & Engineering Div - HW Engr),Labor,0.0d,1.0,1.0,At Completion Units,11/7/2024,11/8/2024,0,0,0,0,0,0,0,0,0,0,1.03_Accelerator Systems (AS),1.03.06_AS Soft X-Ray Undulator (SXR) - SLAC,1.03.06.20_AS Soft X-Ray Undulator Installation - SLAC,1.03.06.20.03_SXR Undulator Installation,AS_SXU_INST_0530_Pre-beam checkout - SXU_HE_05,Electrical,,SLAC,Labor
106186,1.03,1.03.06,1.03.06.20,1.03.06.20.03,1.03.06.20.03,SXR Undulator Installation,AS_SXU_INST_0530,Pre-beam checkout - SXU_HE_05,1.0,2.0,2.0,2.0,08-12-25,08-12-25,0,0,SLAC,0%,52169.52169_METS Mechanical Engineer,52169_METS Mechanical Engineer,Labor,0.0d,1.0,1.0,At Completion Units,11/7/2024,11/8/2024,0,0,0,0,0,0,0,0,0,0,1.03_Accelerator Systems (AS),1.03.06_AS Soft X-Ray Undulator (SXR) - SLAC,1.03.06.20_AS Soft X-Ray Undulator Installation - SLAC,1.03.06.20.03_SXR Undulator Installation,AS_SXU_INST_0530_Pre-beam checkout - SXU_HE_05,Mechanical,,SLAC,Labor
106187,1.03,1.03.06,1.03.06.20,1.03.06.20.03,1.03.06.20.03,SXR Undulator Installation,AS_SXU_INST_0530,Pre-beam checkout - SXU_HE_05,1.0,8.0,8.0,8.0,08-12-25,08-12-25,0,0,SLAC,0%,0106.0106_Staff Scientist,0106_Staff Scientist,Labor,0.0d,1.0,1.0,At Completion Units,11/7/2024,11/8/2024,0,0,0,0,0,0,0,0,0,0,1.03_Accelerator Systems (AS),1.03.06_AS Soft X-Ray Undulator (SXR) - SLAC,1.03.06.20_AS Soft X-Ray Undulator Installation - SLAC,1.03.06.20.03_SXR Undulator Installation,AS_SXU_INST_0530_Pre-beam checkout - SXU_HE_05,Scientist,,SLAC,Labor
106188,1.03,1.03.06,1.03.06.20,1.03.06.20.03,1.03.06.20.03,SXR Undulator Installation,AS_SXU_INST_0530,Pre-beam checkout - SXU_HE_05,1.0,12.0,12.0,12.0,08-12-25,08-12-25,0,0,SLAC,0%,52191.52191_METSMET Metrology,52191_METSMET Metrology,Labor,0.0d,1.0,1.0,At Completion Units,11/7/2024,11/8/2024,0,0,0,0,0,0,0,0,0,0,1.03_Accelerator Systems (AS),1.03.06_AS Soft X-Ray Undulator (SXR) - SLAC,1.03.06.20_AS Soft X-Ray Undulator Installation - SLAC,1.03.06.20.03_SXR Undulator Installation,AS_SXU_INST_0530_Pre-beam checkout - SXU_HE_05,Metrology,,SLAC,Labor
106189,1.03,1.03.06,1.03.06.20,1.03.06.20.03,1.03.06.20.03,SXR Undulator Installation,AS_SXU_INST_0520,Perform technical checkouts - SXU_HE_05,1.0,4.0,4.0,4.0,08-11-25,08-11-25,0,0,SLAC,0%,52211.52211_EEDOPSE (Electronics & Engineering Div - Ops & PSE),52211_EEDOPSE (Electronics & Engineering Div - Ops & PSE),Labor,0.0d,1.0,1.0,At Completion Units,11/6/2024,11/7/2024,0,0,0,0,0,0,0,0,0,0,1.03_Accelerator Systems (AS),1.03.06_AS Soft X-Ray Undulator (SXR) - SLAC,1.03.06.20_AS Soft X-Ray Undulator Installation - SLAC,1.03.06.20.03_SXR Undulator Installation,AS_SXU_INST_0520_Perform technical checkouts - SXU_HE_05,Electrical,,SLAC,Labor
106190,1.03,1.03.06,1.03.06.20,1.03.06.20.03,1.03.06.20.03,SXR Undulator Installation,AS_SXU_INST_0520,Perform technical checkouts - SXU_HE_05,1.0,8.0,8.0,8.0,08-11-25,08-11-25,0,0,SLAC,0%,52127.52127_Research Electrical & SW Engineer,52127_Research Electrical & SW Engineer,Labor,0.0d,1.0,1.0,At Completion Units,11/6/2024,11/7/2024,0,0,0,0,0,0,0,0,0,0,1.03_Accelerator Systems (AS),1.03.06_AS Soft X-Ray Undulator (SXR) - SLAC,1.03.06.20_AS Soft X-Ray Undulator Installation - SLAC,1.03.06.20.03_SXR Undulator Installation,AS_SXU_INST_0520_Perform technical checkouts - SXU_HE_05,Electrical,,SLAC,Labor
106191,1.03,1.03.06,1.03.06.20,1.03.06.20.03,1.03.06.20.03,SXR Undulator Installation,AS_SXU_INST_0520,Perform technical checkouts - SXU_HE_05,1.0,20.0,20.0,20.0,08-11-25,08-11-25,0,0,SLAC,0%,52213.52213_EEDHW (Electronics & Engineering Div - HW Engr),52213_EEDHW (Electronics & Engineering Div - HW Engr),Labor,0.0d,1.0,1.0,At Completion Units,11/6/2024,11/7/2024,0,0,0,0,0,0,0,0,0,0,1.03_Accelerator Systems (AS),1.03.06_AS Soft X-Ray Undulator (SXR) - SLAC,1.03.06.20_AS Soft X-Ray Undulator Installation - SLAC,1.03.06.20.03_SXR Undulator Installation,AS_SXU_INST_0520_Perform technical checkouts - SXU_HE_05,Electrical,,SLAC,Labor
106192,1.03,1.03.06,1.03.06.20,1.03.06.20.03,1.03.06.20.03,SXR Undulator Installation,AS_SXU_INST_0520,Perform technical checkouts - SXU_HE_05,1.0,6.0,6.0,6.0,08-11-25,08-11-25,0,0,SLAC,0%,52169.52169_METS Mechanical Engineer,52169_METS Mechanical Engineer,Labor,0.0d,1.0,1.0,At Completion Units,11/6/2024,11/7/2024,0,0,0,0,0,0,0,0,0,0,1.03_Accelerator Systems (AS),1.03.06_AS Soft X-Ray Undulator (SXR) - SLAC,1.03.06.20_AS Soft X-Ray Undulator Installation - SLAC,1.03.06.20.03_SXR Undulator Installation,AS_SXU_INST_0520_Perform technical checkouts - SXU_HE_05,Mechanical,,SLAC,Labor
106193,1.03,1.03.06,1.03.06.20,1.03.06.20.03,1.03.06.20.03,SXR Undulator Installation,AS_SXU_INST_0520,Perform technical checkouts - SXU_HE_05,1.0,4.0,4.0,4.0,08-11-25,08-11-25,0,0,SLAC,0%,0106.0106_Staff Scientist,0106_Staff Scientist,Labor,0.0d,1.0,1.0,At Completion Units,11/6/2024,11/7/2024,0,0,0,0,0,0,0,0,0,0,1.03_Accelerator Systems (AS),1.03.06_AS Soft X-Ray Undulator (SXR) - SLAC,1.03.06.20_AS Soft X-Ray Undulator Installation - SLAC,1.03.06.20.03_SXR Undulator Installation,AS_SXU_INST_0520_Perform technical checkouts - SXU_HE_05,Scientist,,SLAC,Labor
106194,1.03,1.03.06,1.03.06.20,1.03.06.20.03,1.03.06.20.03,SXR Undulator Installation,AS_SXU_INST_0520,Perform technical checkouts - SXU_HE_05,1.0,4.0,4.0,4.0,08-11-25,08-11-25,0,0,SLAC,0%,52198.52198_METSMANF (METSD Manufacturing),52198_METSMANF (METSD Manufacturing),Labor,0.0d,1.0,1.0,At Completion Units,11/6/2024,11/7/2024,0,0,0,0,0,0,0,0,0,0,1.03_Accelerator Systems (AS),1.03.06_AS Soft X-Ray Undulator (SXR) - SLAC,1.03.06.20_AS Soft X-Ray Undulator Installation - SLAC,1.03.06.20.03_SXR Undulator Installation,AS_SXU_INST_0520_Perform technical checkouts - SXU_HE_05,Manufacturing,,SLAC,Labor
106195,1.03,1.03.06,1.03.06.20,1.03.06.20.03,1.03.06.20.03,SXR Undulator Installation,AS_SXU_INST_0510,Install Undulator - SXU_HE_05,1.0,12.0,12.0,12.0,08-08-25,08-08-25,0,0,SLAC,0%,52169.52169_METS Mechanical Engineer,52169_METS Mechanical Engineer,Labor,0.0d,1.0,1.0,At Completion Units,11/5/2024,11/6/2024,0,0,0,0,0,0,0,0,0,0,1.03_Accelerator Systems (AS),1.03.06_AS Soft X-Ray Undulator (SXR) - SLAC,1.03.06.20_AS Soft X-Ray Undulator Installation - SLAC,1.03.06.20.03_SXR Undulator Installation,AS_SXU_INST_0510_Install Undulator - SXU_HE_05,Mechanical,,SLAC,Labor
106196,1.03,1.03.06,1.03.06.20,1.03.06.20.03,1.03.06.20.03,SXR Undulator Installation,AS_SXU_INST_0510,Install Undulator - SXU_HE_05,1.0,4.0,4.0,4.0,08-08-25,08-08-25,0,0,SLAC,0%,0106.0106_Staff Scientist,0106_Staff Scientist,Labor,0.0d,1.0,1.0,At Completion Units,11/5/2024,11/6/2024,0,0,0,0,0,0,0,0,0,0,1.03_Accelerator Systems (AS),1.03.06_AS Soft X-Ray Undulator (SXR) - SLAC,1.03.06.20_AS Soft X-Ray Undulator Installation - SLAC,1.03.06.20.03_SXR Undulator Installation,AS_SXU_INST_0510_Install Undulator - SXU_HE_05,Scientist,,SLAC,Labor
106197,1.03,1.03.06,1.03.06.20,1.03.06.20.03,1.03.06.20.03,SXR Undulator Installation,AS_SXU_INST_0510,Install Undulator - SXU_HE_05,1.0,8.0,8.0,8.0,08-08-25,08-08-25,0,0,SLAC,0%,52191.52191_METSMET Metrology,52191_METSMET Metrology,Labor,0.0d,1.0,1.0,At Completion Units,11/5/2024,11/6/2024,0,0,0,0,0,0,0,0,0,0,1.03_Accelerator Systems (AS),1.03.06_AS Soft X-Ray Undulator (SXR) - SLAC,1.03.06.20_AS Soft X-Ray Undulator Installation - SLAC,1.03.06.20.03_SXR Undulator Installation,AS_SXU_INST_0510_Install Undulator - SXU_HE_05,Metrology,,SLAC,Labor
106198,1.03,1.03.06,1.03.06.20,1.03.06.20.03,1.03.06.20.03,SXR Undulator Installation,AS_SXU_INST_0510,Install Undulator - SXU_HE_05,1.0,34.0,34.0,34.0,08-08-25,08-08-25,0,0,SLAC,0%,52198.52198_METSMANF (METSD Manufacturing),52198_METSMANF (METSD Manufacturing),Labor,0.0d,1.0,1.0,At Completion Units,11/5/2024,11/6/2024,0,0,0,0,0,0,0,0,0,0,1.03_Accelerator Systems (AS),1.03.06_AS Soft X-Ray Undulator (SXR) - SLAC,1.03.06.20_AS Soft X-Ray Undulator Installation - SLAC,1.03.06.20.03_SXR Undulator Installation,AS_SXU_INST_0510_Install Undulator - SXU_HE_05,Manufacturing,,SLAC,Labor
106199,1.03,1.03.06,1.03.06.20,1.03.06.20.03,1.03.06.20.03,SXR Undulator Installation,AS_SXU_INST_0505,PAMM Management - SXU_HE_05,3.0,6.0,6.0,6.0,08-08-25,08-12-25,0,0,SLAC,0%,52169.52169_METS Mechanical Engineer,52169_METS Mechanical Engineer,Labor,0.0d,3.0,3.0,At Completion Units,11/5/2024,11/8/2024,0,0,0,0,0,0,0,0,0,0,1.03_Accelerator Systems (AS),1.03.06_AS Soft X-Ray Undulator (SXR) - SLAC,1.03.06.20_AS Soft X-Ray Undulator Installation - SLAC,1.03.06.20.03_SXR Undulator Installation,AS_SXU_INST_0505_PAMM Management - SXU_HE_05,Mechanical,,SLAC,Labor
106200,1.03,1.03.06,1.03.06.20,1.03.06.20.03,1.03.06.20.03,SXR Undulator Installation,AS_SXU_INST_0410,Install Undulator - SXU_HE_04,1.0,2.0,2.0,2.0,07-03-25,07-03-25,0,0,SLAC,0%,52190.52190_METSTP Tech Planning - Reinstated FY16,52190_METSTP Tech Planning - Reinstated FY16,Labor,0.0d,1.0,1.0,At Completion Units,8/27/2024,8/27/2024,0,0,0,0,0,0,0,0,0,0,1.03_Accelerator Systems (AS),1.03.06_AS Soft X-Ray Undulator (SXR) - SLAC,1.03.06.20_AS Soft X-Ray Undulator Installation - SLAC,1.03.06.20.03_SXR Undulator Installation,AS_SXU_INST_0410_Install Undulator - SXU_HE_04,METSTPT Tech Planning,Tech,SLAC,Labor
106201,1.03,1.03.06,1.03.06.20,1.03.06.20.03,1.03.06.20.03,SXR Undulator Installation,AS_SXU_INST_0410,Install Undulator - SXU_HE_04,1.0,12.0,12.0,12.0,07-03-25,07-03-25,0,0,SLAC,0%,52152.52152_FAC Fleet,52152_FAC Fleet,Labor,0.0d,1.0,1.0,At Completion Units,8/27/2024,8/27/2024,0,0,0,0,0,0,0,0,0,0,1.03_Accelerator Systems (AS),1.03.06_AS Soft X-Ray Undulator (SXR) - SLAC,1.03.06.20_AS Soft X-Ray Undulator Installation - SLAC,1.03.06.20.03_SXR Undulator Installation,AS_SXU_INST_0410_Install Undulator - SXU_HE_04,Support System,,SLAC,Labor
106202,1.03,1.03.06,1.03.06.20,1.03.06.20.03,1.03.06.20.03,SXR Undulator Installation,AS_SXU_INST_0405,PAMM Management - SXU_HE_04,3.0,2.0,2.0,2.0,07-03-25,07-08-25,0,0,SLAC,0%,52155.52155_Health Physics Technician III,52155_Health Physics Technician III,Labor,0.0d,3.0,3.0,At Completion Units,8/27/2024,8/29/2024,0,0,0,0,0,0,0,0,0,0,1.03_Accelerator Systems (AS),1.03.06_AS Soft X-Ray Undulator (SXR) - SLAC,1.03.06.20_AS Soft X-Ray Undulator Installation - SLAC,1.03.06.20.03_SXR Undulator Installation,AS_SXU_INST_0405_PAMM Management - SXU_HE_04,Support System,Tech,SLAC,Labor
106203,1.03,1.03.06,1.03.06.20,1.03.06.20.03,1.03.06.20.03,SXR Undulator Installation,AS_SXU_INST_0430,Pre-beam checkout - SXU_HE_04,1.0,5.0,5.0,5.0,07-08-25,07-08-25,0,0,SLAC,0%,52213.52213_EEDHW (Electronics & Engineering Div - HW Engr),52213_EEDHW (Electronics & Engineering Div - HW Engr),Labor,0.0d,1.0,1.0,At Completion Units,8/29/2024,8/29/2024,0,0,0,0,0,0,0,0,0,0,1.03_Accelerator Systems (AS),1.03.06_AS Soft X-Ray Undulator (SXR) - SLAC,1.03.06.20_AS Soft X-Ray Undulator Installation - SLAC,1.03.06.20.03_SXR Undulator Installation,AS_SXU_INST_0430_Pre-beam checkout - SXU_HE_04,Electrical,,SLAC,Labor
106204,1.03,1.03.06,1.03.06.20,1.03.06.20.03,1.03.06.20.03,SXR Undulator Installation,AS_SXU_INST_0430,Pre-beam checkout - SXU_HE_04,1.0,2.0,2.0,2.0,07-08-25,07-08-25,0,0,SLAC,0%,52169.52169_METS Mechanical Engineer,52169_METS Mechanical Engineer,Labor,0.0d,1.0,1.0,At Completion Units,8/29/2024,8/29/2024,0,0,0,0,0,0,0,0,0,0,1.03_Accelerator Systems (AS),1.03.06_AS Soft X-Ray Undulator (SXR) - SLAC,1.03.06.20_AS Soft X-Ray Undulator Installation - SLAC,1.03.06.20.03_SXR Undulator Installation,AS_SXU_INST_0430_Pre-beam checkout - SXU_HE_04,Mechanical,,SLAC,Labor
106205,1.03,1.03.06,1.03.06.20,1.03.06.20.03,1.03.06.20.03,SXR Undulator Installation,AS_SXU_INST_0430,Pre-beam checkout - SXU_HE_04,1.0,8.0,8.0,8.0,07-08-25,07-08-25,0,0,SLAC,0%,0106.0106_Staff Scientist,0106_Staff Scientist,Labor,0.0d,1.0,1.0,At Completion Units,8/29/2024,8/29/2024,0,0,0,0,0,0,0,0,0,0,1.03_Accelerator Systems (AS),1.03.06_AS Soft X-Ray Undulator (SXR) - SLAC,1.03.06.20_AS Soft X-Ray Undulator Installation - SLAC,1.03.06.20.03_SXR Undulator Installation,AS_SXU_INST_0430_Pre-beam checkout - SXU_HE_04,Scientist,,SLAC,Labor
106206,1.03,1.03.06,1.03.06.20,1.03.06.20.03,1.03.06.20.03,SXR Undulator Installation,AS_SXU_INST_0430,Pre-beam checkout - SXU_HE_04,1.0,12.0,12.0,12.0,07-08-25,07-08-25,0,0,SLAC,0%,52191.52191_METSMET Metrology,52191_METSMET Metrology,Labor,0.0d,1.0,1.0,At Completion Units,8/29/2024,8/29/2024,0,0,0,0,0,0,0,0,0,0,1.03_Accelerator Systems (AS),1.03.06_AS Soft X-Ray Undulator (SXR) - SLAC,1.03.06.20_AS Soft X-Ray Undulator Installation - SLAC,1.03.06.20.03_SXR Undulator Installation,AS_SXU_INST_0430_Pre-beam checkout - SXU_HE_04,Metrology,,SLAC,Labor
106207,1.03,1.03.06,1.03.06.20,1.03.06.20.03,1.03.06.20.03,SXR Undulator Installation,AS_SXU_INST_0420,Perform technical checkouts - SXU_HE_04,1.0,4.0,4.0,4.0,07-07-25,07-07-25,0,0,SLAC,0%,52211.52211_EEDOPSE (Electronics & Engineering Div - Ops & PSE),52211_EEDOPSE (Electronics & Engineering Div - Ops & PSE),Labor,0.0d,1.0,1.0,At Completion Units,8/28/2024,8/28/2024,0,0,0,0,0,0,0,0,0,0,1.03_Accelerator Systems (AS),1.03.06_AS Soft X-Ray Undulator (SXR) - SLAC,1.03.06.20_AS Soft X-Ray Undulator Installation - SLAC,1.03.06.20.03_SXR Undulator Installation,AS_SXU_INST_0420_Perform technical checkouts - SXU_HE_04,Electrical,,SLAC,Labor
106208,1.03,1.03.06,1.03.06.20,1.03.06.20.03,1.03.06.20.03,SXR Undulator Installation,AS_SXU_INST_0420,Perform technical checkouts - SXU_HE_04,1.0,8.0,8.0,8.0,07-07-25,07-07-25,0,0,SLAC,0%,52127.52127_Research Electrical & SW Engineer,52127_Research Electrical & SW Engineer,Labor,0.0d,1.0,1.0,At Completion Units,8/28/2024,8/28/2024,0,0,0,0,0,0,0,0,0,0,1.03_Accelerator Systems (AS),1.03.06_AS Soft X-Ray Undulator (SXR) - SLAC,1.03.06.20_AS Soft X-Ray Undulator Installation - SLAC,1.03.06.20.03_SXR Undulator Installation,AS_SXU_INST_0420_Perform technical checkouts - SXU_HE_04,Electrical,,SLAC,Labor
106209,1.03,1.03.06,1.03.06.20,1.03.06.20.03,1.03.06.20.03,SXR Undulator Installation,AS_SXU_INST_0420,Perform technical checkouts - SXU_HE_04,1.0,20.0,20.0,20.0,07-07-25,07-07-25,0,0,SLAC,0%,52213.52213_EEDHW (Electronics & Engineering Div - HW Engr),52213_EEDHW (Electronics & Engineering Div - HW Engr),Labor,0.0d,1.0,1.0,At Completion Units,8/28/2024,8/28/2024,0,0,0,0,0,0,0,0,0,0,1.03_Accelerator Systems (AS),1.03.06_AS Soft X-Ray Undulator (SXR) - SLAC,1.03.06.20_AS Soft X-Ray Undulator Installation - SLAC,1.03.06.20.03_SXR Undulator Installation,AS_SXU_INST_0420_Perform technical checkouts - SXU_HE_04,Electrical,,SLAC,Labor
106210,1.03,1.03.06,1.03.06.20,1.03.06.20.03,1.03.06.20.03,SXR Undulator Installation,AS_SXU_INST_0420,Perform technical checkouts - SXU_HE_04,1.0,6.0,6.0,6.0,07-07-25,07-07-25,0,0,SLAC,0%,52169.52169_METS Mechanical Engineer,52169_METS Mechanical Engineer,Labor,0.0d,1.0,1.0,At Completion Units,8/28/2024,8/28/2024,0,0,0,0,0,0,0,0,0,0,1.03_Accelerator Systems (AS),1.03.06_AS Soft X-Ray Undulator (SXR) - SLAC,1.03.06.20_AS Soft X-Ray Undulator Installation - SLAC,1.03.06.20.03_SXR Undulator Installation,AS_SXU_INST_0420_Perform technical checkouts - SXU_HE_04,Mechanical,,SLAC,Labor
106211,1.03,1.03.06,1.03.06.20,1.03.06.20.03,1.03.06.20.03,SXR Undulator Installation,AS_SXU_INST_0420,Perform technical checkouts - SXU_HE_04,1.0,4.0,4.0,4.0,07-07-25,07-07-25,0,0,SLAC,0%,0106.0106_Staff Scientist,0106_Staff Scientist,Labor,0.0d,1.0,1.0,At Completion Units,8/28/2024,8/28/2024,0,0,0,0,0,0,0,0,0,0,1.03_Accelerator Systems (AS),1.03.06_AS Soft X-Ray Undulator (SXR) - SLAC,1.03.06.20_AS Soft X-Ray Undulator Installation - SLAC,1.03.06.20.03_SXR Undulator Installation,AS_SXU_INST_0420_Perform technical checkouts - SXU_HE_04,Scientist,,SLAC,Labor
106212,1.03,1.03.06,1.03.06.20,1.03.06.20.03,1.03.06.20.03,SXR Undulator Installation,AS_SXU_INST_0420,Perform technical checkouts - SXU_HE_04,1.0,4.0,4.0,4.0,07-07-25,07-07-25,0,0,SLAC,0%,52198.52198_METSMANF (METSD Manufacturing),52198_METSMANF (METSD Manufacturing),Labor,0.0d,1.0,1.0,At Completion Units,8/28/2024,8/28/2024,0,0,0,0,0,0,0,0,0,0,1.03_Accelerator Systems (AS),1.03.06_AS Soft X-Ray Undulator (SXR) - SLAC,1.03.06.20_AS Soft X-Ray Undulator Installation - SLAC,1.03.06.20.03_SXR Undulator Installation,AS_SXU_INST_0420_Perform technical checkouts - SXU_HE_04,Manufacturing,,SLAC,Labor
106213,1.03,1.03.06,1.03.06.20,1.03.06.20.03,1.03.06.20.03,SXR Undulator Installation,AS_SXU_INST_0410,Install Undulator - SXU_HE_04,1.0,12.0,12.0,12.0,07-03-25,07-03-25,0,0,SLAC,0%,52169.52169_METS Mechanical Engineer,52169_METS Mechanical Engineer,Labor,0.0d,1.0,1.0,At Completion Units,8/27/2024,8/27/2024,0,0,0,0,0,0,0,0,0,0,1.03_Accelerator Systems (AS),1.03.06_AS Soft X-Ray Undulator (SXR) - SLAC,1.03.06.20_AS Soft X-Ray Undulator Installation - SLAC,1.03.06.20.03_SXR Undulator Installation,AS_SXU_INST_0410_Install Undulator - SXU_HE_04,Mechanical,,SLAC,Labor
106214,1.03,1.03.06,1.03.06.20,1.03.06.20.03,1.03.06.20.03,SXR Undulator Installation,AS_SXU_INST_0410,Install Undulator - SXU_HE_04,1.0,4.0,4.0,4.0,07-03-25,07-03-25,0,0,SLAC,0%,0106.0106_Staff Scientist,0106_Staff Scientist,Labor,0.0d,1.0,1.0,At Completion Units,8/27/2024,8/27/2024,0,0,0,0,0,0,0,0,0,0,1.03_Accelerator Systems (AS),1.03.06_AS Soft X-Ray Undulator (SXR) - SLAC,1.03.06.20_AS Soft X-Ray Undulator Installation - SLAC,1.03.06.20.03_SXR Undulator Installation,AS_SXU_INST_0410_Install Undulator - SXU_HE_04,Scientist,,SLAC,Labor
106215,1.03,1.03.06,1.03.06.20,1.03.06.20.03,1.03.06.20.03,SXR Undulator Installation,AS_SXU_INST_0410,Install Undulator - SXU_HE_04,1.0,8.0,8.0,8.0,07-03-25,07-03-25,0,0,SLAC,0%,52191.52191_METSMET Metrology,52191_METSMET Metrology,Labor,0.0d,1.0,1.0,At Completion Units,8/27/2024,8/27/2024,0,0,0,0,0,0,0,0,0,0,1.03_Accelerator Systems (AS),1.03.06_AS Soft X-Ray Undulator (SXR) - SLAC,1.03.06.20_AS Soft X-Ray Undulator Installation - SLAC,1.03.06.20.03_SXR Undulator Installation,AS_SXU_INST_0410_Install Undulator - SXU_HE_04,Metrology,,SLAC,Labor
106216,1.03,1.03.06,1.03.06.20,1.03.06.20.03,1.03.06.20.03,SXR Undulator Installation,AS_SXU_INST_0410,Install Undulator - SXU_HE_04,1.0,34.0,34.0,34.0,07-03-25,07-03-25,0,0,SLAC,0%,52198.52198_METSMANF (METSD Manufacturing),52198_METSMANF (METSD Manufacturing),Labor,0.0d,1.0,1.0,At Completion Units,8/27/2024,8/27/2024,0,0,0,0,0,0,0,0,0,0,1.03_Accelerator Systems (AS),1.03.06_AS Soft X-Ray Undulator (SXR) - SLAC,1.03.06.20_AS Soft X-Ray Undulator Installation - SLAC,1.03.06.20.03_SXR Undulator Installation,AS_SXU_INST_0410_Install Undulator - SXU_HE_04,Manufacturing,,SLAC,Labor
106217,1.03,1.03.06,1.03.06.20,1.03.06.20.03,1.03.06.20.03,SXR Undulator Installation,AS_SXU_INST_0405,PAMM Management - SXU_HE_04,3.0,6.0,6.0,6.0,07-03-25,07-08-25,0,0,SLAC,0%,52169.52169_METS Mechanical Engineer,52169_METS Mechanical Engineer,Labor,0.0d,3.0,3.0,At Completion Units,8/27/2024,8/29/2024,0,0,0,0,0,0,0,0,0,0,1.03_Accelerator Systems (AS),1.03.06_AS Soft X-Ray Undulator (SXR) - SLAC,1.03.06.20_AS Soft X-Ray Undulator Installation - SLAC,1.03.06.20.03_SXR Undulator Installation,AS_SXU_INST_0405_PAMM Management - SXU_HE_04,Mechanical,,SLAC,Labor
106218,1.03,1.03.06,1.03.06.20,1.03.06.20.03,1.03.06.20.03,SXR Undulator Installation,AS_SXU_INST_0310,Install Undulator - SXU_HE_03,1.0,2.0,2.0,2.0,05-29-25,05-29-25,0,0,SLAC,0%,52190.52190_METSTP Tech Planning - Reinstated FY16,52190_METSTP Tech Planning - Reinstated FY16,Labor,0.0d,1.0,1.0,At Completion Units,8/26/2024,8/27/2024,0,0,0,0,0,0,0,0,0,0,1.03_Accelerator Systems (AS),1.03.06_AS Soft X-Ray Undulator (SXR) - SLAC,1.03.06.20_AS Soft X-Ray Undulator Installation - SLAC,1.03.06.20.03_SXR Undulator Installation,AS_SXU_INST_0310_Install Undulator - SXU_HE_03,METSTPT Tech Planning,Tech,SLAC,Labor
106219,1.03,1.03.06,1.03.06.20,1.03.06.20.03,1.03.06.20.03,SXR Undulator Installation,AS_SXU_INST_0310,Install Undulator - SXU_HE_03,1.0,12.0,12.0,12.0,05-29-25,05-29-25,0,0,SLAC,0%,52152.52152_FAC Fleet,52152_FAC Fleet,Labor,0.0d,1.0,1.0,At Completion Units,8/26/2024,8/27/2024,0,0,0,0,0,0,0,0,0,0,1.03_Accelerator Systems (AS),1.03.06_AS Soft X-Ray Undulator (SXR) - SLAC,1.03.06.20_AS Soft X-Ray Undulator Installation - SLAC,1.03.06.20.03_SXR Undulator Installation,AS_SXU_INST_0310_Install Undulator - SXU_HE_03,Support System,,SLAC,Labor
106220,1.03,1.03.06,1.03.06.20,1.03.06.20.03,1.03.06.20.03,SXR Undulator Installation,AS_SXU_INST_0305,PAMM Management - SXU_HE_03,3.0,2.0,2.0,2.0,05-29-25,06-02-25,0,0,SLAC,0%,52155.52155_Health Physics Technician III,52155_Health Physics Technician III,Labor,0.0d,3.0,3.0,At Completion Units,8/26/2024,8/29/2024,0,0,0,0,0,0,0,0,0,0,1.03_Accelerator Systems (AS),1.03.06_AS Soft X-Ray Undulator (SXR) - SLAC,1.03.06.20_AS Soft X-Ray Undulator Installation - SLAC,1.03.06.20.03_SXR Undulator Installation,AS_SXU_INST_0305_PAMM Management - SXU_HE_03,Support System,Tech,SLAC,Labor
106221,1.03,1.03.06,1.03.06.20,1.03.06.20.03,1.03.06.20.03,SXR Undulator Installation,AS_SXU_INST_0330,Pre-beam checkout - SXU_HE_03,1.0,5.0,5.0,5.0,06-02-25,06-02-25,0,0,SLAC,0%,52213.52213_EEDHW (Electronics & Engineering Div - HW Engr),52213_EEDHW (Electronics & Engineering Div - HW Engr),Labor,0.0d,1.0,1.0,At Completion Units,8/28/2024,8/29/2024,0,0,0,0,0,0,0,0,0,0,1.03_Accelerator Systems (AS),1.03.06_AS Soft X-Ray Undulator (SXR) - SLAC,1.03.06.20_AS Soft X-Ray Undulator Installation - SLAC,1.03.06.20.03_SXR Undulator Installation,AS_SXU_INST_0330_Pre-beam checkout - SXU_HE_03,Electrical,,SLAC,Labor
106222,1.03,1.03.06,1.03.06.20,1.03.06.20.03,1.03.06.20.03,SXR Undulator Installation,AS_SXU_INST_0330,Pre-beam checkout - SXU_HE_03,1.0,2.0,2.0,2.0,06-02-25,06-02-25,0,0,SLAC,0%,52169.52169_METS Mechanical Engineer,52169_METS Mechanical Engineer,Labor,0.0d,1.0,1.0,At Completion Units,8/28/2024,8/29/2024,0,0,0,0,0,0,0,0,0,0,1.03_Accelerator Systems (AS),1.03.06_AS Soft X-Ray Undulator (SXR) - SLAC,1.03.06.20_AS Soft X-Ray Undulator Installation - SLAC,1.03.06.20.03_SXR Undulator Installation,AS_SXU_INST_0330_Pre-beam checkout - SXU_HE_03,Mechanical,,SLAC,Labor
106223,1.03,1.03.06,1.03.06.20,1.03.06.20.03,1.03.06.20.03,SXR Undulator Installation,AS_SXU_INST_0330,Pre-beam checkout - SXU_HE_03,1.0,8.0,8.0,8.0,06-02-25,06-02-25,0,0,SLAC,0%,0106.0106_Staff Scientist,0106_Staff Scientist,Labor,0.0d,1.0,1.0,At Completion Units,8/28/2024,8/29/2024,0,0,0,0,0,0,0,0,0,0,1.03_Accelerator Systems (AS),1.03.06_AS Soft X-Ray Undulator (SXR) - SLAC,1.03.06.20_AS Soft X-Ray Undulator Installation - SLAC,1.03.06.20.03_SXR Undulator Installation,AS_SXU_INST_0330_Pre-beam checkout - SXU_HE_03,Scientist,,SLAC,Labor
106224,1.03,1.03.06,1.03.06.20,1.03.06.20.03,1.03.06.20.03,SXR Undulator Installation,AS_SXU_INST_0330,Pre-beam checkout - SXU_HE_03,1.0,12.0,12.0,12.0,06-02-25,06-02-25,0,0,SLAC,0%,52191.52191_METSMET Metrology,52191_METSMET Metrology,Labor,0.0d,1.0,1.0,At Completion Units,8/28/2024,8/29/2024,0,0,0,0,0,0,0,0,0,0,1.03_Accelerator Systems (AS),1.03.06_AS Soft X-Ray Undulator (SXR) - SLAC,1.03.06.20_AS Soft X-Ray Undulator Installation - SLAC,1.03.06.20.03_SXR Undulator Installation,AS_SXU_INST_0330_Pre-beam checkout - SXU_HE_03,Metrology,,SLAC,Labor
106225,1.03,1.03.06,1.03.06.20,1.03.06.20.03,1.03.06.20.03,SXR Undulator Installation,AS_SXU_INST_0320,Perform technical checkouts - SXU_HE_03,1.0,4.0,4.0,4.0,05-30-25,05-30-25,0,0,SLAC,0%,52211.52211_EEDOPSE (Electronics & Engineering Div - Ops & PSE),52211_EEDOPSE (Electronics & Engineering Div - Ops & PSE),Labor,0.0d,1.0,1.0,At Completion Units,8/27/2024,8/28/2024,0,0,0,0,0,0,0,0,0,0,1.03_Accelerator Systems (AS),1.03.06_AS Soft X-Ray Undulator (SXR) - SLAC,1.03.06.20_AS Soft X-Ray Undulator Installation - SLAC,1.03.06.20.03_SXR Undulator Installation,AS_SXU_INST_0320_Perform technical checkouts - SXU_HE_03,Electrical,,SLAC,Labor
106226,1.03,1.03.06,1.03.06.20,1.03.06.20.03,1.03.06.20.03,SXR Undulator Installation,AS_SXU_INST_0320,Perform technical checkouts - SXU_HE_03,1.0,8.0,8.0,8.0,05-30-25,05-30-25,0,0,SLAC,0%,52127.52127_Research Electrical & SW Engineer,52127_Research Electrical & SW Engineer,Labor,0.0d,1.0,1.0,At Completion Units,8/27/2024,8/28/2024,0,0,0,0,0,0,0,0,0,0,1.03_Accelerator Systems (AS),1.03.06_AS Soft X-Ray Undulator (SXR) - SLAC,1.03.06.20_AS Soft X-Ray Undulator Installation - SLAC,1.03.06.20.03_SXR Undulator Installation,AS_SXU_INST_0320_Perform technical checkouts - SXU_HE_03,Electrical,,SLAC,Labor
106227,1.03,1.03.06,1.03.06.20,1.03.06.20.03,1.03.06.20.03,SXR Undulator Installation,AS_SXU_INST_0320,Perform technical checkouts - SXU_HE_03,1.0,20.0,20.0,20.0,05-30-25,05-30-25,0,0,SLAC,0%,52213.52213_EEDHW (Electronics & Engineering Div - HW Engr),52213_EEDHW (Electronics & Engineering Div - HW Engr),Labor,0.0d,1.0,1.0,At Completion Units,8/27/2024,8/28/2024,0,0,0,0,0,0,0,0,0,0,1.03_Accelerator Systems (AS),1.03.06_AS Soft X-Ray Undulator (SXR) - SLAC,1.03.06.20_AS Soft X-Ray Undulator Installation - SLAC,1.03.06.20.03_SXR Undulator Installation,AS_SXU_INST_0320_Perform technical checkouts - SXU_HE_03,Electrical,,SLAC,Labor
106228,1.03,1.03.06,1.03.06.20,1.03.06.20.03,1.03.06.20.03,SXR Undulator Installation,AS_SXU_INST_0320,Perform technical checkouts - SXU_HE_03,1.0,6.0,6.0,6.0,05-30-25,05-30-25,0,0,SLAC,0%,52169.52169_METS Mechanical Engineer,52169_METS Mechanical Engineer,Labor,0.0d,1.0,1.0,At Completion Units,8/27/2024,8/28/2024,0,0,0,0,0,0,0,0,0,0,1.03_Accelerator Systems (AS),1.03.06_AS Soft X-Ray Undulator (SXR) - SLAC,1.03.06.20_AS Soft X-Ray Undulator Installation - SLAC,1.03.06.20.03_SXR Undulator Installation,AS_SXU_INST_0320_Perform technical checkouts - SXU_HE_03,Mechanical,,SLAC,Labor
106229,1.03,1.03.06,1.03.06.20,1.03.06.20.03,1.03.06.20.03,SXR Undulator Installation,AS_SXU_INST_0320,Perform technical checkouts - SXU_HE_03,1.0,4.0,4.0,4.0,05-30-25,05-30-25,0,0,SLAC,0%,0106.0106_Staff Scientist,0106_Staff Scientist,Labor,0.0d,1.0,1.0,At Completion Units,8/27/2024,8/28/2024,0,0,0,0,0,0,0,0,0,0,1.03_Accelerator Systems (AS),1.03.06_AS Soft X-Ray Undulator (SXR) - SLAC,1.03.06.20_AS Soft X-Ray Undulator Installation - SLAC,1.03.06.20.03_SXR Undulator Installation,AS_SXU_INST_0320_Perform technical checkouts - SXU_HE_03,Scientist,,SLAC,Labor
106230,1.03,1.03.06,1.03.06.20,1.03.06.20.03,1.03.06.20.03,SXR Undulator Installation,AS_SXU_INST_0320,Perform technical checkouts - SXU_HE_03,1.0,4.0,4.0,4.0,05-30-25,05-30-25,0,0,SLAC,0%,52198.52198_METSMANF (METSD Manufacturing),52198_METSMANF (METSD Manufacturing),Labor,0.0d,1.0,1.0,At Completion Units,8/27/2024,8/28/2024,0,0,0,0,0,0,0,0,0,0,1.03_Accelerator Systems (AS),1.03.06_AS Soft X-Ray Undulator (SXR) - SLAC,1.03.06.20_AS Soft X-Ray Undulator Installation - SLAC,1.03.06.20.03_SXR Undulator Installation,AS_SXU_INST_0320_Perform technical checkouts - SXU_HE_03,Manufacturing,,SLAC,Labor
106231,1.03,1.03.06,1.03.06.20,1.03.06.20.03,1.03.06.20.03,SXR Undulator Installation,AS_SXU_INST_0310,Install Undulator - SXU_HE_03,1.0,12.0,12.0,12.0,05-29-25,05-29-25,0,0,SLAC,0%,52169.52169_METS Mechanical Engineer,52169_METS Mechanical Engineer,Labor,0.0d,1.0,1.0,At Completion Units,8/26/2024,8/27/2024,0,0,0,0,0,0,0,0,0,0,1.03_Accelerator Systems (AS),1.03.06_AS Soft X-Ray Undulator (SXR) - SLAC,1.03.06.20_AS Soft X-Ray Undulator Installation - SLAC,1.03.06.20.03_SXR Undulator Installation,AS_SXU_INST_0310_Install Undulator - SXU_HE_03,Mechanical,,SLAC,Labor
106232,1.03,1.03.06,1.03.06.20,1.03.06.20.03,1.03.06.20.03,SXR Undulator Installation,AS_SXU_INST_0310,Install Undulator - SXU_HE_03,1.0,4.0,4.0,4.0,05-29-25,05-29-25,0,0,SLAC,0%,0106.0106_Staff Scientist,0106_Staff Scientist,Labor,0.0d,1.0,1.0,At Completion Units,8/26/2024,8/27/2024,0,0,0,0,0,0,0,0,0,0,1.03_Accelerator Systems (AS),1.03.06_AS Soft X-Ray Undulator (SXR) - SLAC,1.03.06.20_AS Soft X-Ray Undulator Installation - SLAC,1.03.06.20.03_SXR Undulator Installation,AS_SXU_INST_0310_Install Undulator - SXU_HE_03,Scientist,,SLAC,Labor
106233,1.03,1.03.06,1.03.06.20,1.03.06.20.03,1.03.06.20.03,SXR Undulator Installation,AS_SXU_INST_0310,Install Undulator - SXU_HE_03,1.0,8.0,8.0,8.0,05-29-25,05-29-25,0,0,SLAC,0%,52191.52191_METSMET Metrology,52191_METSMET Metrology,Labor,0.0d,1.0,1.0,At Completion Units,8/26/2024,8/27/2024,0,0,0,0,0,0,0,0,0,0,1.03_Accelerator Systems (AS),1.03.06_AS Soft X-Ray Undulator (SXR) - SLAC,1.03.06.20_AS Soft X-Ray Undulator Installation - SLAC,1.03.06.20.03_SXR Undulator Installation,AS_SXU_INST_0310_Install Undulator - SXU_HE_03,Metrology,,SLAC,Labor
106234,1.03,1.03.06,1.03.06.20,1.03.06.20.03,1.03.06.20.03,SXR Undulator Installation,AS_SXU_INST_0310,Install Undulator - SXU_HE_03,1.0,34.0,34.0,34.0,05-29-25,05-29-25,0,0,SLAC,0%,52198.52198_METSMANF (METSD Manufacturing),52198_METSMANF (METSD Manufacturing),Labor,0.0d,1.0,1.0,At Completion Units,8/26/2024,8/27/2024,0,0,0,0,0,0,0,0,0,0,1.03_Accelerator Systems (AS),1.03.06_AS Soft X-Ray Undulator (SXR) - SLAC,1.03.06.20_AS Soft X-Ray Undulator Installation - SLAC,1.03.06.20.03_SXR Undulator Installation,AS_SXU_INST_0310_Install Undulator - SXU_HE_03,Manufacturing,,SLAC,Labor
106235,1.03,1.03.06,1.03.06.20,1.03.06.20.03,1.03.06.20.03,SXR Undulator Installation,AS_SXU_INST_0305,PAMM Management - SXU_HE_03,3.0,6.0,6.0,6.0,05-29-25,06-02-25,0,0,SLAC,0%,52169.52169_METS Mechanical Engineer,52169_METS Mechanical Engineer,Labor,0.0d,3.0,3.0,At Completion Units,8/26/2024,8/29/2024,0,0,0,0,0,0,0,0,0,0,1.03_Accelerator Systems (AS),1.03.06_AS Soft X-Ray Undulator (SXR) - SLAC,1.03.06.20_AS Soft X-Ray Undulator Installation - SLAC,1.03.06.20.03_SXR Undulator Installation,AS_SXU_INST_0305_PAMM Management - SXU_HE_03,Mechanical,,SLAC,Labor
106236,1.03,1.03.06,1.03.06.20,1.03.06.20.03,1.03.06.20.03,SXR Undulator Installation,AS_SXU_INST_0210,Install Undulator - SXU_HE_02,1.0,2.0,2.0,2.0,04-23-25,04-23-25,0,0,SLAC,0%,52190.52190_METSTP Tech Planning - Reinstated FY16,52190_METSTP Tech Planning - Reinstated FY16,Labor,0.0d,1.0,1.0,At Completion Units,6/20/2024,6/21/2024,0,0,0,0,0,0,0,0,0,0,1.03_Accelerator Systems (AS),1.03.06_AS Soft X-Ray Undulator (SXR) - SLAC,1.03.06.20_AS Soft X-Ray Undulator Installation - SLAC,1.03.06.20.03_SXR Undulator Installation,AS_SXU_INST_0210_Install Undulator - SXU_HE_02,METSTPT Tech Planning,Tech,SLAC,Labor
106237,1.03,1.03.06,1.03.06.20,1.03.06.20.03,1.03.06.20.03,SXR Undulator Installation,AS_SXU_INST_0210,Install Undulator - SXU_HE_02,1.0,12.0,12.0,12.0,04-23-25,04-23-25,0,0,SLAC,0%,52152.52152_FAC Fleet,52152_FAC Fleet,Labor,0.0d,1.0,1.0,At Completion Units,6/20/2024,6/21/2024,0,0,0,0,0,0,0,0,0,0,1.03_Accelerator Systems (AS),1.03.06_AS Soft X-Ray Undulator (SXR) - SLAC,1.03.06.20_AS Soft X-Ray Undulator Installation - SLAC,1.03.06.20.03_SXR Undulator Installation,AS_SXU_INST_0210_Install Undulator - SXU_HE_02,Support System,,SLAC,Labor
106238,1.03,1.03.06,1.03.06.20,1.03.06.20.03,1.03.06.20.03,SXR Undulator Installation,AS_SXU_INST_0205,PAMM Management - SXU_HE_02,3.0,2.0,2.0,2.0,04-23-25,04-25-25,0,0,SLAC,0%,52155.52155_Health Physics Technician III,52155_Health Physics Technician III,Labor,0.0d,3.0,3.0,At Completion Units,6/20/2024,6/25/2024,0,0,0,0,0,0,0,0,0,0,1.03_Accelerator Systems (AS),1.03.06_AS Soft X-Ray Undulator (SXR) - SLAC,1.03.06.20_AS Soft X-Ray Undulator Installation - SLAC,1.03.06.20.03_SXR Undulator Installation,AS_SXU_INST_0205_PAMM Management - SXU_HE_02,Support System,Tech,SLAC,Labor
106239,1.03,1.03.06,1.03.06.20,1.03.06.20.03,1.03.06.20.03,SXR Undulator Installation,AS_SXU_INST_0230,Pre-beam checkout - SXU_HE_02,1.0,5.0,5.0,5.0,04-25-25,04-25-25,0,0,SLAC,0%,52213.52213_EEDHW (Electronics & Engineering Div - HW Engr),52213_EEDHW (Electronics & Engineering Div - HW Engr),Labor,0.0d,1.0,1.0,At Completion Units,6/24/2024,6/25/2024,0,0,0,0,0,0,0,0,0,0,1.03_Accelerator Systems (AS),1.03.06_AS Soft X-Ray Undulator (SXR) - SLAC,1.03.06.20_AS Soft X-Ray Undulator Installation - SLAC,1.03.06.20.03_SXR Undulator Installation,AS_SXU_INST_0230_Pre-beam checkout - SXU_HE_02,Electrical,,SLAC,Labor
106240,1.03,1.03.06,1.03.06.20,1.03.06.20.03,1.03.06.20.03,SXR Undulator Installation,AS_SXU_INST_0230,Pre-beam checkout - SXU_HE_02,1.0,2.0,2.0,2.0,04-25-25,04-25-25,0,0,SLAC,0%,52169.52169_METS Mechanical Engineer,52169_METS Mechanical Engineer,Labor,0.0d,1.0,1.0,At Completion Units,6/24/2024,6/25/2024,0,0,0,0,0,0,0,0,0,0,1.03_Accelerator Systems (AS),1.03.06_AS Soft X-Ray Undulator (SXR) - SLAC,1.03.06.20_AS Soft X-Ray Undulator Installation - SLAC,1.03.06.20.03_SXR Undulator Installation,AS_SXU_INST_0230_Pre-beam checkout - SXU_HE_02,Mechanical,,SLAC,Labor
106241,1.03,1.03.06,1.03.06.20,1.03.06.20.03,1.03.06.20.03,SXR Undulator Installation,AS_SXU_INST_0230,Pre-beam checkout - SXU_HE_02,1.0,8.0,8.0,8.0,04-25-25,04-25-25,0,0,SLAC,0%,0106.0106_Staff Scientist,0106_Staff Scientist,Labor,0.0d,1.0,1.0,At Completion Units,6/24/2024,6/25/2024,0,0,0,0,0,0,0,0,0,0,1.03_Accelerator Systems (AS),1.03.06_AS Soft X-Ray Undulator (SXR) - SLAC,1.03.06.20_AS Soft X-Ray Undulator Installation - SLAC,1.03.06.20.03_SXR Undulator Installation,AS_SXU_INST_0230_Pre-beam checkout - SXU_HE_02,Scientist,,SLAC,Labor
106242,1.03,1.03.06,1.03.06.20,1.03.06.20.03,1.03.06.20.03,SXR Undulator Installation,AS_SXU_INST_0230,Pre-beam checkout - SXU_HE_02,1.0,12.0,12.0,12.0,04-25-25,04-25-25,0,0,SLAC,0%,52191.52191_METSMET Metrology,52191_METSMET Metrology,Labor,0.0d,1.0,1.0,At Completion Units,6/24/2024,6/25/2024,0,0,0,0,0,0,0,0,0,0,1.03_Accelerator Systems (AS),1.03.06_AS Soft X-Ray Undulator (SXR) - SLAC,1.03.06.20_AS Soft X-Ray Undulator Installation - SLAC,1.03.06.20.03_SXR Undulator Installation,AS_SXU_INST_0230_Pre-beam checkout - SXU_HE_02,Metrology,,SLAC,Labor
106243,1.03,1.03.06,1.03.06.20,1.03.06.20.03,1.03.06.20.03,SXR Undulator Installation,AS_SXU_INST_0220,Perform technical checkouts - SXU_HE_02,1.0,4.0,4.0,4.0,04-24-25,04-24-25,0,0,SLAC,0%,52211.52211_EEDOPSE (Electronics & Engineering Div - Ops & PSE),52211_EEDOPSE (Electronics & Engineering Div - Ops & PSE),Labor,0.0d,1.0,1.0,At Completion Units,6/21/2024,6/24/2024,0,0,0,0,0,0,0,0,0,0,1.03_Accelerator Systems (AS),1.03.06_AS Soft X-Ray Undulator (SXR) - SLAC,1.03.06.20_AS Soft X-Ray Undulator Installation - SLAC,1.03.06.20.03_SXR Undulator Installation,AS_SXU_INST_0220_Perform technical checkouts - SXU_HE_02,Electrical,,SLAC,Labor
106244,1.03,1.03.06,1.03.06.20,1.03.06.20.03,1.03.06.20.03,SXR Undulator Installation,AS_SXU_INST_0220,Perform technical checkouts - SXU_HE_02,1.0,8.0,8.0,8.0,04-24-25,04-24-25,0,0,SLAC,0%,52127.52127_Research Electrical & SW Engineer,52127_Research Electrical & SW Engineer,Labor,0.0d,1.0,1.0,At Completion Units,6/21/2024,6/24/2024,0,0,0,0,0,0,0,0,0,0,1.03_Accelerator Systems (AS),1.03.06_AS Soft X-Ray Undulator (SXR) - SLAC,1.03.06.20_AS Soft X-Ray Undulator Installation - SLAC,1.03.06.20.03_SXR Undulator Installation,AS_SXU_INST_0220_Perform technical checkouts - SXU_HE_02,Electrical,,SLAC,Labor
106245,1.03,1.03.06,1.03.06.20,1.03.06.20.03,1.03.06.20.03,SXR Undulator Installation,AS_SXU_INST_0220,Perform technical checkouts - SXU_HE_02,1.0,20.0,20.0,20.0,04-24-25,04-24-25,0,0,SLAC,0%,52213.52213_EEDHW (Electronics & Engineering Div - HW Engr),52213_EEDHW (Electronics & Engineering Div - HW Engr),Labor,0.0d,1.0,1.0,At Completion Units,6/21/2024,6/24/2024,0,0,0,0,0,0,0,0,0,0,1.03_Accelerator Systems (AS),1.03.06_AS Soft X-Ray Undulator (SXR) - SLAC,1.03.06.20_AS Soft X-Ray Undulator Installation - SLAC,1.03.06.20.03_SXR Undulator Installation,AS_SXU_INST_0220_Perform technical checkouts - SXU_HE_02,Electrical,,SLAC,Labor
106246,1.03,1.03.06,1.03.06.20,1.03.06.20.03,1.03.06.20.03,SXR Undulator Installation,AS_SXU_INST_0220,Perform technical checkouts - SXU_HE_02,1.0,6.0,6.0,6.0,04-24-25,04-24-25,0,0,SLAC,0%,52169.52169_METS Mechanical Engineer,52169_METS Mechanical Engineer,Labor,0.0d,1.0,1.0,At Completion Units,6/21/2024,6/24/2024,0,0,0,0,0,0,0,0,0,0,1.03_Accelerator Systems (AS),1.03.06_AS Soft X-Ray Undulator (SXR) - SLAC,1.03.06.20_AS Soft X-Ray Undulator Installation - SLAC,1.03.06.20.03_SXR Undulator Installation,AS_SXU_INST_0220_Perform technical checkouts - SXU_HE_02,Mechanical,,SLAC,Labor
106247,1.03,1.03.06,1.03.06.20,1.03.06.20.03,1.03.06.20.03,SXR Undulator Installation,AS_SXU_INST_0220,Perform technical checkouts - SXU_HE_02,1.0,4.0,4.0,4.0,04-24-25,04-24-25,0,0,SLAC,0%,0106.0106_Staff Scientist,0106_Staff Scientist,Labor,0.0d,1.0,1.0,At Completion Units,6/21/2024,6/24/2024,0,0,0,0,0,0,0,0,0,0,1.03_Accelerator Systems (AS),1.03.06_AS Soft X-Ray Undulator (SXR) - SLAC,1.03.06.20_AS Soft X-Ray Undulator Installation - SLAC,1.03.06.20.03_SXR Undulator Installation,AS_SXU_INST_0220_Perform technical checkouts - SXU_HE_02,Scientist,,SLAC,Labor
106248,1.03,1.03.06,1.03.06.20,1.03.06.20.03,1.03.06.20.03,SXR Undulator Installation,AS_SXU_INST_0220,Perform technical checkouts - SXU_HE_02,1.0,4.0,4.0,4.0,04-24-25,04-24-25,0,0,SLAC,0%,52198.52198_METSMANF (METSD Manufacturing),52198_METSMANF (METSD Manufacturing),Labor,0.0d,1.0,1.0,At Completion Units,6/21/2024,6/24/2024,0,0,0,0,0,0,0,0,0,0,1.03_Accelerator Systems (AS),1.03.06_AS Soft X-Ray Undulator (SXR) - SLAC,1.03.06.20_AS Soft X-Ray Undulator Installation - SLAC,1.03.06.20.03_SXR Undulator Installation,AS_SXU_INST_0220_Perform technical checkouts - SXU_HE_02,Manufacturing,,SLAC,Labor
106249,1.03,1.03.06,1.03.06.20,1.03.06.20.03,1.03.06.20.03,SXR Undulator Installation,AS_SXU_INST_0210,Install Undulator - SXU_HE_02,1.0,12.0,12.0,12.0,04-23-25,04-23-25,0,0,SLAC,0%,52169.52169_METS Mechanical Engineer,52169_METS Mechanical Engineer,Labor,0.0d,1.0,1.0,At Completion Units,6/20/2024,6/21/2024,0,0,0,0,0,0,0,0,0,0,1.03_Accelerator Systems (AS),1.03.06_AS Soft X-Ray Undulator (SXR) - SLAC,1.03.06.20_AS Soft X-Ray Undulator Installation - SLAC,1.03.06.20.03_SXR Undulator Installation,AS_SXU_INST_0210_Install Undulator - SXU_HE_02,Mechanical,,SLAC,Labor
106250,1.03,1.03.06,1.03.06.20,1.03.06.20.03,1.03.06.20.03,SXR Undulator Installation,AS_SXU_INST_0210,Install Undulator - SXU_HE_02,1.0,4.0,4.0,4.0,04-23-25,04-23-25,0,0,SLAC,0%,0106.0106_Staff Scientist,0106_Staff Scientist,Labor,0.0d,1.0,1.0,At Completion Units,6/20/2024,6/21/2024,0,0,0,0,0,0,0,0,0,0,1.03_Accelerator Systems (AS),1.03.06_AS Soft X-Ray Undulator (SXR) - SLAC,1.03.06.20_AS Soft X-Ray Undulator Installation - SLAC,1.03.06.20.03_SXR Undulator Installation,AS_SXU_INST_0210_Install Undulator - SXU_HE_02,Scientist,,SLAC,Labor
106251,1.03,1.03.06,1.03.06.20,1.03.06.20.03,1.03.06.20.03,SXR Undulator Installation,AS_SXU_INST_0210,Install Undulator - SXU_HE_02,1.0,8.0,8.0,8.0,04-23-25,04-23-25,0,0,SLAC,0%,52191.52191_METSMET Metrology,52191_METSMET Metrology,Labor,0.0d,1.0,1.0,At Completion Units,6/20/2024,6/21/2024,0,0,0,0,0,0,0,0,0,0,1.03_Accelerator Systems (AS),1.03.06_AS Soft X-Ray Undulator (SXR) - SLAC,1.03.06.20_AS Soft X-Ray Undulator Installation - SLAC,1.03.06.20.03_SXR Undulator Installation,AS_SXU_INST_0210_Install Undulator - SXU_HE_02,Metrology,,SLAC,Labor
106252,1.03,1.03.06,1.03.06.20,1.03.06.20.03,1.03.06.20.03,SXR Undulator Installation,AS_SXU_INST_0210,Install Undulator - SXU_HE_02,1.0,34.0,34.0,34.0,04-23-25,04-23-25,0,0,SLAC,0%,52198.52198_METSMANF (METSD Manufacturing),52198_METSMANF (METSD Manufacturing),Labor,0.0d,1.0,1.0,At Completion Units,6/20/2024,6/21/2024,0,0,0,0,0,0,0,0,0,0,1.03_Accelerator Systems (AS),1.03.06_AS Soft X-Ray Undulator (SXR) - SLAC,1.03.06.20_AS Soft X-Ray Undulator Installation - SLAC,1.03.06.20.03_SXR Undulator Installation,AS_SXU_INST_0210_Install Undulator - SXU_HE_02,Manufacturing,,SLAC,Labor
106253,1.03,1.03.06,1.03.06.20,1.03.06.20.03,1.03.06.20.03,SXR Undulator Installation,AS_SXU_INST_0205,PAMM Management - SXU_HE_02,3.0,6.0,6.0,6.0,04-23-25,04-25-25,0,0,SLAC,0%,52169.52169_METS Mechanical Engineer,52169_METS Mechanical Engineer,Labor,0.0d,3.0,3.0,At Completion Units,6/20/2024,6/25/2024,0,0,0,0,0,0,0,0,0,0,1.03_Accelerator Systems (AS),1.03.06_AS Soft X-Ray Undulator (SXR) - SLAC,1.03.06.20_AS Soft X-Ray Undulator Installation - SLAC,1.03.06.20.03_SXR Undulator Installation,AS_SXU_INST_0205_PAMM Management - SXU_HE_02,Mechanical,,SLAC,Labor
106254,1.03,1.03.06,1.03.06.20,1.03.06.20.03,1.03.06.20.03,SXR Undulator Installation,AS_SXU_INST_0110,Install Undulator - SXU_HE_01,1.0,2.0,2.0,2.0,02-18-25,02-18-25,0,0,SLAC,0%,52190.52190_METSTP Tech Planning - Reinstated FY16,52190_METSTP Tech Planning - Reinstated FY16,Labor,0.0d,1.0,1.0,At Completion Units,8/29/2024,8/29/2024,0,0,0,0,0,0,0,0,0,0,1.03_Accelerator Systems (AS),1.03.06_AS Soft X-Ray Undulator (SXR) - SLAC,1.03.06.20_AS Soft X-Ray Undulator Installation - SLAC,1.03.06.20.03_SXR Undulator Installation,AS_SXU_INST_0110_Install Undulator - SXU_HE_01,METSTPT Tech Planning,Tech,SLAC,Labor
106255,1.03,1.03.06,1.03.06.20,1.03.06.20.03,1.03.06.20.03,SXR Undulator Installation,AS_SXU_INST_0110,Install Undulator - SXU_HE_01,1.0,12.0,12.0,12.0,02-18-25,02-18-25,0,0,SLAC,0%,52152.52152_FAC Fleet,52152_FAC Fleet,Labor,0.0d,1.0,1.0,At Completion Units,8/29/2024,8/29/2024,0,0,0,0,0,0,0,0,0,0,1.03_Accelerator Systems (AS),1.03.06_AS Soft X-Ray Undulator (SXR) - SLAC,1.03.06.20_AS Soft X-Ray Undulator Installation - SLAC,1.03.06.20.03_SXR Undulator Installation,AS_SXU_INST_0110_Install Undulator - SXU_HE_01,Support System,,SLAC,Labor
106256,1.03,1.03.06,1.03.06.20,1.03.06.20.03,1.03.06.20.03,SXR Undulator Installation,AS_SXU_INST_0105,PAMM Management - SXU_HE_01,3.0,2.0,2.0,2.0,02-18-25,02-20-25,0,0,SLAC,0%,52155.52155_Health Physics Technician III,52155_Health Physics Technician III,Labor,0.0d,3.0,3.0,At Completion Units,6/20/2024,6/25/2024,0,0,0,0,0,0,0,0,0,0,1.03_Accelerator Systems (AS),1.03.06_AS Soft X-Ray Undulator (SXR) - SLAC,1.03.06.20_AS Soft X-Ray Undulator Installation - SLAC,1.03.06.20.03_SXR Undulator Installation,AS_SXU_INST_0105_PAMM Management - SXU_HE_01,Support System,Tech,SLAC,Labor
106257,1.03,1.03.06,1.03.06.20,1.03.06.20.03,1.03.06.20.03,SXR Undulator Installation,AS_SXU_INST_0130,Pre-beam checkout - SXU_HE_01,1.0,5.0,5.0,5.0,02-20-25,02-20-25,0,0,SLAC,0%,52213.52213_EEDHW (Electronics & Engineering Div - HW Engr),52213_EEDHW (Electronics & Engineering Div - HW Engr),Labor,0.0d,1.0,1.0,At Completion Units,9/3/2024,9/3/2024,0,0,0,0,0,0,0,0,0,0,1.03_Accelerator Systems (AS),1.03.06_AS Soft X-Ray Undulator (SXR) - SLAC,1.03.06.20_AS Soft X-Ray Undulator Installation - SLAC,1.03.06.20.03_SXR Undulator Installation,AS_SXU_INST_0130_Pre-beam checkout - SXU_HE_01,Electrical,,SLAC,Labor
106258,1.03,1.03.06,1.03.06.20,1.03.06.20.03,1.03.06.20.03,SXR Undulator Installation,AS_SXU_INST_0130,Pre-beam checkout - SXU_HE_01,1.0,2.0,2.0,2.0,02-20-25,02-20-25,0,0,SLAC,0%,52169.52169_METS Mechanical Engineer,52169_METS Mechanical Engineer,Labor,0.0d,1.0,1.0,At Completion Units,9/3/2024,9/3/2024,0,0,0,0,0,0,0,0,0,0,1.03_Accelerator Systems (AS),1.03.06_AS Soft X-Ray Undulator (SXR) - SLAC,1.03.06.20_AS Soft X-Ray Undulator Installation - SLAC,1.03.06.20.03_SXR Undulator Installation,AS_SXU_INST_0130_Pre-beam checkout - SXU_HE_01,Mechanical,,SLAC,Labor
106259,1.03,1.03.06,1.03.06.20,1.03.06.20.03,1.03.06.20.03,SXR Undulator Installation,AS_SXU_INST_0130,Pre-beam checkout - SXU_HE_01,1.0,8.0,8.0,8.0,02-20-25,02-20-25,0,0,SLAC,0%,0106.0106_Staff Scientist,0106_Staff Scientist,Labor,0.0d,1.0,1.0,At Completion Units,9/3/2024,9/3/2024,0,0,0,0,0,0,0,0,0,0,1.03_Accelerator Systems (AS),1.03.06_AS Soft X-Ray Undulator (SXR) - SLAC,1.03.06.20_AS Soft X-Ray Undulator Installation - SLAC,1.03.06.20.03_SXR Undulator Installation,AS_SXU_INST_0130_Pre-beam checkout - SXU_HE_01,Scientist,,SLAC,Labor
106260,1.03,1.03.06,1.03.06.20,1.03.06.20.03,1.03.06.20.03,SXR Undulator Installation,AS_SXU_INST_0130,Pre-beam checkout - SXU_HE_01,1.0,12.0,12.0,12.0,02-20-25,02-20-25,0,0,SLAC,0%,52191.52191_METSMET Metrology,52191_METSMET Metrology,Labor,0.0d,1.0,1.0,At Completion Units,9/3/2024,9/3/2024,0,0,0,0,0,0,0,0,0,0,1.03_Accelerator Systems (AS),1.03.06_AS Soft X-Ray Undulator (SXR) - SLAC,1.03.06.20_AS Soft X-Ray Undulator Installation - SLAC,1.03.06.20.03_SXR Undulator Installation,AS_SXU_INST_0130_Pre-beam checkout - SXU_HE_01,Metrology,,SLAC,Labor
106261,1.03,1.03.06,1.03.06.20,1.03.06.20.03,1.03.06.20.03,SXR Undulator Installation,AS_SXU_INST_0120,Perform technical checkouts - SXU_HE_01,1.0,4.0,4.0,4.0,02-19-25,02-19-25,0,0,SLAC,0%,52211.52211_EEDOPSE (Electronics & Engineering Div - Ops & PSE),52211_EEDOPSE (Electronics & Engineering Div - Ops & PSE),Labor,0.0d,1.0,1.0,At Completion Units,8/30/2024,8/30/2024,0,0,0,0,0,0,0,0,0,0,1.03_Accelerator Systems (AS),1.03.06_AS Soft X-Ray Undulator (SXR) - SLAC,1.03.06.20_AS Soft X-Ray Undulator Installation - SLAC,1.03.06.20.03_SXR Undulator Installation,AS_SXU_INST_0120_Perform technical checkouts - SXU_HE_01,Electrical,,SLAC,Labor
106262,1.03,1.03.06,1.03.06.20,1.03.06.20.03,1.03.06.20.03,SXR Undulator Installation,AS_SXU_INST_0120,Perform technical checkouts - SXU_HE_01,1.0,8.0,8.0,8.0,02-19-25,02-19-25,0,0,SLAC,0%,52127.52127_Research Electrical & SW Engineer,52127_Research Electrical & SW Engineer,Labor,0.0d,1.0,1.0,At Completion Units,8/30/2024,8/30/2024,0,0,0,0,0,0,0,0,0,0,1.03_Accelerator Systems (AS),1.03.06_AS Soft X-Ray Undulator (SXR) - SLAC,1.03.06.20_AS Soft X-Ray Undulator Installation - SLAC,1.03.06.20.03_SXR Undulator Installation,AS_SXU_INST_0120_Perform technical checkouts - SXU_HE_01,Electrical,,SLAC,Labor
106263,1.03,1.03.06,1.03.06.20,1.03.06.20.03,1.03.06.20.03,SXR Undulator Installation,AS_SXU_INST_0120,Perform technical checkouts - SXU_HE_01,1.0,20.0,20.0,20.0,02-19-25,02-19-25,0,0,SLAC,0%,52213.52213_EEDHW (Electronics & Engineering Div - HW Engr),52213_EEDHW (Electronics & Engineering Div - HW Engr),Labor,0.0d,1.0,1.0,At Completion Units,8/30/2024,8/30/2024,0,0,0,0,0,0,0,0,0,0,1.03_Accelerator Systems (AS),1.03.06_AS Soft X-Ray Undulator (SXR) - SLAC,1.03.06.20_AS Soft X-Ray Undulator Installation - SLAC,1.03.06.20.03_SXR Undulator Installation,AS_SXU_INST_0120_Perform technical checkouts - SXU_HE_01,Electrical,,SLAC,Labor
106264,1.03,1.03.06,1.03.06.20,1.03.06.20.03,1.03.06.20.03,SXR Undulator Installation,AS_SXU_INST_0120,Perform technical checkouts - SXU_HE_01,1.0,6.0,6.0,6.0,02-19-25,02-19-25,0,0,SLAC,0%,52169.52169_METS Mechanical Engineer,52169_METS Mechanical Engineer,Labor,0.0d,1.0,1.0,At Completion Units,8/30/2024,8/30/2024,0,0,0,0,0,0,0,0,0,0,1.03_Accelerator Systems (AS),1.03.06_AS Soft X-Ray Undulator (SXR) - SLAC,1.03.06.20_AS Soft X-Ray Undulator Installation - SLAC,1.03.06.20.03_SXR Undulator Installation,AS_SXU_INST_0120_Perform technical checkouts - SXU_HE_01,Mechanical,,SLAC,Labor
106265,1.03,1.03.06,1.03.06.20,1.03.06.20.03,1.03.06.20.03,SXR Undulator Installation,AS_SXU_INST_0120,Perform technical checkouts - SXU_HE_01,1.0,4.0,4.0,4.0,02-19-25,02-19-25,0,0,SLAC,0%,0106.0106_Staff Scientist,0106_Staff Scientist,Labor,0.0d,1.0,1.0,At Completion Units,8/30/2024,8/30/2024,0,0,0,0,0,0,0,0,0,0,1.03_Accelerator Systems (AS),1.03.06_AS Soft X-Ray Undulator (SXR) - SLAC,1.03.06.20_AS Soft X-Ray Undulator Installation - SLAC,1.03.06.20.03_SXR Undulator Installation,AS_SXU_INST_0120_Perform technical checkouts - SXU_HE_01,Scientist,,SLAC,Labor
106266,1.03,1.03.06,1.03.06.20,1.03.06.20.03,1.03.06.20.03,SXR Undulator Installation,AS_SXU_INST_0120,Perform technical checkouts - SXU_HE_01,1.0,4.0,4.0,4.0,02-19-25,02-19-25,0,0,SLAC,0%,52198.52198_METSMANF (METSD Manufacturing),52198_METSMANF (METSD Manufacturing),Labor,0.0d,1.0,1.0,At Completion Units,8/30/2024,8/30/2024,0,0,0,0,0,0,0,0,0,0,1.03_Accelerator Systems (AS),1.03.06_AS Soft X-Ray Undulator (SXR) - SLAC,1.03.06.20_AS Soft X-Ray Undulator Installation - SLAC,1.03.06.20.03_SXR Undulator Installation,AS_SXU_INST_0120_Perform technical checkouts - SXU_HE_01,Manufacturing,,SLAC,Labor
106267,1.03,1.03.06,1.03.06.20,1.03.06.20.03,1.03.06.20.03,SXR Undulator Installation,AS_SXU_INST_0110,Install Undulator - SXU_HE_01,1.0,12.0,12.0,12.0,02-18-25,02-18-25,0,0,SLAC,0%,52169.52169_METS Mechanical Engineer,52169_METS Mechanical Engineer,Labor,0.0d,1.0,1.0,At Completion Units,8/29/2024,8/29/2024,0,0,0,0,0,0,0,0,0,0,1.03_Accelerator Systems (AS),1.03.06_AS Soft X-Ray Undulator (SXR) - SLAC,1.03.06.20_AS Soft X-Ray Undulator Installation - SLAC,1.03.06.20.03_SXR Undulator Installation,AS_SXU_INST_0110_Install Undulator - SXU_HE_01,Mechanical,,SLAC,Labor
106268,1.03,1.03.06,1.03.06.20,1.03.06.20.03,1.03.06.20.03,SXR Undulator Installation,AS_SXU_INST_0110,Install Undulator - SXU_HE_01,1.0,4.0,4.0,4.0,02-18-25,02-18-25,0,0,SLAC,0%,0106.0106_Staff Scientist,0106_Staff Scientist,Labor,0.0d,1.0,1.0,At Completion Units,8/29/2024,8/29/2024,0,0,0,0,0,0,0,0,0,0,1.03_Accelerator Systems (AS),1.03.06_AS Soft X-Ray Undulator (SXR) - SLAC,1.03.06.20_AS Soft X-Ray Undulator Installation - SLAC,1.03.06.20.03_SXR Undulator Installation,AS_SXU_INST_0110_Install Undulator - SXU_HE_01,Scientist,,SLAC,Labor
106269,1.03,1.03.06,1.03.06.20,1.03.06.20.03,1.03.06.20.03,SXR Undulator Installation,AS_SXU_INST_0110,Install Undulator - SXU_HE_01,1.0,8.0,8.0,8.0,02-18-25,02-18-25,0,0,SLAC,0%,52191.52191_METSMET Metrology,52191_METSMET Metrology,Labor,0.0d,1.0,1.0,At Completion Units,8/29/2024,8/29/2024,0,0,0,0,0,0,0,0,0,0,1.03_Accelerator Systems (AS),1.03.06_AS Soft X-Ray Undulator (SXR) - SLAC,1.03.06.20_AS Soft X-Ray Undulator Installation - SLAC,1.03.06.20.03_SXR Undulator Installation,AS_SXU_INST_0110_Install Undulator - SXU_HE_01,Metrology,,SLAC,Labor
106270,1.03,1.03.06,1.03.06.20,1.03.06.20.03,1.03.06.20.03,SXR Undulator Installation,AS_SXU_INST_0110,Install Undulator - SXU_HE_01,1.0,34.0,34.0,34.0,02-18-25,02-18-25,0,0,SLAC,0%,52198.52198_METSMANF (METSD Manufacturing),52198_METSMANF (METSD Manufacturing),Labor,0.0d,1.0,1.0,At Completion Units,8/29/2024,8/29/2024,0,0,0,0,0,0,0,0,0,0,1.03_Accelerator Systems (AS),1.03.06_AS Soft X-Ray Undulator (SXR) - SLAC,1.03.06.20_AS Soft X-Ray Undulator Installation - SLAC,1.03.06.20.03_SXR Undulator Installation,AS_SXU_INST_0110_Install Undulator - SXU_HE_01,Manufacturing,,SLAC,Labor
106271,1.03,1.03.06,1.03.06.20,1.03.06.20.03,1.03.06.20.03,SXR Undulator Installation,AS_SXU_INST_0105,PAMM Management - SXU_HE_01,3.0,6.0,6.0,6.0,02-18-25,02-20-25,0,0,SLAC,0%,52169.52169_METS Mechanical Engineer,52169_METS Mechanical Engineer,Labor,0.0d,3.0,3.0,At Completion Units,6/20/2024,6/25/2024,0,0,0,0,0,0,0,0,0,0,1.03_Accelerator Systems (AS),1.03.06_AS Soft X-Ray Undulator (SXR) - SLAC,1.03.06.20_AS Soft X-Ray Undulator Installation - SLAC,1.03.06.20.03_SXR Undulator Installation,AS_SXU_INST_0105_PAMM Management - SXU_HE_01,Mechanical,,SLAC,Labor
106591,1.03,1.03.06,1.03.06.20,1.03.06.20.04,1.03.06.20.04,HXRSS Installation,AS_SXU_INST_8480,Vacuum Installation and checkout - HXRSS,12.0,97.0,97.0,97.0,06-20-24,07-08-24,0,0,SLAC,0%,52198.52198_METSMANF (METSD Manufacturing),52198_METSMANF (METSD Manufacturing),Labor,0.0d,12.0,12.0,At Completion Units,nn,,0,0,0,0,0,0,0,0,0,0,1.03_Accelerator Systems (AS),1.03.06_AS Soft X-Ray Undulator (SXR) - SLAC,1.03.06.20_AS Soft X-Ray Undulator Installation - SLAC,1.03.06.20.04_HXRSS Installation,AS_SXU_INST_8480_Vacuum Installation and checkout - HXRSS,Manufacturing,,SLAC,Labor
106592,1.03,1.03.06,1.03.06.20,1.03.06.20.04,1.03.06.20.04,HXRSS Installation,AS_SXU_INST_8470,Mechanical installation and checkout - HXRSS,12.0,101.0,101.0,101.0,06-04-24,06-19-24,0,0,SLAC,0%,52198.52198_METSMANF (METSD Manufacturing),52198_METSMANF (METSD Manufacturing),Labor,0.0d,12.0,12.0,At Completion Units,nn,,0,0,0,0,0,0,0,0,0,0,1.03_Accelerator Systems (AS),1.03.06_AS Soft X-Ray Undulator (SXR) - SLAC,1.03.06.20_AS Soft X-Ray Undulator Installation - SLAC,1.03.06.20.04_HXRSS Installation,AS_SXU_INST_8470_Mechanical installation and checkout - HXRSS,Manufacturing,,SLAC,Labor
106593,1.03,1.03.06,1.03.06.20,1.03.06.20.04,1.03.06.20.04,HXRSS Installation,AS_SXU_INST_8480,Vacuum Installation and checkout - HXRSS,12.0,24.0,24.0,24.0,06-20-24,07-08-24,0,0,SLAC,0%,52169.52169_METS Mechanical Engineer,52169_METS Mechanical Engineer,Labor,0.0d,12.0,12.0,At Completion Units,nn,,0,0,0,0,0,0,0,0,0,0,1.03_Accelerator Systems (AS),1.03.06_AS Soft X-Ray Undulator (SXR) - SLAC,1.03.06.20_AS Soft X-Ray Undulator Installation - SLAC,1.03.06.20.04_HXRSS Installation,AS_SXU_INST_8480_Vacuum Installation and checkout - HXRSS,Mechanical,,SLAC,Labor
106594,1.03,1.03.06,1.03.06.20,1.03.06.20.04,1.03.06.20.04,HXRSS Installation,AS_SXU_INST_8480,Vacuum Installation and checkout - HXRSS,12.0,24.0,24.0,24.0,06-20-24,07-08-24,0,0,SLAC,0%,52191.52191_METSMET Metrology,52191_METSMET Metrology,Labor,0.0d,12.0,12.0,At Completion Units,nn,,0,0,0,0,0,0,0,0,0,0,1.03_Accelerator Systems (AS),1.03.06_AS Soft X-Ray Undulator (SXR) - SLAC,1.03.06.20_AS Soft X-Ray Undulator Installation - SLAC,1.03.06.20.04_HXRSS Installation,AS_SXU_INST_8480_Vacuum Installation and checkout - HXRSS,Metrology,,SLAC,Labor
106595,1.03,1.03.06,1.03.06.20,1.03.06.20.04,1.03.06.20.04,HXRSS Installation,AS_SXU_INST_8470,Mechanical installation and checkout - HXRSS,12.0,32.0,32.0,32.0,06-04-24,06-19-24,0,0,SLAC,0%,52169.52169_METS Mechanical Engineer,52169_METS Mechanical Engineer,Labor,0.0d,12.0,12.0,At Completion Units,nn,,0,0,0,0,0,0,0,0,0,0,1.03_Accelerator Systems (AS),1.03.06_AS Soft X-Ray Undulator (SXR) - SLAC,1.03.06.20_AS Soft X-Ray Undulator Installation - SLAC,1.03.06.20.04_HXRSS Installation,AS_SXU_INST_8470_Mechanical installation and checkout - HXRSS,Mechanical,,SLAC,Labor
106596,1.03,1.03.06,1.03.06.20,1.03.06.20.04,1.03.06.20.04,HXRSS Installation,AS_SXU_INST_8470,Mechanical installation and checkout - HXRSS,12.0,24.0,24.0,24.0,06-04-24,06-19-24,0,0,SLAC,0%,52191.52191_METSMET Metrology,52191_METSMET Metrology,Labor,0.0d,12.0,12.0,At Completion Units,nn,,0,0,0,0,0,0,0,0,0,0,1.03_Accelerator Systems (AS),1.03.06_AS Soft X-Ray Undulator (SXR) - SLAC,1.03.06.20_AS Soft X-Ray Undulator Installation - SLAC,1.03.06.20.04_HXRSS Installation,AS_SXU_INST_8470_Mechanical installation and checkout - HXRSS,Metrology,,SLAC,Labor
107235,1.03,1.03.07,1.03.07.01,1.03.07.01,1.03.07.01,AS SXR-HE Undulator Management & Integration - LBNL,AS_LBL_MGMT_30,FY21 Q4 Management Support - SXR-HE - LBNL,21.0,0.0,0.0,106.0,07-01-2021,09-30-2021,0,0,LBNL,100%,LBNL_S36.4.Mechanical Staff Sci/Engr,Mechanical Staff Sci/Engr,Labor,63.0d,0.0,63.0,At Completion Units,7/1/2021,9/30/2021,0,0,0,0,0,0,0,0,0,0,1.03_Accelerator Systems (AS),1.03.07_AS SXR-HE Undulator (Soft X-Ray) - LBNL,1.03.07.01_AS SXR-HE Undulator Management & Integration - LBNL,,AS_LBL_MGMT_30_FY21 Q4 Management Support - SXR-HE - LBNL,Mechanical,,SLAC,Labor
107236,1.03,1.03.07,1.03.07.01,1.03.07.01,1.03.07.01,AS SXR-HE Undulator Management & Integration - LBNL,AS_LBL_MGMT_20,FY21 Q3 Management Support - SXR-HE - LBNL,85.0,0.0,0.0,118.5,04-01-2021,06-30-2021,0,0,LBNL,100%,LBNL_S36.4.Mechanical Staff Sci/Engr,Mechanical Staff Sci/Engr,Labor,63.0d,0.0,63.0,At Completion Units,4/1/2021,6/30/2021,0,0,0,0,0,0,0,0,0,0,1.03_Accelerator Systems (AS),1.03.07_AS SXR-HE Undulator (Soft X-Ray) - LBNL,1.03.07.01_AS SXR-HE Undulator Management & Integration - LBNL,,AS_LBL_MGMT_20_FY21 Q3 Management Support - SXR-HE - LBNL,Mechanical,,SLAC,Labor
107237,1.03,1.03.07,1.03.07.01,1.03.07.01,1.03.07.01,AS SXR-HE Undulator Management & Integration - LBNL,AS_LBL_MGMT_30,FY21 Q4 Management Support - SXR-HE - LBNL,21.0,0.0,0.0,106.0,07-01-2021,09-30-2021,0,0,LBNL,100%,LBNL_Z40.N.Project Planning & Controls,Project Planning & Controls,Labor,63.0d,0.0,63.0,At Completion Units,7/1/2021,9/30/2021,0,0,0,0,0,0,0,0,0,0,1.03_Accelerator Systems (AS),1.03.07_AS SXR-HE Undulator (Soft X-Ray) - LBNL,1.03.07.01_AS SXR-HE Undulator Management & Integration - LBNL,,AS_LBL_MGMT_30_FY21 Q4 Management Support - SXR-HE - LBNL,PPC,,SLAC,Labor
107238,1.03,1.03.07,1.03.07.01,1.03.07.01,1.03.07.01,AS SXR-HE Undulator Management & Integration - LBNL,AS_LBL_MGMT_30,FY21 Q4 Management Support - SXR-HE - LBNL,21.0,260.0,0.0,106.0,07-01-2021,09-30-2021,0,0,LBNL,100%,LBNL_E10.4.Mechanical Engineer 4,Mechanical Engineer 4,Labor,63.0d,0.0,63.0,At Completion Units,7/1/2021,9/30/2021,0,0,0,0,0,0,0,0,0,0,1.03_Accelerator Systems (AS),1.03.07_AS SXR-HE Undulator (Soft X-Ray) - LBNL,1.03.07.01_AS SXR-HE Undulator Management & Integration - LBNL,,AS_LBL_MGMT_30_FY21 Q4 Management Support - SXR-HE - LBNL,Mechanical,,SLAC,Labor
107239,1.03,1.03.07,1.03.07.01,1.03.07.01,1.03.07.01,AS SXR-HE Undulator Management & Integration - LBNL,AS_LBL_MGMT_30,FY21 Q4 Management Support - SXR-HE - LBNL,21.0,164.0,0.0,106.0,07-01-2021,09-30-2021,0,0,LBNL,100%,LBNL_E10.3.Mechanical Engineer 3,Mechanical Engineer 3,Labor,63.0d,0.0,63.0,At Completion Units,7/1/2021,9/30/2021,0,0,0,0,0,0,0,0,0,0,1.03_Accelerator Systems (AS),1.03.07_AS SXR-HE Undulator (Soft X-Ray) - LBNL,1.03.07.01_AS SXR-HE Undulator Management & Integration - LBNL,,AS_LBL_MGMT_30_FY21 Q4 Management Support - SXR-HE - LBNL,Mechanical,,SLAC,Labor
107240,1.03,1.03.07,1.03.07.01,1.03.07.01,1.03.07.01,AS SXR-HE Undulator Management & Integration - LBNL,AS_LBL_MGMT_20,FY21 Q3 Management Support - SXR-HE - LBNL,85.0,0.0,0.0,118.5,04-01-2021,06-30-2021,0,0,LBNL,100%,LBNL_Z40.N.Project Planning & Controls,Project Planning & Controls,Labor,63.0d,0.0,63.0,At Completion Units,4/1/2021,6/30/2021,0,0,0,0,0,0,0,0,0,0,1.03_Accelerator Systems (AS),1.03.07_AS SXR-HE Undulator (Soft X-Ray) - LBNL,1.03.07.01_AS SXR-HE Undulator Management & Integration - LBNL,,AS_LBL_MGMT_20_FY21 Q3 Management Support - SXR-HE - LBNL,PPC,,SLAC,Labor
107241,1.03,1.03.07,1.03.07.01,1.03.07.01,1.03.07.01,AS SXR-HE Undulator Management & Integration - LBNL,AS_LBL_MGMT_20,FY21 Q3 Management Support - SXR-HE - LBNL,85.0,450.0,0.0,118.5,04-01-2021,06-30-2021,0,0,LBNL,100%,LBNL_E10.4.Mechanical Engineer 4,Mechanical Engineer 4,Labor,63.0d,0.0,63.0,At Completion Units,4/1/2021,6/30/2021,0,0,0,0,0,0,0,0,0,0,1.03_Accelerator Systems (AS),1.03.07_AS SXR-HE Undulator (Soft X-Ray) - LBNL,1.03.07.01_AS SXR-HE Undulator Management & Integration - LBNL,,AS_LBL_MGMT_20_FY21 Q3 Management Support - SXR-HE - LBNL,Mechanical,,SLAC,Labor
107242,1.03,1.03.07,1.03.07.01,1.03.07.01,1.03.07.01,AS SXR-HE Undulator Management & Integration - LBNL,AS_LBL_MGMT_20,FY21 Q3 Management Support - SXR-HE - LBNL,85.0,24.0,0.0,118.5,04-01-2021,06-30-2021,0,0,LBNL,100%,LBNL_E10.3.Mechanical Engineer 3,Mechanical Engineer 3,Labor,63.0d,0.0,63.0,At Completion Units,4/1/2021,6/30/2021,0,0,0,0,0,0,0,0,0,0,1.03_Accelerator Systems (AS),1.03.07_AS SXR-HE Undulator (Soft X-Ray) - LBNL,1.03.07.01_AS SXR-HE Undulator Management & Integration - LBNL,,AS_LBL_MGMT_20_FY21 Q3 Management Support - SXR-HE - LBNL,Mechanical,,SLAC,Labor
107243,1.03,1.03.07,1.03.07.01,1.03.07.01,1.03.07.01,AS SXR-HE Undulator Management & Integration - LBNL,AS_LBL_MGMT_10,FY21 Q2 Management Support - SXR-HE - LBNL,42.0,0.0,0.0,0.0,01-01-2021,03-31-2021,0,0,LBNL,0%,LBNL_Z40.N.Project Planning & Controls,Project Planning & Controls,Labor,61.0d,0.0,61.0,At Completion Units,1/5/2021,3/31/2021,0,0,0,0,0,0,0,0,0,0,1.03_Accelerator Systems (AS),1.03.07_AS SXR-HE Undulator (Soft X-Ray) - LBNL,1.03.07.01_AS SXR-HE Undulator Management & Integration - LBNL,,AS_LBL_MGMT_10_FY21 Q2 Management Support - SXR-HE - LBNL,PPC,,SLAC,Labor
107244,1.03,1.03.07,1.03.07.01,1.03.07.01,1.03.07.01,AS SXR-HE Undulator Management & Integration - LBNL,AS_LBL_MGMT_10,FY21 Q2 Management Support - SXR-HE - LBNL,42.0,276.0,0.0,276.0,01-01-2021,03-31-2021,0,0,LBNL,100%,LBNL_E10.4.Mechanical Engineer 4,Mechanical Engineer 4,Labor,61.0d,0.0,61.0,At Completion Units,1/5/2021,3/31/2021,0,0,0,0,0,0,0,0,0,0,1.03_Accelerator Systems (AS),1.03.07_AS SXR-HE Undulator (Soft X-Ray) - LBNL,1.03.07.01_AS SXR-HE Undulator Management & Integration - LBNL,,AS_LBL_MGMT_10_FY21 Q2 Management Support - SXR-HE - LBNL,Mechanical,,SLAC,Labor
107245,1.03,1.03.07,1.03.07.01,1.03.07.01,1.03.07.01,AS SXR-HE Undulator Management & Integration - LBNL,AS_LBL_MGMT_10,FY21 Q2 Management Support - SXR-HE - LBNL,42.0,12.0,0.0,12.0,01-01-2021,03-31-2021,0,0,LBNL,100%,LBNL_E10.3.Mechanical Engineer 3,Mechanical Engineer 3,Labor,61.0d,0.0,61.0,At Completion Units,1/5/2021,3/31/2021,0,0,0,0,0,0,0,0,0,0,1.03_Accelerator Systems (AS),1.03.07_AS SXR-HE Undulator (Soft X-Ray) - LBNL,1.03.07.01_AS SXR-HE Undulator Management & Integration - LBNL,,AS_LBL_MGMT_10_FY21 Q2 Management Support - SXR-HE - LBNL,Mechanical,,SLAC,Labor
107246,1.03,1.03.07,1.03.07.01,1.03.07.01,1.03.07.01,AS SXR-HE Undulator Management & Integration - LBNL,AS_LBL_MGMT_00,FY21 Q1 Management Support - SXR-HE - LBNL,42.0,0.0,0.0,0.0,10-01-2020,12-18-2020,0,0,LBNL,0%,LBNL_Z40.N.Project Planning & Controls,Project Planning & Controls,Labor,54.0d,0.0,54.0,At Completion Units,10/2/2020,12/18/2020,0,0,0,0,0,0,0,0,0,0,1.03_Accelerator Systems (AS),1.03.07_AS SXR-HE Undulator (Soft X-Ray) - LBNL,1.03.07.01_AS SXR-HE Undulator Management & Integration - LBNL,,AS_LBL_MGMT_00_FY21 Q1 Management Support - SXR-HE - LBNL,PPC,,SLAC,Labor
107247,1.03,1.03.07,1.03.07.01,1.03.07.01,1.03.07.01,AS SXR-HE Undulator Management & Integration - LBNL,AS_LBL_MGMT_00,FY21 Q1 Management Support - SXR-HE - LBNL,42.0,228.0,0.0,228.0,10-01-2020,12-18-2020,0,0,LBNL,100%,LBNL_E10.4.Mechanical Engineer 4,Mechanical Engineer 4,Labor,54.0d,0.0,54.0,At Completion Units,10/2/2020,12/18/2020,0,0,0,0,0,0,0,0,0,0,1.03_Accelerator Systems (AS),1.03.07_AS SXR-HE Undulator (Soft X-Ray) - LBNL,1.03.07.01_AS SXR-HE Undulator Management & Integration - LBNL,,AS_LBL_MGMT_00_FY21 Q1 Management Support - SXR-HE - LBNL,Mechanical,,SLAC,Labor
107248,1.03,1.03.07,1.03.07.01,1.03.07.01,1.03.07.01,AS SXR-HE Undulator Management & Integration - LBNL,AS_LBL_MGMT_00,FY21 Q1 Management Support - SXR-HE - LBNL,42.0,0.0,0.0,0.0,10-01-2020,12-18-2020,0,0,LBNL,0%,LBNL_E10.3.Mechanical Engineer 3,Mechanical Engineer 3,Labor,54.0d,0.0,54.0,At Completion Units,10/2/2020,12/18/2020,0,0,0,0,0,0,0,0,0,0,1.03_Accelerator Systems (AS),1.03.07_AS SXR-HE Undulator (Soft X-Ray) - LBNL,1.03.07.01_AS SXR-HE Undulator Management & Integration - LBNL,,AS_LBL_MGMT_00_FY21 Q1 Management Support - SXR-HE - LBNL,Mechanical,,SLAC,Labor
107249,1.03,1.03.07,1.03.07.01,1.03.07.01,1.03.07.01,AS SXR-HE Undulator Management & Integration - LBNL,AS_LBL_MGMT_75,FY25 M&S - SXR-HE - LBNL,138.0,2465.0,2465.0,2465.0,10-01-24,04-30-25,0,0,LBNL,0%,LBNL_MSSC1.LBNL M&S (<$500K) (NO ESC) (G&A),LBNL M&S (<$500K) (NO ESC) (G&A),Nonlabor,0.0d,138.0,138.0,At Completion Units,10/1/2024,4/30/2025,0,0,0,0,0,0,0,0,0,0,1.03_Accelerator Systems (AS),1.03.07_AS SXR-HE Undulator (Soft X-Ray) - LBNL,1.03.07.01_AS SXR-HE Undulator Management & Integration - LBNL,,AS_LBL_MGMT_75_FY25 M&S - SXR-HE - LBNL,M&S,,LBNL,M&S
107250,1.03,1.03.07,1.03.07.01,1.03.07.01,1.03.07.01,AS SXR-HE Undulator Management & Integration - LBNL,AS_LBL_MGMT_65,FY24 M&S - SXR-HE - LBNL,243.0,2465.0,2465.0,2465.0,10-02-23,09-30-24,0,0,LBNL,0%,LBNL_MSSC1.LBNL M&S (<$500K) (NO ESC) (G&A),LBNL M&S (<$500K) (NO ESC) (G&A),Nonlabor,0.0d,243.0,243.0,At Completion Units,10/2/2023,9/30/2024,0,0,0,0,0,0,0,0,0,0,1.03_Accelerator Systems (AS),1.03.07_AS SXR-HE Undulator (Soft X-Ray) - LBNL,1.03.07.01_AS SXR-HE Undulator Management & Integration - LBNL,,AS_LBL_MGMT_65_FY24 M&S - SXR-HE - LBNL,M&S,,LBNL,M&S
107251,1.03,1.03.07,1.03.07.01,1.03.07.01,1.03.07.01,AS SXR-HE Undulator Management & Integration - LBNL,AS_LBL_MGMT_56,FY23 M&S - SXR-HE - LBNL,243.0,2465.0,2465.0,2465.0,10-03-22,09-29-23,0,0,LBNL,0%,LBNL_MSSC1.LBNL M&S (<$500K) (NO ESC) (G&A),LBNL M&S (<$500K) (NO ESC) (G&A),Nonlabor,0.0d,243.0,243.0,At Completion Units,10/3/2022,9/29/2023,0,0,0,0,0,0,0,0,0,0,1.03_Accelerator Systems (AS),1.03.07_AS SXR-HE Undulator (Soft X-Ray) - LBNL,1.03.07.01_AS SXR-HE Undulator Management & Integration - LBNL,,AS_LBL_MGMT_56_FY23 M&S - SXR-HE - LBNL,M&S,,LBNL,M&S
107252,1.03,1.03.07,1.03.07.01,1.03.07.01,1.03.07.01,AS SXR-HE Undulator Management & Integration - LBNL,AS_LBL_MGMT_46,FY22 M&S - SXR-HE - LBNL,244.0,2465.0,2465.0,2465.0,10-01-21,09-30-22,0,0,LBNL,0%,LBNL_MSSC1.LBNL M&S (<$500K) (NO ESC) (G&A),LBNL M&S (<$500K) (NO ESC) (G&A),Nonlabor,0.0d,244.0,244.0,At Completion Units,10/1/2021,9/30/2022,0,0,0,0,0,0,0,0,0,0,1.03_Accelerator Systems (AS),1.03.07_AS SXR-HE Undulator (Soft X-Ray) - LBNL,1.03.07.01_AS SXR-HE Undulator Management & Integration - LBNL,,AS_LBL_MGMT_46_FY22 M&S - SXR-HE - LBNL,M&S,,LBNL,M&S
107253,1.03,1.03.07,1.03.07.01,1.03.07.01,1.03.07.01,AS SXR-HE Undulator Management & Integration - LBNL,AS_LBL_MGMT_55,FY23 Management Travel & Conferences - SXR-HE - LBNL,243.0,25000.0,25000.0,25000.0,10-03-22,09-29-23,0,0,LBNL,0%,LBNL_TRVL.LBNL Travel,LBNL Travel,Nonlabor,0.0d,243.0,243.0,At Completion Units,10/3/2022,9/29/2023,0,0,0,0,0,0,0,0,0,0,1.03_Accelerator Systems (AS),1.03.07_AS SXR-HE Undulator (Soft X-Ray) - LBNL,1.03.07.01_AS SXR-HE Undulator Management & Integration - LBNL,,AS_LBL_MGMT_55_FY23 Management Travel & Conferences - SXR-HE - LBNL,Travel,,LBNL,M&S
107254,1.03,1.03.07,1.03.07.01,1.03.07.01,1.03.07.01,AS SXR-HE Undulator Management & Integration - LBNL,AS_LBL_MGMT_45,FY22 Management Travel & Conferences - SXR-HE - LBNL,244.0,25000.0,25000.0,25000.0,10-01-21,09-30-22,0,0,LBNL,0%,LBNL_TRVL.LBNL Travel,LBNL Travel,Nonlabor,0.0d,244.0,244.0,At Completion Units,10/1/2021,9/30/2022,0,0,0,0,0,0,0,0,0,0,1.03_Accelerator Systems (AS),1.03.07_AS SXR-HE Undulator (Soft X-Ray) - LBNL,1.03.07.01_AS SXR-HE Undulator Management & Integration - LBNL,,AS_LBL_MGMT_45_FY22 Management Travel & Conferences - SXR-HE - LBNL,Travel,,LBNL,M&S
107255,1.03,1.03.07,1.03.07.01,1.03.07.01,1.03.07.01,AS SXR-HE Undulator Management & Integration - LBNL,AS_LBL_MGMT_70,FY25 Management Support - SXR-HE - LBNL,138.0,0.0,0.0,0.0,10-01-24,04-30-25,0,0,LBNL,0%,LBNL_Z40.N.Project Planning & Controls,Project Planning & Controls,Labor,0.0d,138.0,138.0,At Completion Units,10/1/2024,4/30/2025,0,0,0,0,0,0,0,0,0,0,1.03_Accelerator Systems (AS),1.03.07_AS SXR-HE Undulator (Soft X-Ray) - LBNL,1.03.07.01_AS SXR-HE Undulator Management & Integration - LBNL,,AS_LBL_MGMT_70_FY25 Management Support - SXR-HE - LBNL,PPC,,SLAC,Labor
107256,1.03,1.03.07,1.03.07.01,1.03.07.01,1.03.07.01,AS SXR-HE Undulator Management & Integration - LBNL,AS_LBL_MGMT_70,FY25 Management Support - SXR-HE - LBNL,138.0,500.0,500.0,500.0,10-01-24,04-30-25,0,0,LBNL,0%,LBNL_E10.4.Mechanical Engineer 4,Mechanical Engineer 4,Labor,0.0d,138.0,138.0,At Completion Units,10/1/2024,4/30/2025,0,0,0,0,0,0,0,0,0,0,1.03_Accelerator Systems (AS),1.03.07_AS SXR-HE Undulator (Soft X-Ray) - LBNL,1.03.07.01_AS SXR-HE Undulator Management & Integration - LBNL,,AS_LBL_MGMT_70_FY25 Management Support - SXR-HE - LBNL,Mechanical,,SLAC,Labor
107257,1.03,1.03.07,1.03.07.01,1.03.07.01,1.03.07.01,AS SXR-HE Undulator Management & Integration - LBNL,AS_LBL_MGMT_70,FY25 Management Support - SXR-HE - LBNL,138.0,0.0,0.0,0.0,10-01-24,04-30-25,0,0,LBNL,0%,LBNL_E10.3.Mechanical Engineer 3,Mechanical Engineer 3,Labor,0.0d,138.0,138.0,At Completion Units,10/1/2024,4/30/2025,0,0,0,0,0,0,0,0,0,0,1.03_Accelerator Systems (AS),1.03.07_AS SXR-HE Undulator (Soft X-Ray) - LBNL,1.03.07.01_AS SXR-HE Undulator Management & Integration - LBNL,,AS_LBL_MGMT_70_FY25 Management Support - SXR-HE - LBNL,Mechanical,,SLAC,Labor
107258,1.03,1.03.07,1.03.07.01,1.03.07.01,1.03.07.01,AS SXR-HE Undulator Management & Integration - LBNL,AS_LBL_MGMT_60,FY24 Management Support - SXR-HE - LBNL,243.0,0.0,0.0,0.0,10-02-23,09-30-24,0,0,LBNL,0%,LBNL_Z40.N.Project Planning & Controls,Project Planning & Controls,Labor,0.0d,243.0,243.0,At Completion Units,10/2/2023,9/30/2024,0,0,0,0,0,0,0,0,0,0,1.03_Accelerator Systems (AS),1.03.07_AS SXR-HE Undulator (Soft X-Ray) - LBNL,1.03.07.01_AS SXR-HE Undulator Management & Integration - LBNL,,AS_LBL_MGMT_60_FY24 Management Support - SXR-HE - LBNL,PPC,,SLAC,Labor
107259,1.03,1.03.07,1.03.07.01,1.03.07.01,1.03.07.01,AS SXR-HE Undulator Management & Integration - LBNL,AS_LBL_MGMT_60,FY24 Management Support - SXR-HE - LBNL,243.0,874.0,874.0,874.0,10-02-23,09-30-24,0,0,LBNL,0%,LBNL_E10.4.Mechanical Engineer 4,Mechanical Engineer 4,Labor,0.0d,243.0,243.0,At Completion Units,10/2/2023,9/30/2024,0,0,0,0,0,0,0,0,0,0,1.03_Accelerator Systems (AS),1.03.07_AS SXR-HE Undulator (Soft X-Ray) - LBNL,1.03.07.01_AS SXR-HE Undulator Management & Integration - LBNL,,AS_LBL_MGMT_60_FY24 Management Support - SXR-HE - LBNL,Mechanical,,SLAC,Labor
107260,1.03,1.03.07,1.03.07.01,1.03.07.01,1.03.07.01,AS SXR-HE Undulator Management & Integration - LBNL,AS_LBL_MGMT_60,FY24 Management Support - SXR-HE - LBNL,243.0,0.0,0.0,0.0,10-02-23,09-30-24,0,0,LBNL,0%,LBNL_E10.3.Mechanical Engineer 3,Mechanical Engineer 3,Labor,0.0d,243.0,243.0,At Completion Units,10/2/2023,9/30/2024,0,0,0,0,0,0,0,0,0,0,1.03_Accelerator Systems (AS),1.03.07_AS SXR-HE Undulator (Soft X-Ray) - LBNL,1.03.07.01_AS SXR-HE Undulator Management & Integration - LBNL,,AS_LBL_MGMT_60_FY24 Management Support - SXR-HE - LBNL,Mechanical,,SLAC,Labor
107261,1.03,1.03.07,1.03.07.01,1.03.07.01,1.03.07.01,AS SXR-HE Undulator Management & Integration - LBNL,AS_LBL_MGMT_50,FY23 Management Support - SXR-HE - LBNL,243.0,0.0,0.0,0.0,10-03-22,09-29-23,0,0,LBNL,0%,LBNL_Z40.N.Project Planning & Controls,Project Planning & Controls,Labor,0.0d,243.0,243.0,At Completion Units,10/3/2022,9/29/2023,0,0,0,0,0,0,0,0,0,0,1.03_Accelerator Systems (AS),1.03.07_AS SXR-HE Undulator (Soft X-Ray) - LBNL,1.03.07.01_AS SXR-HE Undulator Management & Integration - LBNL,,AS_LBL_MGMT_50_FY23 Management Support - SXR-HE - LBNL,PPC,,SLAC,Labor
107262,1.03,1.03.07,1.03.07.01,1.03.07.01,1.03.07.01,AS SXR-HE Undulator Management & Integration - LBNL,AS_LBL_MGMT_50,FY23 Management Support - SXR-HE - LBNL,243.0,1056.0,1056.0,1056.0,10-03-22,09-29-23,0,0,LBNL,0%,LBNL_E10.4.Mechanical Engineer 4,Mechanical Engineer 4,Labor,0.0d,243.0,243.0,At Completion Units,10/3/2022,9/29/2023,0,0,0,0,0,0,0,0,0,0,1.03_Accelerator Systems (AS),1.03.07_AS SXR-HE Undulator (Soft X-Ray) - LBNL,1.03.07.01_AS SXR-HE Undulator Management & Integration - LBNL,,AS_LBL_MGMT_50_FY23 Management Support - SXR-HE - LBNL,Mechanical,,SLAC,Labor
107263,1.03,1.03.07,1.03.07.01,1.03.07.01,1.03.07.01,AS SXR-HE Undulator Management & Integration - LBNL,AS_LBL_MGMT_50,FY23 Management Support - SXR-HE - LBNL,243.0,0.0,0.0,0.0,10-03-22,09-29-23,0,0,LBNL,0%,LBNL_E10.3.Mechanical Engineer 3,Mechanical Engineer 3,Labor,0.0d,243.0,243.0,At Completion Units,10/3/2022,9/29/2023,0,0,0,0,0,0,0,0,0,0,1.03_Accelerator Systems (AS),1.03.07_AS SXR-HE Undulator (Soft X-Ray) - LBNL,1.03.07.01_AS SXR-HE Undulator Management & Integration - LBNL,,AS_LBL_MGMT_50_FY23 Management Support - SXR-HE - LBNL,Mechanical,,SLAC,Labor
107264,1.03,1.03.07,1.03.07.01,1.03.07.01,1.03.07.01,AS SXR-HE Undulator Management & Integration - LBNL,AS_LBL_MGMT_40,FY22 Management Support - SXR-HE - LBNL,244.0,0.0,0.0,0.0,10-01-21,09-30-22,0,0,LBNL,0%,LBNL_Z40.N.Project Planning & Controls,Project Planning & Controls,Labor,0.0d,244.0,244.0,At Completion Units,10/1/2021,9/30/2022,0,0,0,0,0,0,0,0,0,0,1.03_Accelerator Systems (AS),1.03.07_AS SXR-HE Undulator (Soft X-Ray) - LBNL,1.03.07.01_AS SXR-HE Undulator Management & Integration - LBNL,,AS_LBL_MGMT_40_FY22 Management Support - SXR-HE - LBNL,PPC,,SLAC,Labor
107265,1.03,1.03.07,1.03.07.01,1.03.07.01,1.03.07.01,AS SXR-HE Undulator Management & Integration - LBNL,AS_LBL_MGMT_40,FY22 Management Support - SXR-HE - LBNL,244.0,1250.0,1250.0,1250.0,10-01-21,09-30-22,0,0,LBNL,0%,LBNL_E10.4.Mechanical Engineer 4,Mechanical Engineer 4,Labor,0.0d,244.0,244.0,At Completion Units,10/1/2021,9/30/2022,0,0,0,0,0,0,0,0,0,0,1.03_Accelerator Systems (AS),1.03.07_AS SXR-HE Undulator (Soft X-Ray) - LBNL,1.03.07.01_AS SXR-HE Undulator Management & Integration - LBNL,,AS_LBL_MGMT_40_FY22 Management Support - SXR-HE - LBNL,Mechanical,,SLAC,Labor
107266,1.03,1.03.07,1.03.07.01,1.03.07.01,1.03.07.01,AS SXR-HE Undulator Management & Integration - LBNL,AS_LBL_MGMT_40,FY22 Management Support - SXR-HE - LBNL,244.0,0.0,0.0,0.0,10-01-21,09-30-22,0,0,LBNL,0%,LBNL_E10.3.Mechanical Engineer 3,Mechanical Engineer 3,Labor,0.0d,244.0,244.0,At Completion Units,10/1/2021,9/30/2022,0,0,0,0,0,0,0,0,0,0,1.03_Accelerator Systems (AS),1.03.07_AS SXR-HE Undulator (Soft X-Ray) - LBNL,1.03.07.01_AS SXR-HE Undulator Management & Integration - LBNL,,AS_LBL_MGMT_40_FY22 Management Support - SXR-HE - LBNL,Mechanical,,SLAC,Labor
107905,1.03,1.03.07,1.03.07.05,1.03.07.05.01,1.03.07.05.01,SXR-HE Undulator Magnetic System Design,AS_LBL_DE_010,Develop Magnetic System Design Optimization,20.0,160.0,0.0,160.0,10-05-2020,02-26-2021,0,0,LBNL,100%,LBNL_S36.4.Mechanical Staff Sci/Engr,Mechanical Staff Sci/Engr,Labor,92.0d,0.0,92.0,At Completion Units,10/2/2020,2/1/2021,0,0,0,0,0,0,0,0,0,0,1.03_Accelerator Systems (AS),1.03.07_AS SXR-HE Undulator (Soft X-Ray) - LBNL,1.03.07.05_AS SXR-HE Undulator Engineering and Design - LBNL,1.03.07.05.01_SXR-HE Undulator Magnetic System Design,AS_LBL_DE_010_Develop Magnetic System Design Optimization,Mechanical,,SLAC,Labor
107906,1.03,1.03.07,1.03.07.05,1.03.07.05.01,1.03.07.05.01,SXR-HE Undulator Magnetic System Design,AS_LBL_DE_010,Develop Magnetic System Design Optimization,20.0,80.0,0.0,80.0,10-05-2020,02-26-2021,0,0,LBNL,100%,LBNL_N30.2.Sr Mechanical Engr Associate,Sr Mechanical Engr Associate,Labor,92.0d,0.0,92.0,At Completion Units,10/2/2020,2/1/2021,0,0,0,0,0,0,0,0,0,0,1.03_Accelerator Systems (AS),1.03.07_AS SXR-HE Undulator (Soft X-Ray) - LBNL,1.03.07.05_AS SXR-HE Undulator Engineering and Design - LBNL,1.03.07.05.01_SXR-HE Undulator Magnetic System Design,AS_LBL_DE_010_Develop Magnetic System Design Optimization,Mechanical,,SLAC,Labor
107907,1.03,1.03.07,1.03.07.05,1.03.07.05.01,1.03.07.05.01,SXR-HE Undulator Magnetic System Design,AS_LBL_DE_040,Prepare Final Design - Generate Magnetic System Drawings,31.0,40.0,0.0,40.0,11-23-2020,03-12-2021,0,0,LBNL,100%,LBNL_S36.4.Mechanical Staff Sci/Engr,Mechanical Staff Sci/Engr,Labor,66.0d,0.0,66.0,At Completion Units,10/2/2020,3/19/2021,0,0,0,0,0,0,0,0,0,0,1.03_Accelerator Systems (AS),1.03.07_AS SXR-HE Undulator (Soft X-Ray) - LBNL,1.03.07.05_AS SXR-HE Undulator Engineering and Design - LBNL,1.03.07.05.01_SXR-HE Undulator Magnetic System Design,AS_LBL_DE_040_Prepare Final Design - Generate Magnetic System Drawings,Mechanical,,SLAC,Labor
107908,1.03,1.03.07,1.03.07.05,1.03.07.05.01,1.03.07.05.01,SXR-HE Undulator Magnetic System Design,AS_LBL_DE_040,Prepare Final Design - Generate Magnetic System Drawings,31.0,160.0,0.0,160.0,11-23-2020,03-12-2021,0,0,LBNL,100%,LBNL_N30.2.Sr Mechanical Engr Associate,Sr Mechanical Engr Associate,Labor,66.0d,0.0,66.0,At Completion Units,10/2/2020,3/19/2021,0,0,0,0,0,0,0,0,0,0,1.03_Accelerator Systems (AS),1.03.07_AS SXR-HE Undulator (Soft X-Ray) - LBNL,1.03.07.05_AS SXR-HE Undulator Engineering and Design - LBNL,1.03.07.05.01_SXR-HE Undulator Magnetic System Design,AS_LBL_DE_040_Prepare Final Design - Generate Magnetic System Drawings,Mechanical,,SLAC,Labor
107909,1.03,1.03.07,1.03.07.05,1.03.07.05.01,1.03.07.05.01,SXR-HE Undulator Magnetic System Design,AS_LBL_DE_040,Prepare Final Design - Generate Magnetic System Drawings,31.0,0.0,0.0,0.0,11-23-2020,03-12-2021,0,0,LBNL,0%,LBNL_S13.6.LBNL_Physicist Senior Sci/Engineer,LBNL_Physicist Senior Sci/Engineer,Labor,66.0d,0.0,66.0,At Completion Units,10/2/2020,3/19/2021,0,0,0,0,0,0,0,0,0,0,1.03_Accelerator Systems (AS),1.03.07_AS SXR-HE Undulator (Soft X-Ray) - LBNL,1.03.07.05_AS SXR-HE Undulator Engineering and Design - LBNL,1.03.07.05.01_SXR-HE Undulator Magnetic System Design,AS_LBL_DE_040_Prepare Final Design - Generate Magnetic System Drawings,Engineer Physicist,,SLAC,Labor
107910,1.03,1.03.07,1.03.07.05,1.03.07.05.01,1.03.07.05.01,SXR-HE Undulator Magnetic System Design,AS_LBL_DE_040,Prepare Final Design - Generate Magnetic System Drawings,31.0,0.0,0.0,0.0,11-23-2020,03-12-2021,0,0,LBNL,0%,LBNL_E10.5.LBNL_Mechanical Engineer 2,LBNL_Mechanical Engineer 2,Labor,66.0d,0.0,66.0,At Completion Units,10/2/2020,3/19/2021,0,0,0,0,0,0,0,0,0,0,1.03_Accelerator Systems (AS),1.03.07_AS SXR-HE Undulator (Soft X-Ray) - LBNL,1.03.07.05_AS SXR-HE Undulator Engineering and Design - LBNL,1.03.07.05.01_SXR-HE Undulator Magnetic System Design,AS_LBL_DE_040_Prepare Final Design - Generate Magnetic System Drawings,Mechanical,,SLAC,Labor
107911,1.03,1.03.07,1.03.07.05,1.03.07.05.01,1.03.07.05.01,SXR-HE Undulator Magnetic System Design,AS_LBL_DE_030,Prepare 1 Pole Prototype Design & Lifetime Testing - Magnetic System Design,20.0,80.0,0.0,80.0,12-01-2020,02-19-2021,0,0,LBNL,100%,LBNL_707.3.Mechanical Engr Machinist III,Mechanical Engr Machinist III,Labor,47.0d,0.0,47.0,At Completion Units,10/2/2020,3/22/2021,0,0,0,0,0,0,0,0,0,0,1.03_Accelerator Systems (AS),1.03.07_AS SXR-HE Undulator (Soft X-Ray) - LBNL,1.03.07.05_AS SXR-HE Undulator Engineering and Design - LBNL,1.03.07.05.01_SXR-HE Undulator Magnetic System Design,AS_LBL_DE_030_Prepare 1 Pole Prototype Design & Lifetime Testing - Magnetic System Design,Mechanical,,SLAC,Labor
107912,1.03,1.03.07,1.03.07.05,1.03.07.05.01,1.03.07.05.01,SXR-HE Undulator Magnetic System Design,AS_LBL_DE_030,Prepare 1 Pole Prototype Design & Lifetime Testing - Magnetic System Design,20.0,60.0,0.0,60.0,12-01-2020,02-19-2021,0,0,LBNL,100%,LBNL_D50.2.LBNL_Software Developer 2,LBNL_Software Developer 2,Labor,47.0d,0.0,47.0,At Completion Units,10/2/2020,3/22/2021,0,0,0,0,0,0,0,0,0,0,1.03_Accelerator Systems (AS),1.03.07_AS SXR-HE Undulator (Soft X-Ray) - LBNL,1.03.07.05_AS SXR-HE Undulator Engineering and Design - LBNL,1.03.07.05.01_SXR-HE Undulator Magnetic System Design,AS_LBL_DE_030_Prepare 1 Pole Prototype Design & Lifetime Testing - Magnetic System Design,Contols,,LBNL,Labor
107913,1.03,1.03.07,1.03.07.05,1.03.07.05.01,1.03.07.05.01,SXR-HE Undulator Magnetic System Design,AS_LBL_DE_030,Prepare 1 Pole Prototype Design & Lifetime Testing - Magnetic System Design,20.0,80.0,0.0,80.0,12-01-2020,02-19-2021,0,0,LBNL,100%,LBNL_S36.4.Mechanical Staff Sci/Engr,Mechanical Staff Sci/Engr,Labor,47.0d,0.0,47.0,At Completion Units,10/2/2020,3/22/2021,0,0,0,0,0,0,0,0,0,0,1.03_Accelerator Systems (AS),1.03.07_AS SXR-HE Undulator (Soft X-Ray) - LBNL,1.03.07.05_AS SXR-HE Undulator Engineering and Design - LBNL,1.03.07.05.01_SXR-HE Undulator Magnetic System Design,AS_LBL_DE_030_Prepare 1 Pole Prototype Design & Lifetime Testing - Magnetic System Design,Mechanical,,SLAC,Labor
107914,1.03,1.03.07,1.03.07.05,1.03.07.05.01,1.03.07.05.01,SXR-HE Undulator Magnetic System Design,AS_LBL_DE_030,Prepare 1 Pole Prototype Design & Lifetime Testing - Magnetic System Design,20.0,120.0,0.0,120.0,12-01-2020,02-19-2021,0,0,LBNL,100%,LBNL_706.3.Mechanical Engr Tech III,Mechanical Engr Tech III,Labor,47.0d,0.0,47.0,At Completion Units,10/2/2020,3/22/2021,0,0,0,0,0,0,0,0,0,0,1.03_Accelerator Systems (AS),1.03.07_AS SXR-HE Undulator (Soft X-Ray) - LBNL,1.03.07.05_AS SXR-HE Undulator Engineering and Design - LBNL,1.03.07.05.01_SXR-HE Undulator Magnetic System Design,AS_LBL_DE_030_Prepare 1 Pole Prototype Design & Lifetime Testing - Magnetic System Design,Mechanical,Tech,SLAC,Labor
107915,1.03,1.03.07,1.03.07.05,1.03.07.05.01,1.03.07.05.01,SXR-HE Undulator Magnetic System Design,AS_LBL_DE_030,Prepare 1 Pole Prototype Design & Lifetime Testing - Magnetic System Design,20.0,0.0,0.0,0.0,12-01-2020,02-19-2021,0,0,LBNL,0%,LBNL_E10.5.LBNL_Mechanical Engineer 2,LBNL_Mechanical Engineer 2,Labor,47.0d,0.0,47.0,At Completion Units,10/2/2020,3/22/2021,0,0,0,0,0,0,0,0,0,0,1.03_Accelerator Systems (AS),1.03.07_AS SXR-HE Undulator (Soft X-Ray) - LBNL,1.03.07.05_AS SXR-HE Undulator Engineering and Design - LBNL,1.03.07.05.01_SXR-HE Undulator Magnetic System Design,AS_LBL_DE_030_Prepare 1 Pole Prototype Design & Lifetime Testing - Magnetic System Design,Mechanical,,SLAC,Labor
107916,1.03,1.03.07,1.03.07.05,1.03.07.05.01,1.03.07.05.01,SXR-HE Undulator Magnetic System Design,AS_LBL_DE_110,Update 5-point Measurement System Design - Magnetic System Design,30.0,20.0,0.0,14.0,04-26-2021,06-18-2021,0,0,LBNL,100%,LBNL_N30.2.Sr Mechanical Engr Associate,Sr Mechanical Engr Associate,Labor,38.0d,0.0,38.0,At Completion Units,4/27/2021,6/8/2021,0,0,0,0,0,0,0,0,0,0,1.03_Accelerator Systems (AS),1.03.07_AS SXR-HE Undulator (Soft X-Ray) - LBNL,1.03.07.05_AS SXR-HE Undulator Engineering and Design - LBNL,1.03.07.05.01_SXR-HE Undulator Magnetic System Design,AS_LBL_DE_110_Update 5-point Measurement System Design - Magnetic System Design,Mechanical,,SLAC,Labor
107917,1.03,1.03.07,1.03.07.05,1.03.07.05.01,1.03.07.05.01,SXR-HE Undulator Magnetic System Design,AS_LBL_DE_110,Update 5-point Measurement System Design - Magnetic System Design,30.0,8.0,0.0,14.0,04-26-2021,06-18-2021,0,0,LBNL,100%,LBNL_S36.4.Mechanical Staff Sci/Engr,Mechanical Staff Sci/Engr,Labor,38.0d,0.0,38.0,At Completion Units,4/27/2021,6/8/2021,0,0,0,0,0,0,0,0,0,0,1.03_Accelerator Systems (AS),1.03.07_AS SXR-HE Undulator (Soft X-Ray) - LBNL,1.03.07.05_AS SXR-HE Undulator Engineering and Design - LBNL,1.03.07.05.01_SXR-HE Undulator Magnetic System Design,AS_LBL_DE_110_Update 5-point Measurement System Design - Magnetic System Design,Mechanical,,SLAC,Labor
107918,1.03,1.03.07,1.03.07.05,1.03.07.05.01,1.03.07.05.01,SXR-HE Undulator Magnetic System Design,AS_LBL_DE_125,Evaluate & Incorporate Short Protype Results - Magnetic System Design,40.0,40.0,19.3,40.0,08-24-2021,10-28-21,0,0,LBNL,51.67%,LBNL_S36.4.Mechanical Staff Sci/Engr,Mechanical Staff Sci/Engr,Labor,27.0d,20.0,47.0,At Completion Units,9/20/2021,10/28/2021,0,0,0,0,0,0,0,0,0,0,1.03_Accelerator Systems (AS),1.03.07_AS SXR-HE Undulator (Soft X-Ray) - LBNL,1.03.07.05_AS SXR-HE Undulator Engineering and Design - LBNL,1.03.07.05.01_SXR-HE Undulator Magnetic System Design,AS_LBL_DE_125_Evaluate & Incorporate Short Protype Results - Magnetic System Design,Mechanical,,SLAC,Labor
107919,1.03,1.03.07,1.03.07.05,1.03.07.05.01,1.03.07.05.01,SXR-HE Undulator Magnetic System Design,AS_LBL_DE_125,Evaluate & Incorporate Short Protype Results - Magnetic System Design,40.0,24.0,3.3,24.0,08-24-2021,10-28-21,0,0,LBNL,86.11%,LBNL_N30.2.Sr Mechanical Engr Associate,Sr Mechanical Engr Associate,Labor,27.0d,20.0,47.0,At Completion Units,9/20/2021,10/28/2021,0,0,0,0,0,0,0,0,0,0,1.03_Accelerator Systems (AS),1.03.07_AS SXR-HE Undulator (Soft X-Ray) - LBNL,1.03.07.05_AS SXR-HE Undulator Engineering and Design - LBNL,1.03.07.05.01_SXR-HE Undulator Magnetic System Design,AS_LBL_DE_125_Evaluate & Incorporate Short Protype Results - Magnetic System Design,Mechanical,,SLAC,Labor
107920,1.03,1.03.07,1.03.07.05,1.03.07.05.01,1.03.07.05.01,SXR-HE Undulator Magnetic System Design,AS_LBL_DE_125,Evaluate & Incorporate Short Protype Results - Magnetic System Design,40.0,60.0,39.3,60.0,08-24-2021,10-28-21,0,0,LBNL,34.44%,LBNL_E10.4.Mechanical Engineer 4,Mechanical Engineer 4,Labor,27.0d,20.0,47.0,At Completion Units,9/20/2021,10/28/2021,0,0,0,0,0,0,0,0,0,0,1.03_Accelerator Systems (AS),1.03.07_AS SXR-HE Undulator (Soft X-Ray) - LBNL,1.03.07.05_AS SXR-HE Undulator Engineering and Design - LBNL,1.03.07.05.01_SXR-HE Undulator Magnetic System Design,AS_LBL_DE_125_Evaluate & Incorporate Short Protype Results - Magnetic System Design,Mechanical,,SLAC,Labor
107921,1.03,1.03.07,1.03.07.05,1.03.07.05.01,1.03.07.05.01,SXR-HE Undulator Magnetic System Design,AS_LBL_DE_120,Develop Magnet Sorting Parameters - Magnetic System Design,9.0,80.0,0.0,80.0,07-01-2021,07-29-2021,0,0,LBNL,100%,LBNL_S36.4.Mechanical Staff Sci/Engr,Mechanical Staff Sci/Engr,Labor,19.0d,0.0,19.0,At Completion Units,4/27/2021,8/4/2021,0,0,0,0,0,0,0,0,0,0,1.03_Accelerator Systems (AS),1.03.07_AS SXR-HE Undulator (Soft X-Ray) - LBNL,1.03.07.05_AS SXR-HE Undulator Engineering and Design - LBNL,1.03.07.05.01_SXR-HE Undulator Magnetic System Design,AS_LBL_DE_120_Develop Magnet Sorting Parameters - Magnetic System Design,Mechanical,,SLAC,Labor
107922,1.03,1.03.07,1.03.07.05,1.03.07.05.01,1.03.07.05.01,SXR-HE Undulator Magnetic System Design,AS_LBL_DE_080,Prepare for Magnetic System Preliminary Design Review,20.0,20.0,0.0,20.0,02-22-2021,03-11-2021,0,0,LBNL,100%,LBNL_D50.2.LBNL_Software Developer 2,LBNL_Software Developer 2,Labor,13.0d,0.0,13.0,At Completion Units,3/23/2021,4/2/2021,0,0,0,0,0,0,0,0,0,0,1.03_Accelerator Systems (AS),1.03.07_AS SXR-HE Undulator (Soft X-Ray) - LBNL,1.03.07.05_AS SXR-HE Undulator Engineering and Design - LBNL,1.03.07.05.01_SXR-HE Undulator Magnetic System Design,AS_LBL_DE_080_Prepare for Magnetic System Preliminary Design Review,Contols,,LBNL,Labor
107923,1.03,1.03.07,1.03.07.05,1.03.07.05.01,1.03.07.05.01,SXR-HE Undulator Magnetic System Design,AS_LBL_DE_070,Prepare Module Assembly Tooling Design & Drawings,25.0,20.0,0.0,30.0,05-24-2021,06-11-2021,0,0,LBNL,100%,LBNL_D50.2.LBNL_Software Developer 2,LBNL_Software Developer 2,Labor,13.0d,0.0,13.0,At Completion Units,3/22/2021,4/2/2021,0,0,0,0,0,0,0,0,0,0,1.03_Accelerator Systems (AS),1.03.07_AS SXR-HE Undulator (Soft X-Ray) - LBNL,1.03.07.05_AS SXR-HE Undulator Engineering and Design - LBNL,1.03.07.05.01_SXR-HE Undulator Magnetic System Design,AS_LBL_DE_070_Prepare Module Assembly Tooling Design & Drawings,Contols,,LBNL,Labor
107924,1.03,1.03.07,1.03.07.05,1.03.07.05.01,1.03.07.05.01,SXR-HE Undulator Magnetic System Design,AS_LBL_DE_070,Prepare Module Assembly Tooling Design & Drawings,25.0,40.0,0.0,30.0,05-24-2021,06-11-2021,0,0,LBNL,100%,LBNL_N30.2.Sr Mechanical Engr Associate,Sr Mechanical Engr Associate,Labor,13.0d,0.0,13.0,At Completion Units,3/22/2021,4/2/2021,0,0,0,0,0,0,0,0,0,0,1.03_Accelerator Systems (AS),1.03.07_AS SXR-HE Undulator (Soft X-Ray) - LBNL,1.03.07.05_AS SXR-HE Undulator Engineering and Design - LBNL,1.03.07.05.01_SXR-HE Undulator Magnetic System Design,AS_LBL_DE_070_Prepare Module Assembly Tooling Design & Drawings,Mechanical,,SLAC,Labor
107925,1.03,1.03.07,1.03.07.05,1.03.07.05.01,1.03.07.05.01,SXR-HE Undulator Magnetic System Design,AS_LBL_DE_080,Prepare for Magnetic System Preliminary Design Review,20.0,0.0,0.0,0.0,02-22-2021,03-11-2021,0,0,LBNL,0%,LBNL_E10.2.Mechanical Engineer 2,Mechanical Engineer 2,Labor,13.0d,0.0,13.0,At Completion Units,3/23/2021,4/2/2021,0,0,0,0,0,0,0,0,0,0,1.03_Accelerator Systems (AS),1.03.07_AS SXR-HE Undulator (Soft X-Ray) - LBNL,1.03.07.05_AS SXR-HE Undulator Engineering and Design - LBNL,1.03.07.05.01_SXR-HE Undulator Magnetic System Design,AS_LBL_DE_080_Prepare for Magnetic System Preliminary Design Review,Mechanical,,SLAC,Labor
107926,1.03,1.03.07,1.03.07.05,1.03.07.05.01,1.03.07.05.01,SXR-HE Undulator Magnetic System Design,AS_LBL_DE_080,Prepare for Magnetic System Preliminary Design Review,20.0,40.0,0.0,40.0,02-22-2021,03-11-2021,0,0,LBNL,100%,LBNL_S36.4.Mechanical Staff Sci/Engr,Mechanical Staff Sci/Engr,Labor,13.0d,0.0,13.0,At Completion Units,3/23/2021,4/2/2021,0,0,0,0,0,0,0,0,0,0,1.03_Accelerator Systems (AS),1.03.07_AS SXR-HE Undulator (Soft X-Ray) - LBNL,1.03.07.05_AS SXR-HE Undulator Engineering and Design - LBNL,1.03.07.05.01_SXR-HE Undulator Magnetic System Design,AS_LBL_DE_080_Prepare for Magnetic System Preliminary Design Review,Mechanical,,SLAC,Labor
107927,1.03,1.03.07,1.03.07.05,1.03.07.05.01,1.03.07.05.01,SXR-HE Undulator Magnetic System Design,AS_LBL_DE_080,Prepare for Magnetic System Preliminary Design Review,20.0,20.0,0.0,20.0,02-22-2021,03-11-2021,0,0,LBNL,100%,LBNL_E10.4.Mechanical Engineer 4,Mechanical Engineer 4,Labor,13.0d,0.0,13.0,At Completion Units,3/23/2021,4/2/2021,0,0,0,0,0,0,0,0,0,0,1.03_Accelerator Systems (AS),1.03.07_AS SXR-HE Undulator (Soft X-Ray) - LBNL,1.03.07.05_AS SXR-HE Undulator Engineering and Design - LBNL,1.03.07.05.01_SXR-HE Undulator Magnetic System Design,AS_LBL_DE_080_Prepare for Magnetic System Preliminary Design Review,Mechanical,,SLAC,Labor
107928,1.03,1.03.07,1.03.07.05,1.03.07.05.01,1.03.07.05.01,SXR-HE Undulator Magnetic System Design,AS_LBL_DE_080,Prepare for Magnetic System Preliminary Design Review,20.0,20.0,0.0,20.0,02-22-2021,03-11-2021,0,0,LBNL,100%,LBNL_E10.3.Mechanical Engineer 3,Mechanical Engineer 3,Labor,13.0d,0.0,13.0,At Completion Units,3/23/2021,4/2/2021,0,0,0,0,0,0,0,0,0,0,1.03_Accelerator Systems (AS),1.03.07_AS SXR-HE Undulator (Soft X-Ray) - LBNL,1.03.07.05_AS SXR-HE Undulator Engineering and Design - LBNL,1.03.07.05.01_SXR-HE Undulator Magnetic System Design,AS_LBL_DE_080_Prepare for Magnetic System Preliminary Design Review,Mechanical,,SLAC,Labor
107929,1.03,1.03.07,1.03.07.05,1.03.07.05.01,1.03.07.05.01,SXR-HE Undulator Magnetic System Design,AS_LBL_DE_080,Prepare for Magnetic System Preliminary Design Review,20.0,0.0,0.0,0.0,02-22-2021,03-11-2021,0,0,LBNL,0%,LBNL_N30.2.Sr Mechanical Engr Associate,Sr Mechanical Engr Associate,Labor,13.0d,0.0,13.0,At Completion Units,3/23/2021,4/2/2021,0,0,0,0,0,0,0,0,0,0,1.03_Accelerator Systems (AS),1.03.07_AS SXR-HE Undulator (Soft X-Ray) - LBNL,1.03.07.05_AS SXR-HE Undulator Engineering and Design - LBNL,1.03.07.05.01_SXR-HE Undulator Magnetic System Design,AS_LBL_DE_080_Prepare for Magnetic System Preliminary Design Review,Mechanical,,SLAC,Labor
107930,1.03,1.03.07,1.03.07.05,1.03.07.05.01,1.03.07.05.01,SXR-HE Undulator Magnetic System Design,AS_LBL_DE_100,Address Review Recommendations - Magnetic System Design,31.0,8.0,0.0,8.0,03-18-2021,04-02-2021,0,0,LBNL,100%,LBNL_E10.2.Mechanical Engineer 2,Mechanical Engineer 2,Labor,11.0d,0.0,11.0,At Completion Units,4/6/2021,4/26/2021,0,0,0,0,0,0,0,0,0,0,1.03_Accelerator Systems (AS),1.03.07_AS SXR-HE Undulator (Soft X-Ray) - LBNL,1.03.07.05_AS SXR-HE Undulator Engineering and Design - LBNL,1.03.07.05.01_SXR-HE Undulator Magnetic System Design,AS_LBL_DE_100_Address Review Recommendations - Magnetic System Design,Mechanical,,SLAC,Labor
107931,1.03,1.03.07,1.03.07.05,1.03.07.05.01,1.03.07.05.01,SXR-HE Undulator Magnetic System Design,AS_LBL_DE_100,Address Review Recommendations - Magnetic System Design,31.0,16.0,0.0,16.0,03-18-2021,04-02-2021,0,0,LBNL,100%,LBNL_S36.4.Mechanical Staff Sci/Engr,Mechanical Staff Sci/Engr,Labor,11.0d,0.0,11.0,At Completion Units,4/6/2021,4/26/2021,0,0,0,0,0,0,0,0,0,0,1.03_Accelerator Systems (AS),1.03.07_AS SXR-HE Undulator (Soft X-Ray) - LBNL,1.03.07.05_AS SXR-HE Undulator Engineering and Design - LBNL,1.03.07.05.01_SXR-HE Undulator Magnetic System Design,AS_LBL_DE_100_Address Review Recommendations - Magnetic System Design,Mechanical,,SLAC,Labor
107932,1.03,1.03.07,1.03.07.05,1.03.07.05.01,1.03.07.05.01,SXR-HE Undulator Magnetic System Design,AS_LBL_DE_100,Address Review Recommendations - Magnetic System Design,31.0,8.0,0.0,8.0,03-18-2021,04-02-2021,0,0,LBNL,100%,LBNL_E10.4.Mechanical Engineer 4,Mechanical Engineer 4,Labor,11.0d,0.0,11.0,At Completion Units,4/6/2021,4/26/2021,0,0,0,0,0,0,0,0,0,0,1.03_Accelerator Systems (AS),1.03.07_AS SXR-HE Undulator (Soft X-Ray) - LBNL,1.03.07.05_AS SXR-HE Undulator Engineering and Design - LBNL,1.03.07.05.01_SXR-HE Undulator Magnetic System Design,AS_LBL_DE_100_Address Review Recommendations - Magnetic System Design,Mechanical,,SLAC,Labor
107933,1.03,1.03.07,1.03.07.05,1.03.07.05.01,1.03.07.05.01,SXR-HE Undulator Magnetic System Design,AS_LBL_DE_100,Address Review Recommendations - Magnetic System Design,31.0,8.0,0.0,8.0,03-18-2021,04-02-2021,0,0,LBNL,100%,LBNL_E10.3.Mechanical Engineer 3,Mechanical Engineer 3,Labor,11.0d,0.0,11.0,At Completion Units,4/6/2021,4/26/2021,0,0,0,0,0,0,0,0,0,0,1.03_Accelerator Systems (AS),1.03.07_AS SXR-HE Undulator (Soft X-Ray) - LBNL,1.03.07.05_AS SXR-HE Undulator Engineering and Design - LBNL,1.03.07.05.01_SXR-HE Undulator Magnetic System Design,AS_LBL_DE_100_Address Review Recommendations - Magnetic System Design,Mechanical,,SLAC,Labor
107934,1.03,1.03.07,1.03.07.05,1.03.07.05.01,1.03.07.05.01,SXR-HE Undulator Magnetic System Design,AS_LBL_DE_060,Prepare Short Magnet Module Prototype Design & Drawings,29.0,20.0,0.0,20.0,03-22-2021,04-02-2021,0,0,LBNL,100%,LBNL_S36.4.Mechanical Staff Sci/Engr,Mechanical Staff Sci/Engr,Labor,9.0d,0.0,9.0,At Completion Units,3/22/2021,4/2/2021,0,0,0,0,0,0,0,0,0,0,1.03_Accelerator Systems (AS),1.03.07_AS SXR-HE Undulator (Soft X-Ray) - LBNL,1.03.07.05_AS SXR-HE Undulator Engineering and Design - LBNL,1.03.07.05.01_SXR-HE Undulator Magnetic System Design,AS_LBL_DE_060_Prepare Short Magnet Module Prototype Design & Drawings,Mechanical,,SLAC,Labor
107935,1.03,1.03.07,1.03.07.05,1.03.07.05.01,1.03.07.05.01,SXR-HE Undulator Magnetic System Design,AS_LBL_DE_060,Prepare Short Magnet Module Prototype Design & Drawings,29.0,40.0,0.0,40.0,03-22-2021,04-02-2021,0,0,LBNL,100%,LBNL_N30.2.Sr Mechanical Engr Associate,Sr Mechanical Engr Associate,Labor,9.0d,0.0,9.0,At Completion Units,3/22/2021,4/2/2021,0,0,0,0,0,0,0,0,0,0,1.03_Accelerator Systems (AS),1.03.07_AS SXR-HE Undulator (Soft X-Ray) - LBNL,1.03.07.05_AS SXR-HE Undulator Engineering and Design - LBNL,1.03.07.05.01_SXR-HE Undulator Magnetic System Design,AS_LBL_DE_060_Prepare Short Magnet Module Prototype Design & Drawings,Mechanical,,SLAC,Labor
107936,1.03,1.03.07,1.03.07.05,1.03.07.05.01,1.03.07.05.01,SXR-HE Undulator Magnetic System Design,AS_LBL_DE_090,R_PDR: Prelim. Design Review - Magnetic System Design,1.0,8.0,0.0,8.0,03-12-2021,03-12-2021,0,0,LBNL,100%,LBNL_D50.2.LBNL_Software Developer 2,LBNL_Software Developer 2,Labor,0.0d,0.0,0.0,At Completion Units,4/5/2021,4/5/2021,0,0,0,0,0,0,0,0,0,0,1.03_Accelerator Systems (AS),1.03.07_AS SXR-HE Undulator (Soft X-Ray) - LBNL,1.03.07.05_AS SXR-HE Undulator Engineering and Design - LBNL,1.03.07.05.01_SXR-HE Undulator Magnetic System Design,AS_LBL_DE_090_R_PDR: Prelim. Design Review - Magnetic System Design,Contols,,LBNL,Labor
107937,1.03,1.03.07,1.03.07.05,1.03.07.05.01,1.03.07.05.01,SXR-HE Undulator Magnetic System Design,AS_LBL_DE_090,R_PDR: Prelim. Design Review - Magnetic System Design,1.0,8.0,0.0,8.0,03-12-2021,03-12-2021,0,0,LBNL,100%,LBNL_S36.4.Mechanical Staff Sci/Engr,Mechanical Staff Sci/Engr,Labor,0.0d,0.0,0.0,At Completion Units,4/5/2021,4/5/2021,0,0,0,0,0,0,0,0,0,0,1.03_Accelerator Systems (AS),1.03.07_AS SXR-HE Undulator (Soft X-Ray) - LBNL,1.03.07.05_AS SXR-HE Undulator Engineering and Design - LBNL,1.03.07.05.01_SXR-HE Undulator Magnetic System Design,AS_LBL_DE_090_R_PDR: Prelim. Design Review - Magnetic System Design,Mechanical,,SLAC,Labor
107938,1.03,1.03.07,1.03.07.05,1.03.07.05.01,1.03.07.05.01,SXR-HE Undulator Magnetic System Design,AS_LBL_DE_090,R_PDR: Prelim. Design Review - Magnetic System Design,1.0,8.0,0.0,8.0,03-12-2021,03-12-2021,0,0,LBNL,100%,LBNL_E10.4.Mechanical Engineer 4,Mechanical Engineer 4,Labor,0.0d,0.0,0.0,At Completion Units,4/5/2021,4/5/2021,0,0,0,0,0,0,0,0,0,0,1.03_Accelerator Systems (AS),1.03.07_AS SXR-HE Undulator (Soft X-Ray) - LBNL,1.03.07.05_AS SXR-HE Undulator Engineering and Design - LBNL,1.03.07.05.01_SXR-HE Undulator Magnetic System Design,AS_LBL_DE_090_R_PDR: Prelim. Design Review - Magnetic System Design,Mechanical,,SLAC,Labor
107939,1.03,1.03.07,1.03.07.05,1.03.07.05.01,1.03.07.05.01,SXR-HE Undulator Magnetic System Design,AS_LBL_DE_090,R_PDR: Prelim. Design Review - Magnetic System Design,1.0,16.0,0.0,16.0,03-12-2021,03-12-2021,0,0,LBNL,100%,LBNL_E10.3.Mechanical Engineer 3,Mechanical Engineer 3,Labor,0.0d,0.0,0.0,At Completion Units,4/5/2021,4/5/2021,0,0,0,0,0,0,0,0,0,0,1.03_Accelerator Systems (AS),1.03.07_AS SXR-HE Undulator (Soft X-Ray) - LBNL,1.03.07.05_AS SXR-HE Undulator Engineering and Design - LBNL,1.03.07.05.01_SXR-HE Undulator Magnetic System Design,AS_LBL_DE_090_R_PDR: Prelim. Design Review - Magnetic System Design,Mechanical,,SLAC,Labor
107940,1.03,1.03.07,1.03.07.05,1.03.07.05.01,1.03.07.05.01,SXR-HE Undulator Magnetic System Design,AS_LBL_DE_090,R_PDR: Prelim. Design Review - Magnetic System Design,1.0,0.0,0.0,0.0,03-12-2021,03-12-2021,0,0,LBNL,0%,LBNL_E10.2.Mechanical Engineer 2,Mechanical Engineer 2,Labor,0.0d,0.0,0.0,At Completion Units,4/5/2021,4/5/2021,0,0,0,0,0,0,0,0,0,0,1.03_Accelerator Systems (AS),1.03.07_AS SXR-HE Undulator (Soft X-Ray) - LBNL,1.03.07.05_AS SXR-HE Undulator Engineering and Design - LBNL,1.03.07.05.01_SXR-HE Undulator Magnetic System Design,AS_LBL_DE_090_R_PDR: Prelim. Design Review - Magnetic System Design,Mechanical,,SLAC,Labor
107941,1.03,1.03.07,1.03.07.05,1.03.07.05.01,1.03.07.05.01,SXR-HE Undulator Magnetic System Design,AS_LBL_DE_090,R_PDR: Prelim. Design Review - Magnetic System Design,1.0,8.0,0.0,8.0,03-12-2021,03-12-2021,0,0,LBNL,100%,LBNL_N30.2.Sr Mechanical Engr Associate,Sr Mechanical Engr Associate,Labor,0.0d,0.0,0.0,At Completion Units,4/5/2021,4/5/2021,0,0,0,0,0,0,0,0,0,0,1.03_Accelerator Systems (AS),1.03.07_AS SXR-HE Undulator (Soft X-Ray) - LBNL,1.03.07.05_AS SXR-HE Undulator Engineering and Design - LBNL,1.03.07.05.01_SXR-HE Undulator Magnetic System Design,AS_LBL_DE_090_R_PDR: Prelim. Design Review - Magnetic System Design,Mechanical,,SLAC,Labor
108261,1.03,1.03.07,1.03.07.05,1.03.07.05.02,1.03.07.05.02,SXR-HE Undulator Mechanical System Design & Analysis,AS_LBL_DE_180,Optimization of Test Setup - Spring Compensation System,14.0,20.0,0.0,20.0,04-12-2021,06-30-2021,0,0,LBNL,100%,LBNL_706.3.Mechanical Engr Tech III,Mechanical Engr Tech III,Labor,56.0d,0.0,56.0,At Completion Units,4/1/2021,6/3/2021,0,0,0,0,0,0,0,0,0,0,1.03_Accelerator Systems (AS),1.03.07_AS SXR-HE Undulator (Soft X-Ray) - LBNL,1.03.07.05_AS SXR-HE Undulator Engineering and Design - LBNL,1.03.07.05.02_SXR-HE Undulator Mechanical System Design & Analysis,AS_LBL_DE_180_Optimization of Test Setup - Spring Compensation System,Mechanical,Tech,SLAC,Labor
108262,1.03,1.03.07,1.03.07.05,1.03.07.05.02,1.03.07.05.02,SXR-HE Undulator Mechanical System Design & Analysis,AS_LBL_DE_180,Optimization of Test Setup - Spring Compensation System,14.0,40.0,0.0,40.0,04-12-2021,06-30-2021,0,0,LBNL,100%,LBNL_707.3.Mechanical Engr Machinist III,Mechanical Engr Machinist III,Labor,56.0d,0.0,56.0,At Completion Units,4/1/2021,6/3/2021,0,0,0,0,0,0,0,0,0,0,1.03_Accelerator Systems (AS),1.03.07_AS SXR-HE Undulator (Soft X-Ray) - LBNL,1.03.07.05_AS SXR-HE Undulator Engineering and Design - LBNL,1.03.07.05.02_SXR-HE Undulator Mechanical System Design & Analysis,AS_LBL_DE_180_Optimization of Test Setup - Spring Compensation System,Mechanical,,SLAC,Labor
108263,1.03,1.03.07,1.03.07.05,1.03.07.05.02,1.03.07.05.02,SXR-HE Undulator Mechanical System Design & Analysis,AS_LBL_DE_180,Optimization of Test Setup - Spring Compensation System,14.0,140.0,0.0,140.0,04-12-2021,06-30-2021,0,0,LBNL,100%,LBNL_N30.2.Sr Mechanical Engr Associate,Sr Mechanical Engr Associate,Labor,56.0d,0.0,56.0,At Completion Units,4/1/2021,6/3/2021,0,0,0,0,0,0,0,0,0,0,1.03_Accelerator Systems (AS),1.03.07_AS SXR-HE Undulator (Soft X-Ray) - LBNL,1.03.07.05_AS SXR-HE Undulator Engineering and Design - LBNL,1.03.07.05.02_SXR-HE Undulator Mechanical System Design & Analysis,AS_LBL_DE_180_Optimization of Test Setup - Spring Compensation System,Mechanical,,SLAC,Labor
108264,1.03,1.03.07,1.03.07.05,1.03.07.05.02,1.03.07.05.02,SXR-HE Undulator Mechanical System Design & Analysis,AS_LBL_DE_180,Optimization of Test Setup - Spring Compensation System,14.0,160.0,0.0,160.0,04-12-2021,06-30-2021,0,0,LBNL,100%,LBNL_E10.3.Mechanical Engineer 3,Mechanical Engineer 3,Labor,56.0d,0.0,56.0,At Completion Units,4/1/2021,6/3/2021,0,0,0,0,0,0,0,0,0,0,1.03_Accelerator Systems (AS),1.03.07_AS SXR-HE Undulator (Soft X-Ray) - LBNL,1.03.07.05_AS SXR-HE Undulator Engineering and Design - LBNL,1.03.07.05.02_SXR-HE Undulator Mechanical System Design & Analysis,AS_LBL_DE_180_Optimization of Test Setup - Spring Compensation System,Mechanical,,SLAC,Labor
108265,1.03,1.03.07,1.03.07.05,1.03.07.05.02,1.03.07.05.02,SXR-HE Undulator Mechanical System Design & Analysis,AS_LBL_DE_210,Develop Engineering Note and Update WI - Spring Compensation System,20.0,40.0,1.5,40.0,07-19-2021,10-15-21,0,0,LBNL,96.25%,LBNL_E10.4.Mechanical Engineer 4,Mechanical Engineer 4,Labor,53.0d,11.0,64.0,At Completion Units,6/10/2021,7/8/2021,0,0,0,0,0,0,0,0,0,0,1.03_Accelerator Systems (AS),1.03.07_AS SXR-HE Undulator (Soft X-Ray) - LBNL,1.03.07.05_AS SXR-HE Undulator Engineering and Design - LBNL,1.03.07.05.02_SXR-HE Undulator Mechanical System Design & Analysis,AS_LBL_DE_210_Develop Engineering Note and Update WI - Spring Compensation System,Mechanical,,SLAC,Labor
108266,1.03,1.03.07,1.03.07.05,1.03.07.05.02,1.03.07.05.02,SXR-HE Undulator Mechanical System Design & Analysis,AS_LBL_DE_210,Develop Engineering Note and Update WI - Spring Compensation System,20.0,40.0,1.5,40.0,07-19-2021,10-15-21,0,0,LBNL,96.25%,LBNL_E10.3.Mechanical Engineer 3,Mechanical Engineer 3,Labor,53.0d,11.0,64.0,At Completion Units,6/10/2021,7/8/2021,0,0,0,0,0,0,0,0,0,0,1.03_Accelerator Systems (AS),1.03.07_AS SXR-HE Undulator (Soft X-Ray) - LBNL,1.03.07.05_AS SXR-HE Undulator Engineering and Design - LBNL,1.03.07.05.02_SXR-HE Undulator Mechanical System Design & Analysis,AS_LBL_DE_210_Develop Engineering Note and Update WI - Spring Compensation System,Mechanical,,SLAC,Labor
108267,1.03,1.03.07,1.03.07.05,1.03.07.05.02,1.03.07.05.02,SXR-HE Undulator Mechanical System Design & Analysis,AS_LBL_DE_200,Prepare Final Design and Drawings - Spring Compensation System,5.0,0.0,0.0,13.7,07-05-2021,09-15-2021,0,0,LBNL,100%,LBNL_706.3.Mechanical Engr Tech III,Mechanical Engr Tech III,Labor,50.0d,0.0,50.0,At Completion Units,6/4/2021,6/9/2021,0,0,0,0,0,0,0,0,0,0,1.03_Accelerator Systems (AS),1.03.07_AS SXR-HE Undulator (Soft X-Ray) - LBNL,1.03.07.05_AS SXR-HE Undulator Engineering and Design - LBNL,1.03.07.05.02_SXR-HE Undulator Mechanical System Design & Analysis,AS_LBL_DE_200_Prepare Final Design and Drawings - Spring Compensation System,Mechanical,Tech,SLAC,Labor
108268,1.03,1.03.07,1.03.07.05,1.03.07.05.02,1.03.07.05.02,SXR-HE Undulator Mechanical System Design & Analysis,AS_LBL_DE_200,Prepare Final Design and Drawings - Spring Compensation System,5.0,0.0,0.0,13.7,07-05-2021,09-15-2021,0,0,LBNL,100%,LBNL_707.3.Mechanical Engr Machinist III,Mechanical Engr Machinist III,Labor,50.0d,0.0,50.0,At Completion Units,6/4/2021,6/9/2021,0,0,0,0,0,0,0,0,0,0,1.03_Accelerator Systems (AS),1.03.07_AS SXR-HE Undulator (Soft X-Ray) - LBNL,1.03.07.05_AS SXR-HE Undulator Engineering and Design - LBNL,1.03.07.05.02_SXR-HE Undulator Mechanical System Design & Analysis,AS_LBL_DE_200_Prepare Final Design and Drawings - Spring Compensation System,Mechanical,,SLAC,Labor
108269,1.03,1.03.07,1.03.07.05,1.03.07.05.02,1.03.07.05.02,SXR-HE Undulator Mechanical System Design & Analysis,AS_LBL_DE_200,Prepare Final Design and Drawings - Spring Compensation System,5.0,0.0,0.0,13.7,07-05-2021,09-15-2021,0,0,LBNL,100%,LBNL_E10.4.Mechanical Engineer 4,Mechanical Engineer 4,Labor,50.0d,0.0,50.0,At Completion Units,6/4/2021,6/9/2021,0,0,0,0,0,0,0,0,0,0,1.03_Accelerator Systems (AS),1.03.07_AS SXR-HE Undulator (Soft X-Ray) - LBNL,1.03.07.05_AS SXR-HE Undulator Engineering and Design - LBNL,1.03.07.05.02_SXR-HE Undulator Mechanical System Design & Analysis,AS_LBL_DE_200_Prepare Final Design and Drawings - Spring Compensation System,Mechanical,,SLAC,Labor
108270,1.03,1.03.07,1.03.07.05,1.03.07.05.02,1.03.07.05.02,SXR-HE Undulator Mechanical System Design & Analysis,AS_LBL_DE_200,Prepare Final Design and Drawings - Spring Compensation System,5.0,80.0,0.0,13.7,07-05-2021,09-15-2021,0,0,LBNL,100%,LBNL_N30.2.Sr Mechanical Engr Associate,Sr Mechanical Engr Associate,Labor,50.0d,0.0,50.0,At Completion Units,6/4/2021,6/9/2021,0,0,0,0,0,0,0,0,0,0,1.03_Accelerator Systems (AS),1.03.07_AS SXR-HE Undulator (Soft X-Ray) - LBNL,1.03.07.05_AS SXR-HE Undulator Engineering and Design - LBNL,1.03.07.05.02_SXR-HE Undulator Mechanical System Design & Analysis,AS_LBL_DE_200_Prepare Final Design and Drawings - Spring Compensation System,Mechanical,,SLAC,Labor
108271,1.03,1.03.07,1.03.07.05,1.03.07.05.02,1.03.07.05.02,SXR-HE Undulator Mechanical System Design & Analysis,AS_LBL_DE_200,Prepare Final Design and Drawings - Spring Compensation System,5.0,0.0,0.0,13.7,07-05-2021,09-15-2021,0,0,LBNL,100%,LBNL_S36.4.Mechanical Staff Sci/Engr,Mechanical Staff Sci/Engr,Labor,50.0d,0.0,50.0,At Completion Units,6/4/2021,6/9/2021,0,0,0,0,0,0,0,0,0,0,1.03_Accelerator Systems (AS),1.03.07_AS SXR-HE Undulator (Soft X-Ray) - LBNL,1.03.07.05_AS SXR-HE Undulator Engineering and Design - LBNL,1.03.07.05.02_SXR-HE Undulator Mechanical System Design & Analysis,AS_LBL_DE_200_Prepare Final Design and Drawings - Spring Compensation System,Mechanical,,SLAC,Labor
108272,1.03,1.03.07,1.03.07.05,1.03.07.05.02,1.03.07.05.02,SXR-HE Undulator Mechanical System Design & Analysis,AS_LBL_DE_200,Prepare Final Design and Drawings - Spring Compensation System,5.0,16.0,0.0,13.7,07-05-2021,09-15-2021,0,0,LBNL,100%,LBNL_E10.3.Mechanical Engineer 3,Mechanical Engineer 3,Labor,50.0d,0.0,50.0,At Completion Units,6/4/2021,6/9/2021,0,0,0,0,0,0,0,0,0,0,1.03_Accelerator Systems (AS),1.03.07_AS SXR-HE Undulator (Soft X-Ray) - LBNL,1.03.07.05_AS SXR-HE Undulator Engineering and Design - LBNL,1.03.07.05.02_SXR-HE Undulator Mechanical System Design & Analysis,AS_LBL_DE_200_Prepare Final Design and Drawings - Spring Compensation System,Mechanical,,SLAC,Labor
108273,1.03,1.03.07,1.03.07.05,1.03.07.05.02,1.03.07.05.02,SXR-HE Undulator Mechanical System Design & Analysis,AS_LBL_DE_200,Prepare Final Design and Drawings - Spring Compensation System,5.0,0.0,0.0,13.7,07-05-2021,09-15-2021,0,0,LBNL,100%,LBNL_706.4.Mechanical Engr Tech IV,Mechanical Engr Tech IV,Labor,50.0d,0.0,50.0,At Completion Units,6/4/2021,6/9/2021,0,0,0,0,0,0,0,0,0,0,1.03_Accelerator Systems (AS),1.03.07_AS SXR-HE Undulator (Soft X-Ray) - LBNL,1.03.07.05_AS SXR-HE Undulator Engineering and Design - LBNL,1.03.07.05.02_SXR-HE Undulator Mechanical System Design & Analysis,AS_LBL_DE_200_Prepare Final Design and Drawings - Spring Compensation System,Mechanical,Tech,SLAC,Labor
108274,1.03,1.03.07,1.03.07.05,1.03.07.05.02,1.03.07.05.02,SXR-HE Undulator Mechanical System Design & Analysis,AS_LBL_DE_140,Develop Final Design - Centerline Encoder Drawings,21.0,16.0,0.0,28.0,07-01-2021,09-08-2021,0,0,LBNL,100%,LBNL_E10.3.Mechanical Engineer 3,Mechanical Engineer 3,Labor,47.0d,0.0,47.0,At Completion Units,7/2/2021,8/13/2021,0,0,0,0,0,0,0,0,0,0,1.03_Accelerator Systems (AS),1.03.07_AS SXR-HE Undulator (Soft X-Ray) - LBNL,1.03.07.05_AS SXR-HE Undulator Engineering and Design - LBNL,1.03.07.05.02_SXR-HE Undulator Mechanical System Design & Analysis,AS_LBL_DE_140_Develop Final Design - Centerline Encoder Drawings,Mechanical,,SLAC,Labor
108275,1.03,1.03.07,1.03.07.05,1.03.07.05.02,1.03.07.05.02,SXR-HE Undulator Mechanical System Design & Analysis,AS_LBL_DE_140,Develop Final Design - Centerline Encoder Drawings,21.0,40.0,0.0,28.0,07-01-2021,09-08-2021,0,0,LBNL,100%,LBNL_N30.2.Sr Mechanical Engr Associate,Sr Mechanical Engr Associate,Labor,47.0d,0.0,47.0,At Completion Units,7/2/2021,8/13/2021,0,0,0,0,0,0,0,0,0,0,1.03_Accelerator Systems (AS),1.03.07_AS SXR-HE Undulator (Soft X-Ray) - LBNL,1.03.07.05_AS SXR-HE Undulator Engineering and Design - LBNL,1.03.07.05.02_SXR-HE Undulator Mechanical System Design & Analysis,AS_LBL_DE_140_Develop Final Design - Centerline Encoder Drawings,Mechanical,,SLAC,Labor
108276,1.03,1.03.07,1.03.07.05,1.03.07.05.02,1.03.07.05.02,SXR-HE Undulator Mechanical System Design & Analysis,AS_LBL_DE_170,Initial Testing - Spring Compensation System,30.0,40.0,0.0,40.0,03-22-2021,04-30-2021,0,0,LBNL,100%,LBNL_E10.3.Mechanical Engineer 3,Mechanical Engineer 3,Labor,30.0d,0.0,30.0,At Completion Units,3/31/2021,4/6/2021,0,0,0,0,0,0,0,0,0,0,1.03_Accelerator Systems (AS),1.03.07_AS SXR-HE Undulator (Soft X-Ray) - LBNL,1.03.07.05_AS SXR-HE Undulator Engineering and Design - LBNL,1.03.07.05.02_SXR-HE Undulator Mechanical System Design & Analysis,AS_LBL_DE_170_Initial Testing - Spring Compensation System,Mechanical,,SLAC,Labor
108277,1.03,1.03.07,1.03.07.05,1.03.07.05.02,1.03.07.05.02,SXR-HE Undulator Mechanical System Design & Analysis,AS_LBL_DE_170,Initial Testing - Spring Compensation System,30.0,0.0,0.0,0.0,03-22-2021,04-30-2021,0,0,LBNL,0%,LBNL_N30.2.Sr Mechanical Engr Associate,Sr Mechanical Engr Associate,Labor,30.0d,0.0,30.0,At Completion Units,3/31/2021,4/6/2021,0,0,0,0,0,0,0,0,0,0,1.03_Accelerator Systems (AS),1.03.07_AS SXR-HE Undulator (Soft X-Ray) - LBNL,1.03.07.05_AS SXR-HE Undulator Engineering and Design - LBNL,1.03.07.05.02_SXR-HE Undulator Mechanical System Design & Analysis,AS_LBL_DE_170_Initial Testing - Spring Compensation System,Mechanical,,SLAC,Labor
108278,1.03,1.03.07,1.03.07.05,1.03.07.05.02,1.03.07.05.02,SXR-HE Undulator Mechanical System Design & Analysis,AS_LBL_DE_160,Test Setup - Reassemble and Commission - Spring Compensation System,29.0,40.0,0.0,40.0,03-22-2021,04-30-2021,0,0,LBNL,100%,LBNL_706.3.Mechanical Engr Tech III,Mechanical Engr Tech III,Labor,29.0d,0.0,29.0,At Completion Units,4/1/2021,6/3/2021,0,0,0,0,0,0,0,0,0,0,1.03_Accelerator Systems (AS),1.03.07_AS SXR-HE Undulator (Soft X-Ray) - LBNL,1.03.07.05_AS SXR-HE Undulator Engineering and Design - LBNL,1.03.07.05.02_SXR-HE Undulator Mechanical System Design & Analysis,AS_LBL_DE_160_Test Setup - Reassemble and Commission - Spring Compensation System,Mechanical,Tech,SLAC,Labor
108279,1.03,1.03.07,1.03.07.05,1.03.07.05.02,1.03.07.05.02,SXR-HE Undulator Mechanical System Design & Analysis,AS_LBL_DE_160,Test Setup - Reassemble and Commission - Spring Compensation System,29.0,80.0,0.0,80.0,03-22-2021,04-30-2021,0,0,LBNL,100%,LBNL_707.3.Mechanical Engr Machinist III,Mechanical Engr Machinist III,Labor,29.0d,0.0,29.0,At Completion Units,4/1/2021,6/3/2021,0,0,0,0,0,0,0,0,0,0,1.03_Accelerator Systems (AS),1.03.07_AS SXR-HE Undulator (Soft X-Ray) - LBNL,1.03.07.05_AS SXR-HE Undulator Engineering and Design - LBNL,1.03.07.05.02_SXR-HE Undulator Mechanical System Design & Analysis,AS_LBL_DE_160_Test Setup - Reassemble and Commission - Spring Compensation System,Mechanical,,SLAC,Labor
108280,1.03,1.03.07,1.03.07.05,1.03.07.05.02,1.03.07.05.02,SXR-HE Undulator Mechanical System Design & Analysis,AS_LBL_DE_160,Test Setup - Reassemble and Commission - Spring Compensation System,29.0,20.0,0.0,20.0,03-22-2021,04-30-2021,0,0,LBNL,100%,LBNL_D50.2.LBNL_Software Developer 2,LBNL_Software Developer 2,Labor,29.0d,0.0,29.0,At Completion Units,4/1/2021,6/3/2021,0,0,0,0,0,0,0,0,0,0,1.03_Accelerator Systems (AS),1.03.07_AS SXR-HE Undulator (Soft X-Ray) - LBNL,1.03.07.05_AS SXR-HE Undulator Engineering and Design - LBNL,1.03.07.05.02_SXR-HE Undulator Mechanical System Design & Analysis,AS_LBL_DE_160_Test Setup - Reassemble and Commission - Spring Compensation System,Contols,,LBNL,Labor
108281,1.03,1.03.07,1.03.07.05,1.03.07.05.02,1.03.07.05.02,SXR-HE Undulator Mechanical System Design & Analysis,AS_LBL_DE_160,Test Setup - Reassemble and Commission - Spring Compensation System,29.0,20.0,0.0,20.0,03-22-2021,04-30-2021,0,0,LBNL,100%,LBNL_N30.2.Sr Mechanical Engr Associate,Sr Mechanical Engr Associate,Labor,29.0d,0.0,29.0,At Completion Units,4/1/2021,6/3/2021,0,0,0,0,0,0,0,0,0,0,1.03_Accelerator Systems (AS),1.03.07_AS SXR-HE Undulator (Soft X-Ray) - LBNL,1.03.07.05_AS SXR-HE Undulator Engineering and Design - LBNL,1.03.07.05.02_SXR-HE Undulator Mechanical System Design & Analysis,AS_LBL_DE_160_Test Setup - Reassemble and Commission - Spring Compensation System,Mechanical,,SLAC,Labor
108282,1.03,1.03.07,1.03.07.05,1.03.07.05.02,1.03.07.05.02,SXR-HE Undulator Mechanical System Design & Analysis,AS_LBL_DE_160,Test Setup - Reassemble and Commission - Spring Compensation System,29.0,40.0,0.0,40.0,03-22-2021,04-30-2021,0,0,LBNL,100%,LBNL_E10.3.Mechanical Engineer 3,Mechanical Engineer 3,Labor,29.0d,0.0,29.0,At Completion Units,4/1/2021,6/3/2021,0,0,0,0,0,0,0,0,0,0,1.03_Accelerator Systems (AS),1.03.07_AS SXR-HE Undulator (Soft X-Ray) - LBNL,1.03.07.05_AS SXR-HE Undulator Engineering and Design - LBNL,1.03.07.05.02_SXR-HE Undulator Mechanical System Design & Analysis,AS_LBL_DE_160_Test Setup - Reassemble and Commission - Spring Compensation System,Mechanical,,SLAC,Labor
108283,1.03,1.03.07,1.03.07.05,1.03.07.05.02,1.03.07.05.02,SXR-HE Undulator Mechanical System Design & Analysis,AS_LBL_DE_130,Develop Design - Centerline Encoder,24.0,24.0,0.0,32.0,05-24-2021,06-30-2021,0,0,LBNL,100%,LBNL_E10.3.Mechanical Engineer 3,Mechanical Engineer 3,Labor,26.0d,0.0,26.0,At Completion Units,4/2/2021,7/1/2021,0,0,0,0,0,0,0,0,0,0,1.03_Accelerator Systems (AS),1.03.07_AS SXR-HE Undulator (Soft X-Ray) - LBNL,1.03.07.05_AS SXR-HE Undulator Engineering and Design - LBNL,1.03.07.05.02_SXR-HE Undulator Mechanical System Design & Analysis,AS_LBL_DE_130_Develop Design - Centerline Encoder,Mechanical,,SLAC,Labor
108284,1.03,1.03.07,1.03.07.05,1.03.07.05.02,1.03.07.05.02,SXR-HE Undulator Mechanical System Design & Analysis,AS_LBL_DE_130,Develop Design - Centerline Encoder,24.0,40.0,0.0,32.0,05-24-2021,06-30-2021,0,0,LBNL,100%,LBNL_N30.2.Sr Mechanical Engr Associate,Sr Mechanical Engr Associate,Labor,26.0d,0.0,26.0,At Completion Units,4/2/2021,7/1/2021,0,0,0,0,0,0,0,0,0,0,1.03_Accelerator Systems (AS),1.03.07_AS SXR-HE Undulator (Soft X-Ray) - LBNL,1.03.07.05_AS SXR-HE Undulator Engineering and Design - LBNL,1.03.07.05.02_SXR-HE Undulator Mechanical System Design & Analysis,AS_LBL_DE_130_Develop Design - Centerline Encoder,Mechanical,,SLAC,Labor
108285,1.03,1.03.07,1.03.07.05,1.03.07.05.02,1.03.07.05.02,SXR-HE Undulator Mechanical System Design & Analysis,AS_LBL_DE_150,Develop Conceptual Design and Frame Analysis - Undulator System,29.0,200.0,0.0,200.0,03-22-2021,04-23-2021,0,0,LBNL,100%,LBNL_E10.3.Mechanical Engineer 3,Mechanical Engineer 3,Labor,24.0d,0.0,24.0,At Completion Units,2/2/2021,3/30/2021,0,0,0,0,0,0,0,0,0,0,1.03_Accelerator Systems (AS),1.03.07_AS SXR-HE Undulator (Soft X-Ray) - LBNL,1.03.07.05_AS SXR-HE Undulator Engineering and Design - LBNL,1.03.07.05.02_SXR-HE Undulator Mechanical System Design & Analysis,AS_LBL_DE_150_Develop Conceptual Design and Frame Analysis - Undulator System,Mechanical,,SLAC,Labor
108286,1.03,1.03.07,1.03.07.05,1.03.07.05.02,1.03.07.05.02,SXR-HE Undulator Mechanical System Design & Analysis,AS_LBL_DE_205,Fabricate final test configuration - Spring Compensation System,20.0,20.0,0.0,26.7,08-20-2021,09-15-2021,0,0,LBNL,100%,LBNL_N30.2.Sr Mechanical Engr Associate,Sr Mechanical Engr Associate,Labor,17.0d,0.0,17.0,At Completion Units,6/10/2021,7/8/2021,0,0,0,0,0,0,0,0,0,0,1.03_Accelerator Systems (AS),1.03.07_AS SXR-HE Undulator (Soft X-Ray) - LBNL,1.03.07.05_AS SXR-HE Undulator Engineering and Design - LBNL,1.03.07.05.02_SXR-HE Undulator Mechanical System Design & Analysis,AS_LBL_DE_205_Fabricate final test configuration - Spring Compensation System,Mechanical,,SLAC,Labor
108287,1.03,1.03.07,1.03.07.05,1.03.07.05.02,1.03.07.05.02,SXR-HE Undulator Mechanical System Design & Analysis,AS_LBL_DE_205,Fabricate final test configuration - Spring Compensation System,20.0,40.0,0.0,26.7,08-20-2021,09-15-2021,0,0,LBNL,100%,LBNL_707.3.Mechanical Engr Machinist III,Mechanical Engr Machinist III,Labor,17.0d,0.0,17.0,At Completion Units,6/10/2021,7/8/2021,0,0,0,0,0,0,0,0,0,0,1.03_Accelerator Systems (AS),1.03.07_AS SXR-HE Undulator (Soft X-Ray) - LBNL,1.03.07.05_AS SXR-HE Undulator Engineering and Design - LBNL,1.03.07.05.02_SXR-HE Undulator Mechanical System Design & Analysis,AS_LBL_DE_205_Fabricate final test configuration - Spring Compensation System,Mechanical,,SLAC,Labor
108288,1.03,1.03.07,1.03.07.05,1.03.07.05.02,1.03.07.05.02,SXR-HE Undulator Mechanical System Design & Analysis,AS_LBL_DE_205,Fabricate final test configuration - Spring Compensation System,20.0,20.0,0.0,26.7,08-20-2021,09-15-2021,0,0,LBNL,100%,LBNL_706.3.Mechanical Engr Tech III,Mechanical Engr Tech III,Labor,17.0d,0.0,17.0,At Completion Units,6/10/2021,7/8/2021,0,0,0,0,0,0,0,0,0,0,1.03_Accelerator Systems (AS),1.03.07_AS SXR-HE Undulator (Soft X-Ray) - LBNL,1.03.07.05_AS SXR-HE Undulator Engineering and Design - LBNL,1.03.07.05.02_SXR-HE Undulator Mechanical System Design & Analysis,AS_LBL_DE_205_Fabricate final test configuration - Spring Compensation System,Mechanical,Tech,SLAC,Labor
108289,1.03,1.03.07,1.03.07.05,1.03.07.05.02,1.03.07.05.02,SXR-HE Undulator Mechanical System Design & Analysis,AS_LBL_DE_310,Final Test - Spring Compensation System,10.0,16.0,4.0,16.0,09-20-2021,10-15-21,0,0,LBNL,75%,LBNL_E10.3.Mechanical Engineer 3,Mechanical Engineer 3,Labor,9.0d,11.0,20.0,At Completion Units,7/9/2021,7/29/2021,0,0,0,0,0,0,0,0,0,0,1.03_Accelerator Systems (AS),1.03.07_AS SXR-HE Undulator (Soft X-Ray) - LBNL,1.03.07.05_AS SXR-HE Undulator Engineering and Design - LBNL,1.03.07.05.02_SXR-HE Undulator Mechanical System Design & Analysis,AS_LBL_DE_310_Final Test - Spring Compensation System,Mechanical,,SLAC,Labor
108609,1.03,1.03.07,1.03.07.05,1.03.07.05.03,1.03.07.05.03,SXR-HE Undulator Integrated System Design,AS_LBL_DE_260,Prepare Undulator Assembly Drawings - Undulator Integrated System Design,20.0,24.0,0.0,47.0,08-16-2021,10-15-21,0,0,LBNL,100%,LBNL_E10.3.Mechanical Engineer 3,Mechanical Engineer 3,Labor,33.0d,11.0,44.0,At Completion Units,9/14/2021,10/11/2021,0,0,0,0,0,0,0,0,0,0,1.03_Accelerator Systems (AS),1.03.07_AS SXR-HE Undulator (Soft X-Ray) - LBNL,1.03.07.05_AS SXR-HE Undulator Engineering and Design - LBNL,1.03.07.05.03_SXR-HE Undulator Integrated System Design,AS_LBL_DE_260_Prepare Undulator Assembly Drawings - Undulator Integrated System Design,Mechanical,,SLAC,Labor
108610,1.03,1.03.07,1.03.07.05,1.03.07.05.03,1.03.07.05.03,SXR-HE Undulator Integrated System Design,AS_LBL_DE_250,Update Undulator Frame Model - Undulator Integrated System Design,20.0,24.0,0.0,47.0,08-16-2021,10-15-21,0,0,LBNL,100%,LBNL_E10.3.Mechanical Engineer 3,Mechanical Engineer 3,Labor,33.0d,11.0,44.0,At Completion Units,8/16/2021,9/13/2021,0,0,0,0,0,0,0,0,0,0,1.03_Accelerator Systems (AS),1.03.07_AS SXR-HE Undulator (Soft X-Ray) - LBNL,1.03.07.05_AS SXR-HE Undulator Engineering and Design - LBNL,1.03.07.05.03_SXR-HE Undulator Integrated System Design,AS_LBL_DE_250_Update Undulator Frame Model - Undulator Integrated System Design,Mechanical,,SLAC,Labor
108611,1.03,1.03.07,1.03.07.05,1.03.07.05.03,1.03.07.05.03,SXR-HE Undulator Integrated System Design,AS_LBL_DE_260,Prepare Undulator Assembly Drawings - Undulator Integrated System Design,20.0,80.0,10.0,57.0,08-16-2021,10-15-21,0,0,LBNL,82.46%,LBNL_N30.2.Sr Mechanical Engr Associate,Sr Mechanical Engr Associate,Labor,33.0d,11.0,44.0,At Completion Units,9/14/2021,10/11/2021,0,0,0,0,0,0,0,0,0,0,1.03_Accelerator Systems (AS),1.03.07_AS SXR-HE Undulator (Soft X-Ray) - LBNL,1.03.07.05_AS SXR-HE Undulator Engineering and Design - LBNL,1.03.07.05.03_SXR-HE Undulator Integrated System Design,AS_LBL_DE_260_Prepare Undulator Assembly Drawings - Undulator Integrated System Design,Mechanical,,SLAC,Labor
108612,1.03,1.03.07,1.03.07.05,1.03.07.05.03,1.03.07.05.03,SXR-HE Undulator Integrated System Design,AS_LBL_DE_250,Update Undulator Frame Model - Undulator Integrated System Design,20.0,80.0,10.0,57.0,08-16-2021,10-15-21,0,0,LBNL,82.46%,LBNL_N30.2.Sr Mechanical Engr Associate,Sr Mechanical Engr Associate,Labor,33.0d,11.0,44.0,At Completion Units,8/16/2021,9/13/2021,0,0,0,0,0,0,0,0,0,0,1.03_Accelerator Systems (AS),1.03.07_AS SXR-HE Undulator (Soft X-Ray) - LBNL,1.03.07.05_AS SXR-HE Undulator Engineering and Design - LBNL,1.03.07.05.03_SXR-HE Undulator Integrated System Design,AS_LBL_DE_250_Update Undulator Frame Model - Undulator Integrated System Design,Mechanical,,SLAC,Labor
108613,1.03,1.03.07,1.03.07.05,1.03.07.05.03,1.03.07.05.03,SXR-HE Undulator Integrated System Design,AS_LBL_DE_270,Prepare for Final Design Review - Undulator Integrated System Design,15.0,40.0,33.6,40.0,09-27-2021,11-02-21,0,0,LBNL,16%,LBNL_D50.2.LBNL_Software Developer 2,LBNL_Software Developer 2,Labor,4.0d,23.0,27.0,At Completion Units,10/12/2021,11/1/2021,0,0,0,0,0,0,0,0,0,0,1.03_Accelerator Systems (AS),1.03.07_AS SXR-HE Undulator (Soft X-Ray) - LBNL,1.03.07.05_AS SXR-HE Undulator Engineering and Design - LBNL,1.03.07.05.03_SXR-HE Undulator Integrated System Design,AS_LBL_DE_270_Prepare for Final Design Review - Undulator Integrated System Design,Contols,,LBNL,Labor
108614,1.03,1.03.07,1.03.07.05,1.03.07.05.03,1.03.07.05.03,SXR-HE Undulator Integrated System Design,AS_LBL_DE_270,Prepare for Final Design Review - Undulator Integrated System Design,15.0,80.0,73.6,80.0,09-27-2021,11-02-21,0,0,LBNL,8%,LBNL_S36.4.Mechanical Staff Sci/Engr,Mechanical Staff Sci/Engr,Labor,4.0d,23.0,27.0,At Completion Units,10/12/2021,11/1/2021,0,0,0,0,0,0,0,0,0,0,1.03_Accelerator Systems (AS),1.03.07_AS SXR-HE Undulator (Soft X-Ray) - LBNL,1.03.07.05_AS SXR-HE Undulator Engineering and Design - LBNL,1.03.07.05.03_SXR-HE Undulator Integrated System Design,AS_LBL_DE_270_Prepare for Final Design Review - Undulator Integrated System Design,Mechanical,,SLAC,Labor
108615,1.03,1.03.07,1.03.07.05,1.03.07.05.03,1.03.07.05.03,SXR-HE Undulator Integrated System Design,AS_LBL_DE_270,Prepare for Final Design Review - Undulator Integrated System Design,15.0,40.0,33.6,40.0,09-27-2021,11-02-21,0,0,LBNL,16%,LBNL_N30.2.Sr Mechanical Engr Associate,Sr Mechanical Engr Associate,Labor,4.0d,23.0,27.0,At Completion Units,10/12/2021,11/1/2021,0,0,0,0,0,0,0,0,0,0,1.03_Accelerator Systems (AS),1.03.07_AS SXR-HE Undulator (Soft X-Ray) - LBNL,1.03.07.05_AS SXR-HE Undulator Engineering and Design - LBNL,1.03.07.05.03_SXR-HE Undulator Integrated System Design,AS_LBL_DE_270_Prepare for Final Design Review - Undulator Integrated System Design,Mechanical,,SLAC,Labor
108616,1.03,1.03.07,1.03.07.05,1.03.07.05.03,1.03.07.05.03,SXR-HE Undulator Integrated System Design,AS_LBL_DE_270,Prepare for Final Design Review - Undulator Integrated System Design,15.0,80.0,73.6,80.0,09-27-2021,11-02-21,0,0,LBNL,8%,LBNL_E10.4.Mechanical Engineer 4,Mechanical Engineer 4,Labor,4.0d,23.0,27.0,At Completion Units,10/12/2021,11/1/2021,0,0,0,0,0,0,0,0,0,0,1.03_Accelerator Systems (AS),1.03.07_AS SXR-HE Undulator (Soft X-Ray) - LBNL,1.03.07.05_AS SXR-HE Undulator Engineering and Design - LBNL,1.03.07.05.03_SXR-HE Undulator Integrated System Design,AS_LBL_DE_270_Prepare for Final Design Review - Undulator Integrated System Design,Mechanical,,SLAC,Labor
108617,1.03,1.03.07,1.03.07.05,1.03.07.05.03,1.03.07.05.03,SXR-HE Undulator Integrated System Design,AS_LBL_DE_270,Prepare for Final Design Review - Undulator Integrated System Design,15.0,80.0,73.6,80.0,09-27-2021,11-02-21,0,0,LBNL,8%,LBNL_E10.3.Mechanical Engineer 3,Mechanical Engineer 3,Labor,4.0d,23.0,27.0,At Completion Units,10/12/2021,11/1/2021,0,0,0,0,0,0,0,0,0,0,1.03_Accelerator Systems (AS),1.03.07_AS SXR-HE Undulator (Soft X-Ray) - LBNL,1.03.07.05_AS SXR-HE Undulator Engineering and Design - LBNL,1.03.07.05.03_SXR-HE Undulator Integrated System Design,AS_LBL_DE_270_Prepare for Final Design Review - Undulator Integrated System Design,Mechanical,,SLAC,Labor
108618,1.03,1.03.07,1.03.07.05,1.03.07.05.03,1.03.07.05.03,SXR-HE Undulator Integrated System Design,AS_LBL_DE_420,Respond to Production Readiness Review Recommendations - Undulator Integrated System Design,1.0,20.0,20.0,20.0,11-23-22,11-23-22,0,0,LBNL,0%,LBNL_S36.4.Mechanical Staff Sci/Engr,Mechanical Staff Sci/Engr,Labor,0.0d,1.0,1.0,At Completion Units,1/23/2023,1/23/2023,0,0,0,0,0,0,0,0,0,0,1.03_Accelerator Systems (AS),1.03.07_AS SXR-HE Undulator (Soft X-Ray) - LBNL,1.03.07.05_AS SXR-HE Undulator Engineering and Design - LBNL,1.03.07.05.03_SXR-HE Undulator Integrated System Design,AS_LBL_DE_420_Respond to Production Readiness Review Recommendations - Undulator Integrated System Design,Mechanical,,SLAC,Labor
108619,1.03,1.03.07,1.03.07.05,1.03.07.05.03,1.03.07.05.03,SXR-HE Undulator Integrated System Design,AS_LBL_DE_420,Respond to Production Readiness Review Recommendations - Undulator Integrated System Design,1.0,20.0,20.0,20.0,11-23-22,11-23-22,0,0,LBNL,0%,LBNL_E10.4.Mechanical Engineer 4,Mechanical Engineer 4,Labor,0.0d,1.0,1.0,At Completion Units,1/23/2023,1/23/2023,0,0,0,0,0,0,0,0,0,0,1.03_Accelerator Systems (AS),1.03.07_AS SXR-HE Undulator (Soft X-Ray) - LBNL,1.03.07.05_AS SXR-HE Undulator Engineering and Design - LBNL,1.03.07.05.03_SXR-HE Undulator Integrated System Design,AS_LBL_DE_420_Respond to Production Readiness Review Recommendations - Undulator Integrated System Design,Mechanical,,SLAC,Labor
108620,1.03,1.03.07,1.03.07.05,1.03.07.05.03,1.03.07.05.03,SXR-HE Undulator Integrated System Design,AS_LBL_DE_400,Update technical package after pre-production testing -  Undulator Integrated System Design,1.0,40.0,40.0,40.0,11-21-22,11-21-22,0,0,LBNL,0%,LBNL_E10.4.Mechanical Engineer 4,Mechanical Engineer 4,Labor,0.0d,1.0,1.0,At Completion Units,1/19/2023,1/19/2023,0,0,0,0,0,0,0,0,0,0,1.03_Accelerator Systems (AS),1.03.07_AS SXR-HE Undulator (Soft X-Ray) - LBNL,1.03.07.05_AS SXR-HE Undulator Engineering and Design - LBNL,1.03.07.05.03_SXR-HE Undulator Integrated System Design,AS_LBL_DE_400_Update technical package after pre-production testing -  Undulator Integrated System Design,Mechanical,,SLAC,Labor
108621,1.03,1.03.07,1.03.07.05,1.03.07.05.03,1.03.07.05.03,SXR-HE Undulator Integrated System Design,AS_LBL_DE_400,Update technical package after pre-production testing -  Undulator Integrated System Design,1.0,40.0,40.0,40.0,11-21-22,11-21-22,0,0,LBNL,0%,LBNL_S36.4.Mechanical Staff Sci/Engr,Mechanical Staff Sci/Engr,Labor,0.0d,1.0,1.0,At Completion Units,1/19/2023,1/19/2023,0,0,0,0,0,0,0,0,0,0,1.03_Accelerator Systems (AS),1.03.07_AS SXR-HE Undulator (Soft X-Ray) - LBNL,1.03.07.05_AS SXR-HE Undulator Engineering and Design - LBNL,1.03.07.05.03_SXR-HE Undulator Integrated System Design,AS_LBL_DE_400_Update technical package after pre-production testing -  Undulator Integrated System Design,Mechanical,,SLAC,Labor
108622,1.03,1.03.07,1.03.07.05,1.03.07.05.03,1.03.07.05.03,SXR-HE Undulator Integrated System Design,AS_LBL_DE_300,Finalize Technical Documentation Package for Mechanical System - Undulator Integrated System Design,40.0,16.0,16.0,16.0,12-06-21,02-14-22,0,0,LBNL,0%,LBNL_S36.4.Mechanical Staff Sci/Engr,Mechanical Staff Sci/Engr,Labor,0.0d,40.0,40.0,At Completion Units,11/24/2021,2/4/2022,0,0,0,0,0,0,0,0,0,0,1.03_Accelerator Systems (AS),1.03.07_AS SXR-HE Undulator (Soft X-Ray) - LBNL,1.03.07.05_AS SXR-HE Undulator Engineering and Design - LBNL,1.03.07.05.03_SXR-HE Undulator Integrated System Design,AS_LBL_DE_300_Finalize Technical Documentation Package for Mechanical System - Undulator Integrated System Design,Mechanical,,SLAC,Labor
108623,1.03,1.03.07,1.03.07.05,1.03.07.05.03,1.03.07.05.03,SXR-HE Undulator Integrated System Design,AS_LBL_DE_290,Respond to Final Design Review Recommendations - Undulator Integrated System Design,15.0,16.0,16.0,16.0,11-11-21,12-03-21,0,0,LBNL,0%,LBNL_S36.4.Mechanical Staff Sci/Engr,Mechanical Staff Sci/Engr,Labor,0.0d,15.0,15.0,At Completion Units,11/3/2021,11/23/2021,0,0,0,0,0,0,0,0,0,0,1.03_Accelerator Systems (AS),1.03.07_AS SXR-HE Undulator (Soft X-Ray) - LBNL,1.03.07.05_AS SXR-HE Undulator Engineering and Design - LBNL,1.03.07.05.03_SXR-HE Undulator Integrated System Design,AS_LBL_DE_290_Respond to Final Design Review Recommendations - Undulator Integrated System Design,Mechanical,,SLAC,Labor
108624,1.03,1.03.07,1.03.07.05,1.03.07.05.03,1.03.07.05.03,SXR-HE Undulator Integrated System Design,AS_LBL_DE_290,Respond to Final Design Review Recommendations - Undulator Integrated System Design,15.0,16.0,16.0,16.0,11-11-21,12-03-21,0,0,LBNL,0%,LBNL_E10.4.Mechanical Engineer 4,Mechanical Engineer 4,Labor,0.0d,15.0,15.0,At Completion Units,11/3/2021,11/23/2021,0,0,0,0,0,0,0,0,0,0,1.03_Accelerator Systems (AS),1.03.07_AS SXR-HE Undulator (Soft X-Ray) - LBNL,1.03.07.05_AS SXR-HE Undulator Engineering and Design - LBNL,1.03.07.05.03_SXR-HE Undulator Integrated System Design,AS_LBL_DE_290_Respond to Final Design Review Recommendations - Undulator Integrated System Design,Mechanical,,SLAC,Labor
108625,1.03,1.03.07,1.03.07.05,1.03.07.05.03,1.03.07.05.03,SXR-HE Undulator Integrated System Design,AS_LBL_DE_300,Finalize Technical Documentation Package for Mechanical System - Undulator Integrated System Design,40.0,40.0,40.0,40.0,12-06-21,02-14-22,0,0,LBNL,0%,LBNL_E10.4.Mechanical Engineer 4,Mechanical Engineer 4,Labor,0.0d,40.0,40.0,At Completion Units,11/24/2021,2/4/2022,0,0,0,0,0,0,0,0,0,0,1.03_Accelerator Systems (AS),1.03.07_AS SXR-HE Undulator (Soft X-Ray) - LBNL,1.03.07.05_AS SXR-HE Undulator Engineering and Design - LBNL,1.03.07.05.03_SXR-HE Undulator Integrated System Design,AS_LBL_DE_300_Finalize Technical Documentation Package for Mechanical System - Undulator Integrated System Design,Mechanical,,SLAC,Labor
108626,1.03,1.03.07,1.03.07.05,1.03.07.05.03,1.03.07.05.03,SXR-HE Undulator Integrated System Design,AS_LBL_DE_300,Finalize Technical Documentation Package for Mechanical System - Undulator Integrated System Design,40.0,32.0,32.0,32.0,12-06-21,02-14-22,0,0,LBNL,0%,LBNL_E10.3.Mechanical Engineer 3,Mechanical Engineer 3,Labor,0.0d,40.0,40.0,At Completion Units,11/24/2021,2/4/2022,0,0,0,0,0,0,0,0,0,0,1.03_Accelerator Systems (AS),1.03.07_AS SXR-HE Undulator (Soft X-Ray) - LBNL,1.03.07.05_AS SXR-HE Undulator Engineering and Design - LBNL,1.03.07.05.03_SXR-HE Undulator Integrated System Design,AS_LBL_DE_300_Finalize Technical Documentation Package for Mechanical System - Undulator Integrated System Design,Mechanical,,SLAC,Labor
108627,1.03,1.03.07,1.03.07.05,1.03.07.05.03,1.03.07.05.03,SXR-HE Undulator Integrated System Design,AS_LBL_DE_300,Finalize Technical Documentation Package for Mechanical System - Undulator Integrated System Design,40.0,0.0,0.0,0.0,12-06-21,02-14-22,0,0,LBNL,0%,LBNL_E10.2.Mechanical Engineer 2,Mechanical Engineer 2,Labor,0.0d,40.0,40.0,At Completion Units,11/24/2021,2/4/2022,0,0,0,0,0,0,0,0,0,0,1.03_Accelerator Systems (AS),1.03.07_AS SXR-HE Undulator (Soft X-Ray) - LBNL,1.03.07.05_AS SXR-HE Undulator Engineering and Design - LBNL,1.03.07.05.03_SXR-HE Undulator Integrated System Design,AS_LBL_DE_300_Finalize Technical Documentation Package for Mechanical System - Undulator Integrated System Design,Mechanical,,SLAC,Labor
108628,1.03,1.03.07,1.03.07.05,1.03.07.05.03,1.03.07.05.03,SXR-HE Undulator Integrated System Design,AS_LBL_DE_300,Finalize Technical Documentation Package for Mechanical System - Undulator Integrated System Design,40.0,40.0,40.0,40.0,12-06-21,02-14-22,0,0,LBNL,0%,LBNL_N30.2.Sr Mechanical Engr Associate,Sr Mechanical Engr Associate,Labor,0.0d,40.0,40.0,At Completion Units,11/24/2021,2/4/2022,0,0,0,0,0,0,0,0,0,0,1.03_Accelerator Systems (AS),1.03.07_AS SXR-HE Undulator (Soft X-Ray) - LBNL,1.03.07.05_AS SXR-HE Undulator Engineering and Design - LBNL,1.03.07.05.03_SXR-HE Undulator Integrated System Design,AS_LBL_DE_300_Finalize Technical Documentation Package for Mechanical System - Undulator Integrated System Design,Mechanical,,SLAC,Labor
109267,1.03,1.03.07,1.03.07.06,1.03.07.06.01,1.03.07.06.01,SXR-HE New Undulator Procurement Planning,AS_LBL_PROC_470,Perform Market Research for New Undulator Procurement,15.0,20.0,0.0,27.0,07-01-2021,10-15-21,0,0,LBNL,100%,LBNL_E10.4.Mechanical Engineer 4,Mechanical Engineer 4,Labor,64.0d,11.0,75.0,At Completion Units,6/10/2021,9/3/2021,0,0,0,0,0,0,0,0,0,0,1.03_Accelerator Systems (AS),1.03.07_AS SXR-HE Undulator (Soft X-Ray) - LBNL,1.03.07.06_AS SXR-HE Undulator Procurement and Fabrication - LBNL,1.03.07.06.01_SXR-HE New Undulator Procurement Planning,AS_LBL_PROC_470_Perform Market Research for New Undulator Procurement,Mechanical,,SLAC,Labor
109268,1.03,1.03.07,1.03.07.06,1.03.07.06.01,1.03.07.06.01,SXR-HE New Undulator Procurement Planning,AS_LBL_PROC_470,Perform Market Research for New Undulator Procurement,15.0,40.0,6.0,33.0,07-01-2021,10-15-21,0,0,LBNL,81.82%,LBNL_E10.3.Mechanical Engineer 3,Mechanical Engineer 3,Labor,64.0d,11.0,75.0,At Completion Units,6/10/2021,9/3/2021,0,0,0,0,0,0,0,0,0,0,1.03_Accelerator Systems (AS),1.03.07_AS SXR-HE Undulator (Soft X-Ray) - LBNL,1.03.07.06_AS SXR-HE Undulator Procurement and Fabrication - LBNL,1.03.07.06.01_SXR-HE New Undulator Procurement Planning,AS_LBL_PROC_470_Perform Market Research for New Undulator Procurement,Mechanical,,SLAC,Labor
109269,1.03,1.03.07,1.03.07.06,1.03.07.06.01,1.03.07.06.01,SXR-HE New Undulator Procurement Planning,AS_LBL_PROC_490,Draft Statement of Work for New Undulator - Mechanical System & Integration,20.0,20.0,0.0,40.0,08-23-2021,10-15-21,0,0,LBNL,100%,LBNL_E10.4.Mechanical Engineer 4,Mechanical Engineer 4,Labor,28.0d,11.0,39.0,At Completion Units,10/5/2021,11/1/2021,0,0,0,0,0,0,0,0,0,0,1.03_Accelerator Systems (AS),1.03.07_AS SXR-HE Undulator (Soft X-Ray) - LBNL,1.03.07.06_AS SXR-HE Undulator Procurement and Fabrication - LBNL,1.03.07.06.01_SXR-HE New Undulator Procurement Planning,AS_LBL_PROC_490_Draft Statement of Work for New Undulator - Mechanical System & Integration,Mechanical,,SLAC,Labor
109270,1.03,1.03.07,1.03.07.06,1.03.07.06.01,1.03.07.06.01,SXR-HE New Undulator Procurement Planning,AS_LBL_PROC_490,Draft Statement of Work for New Undulator - Mechanical System & Integration,20.0,80.0,20.0,60.0,08-23-2021,10-15-21,0,0,LBNL,66.67%,LBNL_E10.3.Mechanical Engineer 3,Mechanical Engineer 3,Labor,28.0d,11.0,39.0,At Completion Units,10/5/2021,11/1/2021,0,0,0,0,0,0,0,0,0,0,1.03_Accelerator Systems (AS),1.03.07_AS SXR-HE Undulator (Soft X-Ray) - LBNL,1.03.07.06_AS SXR-HE Undulator Procurement and Fabrication - LBNL,1.03.07.06.01_SXR-HE New Undulator Procurement Planning,AS_LBL_PROC_490_Draft Statement of Work for New Undulator - Mechanical System & Integration,Mechanical,,SLAC,Labor
109271,1.03,1.03.07,1.03.07.06,1.03.07.06.01,1.03.07.06.01,SXR-HE New Undulator Procurement Planning,AS_LBL_PROC_480,Develop Procurement Plan for New Undulator,20.0,20.0,0.0,30.0,08-23-2021,10-15-21,0,0,LBNL,100%,LBNL_E10.4.Mechanical Engineer 4,Mechanical Engineer 4,Labor,28.0d,11.0,39.0,At Completion Units,9/7/2021,10/4/2021,0,0,0,0,0,0,0,0,0,0,1.03_Accelerator Systems (AS),1.03.07_AS SXR-HE Undulator (Soft X-Ray) - LBNL,1.03.07.06_AS SXR-HE Undulator Procurement and Fabrication - LBNL,1.03.07.06.01_SXR-HE New Undulator Procurement Planning,AS_LBL_PROC_480_Develop Procurement Plan for New Undulator,Mechanical,,SLAC,Labor
109272,1.03,1.03.07,1.03.07.06,1.03.07.06.01,1.03.07.06.01,SXR-HE New Undulator Procurement Planning,AS_LBL_PROC_480,Develop Procurement Plan for New Undulator,20.0,60.0,20.0,50.0,08-23-2021,10-15-21,0,0,LBNL,60%,LBNL_E10.3.Mechanical Engineer 3,Mechanical Engineer 3,Labor,28.0d,11.0,39.0,At Completion Units,9/7/2021,10/4/2021,0,0,0,0,0,0,0,0,0,0,1.03_Accelerator Systems (AS),1.03.07_AS SXR-HE Undulator (Soft X-Ray) - LBNL,1.03.07.06_AS SXR-HE Undulator Procurement and Fabrication - LBNL,1.03.07.06.01_SXR-HE New Undulator Procurement Planning,AS_LBL_PROC_480_Develop Procurement Plan for New Undulator,Mechanical,,SLAC,Labor
109273,1.03,1.03.07,1.03.07.06,1.03.07.06.01,1.03.07.06.01,SXR-HE New Undulator Procurement Planning,AS_LBL_PROC_510,Develop Technical Procurement Package for New Undulator - Mechanical System & Integration,20.0,80.0,80.0,80.0,12-06-21,01-14-22,0,0,LBNL,0%,LBNL_E10.4.Mechanical Engineer 4,Mechanical Engineer 4,Labor,0.0d,20.0,20.0,At Completion Units,11/24/2021,1/6/2022,0,0,0,0,0,0,0,0,0,0,1.03_Accelerator Systems (AS),1.03.07_AS SXR-HE Undulator (Soft X-Ray) - LBNL,1.03.07.06_AS SXR-HE Undulator Procurement and Fabrication - LBNL,1.03.07.06.01_SXR-HE New Undulator Procurement Planning,AS_LBL_PROC_510_Develop Technical Procurement Package for New Undulator - Mechanical System & Integration,Mechanical,,SLAC,Labor
109274,1.03,1.03.07,1.03.07.06,1.03.07.06.01,1.03.07.06.01,SXR-HE New Undulator Procurement Planning,AS_LBL_PROC_510,Develop Technical Procurement Package for New Undulator - Mechanical System & Integration,20.0,100.0,100.0,100.0,12-06-21,01-14-22,0,0,LBNL,0%,LBNL_E10.3.Mechanical Engineer 3,Mechanical Engineer 3,Labor,0.0d,20.0,20.0,At Completion Units,11/24/2021,1/6/2022,0,0,0,0,0,0,0,0,0,0,1.03_Accelerator Systems (AS),1.03.07_AS SXR-HE Undulator (Soft X-Ray) - LBNL,1.03.07.06_AS SXR-HE Undulator Procurement and Fabrication - LBNL,1.03.07.06.01_SXR-HE New Undulator Procurement Planning,AS_LBL_PROC_510_Develop Technical Procurement Package for New Undulator - Mechanical System & Integration,Mechanical,,SLAC,Labor
109275,1.03,1.03.07,1.03.07.06,1.03.07.06.01,1.03.07.06.01,SXR-HE New Undulator Procurement Planning,AS_LBL_PROC_500,Draft Request for Information for New Undulator - Mechanical System & Integration,20.0,20.0,20.0,20.0,10-18-21,11-12-21,0,0,LBNL,0%,LBNL_E10.4.Mechanical Engineer 4,Mechanical Engineer 4,Labor,0.0d,20.0,20.0,At Completion Units,11/2/2021,12/1/2021,0,0,0,0,0,0,0,0,0,0,1.03_Accelerator Systems (AS),1.03.07_AS SXR-HE Undulator (Soft X-Ray) - LBNL,1.03.07.06_AS SXR-HE Undulator Procurement and Fabrication - LBNL,1.03.07.06.01_SXR-HE New Undulator Procurement Planning,AS_LBL_PROC_500_Draft Request for Information for New Undulator - Mechanical System & Integration,Mechanical,,SLAC,Labor
109276,1.03,1.03.07,1.03.07.06,1.03.07.06.01,1.03.07.06.01,SXR-HE New Undulator Procurement Planning,AS_LBL_PROC_500,Draft Request for Information for New Undulator - Mechanical System & Integration,20.0,60.0,60.0,60.0,10-18-21,11-12-21,0,0,LBNL,0%,LBNL_E10.3.Mechanical Engineer 3,Mechanical Engineer 3,Labor,0.0d,20.0,20.0,At Completion Units,11/2/2021,12/1/2021,0,0,0,0,0,0,0,0,0,0,1.03_Accelerator Systems (AS),1.03.07_AS SXR-HE Undulator (Soft X-Ray) - LBNL,1.03.07.06_AS SXR-HE Undulator Procurement and Fabrication - LBNL,1.03.07.06.01_SXR-HE New Undulator Procurement Planning,AS_LBL_PROC_500_Draft Request for Information for New Undulator - Mechanical System & Integration,Mechanical,,SLAC,Labor
109596,1.03,1.03.07,1.03.07.06,1.03.07.06.02,1.03.07.06.02,SXR-HE New Undulator Manufacturing and QA Plan Development,AS_LBL_MANF_410,Develop Manufacturing Plan - New Undulator - Mechanical System & Integration,40.0,40.0,10.0,25.0,08-23-2021,10-15-21,0,0,LBNL,60%,LBNL_E10.3.Mechanical Engineer 3,Mechanical Engineer 3,Labor,28.0d,11.0,39.0,At Completion Units,8/31/2021,10/26/2021,0,0,0,0,0,0,0,0,0,0,1.03_Accelerator Systems (AS),1.03.07_AS SXR-HE Undulator (Soft X-Ray) - LBNL,1.03.07.06_AS SXR-HE Undulator Procurement and Fabrication - LBNL,1.03.07.06.02_SXR-HE New Undulator Manufacturing and QA Plan Development,AS_LBL_MANF_410_Develop Manufacturing Plan - New Undulator - Mechanical System & Integration,Mechanical,,SLAC,Labor
109597,1.03,1.03.07,1.03.07.06,1.03.07.06.02,1.03.07.06.02,SXR-HE New Undulator Manufacturing and QA Plan Development,AS_LBL_MANF_410,Develop Manufacturing Plan - New Undulator - Mechanical System & Integration,40.0,0.0,0.0,15.0,08-23-2021,10-15-21,0,0,LBNL,100%,LBNL_E10.4.Mechanical Engineer 4,Mechanical Engineer 4,Labor,28.0d,11.0,39.0,At Completion Units,8/31/2021,10/26/2021,0,0,0,0,0,0,0,0,0,0,1.03_Accelerator Systems (AS),1.03.07_AS SXR-HE Undulator (Soft X-Ray) - LBNL,1.03.07.06_AS SXR-HE Undulator Procurement and Fabrication - LBNL,1.03.07.06.02_SXR-HE New Undulator Manufacturing and QA Plan Development,AS_LBL_MANF_410_Develop Manufacturing Plan - New Undulator - Mechanical System & Integration,Mechanical,,SLAC,Labor
109598,1.03,1.03.07,1.03.07.06,1.03.07.06.02,1.03.07.06.02,SXR-HE New Undulator Manufacturing and QA Plan Development,AS_LBL_MANF_400,Review & Update BOM for part availability - New Undulator - Mechanical System & Integration,11.0,60.0,0.0,60.0,07-19-2021,08-19-2021,0,0,LBNL,100%,LBNL_E10.4.Mechanical Engineer 4,Mechanical Engineer 4,Labor,23.0d,0.0,23.0,At Completion Units,6/10/2021,8/30/2021,0,0,0,0,0,0,0,0,0,0,1.03_Accelerator Systems (AS),1.03.07_AS SXR-HE Undulator (Soft X-Ray) - LBNL,1.03.07.06_AS SXR-HE Undulator Procurement and Fabrication - LBNL,1.03.07.06.02_SXR-HE New Undulator Manufacturing and QA Plan Development,AS_LBL_MANF_400_Review & Update BOM for part availability - New Undulator - Mechanical System & Integration,Mechanical,,SLAC,Labor
109599,1.03,1.03.07,1.03.07.06,1.03.07.06.02,1.03.07.06.02,SXR-HE New Undulator Manufacturing and QA Plan Development,AS_LBL_MANF_420,Update Assy WI & ACLs for Frame & Und Integration - New Undulator - Mechanical System & Integration,40.0,80.0,80.0,80.0,10-18-21,12-14-21,0,0,LBNL,0%,LBNL_E10.4.Mechanical Engineer 4,Mechanical Engineer 4,Labor,0.0d,40.0,40.0,At Completion Units,10/27/2021,1/6/2022,0,0,0,0,0,0,0,0,0,0,1.03_Accelerator Systems (AS),1.03.07_AS SXR-HE Undulator (Soft X-Ray) - LBNL,1.03.07.06_AS SXR-HE Undulator Procurement and Fabrication - LBNL,1.03.07.06.02_SXR-HE New Undulator Manufacturing and QA Plan Development,AS_LBL_MANF_420_Update Assy WI & ACLs for Frame & Und Integration - New Undulator - Mechanical System & Integration,Mechanical,,SLAC,Labor
109600,1.03,1.03.07,1.03.07.06,1.03.07.06.02,1.03.07.06.02,SXR-HE New Undulator Manufacturing and QA Plan Development,AS_LBL_MANF_420,Update Assy WI & ACLs for Frame & Und Integration - New Undulator - Mechanical System & Integration,40.0,40.0,40.0,40.0,10-18-21,12-14-21,0,0,LBNL,0%,LBNL_E10.3.Mechanical Engineer 3,Mechanical Engineer 3,Labor,0.0d,40.0,40.0,At Completion Units,10/27/2021,1/6/2022,0,0,0,0,0,0,0,0,0,0,1.03_Accelerator Systems (AS),1.03.07_AS SXR-HE Undulator (Soft X-Ray) - LBNL,1.03.07.06_AS SXR-HE Undulator Procurement and Fabrication - LBNL,1.03.07.06.02_SXR-HE New Undulator Manufacturing and QA Plan Development,AS_LBL_MANF_420_Update Assy WI & ACLs for Frame & Und Integration - New Undulator - Mechanical System & Integration,Mechanical,,SLAC,Labor
109920,1.03,1.03.07,1.03.07.06,1.03.07.06.03,1.03.07.06.03,SXR-HE Magnet Sorting System Parts Fabrication and Measurements,AS_LBL_SORT_110,Recommission 5-Point Measurement System,10.0,40.0,0.0,40.0,05-17-2021,07-30-2021,0,0,LBNL,100%,LBNL_S36.4.Mechanical Staff Sci/Engr,Mechanical Staff Sci/Engr,Labor,52.0d,0.0,52.0,At Completion Units,6/9/2021,6/16/2021,0,0,0,0,0,0,0,0,0,0,1.03_Accelerator Systems (AS),1.03.07_AS SXR-HE Undulator (Soft X-Ray) - LBNL,1.03.07.06_AS SXR-HE Undulator Procurement and Fabrication - LBNL,1.03.07.06.03_SXR-HE Magnet Sorting System Parts Fabrication and Measurements,AS_LBL_SORT_110_Recommission 5-Point Measurement System,Mechanical,,SLAC,Labor
109921,1.03,1.03.07,1.03.07.06,1.03.07.06.03,1.03.07.06.03,SXR-HE Magnet Sorting System Parts Fabrication and Measurements,AS_LBL_SORT_100,Fabricate magnet platform for 5-point measurements,10.0,8.0,0.0,13.3,06-25-2021,07-30-2021,0,0,LBNL,100%,LBNL_706.3.Mechanical Engr Tech III,Mechanical Engr Tech III,Labor,24.0d,0.0,24.0,At Completion Units,6/9/2021,6/22/2021,0,0,0,0,0,0,0,0,0,0,1.03_Accelerator Systems (AS),1.03.07_AS SXR-HE Undulator (Soft X-Ray) - LBNL,1.03.07.06_AS SXR-HE Undulator Procurement and Fabrication - LBNL,1.03.07.06.03_SXR-HE Magnet Sorting System Parts Fabrication and Measurements,AS_LBL_SORT_100_Fabricate magnet platform for 5-point measurements,Mechanical,Tech,SLAC,Labor
109922,1.03,1.03.07,1.03.07.06,1.03.07.06.03,1.03.07.06.03,SXR-HE Magnet Sorting System Parts Fabrication and Measurements,AS_LBL_SORT_100,Fabricate magnet platform for 5-point measurements,10.0,24.0,0.0,13.3,06-25-2021,07-30-2021,0,0,LBNL,100%,LBNL_707.3.Mechanical Engr Machinist III,Mechanical Engr Machinist III,Labor,24.0d,0.0,24.0,At Completion Units,6/9/2021,6/22/2021,0,0,0,0,0,0,0,0,0,0,1.03_Accelerator Systems (AS),1.03.07_AS SXR-HE Undulator (Soft X-Ray) - LBNL,1.03.07.06_AS SXR-HE Undulator Procurement and Fabrication - LBNL,1.03.07.06.03_SXR-HE Magnet Sorting System Parts Fabrication and Measurements,AS_LBL_SORT_100_Fabricate magnet platform for 5-point measurements,Mechanical,,SLAC,Labor
109923,1.03,1.03.07,1.03.07.06,1.03.07.06.03,1.03.07.06.03,SXR-HE Magnet Sorting System Parts Fabrication and Measurements,AS_LBL_SORT_100,Fabricate magnet platform for 5-point measurements,10.0,8.0,0.0,13.3,06-25-2021,07-30-2021,0,0,LBNL,100%,LBNL_D50.2.LBNL_Software Developer 2,LBNL_Software Developer 2,Labor,24.0d,0.0,24.0,At Completion Units,6/9/2021,6/22/2021,0,0,0,0,0,0,0,0,0,0,1.03_Accelerator Systems (AS),1.03.07_AS SXR-HE Undulator (Soft X-Ray) - LBNL,1.03.07.06_AS SXR-HE Undulator Procurement and Fabrication - LBNL,1.03.07.06.03_SXR-HE Magnet Sorting System Parts Fabrication and Measurements,AS_LBL_SORT_100_Fabricate magnet platform for 5-point measurements,Contols,,LBNL,Labor
109924,1.03,1.03.07,1.03.07.06,1.03.07.06.03,1.03.07.06.03,SXR-HE Magnet Sorting System Parts Fabrication and Measurements,AS_LBL_SORT_120,Measure Short Prototype Magnets,10.0,40.0,0.0,30.0,07-19-2021,07-30-2021,0,0,LBNL,100%,LBNL_706.3.Mechanical Engr Tech III,Mechanical Engr Tech III,Labor,9.0d,0.0,9.0,At Completion Units,6/23/2021,7/7/2021,0,0,0,0,0,0,0,0,0,0,1.03_Accelerator Systems (AS),1.03.07_AS SXR-HE Undulator (Soft X-Ray) - LBNL,1.03.07.06_AS SXR-HE Undulator Procurement and Fabrication - LBNL,1.03.07.06.03_SXR-HE Magnet Sorting System Parts Fabrication and Measurements,AS_LBL_SORT_120_Measure Short Prototype Magnets,Mechanical,Tech,SLAC,Labor
109925,1.03,1.03.07,1.03.07.06,1.03.07.06.03,1.03.07.06.03,SXR-HE Magnet Sorting System Parts Fabrication and Measurements,AS_LBL_SORT_120,Measure Short Prototype Magnets,10.0,20.0,0.0,30.0,07-19-2021,07-30-2021,0,0,LBNL,100%,LBNL_S36.4.Mechanical Staff Sci/Engr,Mechanical Staff Sci/Engr,Labor,9.0d,0.0,9.0,At Completion Units,6/23/2021,7/7/2021,0,0,0,0,0,0,0,0,0,0,1.03_Accelerator Systems (AS),1.03.07_AS SXR-HE Undulator (Soft X-Ray) - LBNL,1.03.07.06_AS SXR-HE Undulator Procurement and Fabrication - LBNL,1.03.07.06.03_SXR-HE Magnet Sorting System Parts Fabrication and Measurements,AS_LBL_SORT_120_Measure Short Prototype Magnets,Mechanical,,SLAC,Labor
110245,1.03,1.03.07,1.03.07.06,1.03.07.06.04,1.03.07.06.04,SXR-HE Magnet Module Short Prototype Fabrication,AS_LBL_PROT_250,Installation and Support for SLAC - Short Prototype,50.0,40.0,20.0,30.0,08-16-2021,10-29-21,0,0,LBNL,33.33%,LBNL_D50.2.LBNL_Software Developer 2,LBNL_Software Developer 2,Labor,33.0d,21.0,54.0,At Completion Units,8/20/2021,10/29/2021,0,0,0,0,0,0,0,0,0,0,1.03_Accelerator Systems (AS),1.03.07_AS SXR-HE Undulator (Soft X-Ray) - LBNL,1.03.07.06_AS SXR-HE Undulator Procurement and Fabrication - LBNL,1.03.07.06.04_SXR-HE Magnet Module Short Prototype Fabrication,AS_LBL_PROT_250_Installation and Support for SLAC - Short Prototype,Contols,,LBNL,Labor
110246,1.03,1.03.07,1.03.07.06,1.03.07.06.04,1.03.07.06.04,SXR-HE Magnet Module Short Prototype Fabrication,AS_LBL_PROT_250,Installation and Support for SLAC - Short Prototype,50.0,0.0,0.0,10.0,08-16-2021,10-29-21,0,0,LBNL,100%,LBNL_E10.4.Mechanical Engineer 4,Mechanical Engineer 4,Labor,33.0d,21.0,54.0,At Completion Units,8/20/2021,10/29/2021,0,0,0,0,0,0,0,0,0,0,1.03_Accelerator Systems (AS),1.03.07_AS SXR-HE Undulator (Soft X-Ray) - LBNL,1.03.07.06_AS SXR-HE Undulator Procurement and Fabrication - LBNL,1.03.07.06.04_SXR-HE Magnet Module Short Prototype Fabrication,AS_LBL_PROT_250_Installation and Support for SLAC - Short Prototype,Mechanical,,SLAC,Labor
110247,1.03,1.03.07,1.03.07.06,1.03.07.06.04,1.03.07.06.04,SXR-HE Magnet Module Short Prototype Fabrication,AS_LBL_PROT_160,Update Work Instructions & ACL - Magnet Module,20.0,60.0,48.0,60.0,08-23-2021,10-22-21,0,0,LBNL,20%,LBNL_E10.4.Mechanical Engineer 4,Mechanical Engineer 4,Labor,28.0d,16.0,44.0,At Completion Units,8/20/2021,9/17/2021,0,0,0,0,0,0,0,0,0,0,1.03_Accelerator Systems (AS),1.03.07_AS SXR-HE Undulator (Soft X-Ray) - LBNL,1.03.07.06_AS SXR-HE Undulator Procurement and Fabrication - LBNL,1.03.07.06.04_SXR-HE Magnet Module Short Prototype Fabrication,AS_LBL_PROT_160_Update Work Instructions & ACL - Magnet Module,Mechanical,,SLAC,Labor
110248,1.03,1.03.07,1.03.07.06,1.03.07.06.04,1.03.07.06.04,SXR-HE Magnet Module Short Prototype Fabrication,AS_LBL_PROT_021,AWARD: Short Module Magnets & Poles  Procurement,40.0,17700.0,0.0,0.0,05-24-2021,06-25-2021,0,0,LBNL,0%,LBNL_AWARD.LBNL AWARDS,LBNL AWARDS,Nonlabor,23.0d,0.0,23.0,At Completion Units,4/5/2021,5/13/2021,0,0,0,0,0,0,0,0,0,0,1.03_Accelerator Systems (AS),1.03.07_AS SXR-HE Undulator (Soft X-Ray) - LBNL,1.03.07.06_AS SXR-HE Undulator Procurement and Fabrication - LBNL,1.03.07.06.04_SXR-HE Magnet Module Short Prototype Fabrication,AS_LBL_PROT_021_AWARD: Short Module Magnets & Poles  Procurement,M&S,,LBNL,Labor
110249,1.03,1.03.07,1.03.07.06,1.03.07.06.04,1.03.07.06.04,SXR-HE Magnet Module Short Prototype Fabrication,AS_LBL_PROT_030,"Fabrication: Keepers, Tuning, Mag Shims & Clamps - Short Module",45.0,211.0,0.0,211.0,05-24-2021,06-25-2021,0,0,LBNL,100%,LBNL_707.3.Mechanical Engr Machinist III,Mechanical Engr Machinist III,Labor,23.0d,0.0,23.0,At Completion Units,5/4/2021,6/1/2021,0,0,0,0,0,0,0,0,0,0,1.03_Accelerator Systems (AS),1.03.07_AS SXR-HE Undulator (Soft X-Ray) - LBNL,1.03.07.06_AS SXR-HE Undulator Procurement and Fabrication - LBNL,1.03.07.06.04_SXR-HE Magnet Module Short Prototype Fabrication,"AS_LBL_PROT_030_Fabrication: Keepers, Tuning, Mag Shims & Clamps - Short Module",Mechanical,,SLAC,Labor
110250,1.03,1.03.07,1.03.07.06,1.03.07.06.04,1.03.07.06.04,SXR-HE Magnet Module Short Prototype Fabrication,AS_LBL_PROT_020,Labor - Procurement Tech Rep - Short Module Magnets & Poles,45.0,48.0,0.0,48.0,05-24-2021,06-25-2021,0,0,LBNL,100%,LBNL_E10.3.Mechanical Engineer 3,Mechanical Engineer 3,Labor,23.0d,0.0,23.0,At Completion Units,4/5/2021,5/13/2021,0,0,0,0,0,0,0,0,0,0,1.03_Accelerator Systems (AS),1.03.07_AS SXR-HE Undulator (Soft X-Ray) - LBNL,1.03.07.06_AS SXR-HE Undulator Procurement and Fabrication - LBNL,1.03.07.06.04_SXR-HE Magnet Module Short Prototype Fabrication,AS_LBL_PROT_020_Labor - Procurement Tech Rep - Short Module Magnets & Poles,Mechanical,,SLAC,Labor
110251,1.03,1.03.07,1.03.07.06,1.03.07.06.04,1.03.07.06.04,SXR-HE Magnet Module Short Prototype Fabrication,AS_LBL_PROT_010,Planning - Short Module Fabrication,40.0,80.0,0.0,80.0,04-01-2021,04-30-2021,0,0,LBNL,100%,LBNL_E10.4.Mechanical Engineer 4,Mechanical Engineer 4,Labor,21.0d,0.0,21.0,At Completion Units,4/5/2021,5/3/2021,0,0,0,0,0,0,0,0,0,0,1.03_Accelerator Systems (AS),1.03.07_AS SXR-HE Undulator (Soft X-Ray) - LBNL,1.03.07.06_AS SXR-HE Undulator Procurement and Fabrication - LBNL,1.03.07.06.04_SXR-HE Magnet Module Short Prototype Fabrication,AS_LBL_PROT_010_Planning - Short Module Fabrication,Mechanical,,SLAC,Labor
110252,1.03,1.03.07,1.03.07.06,1.03.07.06.04,1.03.07.06.04,SXR-HE Magnet Module Short Prototype Fabrication,AS_LBL_PROT_110,Preliminary Testing - Short Magnet Module Assembly,10.0,60.0,0.0,30.0,07-05-2021,07-23-2021,0,0,LBNL,100%,LBNL_706.3.Mechanical Engr Tech III,Mechanical Engr Tech III,Labor,13.0d,0.0,13.0,At Completion Units,6/28/2021,7/12/2021,0,0,0,0,0,0,0,0,0,0,1.03_Accelerator Systems (AS),1.03.07_AS SXR-HE Undulator (Soft X-Ray) - LBNL,1.03.07.06_AS SXR-HE Undulator Procurement and Fabrication - LBNL,1.03.07.06.04_SXR-HE Magnet Module Short Prototype Fabrication,AS_LBL_PROT_110_Preliminary Testing - Short Magnet Module Assembly,Mechanical,Tech,SLAC,Labor
110253,1.03,1.03.07,1.03.07.06,1.03.07.06.04,1.03.07.06.04,SXR-HE Magnet Module Short Prototype Fabrication,AS_LBL_PROT_110,Preliminary Testing - Short Magnet Module Assembly,10.0,60.0,0.0,30.0,07-05-2021,07-23-2021,0,0,LBNL,100%,LBNL_D50.2.LBNL_Software Developer 2,LBNL_Software Developer 2,Labor,13.0d,0.0,13.0,At Completion Units,6/28/2021,7/12/2021,0,0,0,0,0,0,0,0,0,0,1.03_Accelerator Systems (AS),1.03.07_AS SXR-HE Undulator (Soft X-Ray) - LBNL,1.03.07.06_AS SXR-HE Undulator Procurement and Fabrication - LBNL,1.03.07.06.04_SXR-HE Magnet Module Short Prototype Fabrication,AS_LBL_PROT_110_Preliminary Testing - Short Magnet Module Assembly,Contols,,LBNL,Labor
110254,1.03,1.03.07,1.03.07.06,1.03.07.06.04,1.03.07.06.04,SXR-HE Magnet Module Short Prototype Fabrication,AS_LBL_PROT_110,Preliminary Testing - Short Magnet Module Assembly,10.0,16.0,0.0,30.0,07-05-2021,07-23-2021,0,0,LBNL,100%,LBNL_S36.4.Mechanical Staff Sci/Engr,Mechanical Staff Sci/Engr,Labor,13.0d,0.0,13.0,At Completion Units,6/28/2021,7/12/2021,0,0,0,0,0,0,0,0,0,0,1.03_Accelerator Systems (AS),1.03.07_AS SXR-HE Undulator (Soft X-Ray) - LBNL,1.03.07.06_AS SXR-HE Undulator Procurement and Fabrication - LBNL,1.03.07.06.04_SXR-HE Magnet Module Short Prototype Fabrication,AS_LBL_PROT_110_Preliminary Testing - Short Magnet Module Assembly,Mechanical,,SLAC,Labor
110255,1.03,1.03.07,1.03.07.06,1.03.07.06.04,1.03.07.06.04,SXR-HE Magnet Module Short Prototype Fabrication,AS_LBL_PROT_110,Preliminary Testing - Short Magnet Module Assembly,10.0,8.0,0.0,30.0,07-05-2021,07-23-2021,0,0,LBNL,100%,LBNL_E10.3.Mechanical Engineer 3,Mechanical Engineer 3,Labor,13.0d,0.0,13.0,At Completion Units,6/28/2021,7/12/2021,0,0,0,0,0,0,0,0,0,0,1.03_Accelerator Systems (AS),1.03.07_AS SXR-HE Undulator (Soft X-Ray) - LBNL,1.03.07.06_AS SXR-HE Undulator Procurement and Fabrication - LBNL,1.03.07.06.04_SXR-HE Magnet Module Short Prototype Fabrication,AS_LBL_PROT_110_Preliminary Testing - Short Magnet Module Assembly,Mechanical,,SLAC,Labor
110256,1.03,1.03.07,1.03.07.06,1.03.07.06.04,1.03.07.06.04,SXR-HE Magnet Module Short Prototype Fabrication,AS_LBL_PROT_110,Preliminary Testing - Short Magnet Module Assembly,10.0,16.0,0.0,30.0,07-05-2021,07-23-2021,0,0,LBNL,100%,LBNL_N30.2.Sr Mechanical Engr Associate,Sr Mechanical Engr Associate,Labor,13.0d,0.0,13.0,At Completion Units,6/28/2021,7/12/2021,0,0,0,0,0,0,0,0,0,0,1.03_Accelerator Systems (AS),1.03.07_AS SXR-HE Undulator (Soft X-Ray) - LBNL,1.03.07.06_AS SXR-HE Undulator Procurement and Fabrication - LBNL,1.03.07.06.04_SXR-HE Magnet Module Short Prototype Fabrication,AS_LBL_PROT_110_Preliminary Testing - Short Magnet Module Assembly,Mechanical,,SLAC,Labor
110257,1.03,1.03.07,1.03.07.06,1.03.07.06.04,1.03.07.06.04,SXR-HE Magnet Module Short Prototype Fabrication,AS_LBL_PROT_110,Preliminary Testing - Short Magnet Module Assembly,10.0,20.0,0.0,30.0,07-05-2021,07-23-2021,0,0,LBNL,100%,LBNL_E10.4.Mechanical Engineer 4,Mechanical Engineer 4,Labor,13.0d,0.0,13.0,At Completion Units,6/28/2021,7/12/2021,0,0,0,0,0,0,0,0,0,0,1.03_Accelerator Systems (AS),1.03.07_AS SXR-HE Undulator (Soft X-Ray) - LBNL,1.03.07.06_AS SXR-HE Undulator Procurement and Fabrication - LBNL,1.03.07.06.04_SXR-HE Magnet Module Short Prototype Fabrication,AS_LBL_PROT_110_Preliminary Testing - Short Magnet Module Assembly,Mechanical,,SLAC,Labor
110258,1.03,1.03.07,1.03.07.06,1.03.07.06.04,1.03.07.06.04,SXR-HE Magnet Module Short Prototype Fabrication,AS_LBL_PROT_120,Assembly - Short Magnet Modules (w/ End Magnets),10.0,40.0,0.0,25.0,07-26-2021,08-10-2021,0,0,LBNL,100%,LBNL_D50.2.LBNL_Software Developer 2,LBNL_Software Developer 2,Labor,11.0d,0.0,11.0,At Completion Units,7/27/2021,8/9/2021,0,0,0,0,0,0,0,0,0,0,1.03_Accelerator Systems (AS),1.03.07_AS SXR-HE Undulator (Soft X-Ray) - LBNL,1.03.07.06_AS SXR-HE Undulator Procurement and Fabrication - LBNL,1.03.07.06.04_SXR-HE Magnet Module Short Prototype Fabrication,AS_LBL_PROT_120_Assembly - Short Magnet Modules (w/ End Magnets),Contols,,LBNL,Labor
110259,1.03,1.03.07,1.03.07.06,1.03.07.06.04,1.03.07.06.04,SXR-HE Magnet Module Short Prototype Fabrication,AS_LBL_PROT_120,Assembly - Short Magnet Modules (w/ End Magnets),10.0,20.0,0.0,25.0,07-26-2021,08-10-2021,0,0,LBNL,100%,LBNL_S36.4.Mechanical Staff Sci/Engr,Mechanical Staff Sci/Engr,Labor,11.0d,0.0,11.0,At Completion Units,7/27/2021,8/9/2021,0,0,0,0,0,0,0,0,0,0,1.03_Accelerator Systems (AS),1.03.07_AS SXR-HE Undulator (Soft X-Ray) - LBNL,1.03.07.06_AS SXR-HE Undulator Procurement and Fabrication - LBNL,1.03.07.06.04_SXR-HE Magnet Module Short Prototype Fabrication,AS_LBL_PROT_120_Assembly - Short Magnet Modules (w/ End Magnets),Mechanical,,SLAC,Labor
110260,1.03,1.03.07,1.03.07.06,1.03.07.06.04,1.03.07.06.04,SXR-HE Magnet Module Short Prototype Fabrication,AS_LBL_PROT_120,Assembly - Short Magnet Modules (w/ End Magnets),10.0,40.0,0.0,25.0,07-26-2021,08-10-2021,0,0,LBNL,100%,LBNL_706.3.Mechanical Engr Tech III,Mechanical Engr Tech III,Labor,11.0d,0.0,11.0,At Completion Units,7/27/2021,8/9/2021,0,0,0,0,0,0,0,0,0,0,1.03_Accelerator Systems (AS),1.03.07_AS SXR-HE Undulator (Soft X-Ray) - LBNL,1.03.07.06_AS SXR-HE Undulator Procurement and Fabrication - LBNL,1.03.07.06.04_SXR-HE Magnet Module Short Prototype Fabrication,AS_LBL_PROT_120_Assembly - Short Magnet Modules (w/ End Magnets),Mechanical,Tech,SLAC,Labor
110261,1.03,1.03.07,1.03.07.06,1.03.07.06.04,1.03.07.06.04,SXR-HE Magnet Module Short Prototype Fabrication,AS_LBL_PROT_120,Assembly - Short Magnet Modules (w/ End Magnets),10.0,0.0,0.0,25.0,07-26-2021,08-10-2021,0,0,LBNL,100%,LBNL_E10.4.Mechanical Engineer 4,Mechanical Engineer 4,Labor,11.0d,0.0,11.0,At Completion Units,7/27/2021,8/9/2021,0,0,0,0,0,0,0,0,0,0,1.03_Accelerator Systems (AS),1.03.07_AS SXR-HE Undulator (Soft X-Ray) - LBNL,1.03.07.06_AS SXR-HE Undulator Procurement and Fabrication - LBNL,1.03.07.06.04_SXR-HE Magnet Module Short Prototype Fabrication,AS_LBL_PROT_120_Assembly - Short Magnet Modules (w/ End Magnets),Mechanical,,SLAC,Labor
110262,1.03,1.03.07,1.03.07.06,1.03.07.06.04,1.03.07.06.04,SXR-HE Magnet Module Short Prototype Fabrication,AS_LBL_PROT_100,Tech Oversight - Gluing - Short Module End Magnet,12.0,20.0,0.0,20.0,07-19-2021,07-30-2021,0,0,LBNL,100%,LBNL_D50.2.LBNL_Software Developer 2,LBNL_Software Developer 2,Labor,9.0d,0.0,9.0,At Completion Units,6/28/2021,7/26/2021,0,0,0,0,0,0,0,0,0,0,1.03_Accelerator Systems (AS),1.03.07_AS SXR-HE Undulator (Soft X-Ray) - LBNL,1.03.07.06_AS SXR-HE Undulator Procurement and Fabrication - LBNL,1.03.07.06.04_SXR-HE Magnet Module Short Prototype Fabrication,AS_LBL_PROT_100_Tech Oversight - Gluing - Short Module End Magnet,Contols,,LBNL,Labor
110263,1.03,1.03.07,1.03.07.06,1.03.07.06.04,1.03.07.06.04,SXR-HE Magnet Module Short Prototype Fabrication,AS_LBL_PROT_101,Gluing - Short Module End Magnet Gluing (non labor),12.0,1000.0,0.0,0.0,07-19-2021,07-30-2021,0,0,LBNL,0%,LBNL_MSSC.LBNL M&S (<$500K) (G&A),LBNL M&S (<$500K) (G&A),Nonlabor,9.0d,0.0,9.0,At Completion Units,6/28/2021,7/26/2021,0,0,0,0,0,0,0,0,0,0,1.03_Accelerator Systems (AS),1.03.07_AS SXR-HE Undulator (Soft X-Ray) - LBNL,1.03.07.06_AS SXR-HE Undulator Procurement and Fabrication - LBNL,1.03.07.06.04_SXR-HE Magnet Module Short Prototype Fabrication,AS_LBL_PROT_101_Gluing - Short Module End Magnet Gluing (non labor),M&S,,LBNL,M&S
110264,1.03,1.03.07,1.03.07.06,1.03.07.06.04,1.03.07.06.04,SXR-HE Magnet Module Short Prototype Fabrication,AS_LBL_PROT_111,Preliminary Testing - Short Magnet Module Assembly (non labor),10.0,2500.0,0.0,0.0,07-19-2021,07-23-2021,0,0,LBNL,0%,LBNL_MSSC.LBNL M&S (<$500K) (G&A),LBNL M&S (<$500K) (G&A),Nonlabor,4.0d,0.0,4.0,At Completion Units,6/28/2021,7/12/2021,0,0,0,0,0,0,0,0,0,0,1.03_Accelerator Systems (AS),1.03.07_AS SXR-HE Undulator (Soft X-Ray) - LBNL,1.03.07.06_AS SXR-HE Undulator Procurement and Fabrication - LBNL,1.03.07.06.04_SXR-HE Magnet Module Short Prototype Fabrication,AS_LBL_PROT_111_Preliminary Testing - Short Magnet Module Assembly (non labor),M&S,,LBNL,M&S
110265,1.03,1.03.07,1.03.07.06,1.03.07.06.04,1.03.07.06.04,SXR-HE Magnet Module Short Prototype Fabrication,AS_LBL_PROT_051,Tooling Fabrication (Non Labor) - Short Module,20.0,1000.0,0.0,0.0,06-14-2021,06-18-2021,0,0,LBNL,0%,LBNL_MSSC.LBNL M&S (<$500K) (G&A),LBNL M&S (<$500K) (G&A),Nonlabor,4.0d,0.0,4.0,At Completion Units,5/4/2021,6/1/2021,0,0,0,0,0,0,0,0,0,0,1.03_Accelerator Systems (AS),1.03.07_AS SXR-HE Undulator (Soft X-Ray) - LBNL,1.03.07.06_AS SXR-HE Undulator Procurement and Fabrication - LBNL,1.03.07.06.04_SXR-HE Magnet Module Short Prototype Fabrication,AS_LBL_PROT_051_Tooling Fabrication (Non Labor) - Short Module,M&S,,LBNL,M&S
110266,1.03,1.03.07,1.03.07.06,1.03.07.06.04,1.03.07.06.04,SXR-HE Magnet Module Short Prototype Fabrication,AS_LBL_PROT_050,Tooling Fabrication (Hours) - Short Module,20.0,40.0,0.0,33.3,06-14-2021,06-18-2021,0,0,LBNL,100%,LBNL_706.3.Mechanical Engr Tech III,Mechanical Engr Tech III,Labor,4.0d,0.0,4.0,At Completion Units,5/4/2021,6/1/2021,0,0,0,0,0,0,0,0,0,0,1.03_Accelerator Systems (AS),1.03.07_AS SXR-HE Undulator (Soft X-Ray) - LBNL,1.03.07.06_AS SXR-HE Undulator Procurement and Fabrication - LBNL,1.03.07.06.04_SXR-HE Magnet Module Short Prototype Fabrication,AS_LBL_PROT_050_Tooling Fabrication (Hours) - Short Module,Mechanical,Tech,SLAC,Labor
110267,1.03,1.03.07,1.03.07.06,1.03.07.06.04,1.03.07.06.04,SXR-HE Magnet Module Short Prototype Fabrication,AS_LBL_PROT_050,Tooling Fabrication (Hours) - Short Module,20.0,40.0,0.0,33.3,06-14-2021,06-18-2021,0,0,LBNL,100%,LBNL_707.3.Mechanical Engr Machinist III,Mechanical Engr Machinist III,Labor,4.0d,0.0,4.0,At Completion Units,5/4/2021,6/1/2021,0,0,0,0,0,0,0,0,0,0,1.03_Accelerator Systems (AS),1.03.07_AS SXR-HE Undulator (Soft X-Ray) - LBNL,1.03.07.06_AS SXR-HE Undulator Procurement and Fabrication - LBNL,1.03.07.06.04_SXR-HE Magnet Module Short Prototype Fabrication,AS_LBL_PROT_050_Tooling Fabrication (Hours) - Short Module,Mechanical,,SLAC,Labor
110268,1.03,1.03.07,1.03.07.06,1.03.07.06.04,1.03.07.06.04,SXR-HE Magnet Module Short Prototype Fabrication,AS_LBL_PROT_050,Tooling Fabrication (Hours) - Short Module,20.0,20.0,0.0,33.3,06-14-2021,06-18-2021,0,0,LBNL,100%,LBNL_D50.2.LBNL_Software Developer 2,LBNL_Software Developer 2,Labor,4.0d,0.0,4.0,At Completion Units,5/4/2021,6/1/2021,0,0,0,0,0,0,0,0,0,0,1.03_Accelerator Systems (AS),1.03.07_AS SXR-HE Undulator (Soft X-Ray) - LBNL,1.03.07.06_AS SXR-HE Undulator Procurement and Fabrication - LBNL,1.03.07.06.04_SXR-HE Magnet Module Short Prototype Fabrication,AS_LBL_PROT_050_Tooling Fabrication (Hours) - Short Module,Contols,,LBNL,Labor
110269,1.03,1.03.07,1.03.07.06,1.03.07.06.04,1.03.07.06.04,SXR-HE Magnet Module Short Prototype Fabrication,AS_LBL_PROT_130,Inspection & Alignment - Short Magnet Modules,4.0,10.0,0.0,19.3,08-11-2021,08-13-2021,0,0,LBNL,100%,LBNL_S36.4.Mechanical Staff Sci/Engr,Mechanical Staff Sci/Engr,Labor,2.0d,0.0,2.0,At Completion Units,8/10/2021,8/16/2021,0,0,0,0,0,0,0,0,0,0,1.03_Accelerator Systems (AS),1.03.07_AS SXR-HE Undulator (Soft X-Ray) - LBNL,1.03.07.06_AS SXR-HE Undulator Procurement and Fabrication - LBNL,1.03.07.06.04_SXR-HE Magnet Module Short Prototype Fabrication,AS_LBL_PROT_130_Inspection & Alignment - Short Magnet Modules,Mechanical,,SLAC,Labor
110270,1.03,1.03.07,1.03.07.06,1.03.07.06.04,1.03.07.06.04,SXR-HE Magnet Module Short Prototype Fabrication,AS_LBL_PROT_130,Inspection & Alignment - Short Magnet Modules,4.0,24.0,0.0,19.3,08-11-2021,08-13-2021,0,0,LBNL,100%,LBNL_706.3.Mechanical Engr Tech III,Mechanical Engr Tech III,Labor,2.0d,0.0,2.0,At Completion Units,8/10/2021,8/16/2021,0,0,0,0,0,0,0,0,0,0,1.03_Accelerator Systems (AS),1.03.07_AS SXR-HE Undulator (Soft X-Ray) - LBNL,1.03.07.06_AS SXR-HE Undulator Procurement and Fabrication - LBNL,1.03.07.06.04_SXR-HE Magnet Module Short Prototype Fabrication,AS_LBL_PROT_130_Inspection & Alignment - Short Magnet Modules,Mechanical,Tech,SLAC,Labor
110271,1.03,1.03.07,1.03.07.06,1.03.07.06.04,1.03.07.06.04,SXR-HE Magnet Module Short Prototype Fabrication,AS_LBL_PROT_130,Inspection & Alignment - Short Magnet Modules,4.0,24.0,0.0,19.3,08-11-2021,08-13-2021,0,0,LBNL,100%,LBNL_N30.2.Sr Mechanical Engr Associate,Sr Mechanical Engr Associate,Labor,2.0d,0.0,2.0,At Completion Units,8/10/2021,8/16/2021,0,0,0,0,0,0,0,0,0,0,1.03_Accelerator Systems (AS),1.03.07_AS SXR-HE Undulator (Soft X-Ray) - LBNL,1.03.07.06_AS SXR-HE Undulator Procurement and Fabrication - LBNL,1.03.07.06.04_SXR-HE Magnet Module Short Prototype Fabrication,AS_LBL_PROT_130_Inspection & Alignment - Short Magnet Modules,Mechanical,,SLAC,Labor
110272,1.03,1.03.07,1.03.07.06,1.03.07.06.04,1.03.07.06.04,SXR-HE Magnet Module Short Prototype Fabrication,AS_LBL_PROT_141,Prepare for Transport to SLAC - Short Magnet Modules (non labor),3.0,1000.0,0.0,0.0,08-13-2021,08-16-2021,0,0,LBNL,0%,LBNL_MSSC.LBNL M&S (<$500K) (G&A),LBNL M&S (<$500K) (G&A),Nonlabor,1.0d,0.0,1.0,At Completion Units,8/17/2021,8/19/2021,0,0,0,0,0,0,0,0,0,0,1.03_Accelerator Systems (AS),1.03.07_AS SXR-HE Undulator (Soft X-Ray) - LBNL,1.03.07.06_AS SXR-HE Undulator Procurement and Fabrication - LBNL,1.03.07.06.04_SXR-HE Magnet Module Short Prototype Fabrication,AS_LBL_PROT_141_Prepare for Transport to SLAC - Short Magnet Modules (non labor),M&S,,LBNL,M&S
110273,1.03,1.03.07,1.03.07.06,1.03.07.06.04,1.03.07.06.04,SXR-HE Magnet Module Short Prototype Fabrication,AS_LBL_PROT_140,Prepare for Transport to SLAC - Short Magnet Modules,3.0,32.0,0.0,24.0,08-13-2021,08-16-2021,0,0,LBNL,100%,LBNL_706.3.Mechanical Engr Tech III,Mechanical Engr Tech III,Labor,1.0d,0.0,1.0,At Completion Units,8/17/2021,8/19/2021,0,0,0,0,0,0,0,0,0,0,1.03_Accelerator Systems (AS),1.03.07_AS SXR-HE Undulator (Soft X-Ray) - LBNL,1.03.07.06_AS SXR-HE Undulator Procurement and Fabrication - LBNL,1.03.07.06.04_SXR-HE Magnet Module Short Prototype Fabrication,AS_LBL_PROT_140_Prepare for Transport to SLAC - Short Magnet Modules,Mechanical,Tech,SLAC,Labor
110274,1.03,1.03.07,1.03.07.06,1.03.07.06.04,1.03.07.06.04,SXR-HE Magnet Module Short Prototype Fabrication,AS_LBL_PROT_140,Prepare for Transport to SLAC - Short Magnet Modules,3.0,16.0,0.0,24.0,08-13-2021,08-16-2021,0,0,LBNL,100%,LBNL_E10.4.Mechanical Engineer 4,Mechanical Engineer 4,Labor,1.0d,0.0,1.0,At Completion Units,8/17/2021,8/19/2021,0,0,0,0,0,0,0,0,0,0,1.03_Accelerator Systems (AS),1.03.07_AS SXR-HE Undulator (Soft X-Ray) - LBNL,1.03.07.06_AS SXR-HE Undulator Procurement and Fabrication - LBNL,1.03.07.06.04_SXR-HE Magnet Module Short Prototype Fabrication,AS_LBL_PROT_140_Prepare for Transport to SLAC - Short Magnet Modules,Mechanical,,SLAC,Labor
110275,1.03,1.03.07,1.03.07.06,1.03.07.06.04,1.03.07.06.04,SXR-HE Magnet Module Short Prototype Fabrication,AS_LBL_PROT_022,RCV: Short Module Magnets & Poles,1.0,17700.0,0.0,0.0,06-25-2021,06-25-2021,0,0,LBNL,0%,LBNL_MSSC.LBNL M&S (<$500K) (G&A),LBNL M&S (<$500K) (G&A),Nonlabor,0.0d,0.0,0.0,At Completion Units,5/14/2021,6/25/2021,0,0,0,0,0,0,0,0,0,0,1.03_Accelerator Systems (AS),1.03.07_AS SXR-HE Undulator (Soft X-Ray) - LBNL,1.03.07.06_AS SXR-HE Undulator Procurement and Fabrication - LBNL,1.03.07.06.04_SXR-HE Magnet Module Short Prototype Fabrication,AS_LBL_PROT_022_RCV: Short Module Magnets & Poles,M&S,,LBNL,M&S
110276,1.03,1.03.07,1.03.07.06,1.03.07.06.04,1.03.07.06.04,SXR-HE Magnet Module Short Prototype Fabrication,AS_LBL_PROT_040,Keeper Assy & Inspection - Short Module,45.0,16.0,0.0,13.3,06-25-2021,06-25-2021,0,0,LBNL,100%,LBNL_706.3.Mechanical Engr Tech III,Mechanical Engr Tech III,Labor,0.0d,0.0,0.0,At Completion Units,5/4/2021,5/24/2021,0,0,0,0,0,0,0,0,0,0,1.03_Accelerator Systems (AS),1.03.07_AS SXR-HE Undulator (Soft X-Ray) - LBNL,1.03.07.06_AS SXR-HE Undulator Procurement and Fabrication - LBNL,1.03.07.06.04_SXR-HE Magnet Module Short Prototype Fabrication,AS_LBL_PROT_040_Keeper Assy & Inspection - Short Module,Mechanical,Tech,SLAC,Labor
110277,1.03,1.03.07,1.03.07.06,1.03.07.06.04,1.03.07.06.04,SXR-HE Magnet Module Short Prototype Fabrication,AS_LBL_PROT_040,Keeper Assy & Inspection - Short Module,45.0,16.0,0.0,13.3,06-25-2021,06-25-2021,0,0,LBNL,100%,LBNL_D50.2.LBNL_Software Developer 2,LBNL_Software Developer 2,Labor,0.0d,0.0,0.0,At Completion Units,5/4/2021,5/24/2021,0,0,0,0,0,0,0,0,0,0,1.03_Accelerator Systems (AS),1.03.07_AS SXR-HE Undulator (Soft X-Ray) - LBNL,1.03.07.06_AS SXR-HE Undulator Procurement and Fabrication - LBNL,1.03.07.06.04_SXR-HE Magnet Module Short Prototype Fabrication,AS_LBL_PROT_040_Keeper Assy & Inspection - Short Module,Contols,,LBNL,Labor
110278,1.03,1.03.07,1.03.07.06,1.03.07.06.04,1.03.07.06.04,SXR-HE Magnet Module Short Prototype Fabrication,AS_LBL_PROT_040,Keeper Assy & Inspection - Short Module,45.0,8.0,0.0,13.3,06-25-2021,06-25-2021,0,0,LBNL,100%,LBNL_S36.4.Mechanical Staff Sci/Engr,Mechanical Staff Sci/Engr,Labor,0.0d,0.0,0.0,At Completion Units,5/4/2021,5/24/2021,0,0,0,0,0,0,0,0,0,0,1.03_Accelerator Systems (AS),1.03.07_AS SXR-HE Undulator (Soft X-Ray) - LBNL,1.03.07.06_AS SXR-HE Undulator Procurement and Fabrication - LBNL,1.03.07.06.04_SXR-HE Magnet Module Short Prototype Fabrication,AS_LBL_PROT_040_Keeper Assy & Inspection - Short Module,Mechanical,,SLAC,Labor
110598,1.03,1.03.07,1.03.07.06,1.03.07.06.05,1.03.07.06.05,SXR-HE Magnetic System Procurement,AS_LBL_MANF_100,Develop Documents - Magnetic System Procurement including LLP (poles & tooling),76.0,240.0,0.0,240.0,11-02-2020,03-05-2021,0,0,LBNL,100%,LBNL_E10.3.Mechanical Engineer 3,Mechanical Engineer 3,Labor,76.0d,0.0,76.0,At Completion Units,2/2/2021,3/4/2021,0,0,0,0,0,0,0,0,0,0,1.03_Accelerator Systems (AS),1.03.07_AS SXR-HE Undulator (Soft X-Ray) - LBNL,1.03.07.06_AS SXR-HE Undulator Procurement and Fabrication - LBNL,1.03.07.06.05_SXR-HE Magnetic System Procurement,AS_LBL_MANF_100_Develop Documents - Magnetic System Procurement including LLP (poles & tooling),Mechanical,,SLAC,Labor
110599,1.03,1.03.07,1.03.07.06,1.03.07.06.05,1.03.07.06.05,SXR-HE Magnetic System Procurement,AS_LBL_MANF_100,Develop Documents - Magnetic System Procurement including LLP (poles & tooling),76.0,32.0,0.0,32.0,11-02-2020,03-05-2021,0,0,LBNL,100%,LBNL_E10.4.Mechanical Engineer 4,Mechanical Engineer 4,Labor,76.0d,0.0,76.0,At Completion Units,2/2/2021,3/4/2021,0,0,0,0,0,0,0,0,0,0,1.03_Accelerator Systems (AS),1.03.07_AS SXR-HE Undulator (Soft X-Ray) - LBNL,1.03.07.06_AS SXR-HE Undulator Procurement and Fabrication - LBNL,1.03.07.06.05_SXR-HE Magnetic System Procurement,AS_LBL_MANF_100_Develop Documents - Magnetic System Procurement including LLP (poles & tooling),Mechanical,,SLAC,Labor
110600,1.03,1.03.07,1.03.07.06,1.03.07.06.05,1.03.07.06.05,SXR-HE Magnetic System Procurement,AS_LBL_PROC_160,Labor to support RFP Prep & Approval - Magnetic System Procurement including LLP (poles & tooling),34.0,60.0,0.0,60.0,03-22-2021,05-07-2021,0,0,LBNL,100%,LBNL_E10.3.Mechanical Engineer 3,Mechanical Engineer 3,Labor,34.0d,0.0,34.0,At Completion Units,3/5/2021,5/20/2021,0,0,0,0,0,0,0,0,0,0,1.03_Accelerator Systems (AS),1.03.07_AS SXR-HE Undulator (Soft X-Ray) - LBNL,1.03.07.06_AS SXR-HE Undulator Procurement and Fabrication - LBNL,1.03.07.06.05_SXR-HE Magnetic System Procurement,AS_LBL_PROC_160_Labor to support RFP Prep & Approval - Magnetic System Procurement including LLP (poles & tooling),Mechanical,,SLAC,Labor
110601,1.03,1.03.07,1.03.07.06,1.03.07.06.05,1.03.07.06.05,SXR-HE Magnetic System Procurement,AS_LBL_PROC_430,Vendor Effort: Received under WBS 1.20.03 - Magnetic System - LLP (poles & tooling),210.0,0.0,0.0,4.0,09-01-2021,07-14-22,0,0,LBNL,100%,LBNL_N30.2.Sr Mechanical Engr Associate,Sr Mechanical Engr Associate,Labor,21.0d,189.0,210.0,At Completion Units,9/7/2021,4/8/2022,0,0,0,0,0,0,0,0,0,0,1.03_Accelerator Systems (AS),1.03.07_AS SXR-HE Undulator (Soft X-Ray) - LBNL,1.03.07.06_AS SXR-HE Undulator Procurement and Fabrication - LBNL,1.03.07.06.05_SXR-HE Magnetic System Procurement,AS_LBL_PROC_430_Vendor Effort: Received under WBS 1.20.03 - Magnetic System - LLP (poles & tooling),Mechanical,,SLAC,Labor
110602,1.03,1.03.07,1.03.07.06,1.03.07.06.05,1.03.07.06.05,SXR-HE Magnetic System Procurement,AS_LBL_PROC_430,Vendor Effort: Received under WBS 1.20.03 - Magnetic System - LLP (poles & tooling),210.0,0.0,0.0,4.0,09-01-2021,07-14-22,0,0,LBNL,100%,LBNL_Des.LBNL_Designer,LBNL_Designer,Labor,21.0d,189.0,210.0,At Completion Units,9/7/2021,4/8/2022,0,0,0,0,0,0,0,0,0,0,1.03_Accelerator Systems (AS),1.03.07_AS SXR-HE Undulator (Soft X-Ray) - LBNL,1.03.07.06_AS SXR-HE Undulator Procurement and Fabrication - LBNL,1.03.07.06.05_SXR-HE Magnetic System Procurement,AS_LBL_PROC_430_Vendor Effort: Received under WBS 1.20.03 - Magnetic System - LLP (poles & tooling),Mechanical,,LBNL,Labor
110603,1.03,1.03.07,1.03.07.06,1.03.07.06.05,1.03.07.06.05,SXR-HE Magnetic System Procurement,AS_LBL_PROC_430,Vendor Effort: Received under WBS 1.20.03 - Magnetic System - LLP (poles & tooling),210.0,0.0,0.0,4.0,09-01-2021,07-14-22,0,0,LBNL,100%,LBNL_E10.4.Mechanical Engineer 4,Mechanical Engineer 4,Labor,21.0d,189.0,210.0,At Completion Units,9/7/2021,4/8/2022,0,0,0,0,0,0,0,0,0,0,1.03_Accelerator Systems (AS),1.03.07_AS SXR-HE Undulator (Soft X-Ray) - LBNL,1.03.07.06_AS SXR-HE Undulator Procurement and Fabrication - LBNL,1.03.07.06.05_SXR-HE Magnetic System Procurement,AS_LBL_PROC_430_Vendor Effort: Received under WBS 1.20.03 - Magnetic System - LLP (poles & tooling),Mechanical,,SLAC,Labor
110604,1.03,1.03.07,1.03.07.06,1.03.07.06.05,1.03.07.06.05,SXR-HE Magnetic System Procurement,AS_LBL_PROC_430,Vendor Effort: Received under WBS 1.20.03 - Magnetic System - LLP (poles & tooling),210.0,200.0,180.0,184.0,09-01-2021,07-14-22,0,0,LBNL,2.17%,LBNL_E10.3.Mechanical Engineer 3,Mechanical Engineer 3,Labor,21.0d,189.0,210.0,At Completion Units,9/7/2021,4/8/2022,0,0,0,0,0,0,0,0,0,0,1.03_Accelerator Systems (AS),1.03.07_AS SXR-HE Undulator (Soft X-Ray) - LBNL,1.03.07.06_AS SXR-HE Undulator Procurement and Fabrication - LBNL,1.03.07.06.05_SXR-HE Magnetic System Procurement,AS_LBL_PROC_430_Vendor Effort: Received under WBS 1.20.03 - Magnetic System - LLP (poles & tooling),Mechanical,,SLAC,Labor
110605,1.03,1.03.07,1.03.07.06,1.03.07.06.05,1.03.07.06.05,SXR-HE Magnetic System Procurement,AS_LBL_PROC_430,Vendor Effort: Received under WBS 1.20.03 - Magnetic System - LLP (poles & tooling),210.0,0.0,0.0,4.0,09-01-2021,07-14-22,0,0,LBNL,100%,LBNL_S36.4.Mechanical Staff Sci/Engr,Mechanical Staff Sci/Engr,Labor,21.0d,189.0,210.0,At Completion Units,9/7/2021,4/8/2022,0,0,0,0,0,0,0,0,0,0,1.03_Accelerator Systems (AS),1.03.07_AS SXR-HE Undulator (Soft X-Ray) - LBNL,1.03.07.06_AS SXR-HE Undulator Procurement and Fabrication - LBNL,1.03.07.06.05_SXR-HE Magnetic System Procurement,AS_LBL_PROC_430_Vendor Effort: Received under WBS 1.20.03 - Magnetic System - LLP (poles & tooling),Mechanical,,SLAC,Labor
110606,1.03,1.03.07,1.03.07.06,1.03.07.06.05,1.03.07.06.05,SXR-HE Magnetic System Procurement,AS_LBL_PROC_210,Prepare for Procurement Readiness Review - Magnetic System Procurement including LLP (poles & tooling),16.0,40.0,0.0,40.0,04-26-2021,05-18-2021,0,0,LBNL,100%,LBNL_E10.3.Mechanical Engineer 3,Mechanical Engineer 3,Labor,16.0d,0.0,16.0,At Completion Units,6/18/2021,7/12/2021,0,0,0,0,0,0,0,0,0,0,1.03_Accelerator Systems (AS),1.03.07_AS SXR-HE Undulator (Soft X-Ray) - LBNL,1.03.07.06_AS SXR-HE Undulator Procurement and Fabrication - LBNL,1.03.07.06.05_SXR-HE Magnetic System Procurement,AS_LBL_PROC_210_Prepare for Procurement Readiness Review - Magnetic System Procurement including LLP (poles & tooling),Mechanical,,SLAC,Labor
110607,1.03,1.03.07,1.03.07.06,1.03.07.06.05,1.03.07.06.05,SXR-HE Magnetic System Procurement,AS_LBL_PROC_210,Prepare for Procurement Readiness Review - Magnetic System Procurement including LLP (poles & tooling),16.0,0.0,0.0,0.0,04-26-2021,05-18-2021,0,0,LBNL,0%,LBNL_E10.4.Mechanical Engineer 4,Mechanical Engineer 4,Labor,16.0d,0.0,16.0,At Completion Units,6/18/2021,7/12/2021,0,0,0,0,0,0,0,0,0,0,1.03_Accelerator Systems (AS),1.03.07_AS SXR-HE Undulator (Soft X-Ray) - LBNL,1.03.07.06_AS SXR-HE Undulator Procurement and Fabrication - LBNL,1.03.07.06.05_SXR-HE Magnetic System Procurement,AS_LBL_PROC_210_Prepare for Procurement Readiness Review - Magnetic System Procurement including LLP (poles & tooling),Mechanical,,SLAC,Labor
110608,1.03,1.03.07,1.03.07.06,1.03.07.06.05,1.03.07.06.05,SXR-HE Magnetic System Procurement,AS_LBL_PROC_180,TPRR - Magnetic System Procurement including LLP (poles & tooling),15.0,0.0,0.0,0.0,03-01-2021,03-22-2021,0,0,LBNL,0%,LBNL_N30.2.Sr Mechanical Engr Associate,Sr Mechanical Engr Associate,Labor,15.0d,0.0,15.0,At Completion Units,3/24/2021,4/21/2021,0,0,0,0,0,0,0,0,0,0,1.03_Accelerator Systems (AS),1.03.07_AS SXR-HE Undulator (Soft X-Ray) - LBNL,1.03.07.06_AS SXR-HE Undulator Procurement and Fabrication - LBNL,1.03.07.06.05_SXR-HE Magnetic System Procurement,AS_LBL_PROC_180_TPRR - Magnetic System Procurement including LLP (poles & tooling),Mechanical,,SLAC,Labor
110609,1.03,1.03.07,1.03.07.06,1.03.07.06.05,1.03.07.06.05,SXR-HE Magnetic System Procurement,AS_LBL_PROC_180,TPRR - Magnetic System Procurement including LLP (poles & tooling),15.0,24.0,0.0,24.0,03-01-2021,03-22-2021,0,0,LBNL,100%,LBNL_E10.3.Mechanical Engineer 3,Mechanical Engineer 3,Labor,15.0d,0.0,15.0,At Completion Units,3/24/2021,4/21/2021,0,0,0,0,0,0,0,0,0,0,1.03_Accelerator Systems (AS),1.03.07_AS SXR-HE Undulator (Soft X-Ray) - LBNL,1.03.07.06_AS SXR-HE Undulator Procurement and Fabrication - LBNL,1.03.07.06.05_SXR-HE Magnetic System Procurement,AS_LBL_PROC_180_TPRR - Magnetic System Procurement including LLP (poles & tooling),Mechanical,,SLAC,Labor
110610,1.03,1.03.07,1.03.07.06,1.03.07.06.05,1.03.07.06.05,SXR-HE Magnetic System Procurement,AS_LBL_PROC_180,TPRR - Magnetic System Procurement including LLP (poles & tooling),15.0,0.0,0.0,0.0,03-01-2021,03-22-2021,0,0,LBNL,0%,LBNL_S36.4.Mechanical Staff Sci/Engr,Mechanical Staff Sci/Engr,Labor,15.0d,0.0,15.0,At Completion Units,3/24/2021,4/21/2021,0,0,0,0,0,0,0,0,0,0,1.03_Accelerator Systems (AS),1.03.07_AS SXR-HE Undulator (Soft X-Ray) - LBNL,1.03.07.06_AS SXR-HE Undulator Procurement and Fabrication - LBNL,1.03.07.06.05_SXR-HE Magnetic System Procurement,AS_LBL_PROC_180_TPRR - Magnetic System Procurement including LLP (poles & tooling),Mechanical,,SLAC,Labor
110611,1.03,1.03.07,1.03.07.06,1.03.07.06.05,1.03.07.06.05,SXR-HE Magnetic System Procurement,AS_LBL_PROC_180,TPRR - Magnetic System Procurement including LLP (poles & tooling),15.0,0.0,0.0,0.0,03-01-2021,03-22-2021,0,0,LBNL,0%,LBNL_Des.LBNL_Designer,LBNL_Designer,Labor,15.0d,0.0,15.0,At Completion Units,3/24/2021,4/21/2021,0,0,0,0,0,0,0,0,0,0,1.03_Accelerator Systems (AS),1.03.07_AS SXR-HE Undulator (Soft X-Ray) - LBNL,1.03.07.06_AS SXR-HE Undulator Procurement and Fabrication - LBNL,1.03.07.06.05_SXR-HE Magnetic System Procurement,AS_LBL_PROC_180_TPRR - Magnetic System Procurement including LLP (poles & tooling),Mechanical,,LBNL,Labor
110612,1.03,1.03.07,1.03.07.06,1.03.07.06.05,1.03.07.06.05,SXR-HE Magnetic System Procurement,AS_LBL_PROC_180,TPRR - Magnetic System Procurement including LLP (poles & tooling),15.0,0.0,0.0,0.0,03-01-2021,03-22-2021,0,0,LBNL,0%,LBNL_E10.4.Mechanical Engineer 4,Mechanical Engineer 4,Labor,15.0d,0.0,15.0,At Completion Units,3/24/2021,4/21/2021,0,0,0,0,0,0,0,0,0,0,1.03_Accelerator Systems (AS),1.03.07_AS SXR-HE Undulator (Soft X-Ray) - LBNL,1.03.07.06_AS SXR-HE Undulator Procurement and Fabrication - LBNL,1.03.07.06.05_SXR-HE Magnetic System Procurement,AS_LBL_PROC_180_TPRR - Magnetic System Procurement including LLP (poles & tooling),Mechanical,,SLAC,Labor
110613,1.03,1.03.07,1.03.07.06,1.03.07.06.05,1.03.07.06.05,SXR-HE Magnetic System Procurement,AS_LBL_PROC_200,Procurement Reviews - CRB - Magnetic System Procurement including LLP (poles & tooling),14.0,24.0,0.0,24.0,04-19-2021,05-07-2021,0,0,LBNL,100%,LBNL_E10.3.Mechanical Engineer 3,Mechanical Engineer 3,Labor,14.0d,0.0,14.0,At Completion Units,5/21/2021,6/17/2021,0,0,0,0,0,0,0,0,0,0,1.03_Accelerator Systems (AS),1.03.07_AS SXR-HE Undulator (Soft X-Ray) - LBNL,1.03.07.06_AS SXR-HE Undulator Procurement and Fabrication - LBNL,1.03.07.06.05_SXR-HE Magnetic System Procurement,AS_LBL_PROC_200_Procurement Reviews - CRB - Magnetic System Procurement including LLP (poles & tooling),Mechanical,,SLAC,Labor
110614,1.03,1.03.07,1.03.07.06,1.03.07.06.05,1.03.07.06.05,SXR-HE Magnetic System Procurement,AS_LBL_PROC_150,Review Technical Docs - Magnetic System Procurement including LLP (poles & tooling),13.0,20.0,0.0,20.0,02-15-2021,03-05-2021,0,0,LBNL,100%,LBNL_S36.4.Mechanical Staff Sci/Engr,Mechanical Staff Sci/Engr,Labor,13.0d,0.0,13.0,At Completion Units,3/5/2021,3/23/2021,0,0,0,0,0,0,0,0,0,0,1.03_Accelerator Systems (AS),1.03.07_AS SXR-HE Undulator (Soft X-Ray) - LBNL,1.03.07.06_AS SXR-HE Undulator Procurement and Fabrication - LBNL,1.03.07.06.05_SXR-HE Magnetic System Procurement,AS_LBL_PROC_150_Review Technical Docs - Magnetic System Procurement including LLP (poles & tooling),Mechanical,,SLAC,Labor
110615,1.03,1.03.07,1.03.07.06,1.03.07.06.05,1.03.07.06.05,SXR-HE Magnetic System Procurement,AS_LBL_PROC_150,Review Technical Docs - Magnetic System Procurement including LLP (poles & tooling),13.0,60.0,0.0,60.0,02-15-2021,03-05-2021,0,0,LBNL,100%,LBNL_E10.3.Mechanical Engineer 3,Mechanical Engineer 3,Labor,13.0d,0.0,13.0,At Completion Units,3/5/2021,3/23/2021,0,0,0,0,0,0,0,0,0,0,1.03_Accelerator Systems (AS),1.03.07_AS SXR-HE Undulator (Soft X-Ray) - LBNL,1.03.07.06_AS SXR-HE Undulator Procurement and Fabrication - LBNL,1.03.07.06.05_SXR-HE Magnetic System Procurement,AS_LBL_PROC_150_Review Technical Docs - Magnetic System Procurement including LLP (poles & tooling),Mechanical,,SLAC,Labor
110616,1.03,1.03.07,1.03.07.06,1.03.07.06.05,1.03.07.06.05,SXR-HE Magnetic System Procurement,AS_LBL_PROC_170,Prepare for TPRR - Magnetic System Procurement including LLP (poles & tooling),10.0,24.0,0.0,24.0,03-01-2021,03-15-2021,0,0,LBNL,100%,LBNL_E10.3.Mechanical Engineer 3,Mechanical Engineer 3,Labor,10.0d,0.0,10.0,At Completion Units,3/24/2021,4/14/2021,0,0,0,0,0,0,0,0,0,0,1.03_Accelerator Systems (AS),1.03.07_AS SXR-HE Undulator (Soft X-Ray) - LBNL,1.03.07.06_AS SXR-HE Undulator Procurement and Fabrication - LBNL,1.03.07.06.05_SXR-HE Magnetic System Procurement,AS_LBL_PROC_170_Prepare for TPRR - Magnetic System Procurement including LLP (poles & tooling),Mechanical,,SLAC,Labor
110617,1.03,1.03.07,1.03.07.06,1.03.07.06.05,1.03.07.06.05,SXR-HE Magnetic System Procurement,AS_LBL_PROC_190,Respond to TPRR Recommendations - Magnetic System Procurement including LLP (poles & tooling),10.0,40.0,0.0,40.0,03-26-2021,04-09-2021,0,0,LBNL,100%,LBNL_N30.2.Sr Mechanical Engr Associate,Sr Mechanical Engr Associate,Labor,10.0d,0.0,10.0,At Completion Units,4/22/2021,5/5/2021,0,0,0,0,0,0,0,0,0,0,1.03_Accelerator Systems (AS),1.03.07_AS SXR-HE Undulator (Soft X-Ray) - LBNL,1.03.07.06_AS SXR-HE Undulator Procurement and Fabrication - LBNL,1.03.07.06.05_SXR-HE Magnetic System Procurement,AS_LBL_PROC_190_Respond to TPRR Recommendations - Magnetic System Procurement including LLP (poles & tooling),Mechanical,,SLAC,Labor
110618,1.03,1.03.07,1.03.07.06,1.03.07.06.05,1.03.07.06.05,SXR-HE Magnetic System Procurement,AS_LBL_PROC_190,Respond to TPRR Recommendations - Magnetic System Procurement including LLP (poles & tooling),10.0,60.0,0.0,60.0,03-26-2021,04-09-2021,0,0,LBNL,100%,LBNL_E10.3.Mechanical Engineer 3,Mechanical Engineer 3,Labor,10.0d,0.0,10.0,At Completion Units,4/22/2021,5/5/2021,0,0,0,0,0,0,0,0,0,0,1.03_Accelerator Systems (AS),1.03.07_AS SXR-HE Undulator (Soft X-Ray) - LBNL,1.03.07.06_AS SXR-HE Undulator Procurement and Fabrication - LBNL,1.03.07.06.05_SXR-HE Magnetic System Procurement,AS_LBL_PROC_190_Respond to TPRR Recommendations - Magnetic System Procurement including LLP (poles & tooling),Mechanical,,SLAC,Labor
110619,1.03,1.03.07,1.03.07.06,1.03.07.06.05,1.03.07.06.05,SXR-HE Magnetic System Procurement,AS_LBL_PROC_190,Respond to TPRR Recommendations - Magnetic System Procurement including LLP (poles & tooling),10.0,0.0,0.0,0.0,03-26-2021,04-09-2021,0,0,LBNL,0%,LBNL_S36.4.Mechanical Staff Sci/Engr,Mechanical Staff Sci/Engr,Labor,10.0d,0.0,10.0,At Completion Units,4/22/2021,5/5/2021,0,0,0,0,0,0,0,0,0,0,1.03_Accelerator Systems (AS),1.03.07_AS SXR-HE Undulator (Soft X-Ray) - LBNL,1.03.07.06_AS SXR-HE Undulator Procurement and Fabrication - LBNL,1.03.07.06.05_SXR-HE Magnetic System Procurement,AS_LBL_PROC_190_Respond to TPRR Recommendations - Magnetic System Procurement including LLP (poles & tooling),Mechanical,,SLAC,Labor
110620,1.03,1.03.07,1.03.07.06,1.03.07.06.05,1.03.07.06.05,SXR-HE Magnetic System Procurement,AS_LBL_PROC_190,Respond to TPRR Recommendations - Magnetic System Procurement including LLP (poles & tooling),10.0,0.0,0.0,0.0,03-26-2021,04-09-2021,0,0,LBNL,0%,LBNL_Des.LBNL_Designer,LBNL_Designer,Labor,10.0d,0.0,10.0,At Completion Units,4/22/2021,5/5/2021,0,0,0,0,0,0,0,0,0,0,1.03_Accelerator Systems (AS),1.03.07_AS SXR-HE Undulator (Soft X-Ray) - LBNL,1.03.07.06_AS SXR-HE Undulator Procurement and Fabrication - LBNL,1.03.07.06.05_SXR-HE Magnetic System Procurement,AS_LBL_PROC_190_Respond to TPRR Recommendations - Magnetic System Procurement including LLP (poles & tooling),Mechanical,,LBNL,Labor
110621,1.03,1.03.07,1.03.07.06,1.03.07.06.05,1.03.07.06.05,SXR-HE Magnetic System Procurement,AS_LBL_PROC_190,Respond to TPRR Recommendations - Magnetic System Procurement including LLP (poles & tooling),10.0,0.0,0.0,0.0,03-26-2021,04-09-2021,0,0,LBNL,0%,LBNL_E10.4.Mechanical Engineer 4,Mechanical Engineer 4,Labor,10.0d,0.0,10.0,At Completion Units,4/22/2021,5/5/2021,0,0,0,0,0,0,0,0,0,0,1.03_Accelerator Systems (AS),1.03.07_AS SXR-HE Undulator (Soft X-Ray) - LBNL,1.03.07.06_AS SXR-HE Undulator Procurement and Fabrication - LBNL,1.03.07.06.05_SXR-HE Magnetic System Procurement,AS_LBL_PROC_190_Respond to TPRR Recommendations - Magnetic System Procurement including LLP (poles & tooling),Mechanical,,SLAC,Labor
110622,1.03,1.03.07,1.03.07.06,1.03.07.06.05,1.03.07.06.05,SXR-HE Magnetic System Procurement,AS_LBL_PROC_170,Prepare for TPRR - Magnetic System Procurement including LLP (poles & tooling),10.0,0.0,0.0,0.0,03-01-2021,03-15-2021,0,0,LBNL,0%,LBNL_E10.4.Mechanical Engineer 4,Mechanical Engineer 4,Labor,10.0d,0.0,10.0,At Completion Units,3/24/2021,4/14/2021,0,0,0,0,0,0,0,0,0,0,1.03_Accelerator Systems (AS),1.03.07_AS SXR-HE Undulator (Soft X-Ray) - LBNL,1.03.07.06_AS SXR-HE Undulator Procurement and Fabrication - LBNL,1.03.07.06.05_SXR-HE Magnetic System Procurement,AS_LBL_PROC_170_Prepare for TPRR - Magnetic System Procurement including LLP (poles & tooling),Mechanical,,SLAC,Labor
110623,1.03,1.03.07,1.03.07.06,1.03.07.06.05,1.03.07.06.05,SXR-HE Magnetic System Procurement,AS_LBL_PROC_310,Vendor Proposal Evaluation - Magnetic System Procurement including LLP (poles & tooling),10.0,0.0,0.0,38.4,06-29-2021,07-13-2021,0,0,LBNL,100%,LBNL_D50.2.LBNL_Software Developer 2,LBNL_Software Developer 2,Labor,9.0d,0.0,9.0,At Completion Units,8/13/2021,8/26/2021,0,0,0,0,0,0,0,0,0,0,1.03_Accelerator Systems (AS),1.03.07_AS SXR-HE Undulator (Soft X-Ray) - LBNL,1.03.07.06_AS SXR-HE Undulator Procurement and Fabrication - LBNL,1.03.07.06.05_SXR-HE Magnetic System Procurement,AS_LBL_PROC_310_Vendor Proposal Evaluation - Magnetic System Procurement including LLP (poles & tooling),Contols,,LBNL,Labor
110624,1.03,1.03.07,1.03.07.06,1.03.07.06.05,1.03.07.06.05,SXR-HE Magnetic System Procurement,AS_LBL_PROC_310,Vendor Proposal Evaluation - Magnetic System Procurement including LLP (poles & tooling),10.0,20.0,0.0,38.4,06-29-2021,07-13-2021,0,0,LBNL,100%,LBNL_N30.2.Sr Mechanical Engr Associate,Sr Mechanical Engr Associate,Labor,9.0d,0.0,9.0,At Completion Units,8/13/2021,8/26/2021,0,0,0,0,0,0,0,0,0,0,1.03_Accelerator Systems (AS),1.03.07_AS SXR-HE Undulator (Soft X-Ray) - LBNL,1.03.07.06_AS SXR-HE Undulator Procurement and Fabrication - LBNL,1.03.07.06.05_SXR-HE Magnetic System Procurement,AS_LBL_PROC_310_Vendor Proposal Evaluation - Magnetic System Procurement including LLP (poles & tooling),Mechanical,,SLAC,Labor
110625,1.03,1.03.07,1.03.07.06,1.03.07.06.05,1.03.07.06.05,SXR-HE Magnetic System Procurement,AS_LBL_PROC_310,Vendor Proposal Evaluation - Magnetic System Procurement including LLP (poles & tooling),10.0,40.0,0.0,38.4,06-29-2021,07-13-2021,0,0,LBNL,100%,LBNL_E10.4.Mechanical Engineer 4,Mechanical Engineer 4,Labor,9.0d,0.0,9.0,At Completion Units,8/13/2021,8/26/2021,0,0,0,0,0,0,0,0,0,0,1.03_Accelerator Systems (AS),1.03.07_AS SXR-HE Undulator (Soft X-Ray) - LBNL,1.03.07.06_AS SXR-HE Undulator Procurement and Fabrication - LBNL,1.03.07.06.05_SXR-HE Magnetic System Procurement,AS_LBL_PROC_310_Vendor Proposal Evaluation - Magnetic System Procurement including LLP (poles & tooling),Mechanical,,SLAC,Labor
110626,1.03,1.03.07,1.03.07.06,1.03.07.06.05,1.03.07.06.05,SXR-HE Magnetic System Procurement,AS_LBL_PROC_310,Vendor Proposal Evaluation - Magnetic System Procurement including LLP (poles & tooling),10.0,84.0,0.0,38.4,06-29-2021,07-13-2021,0,0,LBNL,100%,LBNL_E10.3.Mechanical Engineer 3,Mechanical Engineer 3,Labor,9.0d,0.0,9.0,At Completion Units,8/13/2021,8/26/2021,0,0,0,0,0,0,0,0,0,0,1.03_Accelerator Systems (AS),1.03.07_AS SXR-HE Undulator (Soft X-Ray) - LBNL,1.03.07.06_AS SXR-HE Undulator Procurement and Fabrication - LBNL,1.03.07.06.05_SXR-HE Magnetic System Procurement,AS_LBL_PROC_310_Vendor Proposal Evaluation - Magnetic System Procurement including LLP (poles & tooling),Mechanical,,SLAC,Labor
110627,1.03,1.03.07,1.03.07.06,1.03.07.06.05,1.03.07.06.05,SXR-HE Magnetic System Procurement,AS_LBL_PROC_310,Vendor Proposal Evaluation - Magnetic System Procurement including LLP (poles & tooling),10.0,48.0,0.0,38.4,06-29-2021,07-13-2021,0,0,LBNL,100%,LBNL_S36.4.Mechanical Staff Sci/Engr,Mechanical Staff Sci/Engr,Labor,9.0d,0.0,9.0,At Completion Units,8/13/2021,8/26/2021,0,0,0,0,0,0,0,0,0,0,1.03_Accelerator Systems (AS),1.03.07_AS SXR-HE Undulator (Soft X-Ray) - LBNL,1.03.07.06_AS SXR-HE Undulator Procurement and Fabrication - LBNL,1.03.07.06.05_SXR-HE Magnetic System Procurement,AS_LBL_PROC_310_Vendor Proposal Evaluation - Magnetic System Procurement including LLP (poles & tooling),Mechanical,,SLAC,Labor
110628,1.03,1.03.07,1.03.07.06,1.03.07.06.05,1.03.07.06.05,SXR-HE Magnetic System Procurement,AS_LBL_PROC_405,Labor for award document preperation - Magnetic System Procurement including LLP (poles & tooling),5.0,0.0,0.0,12.0,08-25-2021,08-31-2021,0,0,LBNL,100%,LBNL_S36.4.Mechanical Staff Sci/Engr,Mechanical Staff Sci/Engr,Labor,4.0d,0.0,4.0,At Completion Units,8/27/2021,9/2/2021,0,0,0,0,0,0,0,0,0,0,1.03_Accelerator Systems (AS),1.03.07_AS SXR-HE Undulator (Soft X-Ray) - LBNL,1.03.07.06_AS SXR-HE Undulator Procurement and Fabrication - LBNL,1.03.07.06.05_SXR-HE Magnetic System Procurement,AS_LBL_PROC_405_Labor for award document preperation - Magnetic System Procurement including LLP (poles & tooling),Mechanical,,SLAC,Labor
110629,1.03,1.03.07,1.03.07.06,1.03.07.06.05,1.03.07.06.05,SXR-HE Magnetic System Procurement,AS_LBL_PROC_405,Labor for award document preperation - Magnetic System Procurement including LLP (poles & tooling),5.0,24.0,0.0,12.0,08-25-2021,08-31-2021,0,0,LBNL,100%,LBNL_E10.3.Mechanical Engineer 3,Mechanical Engineer 3,Labor,4.0d,0.0,4.0,At Completion Units,8/27/2021,9/2/2021,0,0,0,0,0,0,0,0,0,0,1.03_Accelerator Systems (AS),1.03.07_AS SXR-HE Undulator (Soft X-Ray) - LBNL,1.03.07.06_AS SXR-HE Undulator Procurement and Fabrication - LBNL,1.03.07.06.05_SXR-HE Magnetic System Procurement,AS_LBL_PROC_405_Labor for award document preperation - Magnetic System Procurement including LLP (poles & tooling),Mechanical,,SLAC,Labor
110630,1.03,1.03.07,1.03.07.06,1.03.07.06.05,1.03.07.06.05,SXR-HE Magnetic System Procurement,AS_LBL_PROC_454,Inspection and QA Labor - HE Fabricated Poles (in parallel with 1.20.03),15.0,13.0,13.0,13.0,07-14-22,08-03-22,0,0,LBNL,0%,LBNL_E10.4.Mechanical Engineer 4,Mechanical Engineer 4,Labor,0.0d,15.0,15.0,At Completion Units,nn,,0,0,0,0,0,0,0,0,0,0,1.03_Accelerator Systems (AS),1.03.07_AS SXR-HE Undulator (Soft X-Ray) - LBNL,1.03.07.06_AS SXR-HE Undulator Procurement and Fabrication - LBNL,1.03.07.06.05_SXR-HE Magnetic System Procurement,AS_LBL_PROC_454_Inspection and QA Labor - HE Fabricated Poles (in parallel with 1.20.03),Mechanical,,SLAC,Labor
110631,1.03,1.03.07,1.03.07.06,1.03.07.06.05,1.03.07.06.05,SXR-HE Magnetic System Procurement,AS_LBL_PROC_454,Inspection and QA Labor - HE Fabricated Poles (in parallel with 1.20.03),15.0,8.0,8.0,8.0,07-14-22,08-03-22,0,0,LBNL,0%,LBNL_E10.3.Mechanical Engineer 3,Mechanical Engineer 3,Labor,0.0d,15.0,15.0,At Completion Units,nn,,0,0,0,0,0,0,0,0,0,0,1.03_Accelerator Systems (AS),1.03.07_AS SXR-HE Undulator (Soft X-Ray) - LBNL,1.03.07.06_AS SXR-HE Undulator Procurement and Fabrication - LBNL,1.03.07.06.05_SXR-HE Magnetic System Procurement,AS_LBL_PROC_454_Inspection and QA Labor - HE Fabricated Poles (in parallel with 1.20.03),Mechanical,,SLAC,Labor
110632,1.03,1.03.07,1.03.07.06,1.03.07.06.05,1.03.07.06.05,SXR-HE Magnetic System Procurement,AS_LBL_PROC_454,Inspection and QA Labor - HE Fabricated Poles (in parallel with 1.20.03),15.0,13.0,13.0,13.0,07-14-22,08-03-22,0,0,LBNL,0%,LBNL_S36.4.Mechanical Staff Sci/Engr,Mechanical Staff Sci/Engr,Labor,0.0d,15.0,15.0,At Completion Units,nn,,0,0,0,0,0,0,0,0,0,0,1.03_Accelerator Systems (AS),1.03.07_AS SXR-HE Undulator (Soft X-Ray) - LBNL,1.03.07.06_AS SXR-HE Undulator Procurement and Fabrication - LBNL,1.03.07.06.05_SXR-HE Magnetic System Procurement,AS_LBL_PROC_454_Inspection and QA Labor - HE Fabricated Poles (in parallel with 1.20.03),Mechanical,,SLAC,Labor
110633,1.03,1.03.07,1.03.07.06,1.03.07.06.05,1.03.07.06.05,SXR-HE Magnetic System Procurement,AS_LBL_PROC_452,Inspection and QA Labor - HE Pole Material (in parallel with 1.20.03),15.0,13.0,13.0,13.0,02-02-22,02-23-22,0,0,LBNL,0%,LBNL_E10.4.Mechanical Engineer 4,Mechanical Engineer 4,Labor,0.0d,15.0,15.0,At Completion Units,nn,,0,0,0,0,0,0,0,0,0,0,1.03_Accelerator Systems (AS),1.03.07_AS SXR-HE Undulator (Soft X-Ray) - LBNL,1.03.07.06_AS SXR-HE Undulator Procurement and Fabrication - LBNL,1.03.07.06.05_SXR-HE Magnetic System Procurement,AS_LBL_PROC_452_Inspection and QA Labor - HE Pole Material (in parallel with 1.20.03),Mechanical,,SLAC,Labor
110634,1.03,1.03.07,1.03.07.06,1.03.07.06.05,1.03.07.06.05,SXR-HE Magnetic System Procurement,AS_LBL_PROC_452,Inspection and QA Labor - HE Pole Material (in parallel with 1.20.03),15.0,8.0,8.0,8.0,02-02-22,02-23-22,0,0,LBNL,0%,LBNL_E10.3.Mechanical Engineer 3,Mechanical Engineer 3,Labor,0.0d,15.0,15.0,At Completion Units,nn,,0,0,0,0,0,0,0,0,0,0,1.03_Accelerator Systems (AS),1.03.07_AS SXR-HE Undulator (Soft X-Ray) - LBNL,1.03.07.06_AS SXR-HE Undulator Procurement and Fabrication - LBNL,1.03.07.06.05_SXR-HE Magnetic System Procurement,AS_LBL_PROC_452_Inspection and QA Labor - HE Pole Material (in parallel with 1.20.03),Mechanical,,SLAC,Labor
110635,1.03,1.03.07,1.03.07.06,1.03.07.06.05,1.03.07.06.05,SXR-HE Magnetic System Procurement,AS_LBL_PROC_452,Inspection and QA Labor - HE Pole Material (in parallel with 1.20.03),15.0,14.0,14.0,14.0,02-02-22,02-23-22,0,0,LBNL,0%,LBNL_S36.4.Mechanical Staff Sci/Engr,Mechanical Staff Sci/Engr,Labor,0.0d,15.0,15.0,At Completion Units,nn,,0,0,0,0,0,0,0,0,0,0,1.03_Accelerator Systems (AS),1.03.07_AS SXR-HE Undulator (Soft X-Ray) - LBNL,1.03.07.06_AS SXR-HE Undulator Procurement and Fabrication - LBNL,1.03.07.06.05_SXR-HE Magnetic System Procurement,AS_LBL_PROC_452_Inspection and QA Labor - HE Pole Material (in parallel with 1.20.03),Mechanical,,SLAC,Labor
110636,1.03,1.03.07,1.03.07.06,1.03.07.06.05,1.03.07.06.05,SXR-HE Magnetic System Procurement,AS_LBL_PROC_280,Respond to Supplier Questions & Amend RFP - Magnetic System Procurement including LLP (poles & tooling),1.0,8.0,0.0,13.0,06-04-2021,06-04-2021,0,0,LBNL,100%,LBNL_N30.2.Sr Mechanical Engr Associate,Sr Mechanical Engr Associate,Labor,0.0d,0.0,0.0,At Completion Units,7/15/2021,8/12/2021,0,0,0,0,0,0,0,0,0,0,1.03_Accelerator Systems (AS),1.03.07_AS SXR-HE Undulator (Soft X-Ray) - LBNL,1.03.07.06_AS SXR-HE Undulator Procurement and Fabrication - LBNL,1.03.07.06.05_SXR-HE Magnetic System Procurement,AS_LBL_PROC_280_Respond to Supplier Questions & Amend RFP - Magnetic System Procurement including LLP (poles & tooling),Mechanical,,SLAC,Labor
110637,1.03,1.03.07,1.03.07.06,1.03.07.06.05,1.03.07.06.05,SXR-HE Magnetic System Procurement,AS_LBL_PROC_230,Respond to PRR Recommendations - Magnetic System Procurement including LLP (poles & tooling),1.0,0.0,0.0,3.2,05-19-2021,05-19-2021,0,0,LBNL,100%,LBNL_S36.4.Mechanical Staff Sci/Engr,Mechanical Staff Sci/Engr,Labor,0.0d,0.0,0.0,At Completion Units,7/14/2021,7/14/2021,0,0,0,0,0,0,0,0,0,0,1.03_Accelerator Systems (AS),1.03.07_AS SXR-HE Undulator (Soft X-Ray) - LBNL,1.03.07.06_AS SXR-HE Undulator Procurement and Fabrication - LBNL,1.03.07.06.05_SXR-HE Magnetic System Procurement,AS_LBL_PROC_230_Respond to PRR Recommendations - Magnetic System Procurement including LLP (poles & tooling),Mechanical,,SLAC,Labor
110638,1.03,1.03.07,1.03.07.06,1.03.07.06.05,1.03.07.06.05,SXR-HE Magnetic System Procurement,AS_LBL_PROC_220,Conduct Procurement Readiness Review - Magnetic System Procurement including LLP (poles & tooling),1.0,0.0,0.0,1.2,05-19-2021,05-19-2021,0,0,LBNL,100%,LBNL_N30.2.Sr Mechanical Engr Associate,Sr Mechanical Engr Associate,Labor,0.0d,0.0,0.0,At Completion Units,7/13/2021,7/13/2021,0,0,0,0,0,0,0,0,0,0,1.03_Accelerator Systems (AS),1.03.07_AS SXR-HE Undulator (Soft X-Ray) - LBNL,1.03.07.06_AS SXR-HE Undulator Procurement and Fabrication - LBNL,1.03.07.06.05_SXR-HE Magnetic System Procurement,AS_LBL_PROC_220_Conduct Procurement Readiness Review - Magnetic System Procurement including LLP (poles & tooling),Mechanical,,SLAC,Labor
110639,1.03,1.03.07,1.03.07.06,1.03.07.06.05,1.03.07.06.05,SXR-HE Magnetic System Procurement,AS_LBL_PROC_450,Inspection and QA Labor - HE Permanent Magnet Tooling (in parallel with 1.20.03),15.0,13.0,13.0,13.0,11-10-21,12-02-21,0,0,LBNL,0%,LBNL_E10.4.Mechanical Engineer 4,Mechanical Engineer 4,Labor,0.0d,15.0,15.0,At Completion Units,4/11/2022,4/29/2022,0,0,0,0,0,0,0,0,0,0,1.03_Accelerator Systems (AS),1.03.07_AS SXR-HE Undulator (Soft X-Ray) - LBNL,1.03.07.06_AS SXR-HE Undulator Procurement and Fabrication - LBNL,1.03.07.06.05_SXR-HE Magnetic System Procurement,AS_LBL_PROC_450_Inspection and QA Labor - HE Permanent Magnet Tooling (in parallel with 1.20.03),Mechanical,,SLAC,Labor
110640,1.03,1.03.07,1.03.07.06,1.03.07.06.05,1.03.07.06.05,SXR-HE Magnetic System Procurement,AS_LBL_PROC_450,Inspection and QA Labor - HE Permanent Magnet Tooling (in parallel with 1.20.03),15.0,8.0,8.0,8.0,11-10-21,12-02-21,0,0,LBNL,0%,LBNL_E10.3.Mechanical Engineer 3,Mechanical Engineer 3,Labor,0.0d,15.0,15.0,At Completion Units,4/11/2022,4/29/2022,0,0,0,0,0,0,0,0,0,0,1.03_Accelerator Systems (AS),1.03.07_AS SXR-HE Undulator (Soft X-Ray) - LBNL,1.03.07.06_AS SXR-HE Undulator Procurement and Fabrication - LBNL,1.03.07.06.05_SXR-HE Magnetic System Procurement,AS_LBL_PROC_450_Inspection and QA Labor - HE Permanent Magnet Tooling (in parallel with 1.20.03),Mechanical,,SLAC,Labor
110641,1.03,1.03.07,1.03.07.06,1.03.07.06.05,1.03.07.06.05,SXR-HE Magnetic System Procurement,AS_LBL_PROC_450,Inspection and QA Labor - HE Permanent Magnet Tooling (in parallel with 1.20.03),15.0,14.0,14.0,14.0,11-10-21,12-02-21,0,0,LBNL,0%,LBNL_S36.4.Mechanical Staff Sci/Engr,Mechanical Staff Sci/Engr,Labor,0.0d,15.0,15.0,At Completion Units,4/11/2022,4/29/2022,0,0,0,0,0,0,0,0,0,0,1.03_Accelerator Systems (AS),1.03.07_AS SXR-HE Undulator (Soft X-Ray) - LBNL,1.03.07.06_AS SXR-HE Undulator Procurement and Fabrication - LBNL,1.03.07.06.05_SXR-HE Magnetic System Procurement,AS_LBL_PROC_450_Inspection and QA Labor - HE Permanent Magnet Tooling (in parallel with 1.20.03),Mechanical,,SLAC,Labor
110642,1.03,1.03.07,1.03.07.06,1.03.07.06.05,1.03.07.06.05,SXR-HE Magnetic System Procurement,AS_LBL_PROC_280,Respond to Supplier Questions & Amend RFP - Magnetic System Procurement including LLP (poles & tooling),1.0,32.0,0.0,13.0,06-04-2021,06-04-2021,0,0,LBNL,100%,LBNL_E10.4.Mechanical Engineer 4,Mechanical Engineer 4,Labor,0.0d,0.0,0.0,At Completion Units,7/15/2021,8/12/2021,0,0,0,0,0,0,0,0,0,0,1.03_Accelerator Systems (AS),1.03.07_AS SXR-HE Undulator (Soft X-Ray) - LBNL,1.03.07.06_AS SXR-HE Undulator Procurement and Fabrication - LBNL,1.03.07.06.05_SXR-HE Magnetic System Procurement,AS_LBL_PROC_280_Respond to Supplier Questions & Amend RFP - Magnetic System Procurement including LLP (poles & tooling),Mechanical,,SLAC,Labor
110643,1.03,1.03.07,1.03.07.06,1.03.07.06.05,1.03.07.06.05,SXR-HE Magnetic System Procurement,AS_LBL_PROC_280,Respond to Supplier Questions & Amend RFP - Magnetic System Procurement including LLP (poles & tooling),1.0,4.0,0.0,13.0,06-04-2021,06-04-2021,0,0,LBNL,100%,LBNL_E10.3.Mechanical Engineer 3,Mechanical Engineer 3,Labor,0.0d,0.0,0.0,At Completion Units,7/15/2021,8/12/2021,0,0,0,0,0,0,0,0,0,0,1.03_Accelerator Systems (AS),1.03.07_AS SXR-HE Undulator (Soft X-Ray) - LBNL,1.03.07.06_AS SXR-HE Undulator Procurement and Fabrication - LBNL,1.03.07.06.05_SXR-HE Magnetic System Procurement,AS_LBL_PROC_280_Respond to Supplier Questions & Amend RFP - Magnetic System Procurement including LLP (poles & tooling),Mechanical,,SLAC,Labor
110644,1.03,1.03.07,1.03.07.06,1.03.07.06.05,1.03.07.06.05,SXR-HE Magnetic System Procurement,AS_LBL_PROC_280,Respond to Supplier Questions & Amend RFP - Magnetic System Procurement including LLP (poles & tooling),1.0,8.0,0.0,13.0,06-04-2021,06-04-2021,0,0,LBNL,100%,LBNL_S36.4.Mechanical Staff Sci/Engr,Mechanical Staff Sci/Engr,Labor,0.0d,0.0,0.0,At Completion Units,7/15/2021,8/12/2021,0,0,0,0,0,0,0,0,0,0,1.03_Accelerator Systems (AS),1.03.07_AS SXR-HE Undulator (Soft X-Ray) - LBNL,1.03.07.06_AS SXR-HE Undulator Procurement and Fabrication - LBNL,1.03.07.06.05_SXR-HE Magnetic System Procurement,AS_LBL_PROC_280_Respond to Supplier Questions & Amend RFP - Magnetic System Procurement including LLP (poles & tooling),Mechanical,,SLAC,Labor
110645,1.03,1.03.07,1.03.07.06,1.03.07.06.05,1.03.07.06.05,SXR-HE Magnetic System Procurement,AS_LBL_PROC_230,Respond to PRR Recommendations - Magnetic System Procurement including LLP (poles & tooling),1.0,0.0,0.0,3.2,05-19-2021,05-19-2021,0,0,LBNL,100%,LBNL_Des.LBNL_Designer,LBNL_Designer,Labor,0.0d,0.0,0.0,At Completion Units,7/14/2021,7/14/2021,0,0,0,0,0,0,0,0,0,0,1.03_Accelerator Systems (AS),1.03.07_AS SXR-HE Undulator (Soft X-Ray) - LBNL,1.03.07.06_AS SXR-HE Undulator Procurement and Fabrication - LBNL,1.03.07.06.05_SXR-HE Magnetic System Procurement,AS_LBL_PROC_230_Respond to PRR Recommendations - Magnetic System Procurement including LLP (poles & tooling),Mechanical,,LBNL,Labor
110646,1.03,1.03.07,1.03.07.06,1.03.07.06.05,1.03.07.06.05,SXR-HE Magnetic System Procurement,AS_LBL_PROC_230,Respond to PRR Recommendations - Magnetic System Procurement including LLP (poles & tooling),1.0,0.0,0.0,3.2,05-19-2021,05-19-2021,0,0,LBNL,100%,LBNL_E10.4.Mechanical Engineer 4,Mechanical Engineer 4,Labor,0.0d,0.0,0.0,At Completion Units,7/14/2021,7/14/2021,0,0,0,0,0,0,0,0,0,0,1.03_Accelerator Systems (AS),1.03.07_AS SXR-HE Undulator (Soft X-Ray) - LBNL,1.03.07.06_AS SXR-HE Undulator Procurement and Fabrication - LBNL,1.03.07.06.05_SXR-HE Magnetic System Procurement,AS_LBL_PROC_230_Respond to PRR Recommendations - Magnetic System Procurement including LLP (poles & tooling),Mechanical,,SLAC,Labor
110647,1.03,1.03.07,1.03.07.06,1.03.07.06.05,1.03.07.06.05,SXR-HE Magnetic System Procurement,AS_LBL_PROC_230,Respond to PRR Recommendations - Magnetic System Procurement including LLP (poles & tooling),1.0,16.0,0.0,3.2,05-19-2021,05-19-2021,0,0,LBNL,100%,LBNL_E10.3.Mechanical Engineer 3,Mechanical Engineer 3,Labor,0.0d,0.0,0.0,At Completion Units,7/14/2021,7/14/2021,0,0,0,0,0,0,0,0,0,0,1.03_Accelerator Systems (AS),1.03.07_AS SXR-HE Undulator (Soft X-Ray) - LBNL,1.03.07.06_AS SXR-HE Undulator Procurement and Fabrication - LBNL,1.03.07.06.05_SXR-HE Magnetic System Procurement,AS_LBL_PROC_230_Respond to PRR Recommendations - Magnetic System Procurement including LLP (poles & tooling),Mechanical,,SLAC,Labor
110648,1.03,1.03.07,1.03.07.06,1.03.07.06.05,1.03.07.06.05,SXR-HE Magnetic System Procurement,AS_LBL_PROC_230,Respond to PRR Recommendations - Magnetic System Procurement including LLP (poles & tooling),1.0,0.0,0.0,3.2,05-19-2021,05-19-2021,0,0,LBNL,100%,LBNL_N30.2.Sr Mechanical Engr Associate,Sr Mechanical Engr Associate,Labor,0.0d,0.0,0.0,At Completion Units,7/14/2021,7/14/2021,0,0,0,0,0,0,0,0,0,0,1.03_Accelerator Systems (AS),1.03.07_AS SXR-HE Undulator (Soft X-Ray) - LBNL,1.03.07.06_AS SXR-HE Undulator Procurement and Fabrication - LBNL,1.03.07.06.05_SXR-HE Magnetic System Procurement,AS_LBL_PROC_230_Respond to PRR Recommendations - Magnetic System Procurement including LLP (poles & tooling),Mechanical,,SLAC,Labor
110649,1.03,1.03.07,1.03.07.06,1.03.07.06.05,1.03.07.06.05,SXR-HE Magnetic System Procurement,AS_LBL_PROC_220,Conduct Procurement Readiness Review - Magnetic System Procurement including LLP (poles & tooling),1.0,0.0,0.0,1.2,05-19-2021,05-19-2021,0,0,LBNL,100%,LBNL_Des.LBNL_Designer,LBNL_Designer,Labor,0.0d,0.0,0.0,At Completion Units,7/13/2021,7/13/2021,0,0,0,0,0,0,0,0,0,0,1.03_Accelerator Systems (AS),1.03.07_AS SXR-HE Undulator (Soft X-Ray) - LBNL,1.03.07.06_AS SXR-HE Undulator Procurement and Fabrication - LBNL,1.03.07.06.05_SXR-HE Magnetic System Procurement,AS_LBL_PROC_220_Conduct Procurement Readiness Review - Magnetic System Procurement including LLP (poles & tooling),Mechanical,,LBNL,Labor
110650,1.03,1.03.07,1.03.07.06,1.03.07.06.05,1.03.07.06.05,SXR-HE Magnetic System Procurement,AS_LBL_PROC_220,Conduct Procurement Readiness Review - Magnetic System Procurement including LLP (poles & tooling),1.0,2.0,0.0,1.2,05-19-2021,05-19-2021,0,0,LBNL,100%,LBNL_E10.4.Mechanical Engineer 4,Mechanical Engineer 4,Labor,0.0d,0.0,0.0,At Completion Units,7/13/2021,7/13/2021,0,0,0,0,0,0,0,0,0,0,1.03_Accelerator Systems (AS),1.03.07_AS SXR-HE Undulator (Soft X-Ray) - LBNL,1.03.07.06_AS SXR-HE Undulator Procurement and Fabrication - LBNL,1.03.07.06.05_SXR-HE Magnetic System Procurement,AS_LBL_PROC_220_Conduct Procurement Readiness Review - Magnetic System Procurement including LLP (poles & tooling),Mechanical,,SLAC,Labor
110651,1.03,1.03.07,1.03.07.06,1.03.07.06.05,1.03.07.06.05,SXR-HE Magnetic System Procurement,AS_LBL_PROC_220,Conduct Procurement Readiness Review - Magnetic System Procurement including LLP (poles & tooling),1.0,2.0,0.0,1.2,05-19-2021,05-19-2021,0,0,LBNL,100%,LBNL_E10.3.Mechanical Engineer 3,Mechanical Engineer 3,Labor,0.0d,0.0,0.0,At Completion Units,7/13/2021,7/13/2021,0,0,0,0,0,0,0,0,0,0,1.03_Accelerator Systems (AS),1.03.07_AS SXR-HE Undulator (Soft X-Ray) - LBNL,1.03.07.06_AS SXR-HE Undulator Procurement and Fabrication - LBNL,1.03.07.06.05_SXR-HE Magnetic System Procurement,AS_LBL_PROC_220_Conduct Procurement Readiness Review - Magnetic System Procurement including LLP (poles & tooling),Mechanical,,SLAC,Labor
110652,1.03,1.03.07,1.03.07.06,1.03.07.06.05,1.03.07.06.05,SXR-HE Magnetic System Procurement,AS_LBL_PROC_220,Conduct Procurement Readiness Review - Magnetic System Procurement including LLP (poles & tooling),1.0,2.0,0.0,1.2,05-19-2021,05-19-2021,0,0,LBNL,100%,LBNL_S36.4.Mechanical Staff Sci/Engr,Mechanical Staff Sci/Engr,Labor,0.0d,0.0,0.0,At Completion Units,7/13/2021,7/13/2021,0,0,0,0,0,0,0,0,0,0,1.03_Accelerator Systems (AS),1.03.07_AS SXR-HE Undulator (Soft X-Ray) - LBNL,1.03.07.06_AS SXR-HE Undulator Procurement and Fabrication - LBNL,1.03.07.06.05_SXR-HE Magnetic System Procurement,AS_LBL_PROC_220_Conduct Procurement Readiness Review - Magnetic System Procurement including LLP (poles & tooling),Mechanical,,SLAC,Labor
110972,1.03,1.03.07,1.03.07.06,1.03.07.06.06,1.03.07.06.06,SXR-HE Magnetic System Pre-Production,AS_LBL_PROC_530,Manufacturing Support - Pre-Production Magnetic System,89.0,0.0,0.0,14.8,09-01-2021,01-21-22,0,0,LBNL,100%,LBNL_D50.2.LBNL_Software Developer 2,LBNL_Software Developer 2,Labor,21.0d,68.0,89.0,At Completion Units,9/8/2021,1/27/2022,0,0,0,0,0,0,0,0,0,0,1.03_Accelerator Systems (AS),1.03.07_AS SXR-HE Undulator (Soft X-Ray) - LBNL,1.03.07.06_AS SXR-HE Undulator Procurement and Fabrication - LBNL,1.03.07.06.06_SXR-HE Magnetic System Pre-Production,AS_LBL_PROC_530_Manufacturing Support - Pre-Production Magnetic System,Contols,,LBNL,Labor
110973,1.03,1.03.07,1.03.07.06,1.03.07.06.06,1.03.07.06.06,SXR-HE Magnetic System Pre-Production,AS_LBL_PROC_530,Manufacturing Support - Pre-Production Magnetic System,89.0,80.0,62.1,76.9,09-01-2021,01-21-22,0,0,LBNL,19.25%,LBNL_N30.2.Sr Mechanical Engr Associate,Sr Mechanical Engr Associate,Labor,21.0d,68.0,89.0,At Completion Units,9/8/2021,1/27/2022,0,0,0,0,0,0,0,0,0,0,1.03_Accelerator Systems (AS),1.03.07_AS SXR-HE Undulator (Soft X-Ray) - LBNL,1.03.07.06_AS SXR-HE Undulator Procurement and Fabrication - LBNL,1.03.07.06.06_SXR-HE Magnetic System Pre-Production,AS_LBL_PROC_530_Manufacturing Support - Pre-Production Magnetic System,Mechanical,,SLAC,Labor
110974,1.03,1.03.07,1.03.07.06,1.03.07.06.06,1.03.07.06.06,SXR-HE Magnetic System Pre-Production,AS_LBL_PROC_530,Manufacturing Support - Pre-Production Magnetic System,89.0,80.0,62.1,76.9,09-01-2021,01-21-22,0,0,LBNL,19.25%,LBNL_E10.4.Mechanical Engineer 4,Mechanical Engineer 4,Labor,21.0d,68.0,89.0,At Completion Units,9/8/2021,1/27/2022,0,0,0,0,0,0,0,0,0,0,1.03_Accelerator Systems (AS),1.03.07_AS SXR-HE Undulator (Soft X-Ray) - LBNL,1.03.07.06_AS SXR-HE Undulator Procurement and Fabrication - LBNL,1.03.07.06.06_SXR-HE Magnetic System Pre-Production,AS_LBL_PROC_530_Manufacturing Support - Pre-Production Magnetic System,Mechanical,,SLAC,Labor
110975,1.03,1.03.07,1.03.07.06,1.03.07.06.06,1.03.07.06.06,SXR-HE Magnetic System Pre-Production,AS_LBL_PROC_530,Manufacturing Support - Pre-Production Magnetic System,89.0,120.0,100.2,115.0,09-01-2021,01-21-22,0,0,LBNL,12.87%,LBNL_E10.3.Mechanical Engineer 3,Mechanical Engineer 3,Labor,21.0d,68.0,89.0,At Completion Units,9/8/2021,1/27/2022,0,0,0,0,0,0,0,0,0,0,1.03_Accelerator Systems (AS),1.03.07_AS SXR-HE Undulator (Soft X-Ray) - LBNL,1.03.07.06_AS SXR-HE Undulator Procurement and Fabrication - LBNL,1.03.07.06.06_SXR-HE Magnetic System Pre-Production,AS_LBL_PROC_530_Manufacturing Support - Pre-Production Magnetic System,Mechanical,,SLAC,Labor
110976,1.03,1.03.07,1.03.07.06,1.03.07.06.06,1.03.07.06.06,SXR-HE Magnetic System Pre-Production,AS_LBL_PROC_530,Manufacturing Support - Pre-Production Magnetic System,89.0,90.0,71.6,86.4,09-01-2021,01-21-22,0,0,LBNL,17.13%,LBNL_S36.4.Mechanical Staff Sci/Engr,Mechanical Staff Sci/Engr,Labor,21.0d,68.0,89.0,At Completion Units,9/8/2021,1/27/2022,0,0,0,0,0,0,0,0,0,0,1.03_Accelerator Systems (AS),1.03.07_AS SXR-HE Undulator (Soft X-Ray) - LBNL,1.03.07.06_AS SXR-HE Undulator Procurement and Fabrication - LBNL,1.03.07.06.06_SXR-HE Magnetic System Pre-Production,AS_LBL_PROC_530_Manufacturing Support - Pre-Production Magnetic System,Mechanical,,SLAC,Labor
110977,1.03,1.03.07,1.03.07.06,1.03.07.06.06,1.03.07.06.06,SXR-HE Magnetic System Pre-Production,AS_LBL_PROC_570,RCV: Pre-Production Magnetic System,1.0,11435.0,11435.0,11435.0,04-08-22,04-08-22,0,0,LBNL,0%,LBNL_MSSY1.LBNL M&S (>$500K) (NO ESC/NO G&A),LBNL M&S (>$500K) (NO ESC/NO G&A),Nonlabor,0.0d,1.0,1.0,At Completion Units,4/4/2022,4/4/2022,0,0,0,0,0,0,0,0,0,0,1.03_Accelerator Systems (AS),1.03.07_AS SXR-HE Undulator (Soft X-Ray) - LBNL,1.03.07.06_AS SXR-HE Undulator Procurement and Fabrication - LBNL,1.03.07.06.06_SXR-HE Magnetic System Pre-Production,AS_LBL_PROC_570_RCV: Pre-Production Magnetic System,M&S,,LBNL,M&S
110978,1.03,1.03.07,1.03.07.06,1.03.07.06.06,1.03.07.06.06,SXR-HE Magnetic System Pre-Production,AS_LBL_PROC_565,Inspection & QA - Pre-Production Magnetic System,15.0,48.0,48.0,48.0,03-18-22,04-07-22,0,0,LBNL,0%,LBNL_N30.2.Sr Mechanical Engr Associate,Sr Mechanical Engr Associate,Labor,0.0d,15.0,15.0,At Completion Units,nn,,0,0,0,0,0,0,0,0,0,0,1.03_Accelerator Systems (AS),1.03.07_AS SXR-HE Undulator (Soft X-Ray) - LBNL,1.03.07.06_AS SXR-HE Undulator Procurement and Fabrication - LBNL,1.03.07.06.06_SXR-HE Magnetic System Pre-Production,AS_LBL_PROC_565_Inspection & QA - Pre-Production Magnetic System,Mechanical,,SLAC,Labor
110979,1.03,1.03.07,1.03.07.06,1.03.07.06.06,1.03.07.06.06,SXR-HE Magnetic System Pre-Production,AS_LBL_PROC_565,Inspection & QA - Pre-Production Magnetic System,15.0,20.0,20.0,20.0,03-18-22,04-07-22,0,0,LBNL,0%,LBNL_S36.4.Mechanical Staff Sci/Engr,Mechanical Staff Sci/Engr,Labor,0.0d,15.0,15.0,At Completion Units,nn,,0,0,0,0,0,0,0,0,0,0,1.03_Accelerator Systems (AS),1.03.07_AS SXR-HE Undulator (Soft X-Ray) - LBNL,1.03.07.06_AS SXR-HE Undulator Procurement and Fabrication - LBNL,1.03.07.06.06_SXR-HE Magnetic System Pre-Production,AS_LBL_PROC_565_Inspection & QA - Pre-Production Magnetic System,Mechanical,,SLAC,Labor
110980,1.03,1.03.07,1.03.07.06,1.03.07.06.06,1.03.07.06.06,SXR-HE Magnetic System Pre-Production,AS_LBL_PROC_565,Inspection & QA - Pre-Production Magnetic System,15.0,28.0,28.0,28.0,03-18-22,04-07-22,0,0,LBNL,0%,LBNL_706.3.Mechanical Engr Tech III,Mechanical Engr Tech III,Labor,0.0d,15.0,15.0,At Completion Units,nn,,0,0,0,0,0,0,0,0,0,0,1.03_Accelerator Systems (AS),1.03.07_AS SXR-HE Undulator (Soft X-Ray) - LBNL,1.03.07.06_AS SXR-HE Undulator Procurement and Fabrication - LBNL,1.03.07.06.06_SXR-HE Magnetic System Pre-Production,AS_LBL_PROC_565_Inspection & QA - Pre-Production Magnetic System,Mechanical,Tech,SLAC,Labor
110981,1.03,1.03.07,1.03.07.06,1.03.07.06.06,1.03.07.06.06,SXR-HE Magnetic System Pre-Production,AS_LBL_PROC_565,Inspection & QA - Pre-Production Magnetic System,15.0,20.0,20.0,20.0,03-18-22,04-07-22,0,0,LBNL,0%,LBNL_E10.4.Mechanical Engineer 4,Mechanical Engineer 4,Labor,0.0d,15.0,15.0,At Completion Units,nn,,0,0,0,0,0,0,0,0,0,0,1.03_Accelerator Systems (AS),1.03.07_AS SXR-HE Undulator (Soft X-Ray) - LBNL,1.03.07.06_AS SXR-HE Undulator Procurement and Fabrication - LBNL,1.03.07.06.06_SXR-HE Magnetic System Pre-Production,AS_LBL_PROC_565_Inspection & QA - Pre-Production Magnetic System,Mechanical,,SLAC,Labor
110982,1.03,1.03.07,1.03.07.06,1.03.07.06.06,1.03.07.06.06,SXR-HE Magnetic System Pre-Production,AS_LBL_PROC_590,DELETE: Inspection & QA - Pre-Production Magnetic System,10.0,0.0,0.0,0.0,10-01-21,10-14-21,0,0,LBNL,0%,LBNL_N30.2.Sr Mechanical Engr Associate,Sr Mechanical Engr Associate,Labor,0.0d,10.0,10.0,At Completion Units,4/5/2022,4/18/2022,0,0,0,0,0,0,0,0,0,0,1.03_Accelerator Systems (AS),1.03.07_AS SXR-HE Undulator (Soft X-Ray) - LBNL,1.03.07.06_AS SXR-HE Undulator Procurement and Fabrication - LBNL,1.03.07.06.06_SXR-HE Magnetic System Pre-Production,AS_LBL_PROC_590_DELETE: Inspection & QA - Pre-Production Magnetic System,Mechanical,,SLAC,Labor
110983,1.03,1.03.07,1.03.07.06,1.03.07.06.06,1.03.07.06.06,SXR-HE Magnetic System Pre-Production,AS_LBL_PROC_520,AWARD: Magnetic System Procurement - Pre-Production Magnetic System,1.0,252339.0,0.0,0.0,08-31-2021,08-31-2021,0,0,LBNL,0%,AWARD_USE.AWARD - Use this AWARD,AWARD - Use this AWARD,Nonlabor,0.0d,0.0,0.0,At Completion Units,9/7/2021,9/7/2021,0,0,0,0,0,0,0,0,0,0,1.03_Accelerator Systems (AS),1.03.07_AS SXR-HE Undulator (Soft X-Ray) - LBNL,1.03.07.06_AS SXR-HE Undulator Procurement and Fabrication - LBNL,1.03.07.06.06_SXR-HE Magnetic System Pre-Production,AS_LBL_PROC_520_AWARD: Magnetic System Procurement - Pre-Production Magnetic System,Material,,SLAC,M&S
110984,1.03,1.03.07,1.03.07.06,1.03.07.06.06,1.03.07.06.06,SXR-HE Magnetic System Pre-Production,AS_LBL_PROC_570,RCV: Pre-Production Magnetic System,1.0,240904.0,240904.0,240904.0,04-08-22,04-08-22,0,0,LBNL,0%,LBNL_MSSC1.LBNL M&S (<$500K) (NO ESC) (G&A),LBNL M&S (<$500K) (NO ESC) (G&A),Nonlabor,0.0d,1.0,1.0,At Completion Units,4/4/2022,4/4/2022,0,0,0,0,0,0,0,0,0,0,1.03_Accelerator Systems (AS),1.03.07_AS SXR-HE Undulator (Soft X-Ray) - LBNL,1.03.07.06_AS SXR-HE Undulator Procurement and Fabrication - LBNL,1.03.07.06.06_SXR-HE Magnetic System Pre-Production,AS_LBL_PROC_570_RCV: Pre-Production Magnetic System,M&S,,LBNL,M&S
110985,1.03,1.03.07,1.03.07.06,1.03.07.06.06,1.03.07.06.06,SXR-HE Magnetic System Pre-Production,AS_LBL_PROC_630,Revise Magnetic System Manufacturing and QA Documents,40.0,40.0,40.0,40.0,04-26-22,06-21-22,0,0,LBNL,0%,LBNL_E10.4.Mechanical Engineer 4,Mechanical Engineer 4,Labor,0.0d,40.0,40.0,At Completion Units,5/4/2022,6/29/2022,0,0,0,0,0,0,0,0,0,0,1.03_Accelerator Systems (AS),1.03.07_AS SXR-HE Undulator (Soft X-Ray) - LBNL,1.03.07.06_AS SXR-HE Undulator Procurement and Fabrication - LBNL,1.03.07.06.06_SXR-HE Magnetic System Pre-Production,AS_LBL_PROC_630_Revise Magnetic System Manufacturing and QA Documents,Mechanical,,SLAC,Labor
110986,1.03,1.03.07,1.03.07.06,1.03.07.06.06,1.03.07.06.06,SXR-HE Magnetic System Pre-Production,AS_LBL_PROC_620,Ship to SLAC - Pre-Production Magnetic System,1.0,1000.0,1000.0,1000.0,04-25-22,04-25-22,0,0,LBNL,0%,LBNL_MSSC.LBNL M&S (<$500K) (G&A),LBNL M&S (<$500K) (G&A),Nonlabor,0.0d,1.0,1.0,At Completion Units,5/3/2022,5/3/2022,0,0,0,0,0,0,0,0,0,0,1.03_Accelerator Systems (AS),1.03.07_AS SXR-HE Undulator (Soft X-Ray) - LBNL,1.03.07.06_AS SXR-HE Undulator Procurement and Fabrication - LBNL,1.03.07.06.06_SXR-HE Magnetic System Pre-Production,AS_LBL_PROC_620_Ship to SLAC - Pre-Production Magnetic System,M&S,,LBNL,M&S
110987,1.03,1.03.07,1.03.07.06,1.03.07.06.06,1.03.07.06.06,SXR-HE Magnetic System Pre-Production,AS_LBL_PROC_610,Crate & Prepare to Ship (SLAC) - Pre-Production Magnetic System,10.0,20.0,20.0,20.0,04-11-22,04-22-22,0,0,LBNL,0%,LBNL_706.3.Mechanical Engr Tech III,Mechanical Engr Tech III,Labor,0.0d,10.0,10.0,At Completion Units,4/19/2022,5/2/2022,0,0,0,0,0,0,0,0,0,0,1.03_Accelerator Systems (AS),1.03.07_AS SXR-HE Undulator (Soft X-Ray) - LBNL,1.03.07.06_AS SXR-HE Undulator Procurement and Fabrication - LBNL,1.03.07.06.06_SXR-HE Magnetic System Pre-Production,AS_LBL_PROC_610_Crate & Prepare to Ship (SLAC) - Pre-Production Magnetic System,Mechanical,Tech,SLAC,Labor
110988,1.03,1.03.07,1.03.07.06,1.03.07.06.06,1.03.07.06.06,SXR-HE Magnetic System Pre-Production,AS_LBL_PROC_610,Crate & Prepare to Ship (SLAC) - Pre-Production Magnetic System,10.0,20.0,20.0,20.0,04-11-22,04-22-22,0,0,LBNL,0%,LBNL_D50.2.LBNL_Software Developer 2,LBNL_Software Developer 2,Labor,0.0d,10.0,10.0,At Completion Units,4/19/2022,5/2/2022,0,0,0,0,0,0,0,0,0,0,1.03_Accelerator Systems (AS),1.03.07_AS SXR-HE Undulator (Soft X-Ray) - LBNL,1.03.07.06_AS SXR-HE Undulator Procurement and Fabrication - LBNL,1.03.07.06.06_SXR-HE Magnetic System Pre-Production,AS_LBL_PROC_610_Crate & Prepare to Ship (SLAC) - Pre-Production Magnetic System,Contols,,LBNL,Labor
110989,1.03,1.03.07,1.03.07.06,1.03.07.06.06,1.03.07.06.06,SXR-HE Magnetic System Pre-Production,AS_LBL_PROC_590,DELETE: Inspection & QA - Pre-Production Magnetic System,10.0,0.0,0.0,0.0,10-01-21,10-14-21,0,0,LBNL,0%,LBNL_S36.4.Mechanical Staff Sci/Engr,Mechanical Staff Sci/Engr,Labor,0.0d,10.0,10.0,At Completion Units,4/5/2022,4/18/2022,0,0,0,0,0,0,0,0,0,0,1.03_Accelerator Systems (AS),1.03.07_AS SXR-HE Undulator (Soft X-Ray) - LBNL,1.03.07.06_AS SXR-HE Undulator Procurement and Fabrication - LBNL,1.03.07.06.06_SXR-HE Magnetic System Pre-Production,AS_LBL_PROC_590_DELETE: Inspection & QA - Pre-Production Magnetic System,Mechanical,,SLAC,Labor
110990,1.03,1.03.07,1.03.07.06,1.03.07.06.06,1.03.07.06.06,SXR-HE Magnetic System Pre-Production,AS_LBL_PROC_590,DELETE: Inspection & QA - Pre-Production Magnetic System,10.0,0.0,0.0,0.0,10-01-21,10-14-21,0,0,LBNL,0%,LBNL_E10.4.Mechanical Engineer 4,Mechanical Engineer 4,Labor,0.0d,10.0,10.0,At Completion Units,4/5/2022,4/18/2022,0,0,0,0,0,0,0,0,0,0,1.03_Accelerator Systems (AS),1.03.07_AS SXR-HE Undulator (Soft X-Ray) - LBNL,1.03.07.06_AS SXR-HE Undulator Procurement and Fabrication - LBNL,1.03.07.06.06_SXR-HE Magnetic System Pre-Production,AS_LBL_PROC_590_DELETE: Inspection & QA - Pre-Production Magnetic System,Mechanical,,SLAC,Labor
110991,1.03,1.03.07,1.03.07.06,1.03.07.06.06,1.03.07.06.06,SXR-HE Magnetic System Pre-Production,AS_LBL_PROC_590,DELETE: Inspection & QA - Pre-Production Magnetic System,10.0,0.0,0.0,0.0,10-01-21,10-14-21,0,0,LBNL,0%,LBNL_706.3.Mechanical Engr Tech III,Mechanical Engr Tech III,Labor,0.0d,10.0,10.0,At Completion Units,4/5/2022,4/18/2022,0,0,0,0,0,0,0,0,0,0,1.03_Accelerator Systems (AS),1.03.07_AS SXR-HE Undulator (Soft X-Ray) - LBNL,1.03.07.06_AS SXR-HE Undulator Procurement and Fabrication - LBNL,1.03.07.06.06_SXR-HE Magnetic System Pre-Production,AS_LBL_PROC_590_DELETE: Inspection & QA - Pre-Production Magnetic System,Mechanical,Tech,SLAC,Labor
110992,1.03,1.03.07,1.03.07.06,1.03.07.06.06,1.03.07.06.06,SXR-HE Magnetic System Pre-Production,AS_LBL_PROC_590,DELETE: Inspection & QA - Pre-Production Magnetic System,10.0,0.0,0.0,0.0,10-01-21,10-14-21,0,0,LBNL,0%,LBNL_D50.2.LBNL_Software Developer 2,LBNL_Software Developer 2,Labor,0.0d,10.0,10.0,At Completion Units,4/5/2022,4/18/2022,0,0,0,0,0,0,0,0,0,0,1.03_Accelerator Systems (AS),1.03.07_AS SXR-HE Undulator (Soft X-Ray) - LBNL,1.03.07.06_AS SXR-HE Undulator Procurement and Fabrication - LBNL,1.03.07.06.06_SXR-HE Magnetic System Pre-Production,AS_LBL_PROC_590_DELETE: Inspection & QA - Pre-Production Magnetic System,Contols,,LBNL,Labor
110993,1.03,1.03.07,1.03.07.06,1.03.07.06.06,1.03.07.06.06,SXR-HE Magnetic System Pre-Production,AS_LBL_PROC_560,Ship to LBNL - Pre-Production Magnetic System,15.0,4.0,4.0,4.0,02-25-22,03-17-22,0,0,LBNL,0%,LBNL_E10.3.Mechanical Engineer 3,Mechanical Engineer 3,Labor,0.0d,15.0,15.0,At Completion Units,3/14/2022,4/1/2022,0,0,0,0,0,0,0,0,0,0,1.03_Accelerator Systems (AS),1.03.07_AS SXR-HE Undulator (Soft X-Ray) - LBNL,1.03.07.06_AS SXR-HE Undulator Procurement and Fabrication - LBNL,1.03.07.06.06_SXR-HE Magnetic System Pre-Production,AS_LBL_PROC_560_Ship to LBNL - Pre-Production Magnetic System,Mechanical,,SLAC,Labor
110994,1.03,1.03.07,1.03.07.06,1.03.07.06.06,1.03.07.06.06,SXR-HE Magnetic System Pre-Production,AS_LBL_PROC_550,Assembly Oversight - Pre-Production Magnetic System,27.0,40.0,40.0,40.0,01-27-22,03-07-22,0,0,LBNL,0%,LBNL_E10.4.Mechanical Engineer 4,Mechanical Engineer 4,Labor,0.0d,27.0,27.0,At Completion Units,1/28/2022,3/11/2022,0,0,0,0,0,0,0,0,0,0,1.03_Accelerator Systems (AS),1.03.07_AS SXR-HE Undulator (Soft X-Ray) - LBNL,1.03.07.06_AS SXR-HE Undulator Procurement and Fabrication - LBNL,1.03.07.06.06_SXR-HE Magnetic System Pre-Production,AS_LBL_PROC_550_Assembly Oversight - Pre-Production Magnetic System,Mechanical,,SLAC,Labor
110995,1.03,1.03.07,1.03.07.06,1.03.07.06.06,1.03.07.06.06,SXR-HE Magnetic System Pre-Production,AS_LBL_PROC_550,Assembly Oversight - Pre-Production Magnetic System,27.0,40.0,40.0,40.0,01-27-22,03-07-22,0,0,LBNL,0%,LBNL_E10.3.Mechanical Engineer 3,Mechanical Engineer 3,Labor,0.0d,27.0,27.0,At Completion Units,1/28/2022,3/11/2022,0,0,0,0,0,0,0,0,0,0,1.03_Accelerator Systems (AS),1.03.07_AS SXR-HE Undulator (Soft X-Ray) - LBNL,1.03.07.06_AS SXR-HE Undulator Procurement and Fabrication - LBNL,1.03.07.06.06_SXR-HE Magnetic System Pre-Production,AS_LBL_PROC_550_Assembly Oversight - Pre-Production Magnetic System,Mechanical,,SLAC,Labor
111315,1.03,1.03.07,1.03.07.06,1.03.07.06.07,1.03.07.06.07,SXR-HE Magnetic System Production,AS_LBL_PROD_935,RCV: (SLAC) Magnetic System Set #30,1.0,131310.0,131310.0,131310.0,02-20-26,02-20-26,0,0,LBNL,0%,LBNL_MSSY1.LBNL M&S (>$500K) (NO ESC/NO G&A),LBNL M&S (>$500K) (NO ESC/NO G&A),Nonlabor,0.0d,1.0,1.0,At Completion Units,6/26/2025,6/26/2025,0,0,0,0,0,0,0,0,0,0,1.03_Accelerator Systems (AS),1.03.07_AS SXR-HE Undulator (Soft X-Ray) - LBNL,1.03.07.06_AS SXR-HE Undulator Procurement and Fabrication - LBNL,1.03.07.06.07_SXR-HE Magnetic System Production,AS_LBL_PROD_935_RCV: (SLAC) Magnetic System Set #30,M&S,,LBNL,M&S
111316,1.03,1.03.07,1.03.07.06,1.03.07.06.07,1.03.07.06.07,SXR-HE Magnetic System Production,AS_LBL_PROD_925,RCV: (SLAC) Magnetic System Set #29,1.0,131310.0,131310.0,131310.0,01-20-26,01-20-26,0,0,LBNL,0%,LBNL_MSSY1.LBNL M&S (>$500K) (NO ESC/NO G&A),LBNL M&S (>$500K) (NO ESC/NO G&A),Nonlabor,0.0d,1.0,1.0,At Completion Units,5/27/2025,5/27/2025,0,0,0,0,0,0,0,0,0,0,1.03_Accelerator Systems (AS),1.03.07_AS SXR-HE Undulator (Soft X-Ray) - LBNL,1.03.07.06_AS SXR-HE Undulator Procurement and Fabrication - LBNL,1.03.07.06.07_SXR-HE Magnetic System Production,AS_LBL_PROD_925_RCV: (SLAC) Magnetic System Set #29,M&S,,LBNL,M&S
111317,1.03,1.03.07,1.03.07.06,1.03.07.06.07,1.03.07.06.07,SXR-HE Magnetic System Production,AS_LBL_PROD_915,RCV: (SLAC) Magnetic System Set #28,1.0,131310.0,131310.0,131310.0,12-15-25,12-15-25,0,0,LBNL,0%,LBNL_MSSY1.LBNL M&S (>$500K) (NO ESC/NO G&A),LBNL M&S (>$500K) (NO ESC/NO G&A),Nonlabor,0.0d,1.0,1.0,At Completion Units,5/5/2025,5/5/2025,0,0,0,0,0,0,0,0,0,0,1.03_Accelerator Systems (AS),1.03.07_AS SXR-HE Undulator (Soft X-Ray) - LBNL,1.03.07.06_AS SXR-HE Undulator Procurement and Fabrication - LBNL,1.03.07.06.07_SXR-HE Magnetic System Production,AS_LBL_PROD_915_RCV: (SLAC) Magnetic System Set #28,M&S,,LBNL,M&S
111318,1.03,1.03.07,1.03.07.06,1.03.07.06.07,1.03.07.06.07,SXR-HE Magnetic System Production,AS_LBL_PROD_905,RCV: (SLAC) Magnetic System Set #27,1.0,131310.0,131310.0,131310.0,11-20-25,11-20-25,0,0,LBNL,0%,LBNL_MSSY1.LBNL M&S (>$500K) (NO ESC/NO G&A),LBNL M&S (>$500K) (NO ESC/NO G&A),Nonlabor,0.0d,1.0,1.0,At Completion Units,4/14/2025,4/14/2025,0,0,0,0,0,0,0,0,0,0,1.03_Accelerator Systems (AS),1.03.07_AS SXR-HE Undulator (Soft X-Ray) - LBNL,1.03.07.06_AS SXR-HE Undulator Procurement and Fabrication - LBNL,1.03.07.06.07_SXR-HE Magnetic System Production,AS_LBL_PROD_905_RCV: (SLAC) Magnetic System Set #27,M&S,,LBNL,M&S
111319,1.03,1.03.07,1.03.07.06,1.03.07.06.07,1.03.07.06.07,SXR-HE Magnetic System Production,AS_LBL_PROD_895,RCV: (SLAC) Magnetic System Set #26,1.0,131310.0,131310.0,131310.0,10-30-25,10-30-25,0,0,LBNL,0%,LBNL_MSSY1.LBNL M&S (>$500K) (NO ESC/NO G&A),LBNL M&S (>$500K) (NO ESC/NO G&A),Nonlabor,0.0d,1.0,1.0,At Completion Units,3/24/2025,3/24/2025,0,0,0,0,0,0,0,0,0,0,1.03_Accelerator Systems (AS),1.03.07_AS SXR-HE Undulator (Soft X-Ray) - LBNL,1.03.07.06_AS SXR-HE Undulator Procurement and Fabrication - LBNL,1.03.07.06.07_SXR-HE Magnetic System Production,AS_LBL_PROD_895_RCV: (SLAC) Magnetic System Set #26,M&S,,LBNL,M&S
111320,1.03,1.03.07,1.03.07.06,1.03.07.06.07,1.03.07.06.07,SXR-HE Magnetic System Production,AS_LBL_PROD_885,RCV: (SLAC) Magnetic System Set #25,1.0,131310.0,131310.0,131310.0,10-09-25,10-09-25,0,0,LBNL,0%,LBNL_MSSY1.LBNL M&S (>$500K) (NO ESC/NO G&A),LBNL M&S (>$500K) (NO ESC/NO G&A),Nonlabor,0.0d,1.0,1.0,At Completion Units,3/3/2025,3/3/2025,0,0,0,0,0,0,0,0,0,0,1.03_Accelerator Systems (AS),1.03.07_AS SXR-HE Undulator (Soft X-Ray) - LBNL,1.03.07.06_AS SXR-HE Undulator Procurement and Fabrication - LBNL,1.03.07.06.07_SXR-HE Magnetic System Production,AS_LBL_PROD_885_RCV: (SLAC) Magnetic System Set #25,M&S,,LBNL,M&S
111321,1.03,1.03.07,1.03.07.06,1.03.07.06.07,1.03.07.06.07,SXR-HE Magnetic System Production,AS_LBL_PROD_875,RCV: (SLAC) Magnetic System Set #24,1.0,131310.0,131310.0,131310.0,09-18-25,09-18-25,0,0,LBNL,0%,LBNL_MSSY1.LBNL M&S (>$500K) (NO ESC/NO G&A),LBNL M&S (>$500K) (NO ESC/NO G&A),Nonlabor,0.0d,1.0,1.0,At Completion Units,2/7/2025,2/7/2025,0,0,0,0,0,0,0,0,0,0,1.03_Accelerator Systems (AS),1.03.07_AS SXR-HE Undulator (Soft X-Ray) - LBNL,1.03.07.06_AS SXR-HE Undulator Procurement and Fabrication - LBNL,1.03.07.06.07_SXR-HE Magnetic System Production,AS_LBL_PROD_875_RCV: (SLAC) Magnetic System Set #24,M&S,,LBNL,M&S
111322,1.03,1.03.07,1.03.07.06,1.03.07.06.07,1.03.07.06.07,SXR-HE Magnetic System Production,AS_LBL_PROD_865,RCV: (SLAC) Magnetic System Set #23,1.0,131310.0,131310.0,131310.0,08-27-25,08-27-25,0,0,LBNL,0%,LBNL_MSSY1.LBNL M&S (>$500K) (NO ESC/NO G&A),LBNL M&S (>$500K) (NO ESC/NO G&A),Nonlabor,0.0d,1.0,1.0,At Completion Units,1/16/2025,1/16/2025,0,0,0,0,0,0,0,0,0,0,1.03_Accelerator Systems (AS),1.03.07_AS SXR-HE Undulator (Soft X-Ray) - LBNL,1.03.07.06_AS SXR-HE Undulator Procurement and Fabrication - LBNL,1.03.07.06.07_SXR-HE Magnetic System Production,AS_LBL_PROD_865_RCV: (SLAC) Magnetic System Set #23,M&S,,LBNL,M&S
111323,1.03,1.03.07,1.03.07.06,1.03.07.06.07,1.03.07.06.07,SXR-HE Magnetic System Production,AS_LBL_PROD_855,RCV: (SLAC) Magnetic System Set #22,1.0,131310.0,131310.0,131310.0,08-06-25,08-06-25,0,0,LBNL,0%,LBNL_MSSY1.LBNL M&S (>$500K) (NO ESC/NO G&A),LBNL M&S (>$500K) (NO ESC/NO G&A),Nonlabor,0.0d,1.0,1.0,At Completion Units,12/12/2024,12/12/2024,0,0,0,0,0,0,0,0,0,0,1.03_Accelerator Systems (AS),1.03.07_AS SXR-HE Undulator (Soft X-Ray) - LBNL,1.03.07.06_AS SXR-HE Undulator Procurement and Fabrication - LBNL,1.03.07.06.07_SXR-HE Magnetic System Production,AS_LBL_PROD_855_RCV: (SLAC) Magnetic System Set #22,M&S,,LBNL,M&S
111324,1.03,1.03.07,1.03.07.06,1.03.07.06.07,1.03.07.06.07,SXR-HE Magnetic System Production,AS_LBL_PROD_815,RCV: (SLAC) Magnetic System Set #18,1.0,131310.0,131310.0,131310.0,05-20-25,05-20-25,0,0,LBNL,0%,LBNL_MSSC1.LBNL M&S (<$500K) (NO ESC) (G&A),LBNL M&S (<$500K) (NO ESC) (G&A),Nonlabor,0.0d,1.0,1.0,At Completion Units,9/25/2024,9/25/2024,0,0,0,0,0,0,0,0,0,0,1.03_Accelerator Systems (AS),1.03.07_AS SXR-HE Undulator (Soft X-Ray) - LBNL,1.03.07.06_AS SXR-HE Undulator Procurement and Fabrication - LBNL,1.03.07.06.07_SXR-HE Magnetic System Production,AS_LBL_PROD_815_RCV: (SLAC) Magnetic System Set #18,M&S,,LBNL,M&S
111325,1.03,1.03.07,1.03.07.06,1.03.07.06.07,1.03.07.06.07,SXR-HE Magnetic System Production,AS_LBL_PROD_825,RCV: (Undulator Vendor) Magnetic System Set #19,1.0,131310.0,131310.0,131310.0,06-06-25,06-06-25,0,0,LBNL,0%,LBNL_MSSC1.LBNL M&S (<$500K) (NO ESC) (G&A),LBNL M&S (<$500K) (NO ESC) (G&A),Nonlabor,0.0d,1.0,1.0,At Completion Units,10/11/2024,10/11/2024,0,0,0,0,0,0,0,0,0,0,1.03_Accelerator Systems (AS),1.03.07_AS SXR-HE Undulator (Soft X-Ray) - LBNL,1.03.07.06_AS SXR-HE Undulator Procurement and Fabrication - LBNL,1.03.07.06.07_SXR-HE Magnetic System Production,AS_LBL_PROD_825_RCV: (Undulator Vendor) Magnetic System Set #19,M&S,,LBNL,M&S
111326,1.03,1.03.07,1.03.07.06,1.03.07.06.07,1.03.07.06.07,SXR-HE Magnetic System Production,AS_LBL_PROD_835,RCV: (SLAC)  Magnetic System Set #20,1.0,131310.0,131310.0,131310.0,06-27-25,06-27-25,0,0,LBNL,0%,LBNL_MSSC1.LBNL M&S (<$500K) (NO ESC) (G&A),LBNL M&S (<$500K) (NO ESC) (G&A),Nonlabor,0.0d,1.0,1.0,At Completion Units,11/1/2024,11/1/2024,0,0,0,0,0,0,0,0,0,0,1.03_Accelerator Systems (AS),1.03.07_AS SXR-HE Undulator (Soft X-Ray) - LBNL,1.03.07.06_AS SXR-HE Undulator Procurement and Fabrication - LBNL,1.03.07.06.07_SXR-HE Magnetic System Production,AS_LBL_PROD_835_RCV: (SLAC)  Magnetic System Set #20,M&S,,LBNL,M&S
111327,1.03,1.03.07,1.03.07.06,1.03.07.06.07,1.03.07.06.07,SXR-HE Magnetic System Production,AS_LBL_PROD_845,RCV: (Undulator Vendor) Magnetic System Set #21,1.0,106070.0,106070.0,106070.0,07-16-25,07-16-25,0,0,LBNL,0%,LBNL_MSSC1.LBNL M&S (<$500K) (NO ESC) (G&A),LBNL M&S (<$500K) (NO ESC) (G&A),Nonlabor,0.0d,1.0,1.0,At Completion Units,11/19/2024,11/19/2024,0,0,0,0,0,0,0,0,0,0,1.03_Accelerator Systems (AS),1.03.07_AS SXR-HE Undulator (Soft X-Ray) - LBNL,1.03.07.06_AS SXR-HE Undulator Procurement and Fabrication - LBNL,1.03.07.06.07_SXR-HE Magnetic System Production,AS_LBL_PROD_845_RCV: (Undulator Vendor) Magnetic System Set #21,M&S,,LBNL,M&S
111328,1.03,1.03.07,1.03.07.06,1.03.07.06.07,1.03.07.06.07,SXR-HE Magnetic System Production,AS_LBL_PROD_845,RCV: (Undulator Vendor) Magnetic System Set #21,1.0,25240.0,25240.0,25240.0,07-16-25,07-16-25,0,0,LBNL,0%,LBNL_MSSY1.LBNL M&S (>$500K) (NO ESC/NO G&A),LBNL M&S (>$500K) (NO ESC/NO G&A),Nonlabor,0.0d,1.0,1.0,At Completion Units,11/19/2024,11/19/2024,0,0,0,0,0,0,0,0,0,0,1.03_Accelerator Systems (AS),1.03.07_AS SXR-HE Undulator (Soft X-Ray) - LBNL,1.03.07.06_AS SXR-HE Undulator Procurement and Fabrication - LBNL,1.03.07.06.07_SXR-HE Magnetic System Production,AS_LBL_PROD_845_RCV: (Undulator Vendor) Magnetic System Set #21,M&S,,LBNL,M&S
111329,1.03,1.03.07,1.03.07.06,1.03.07.06.07,1.03.07.06.07,SXR-HE Magnetic System Production,AS_LBL_PROD_815,RCV: (SLAC) Magnetic System Set #18,1.0,0.0,0.0,0.0,05-20-25,05-20-25,0,0,LBNL,0%,LBNL_MSSY1.LBNL M&S (>$500K) (NO ESC/NO G&A),LBNL M&S (>$500K) (NO ESC/NO G&A),Nonlabor,0.0d,1.0,1.0,At Completion Units,9/25/2024,9/25/2024,0,0,0,0,0,0,0,0,0,0,1.03_Accelerator Systems (AS),1.03.07_AS SXR-HE Undulator (Soft X-Ray) - LBNL,1.03.07.06_AS SXR-HE Undulator Procurement and Fabrication - LBNL,1.03.07.06.07_SXR-HE Magnetic System Production,AS_LBL_PROD_815_RCV: (SLAC) Magnetic System Set #18,M&S,,LBNL,M&S
111330,1.03,1.03.07,1.03.07.06,1.03.07.06.07,1.03.07.06.07,SXR-HE Magnetic System Production,AS_LBL_PROD_805,RCV: (Undulator Vendor)  Magnetic System Set #17,1.0,131310.0,131310.0,131310.0,04-29-25,04-29-25,0,0,LBNL,0%,LBNL_MSSY1.LBNL M&S (>$500K) (NO ESC/NO G&A),LBNL M&S (>$500K) (NO ESC/NO G&A),Nonlabor,0.0d,1.0,1.0,At Completion Units,9/4/2024,9/4/2024,0,0,0,0,0,0,0,0,0,0,1.03_Accelerator Systems (AS),1.03.07_AS SXR-HE Undulator (Soft X-Ray) - LBNL,1.03.07.06_AS SXR-HE Undulator Procurement and Fabrication - LBNL,1.03.07.06.07_SXR-HE Magnetic System Production,AS_LBL_PROD_805_RCV: (Undulator Vendor)  Magnetic System Set #17,M&S,,LBNL,M&S
111331,1.03,1.03.07,1.03.07.06,1.03.07.06.07,1.03.07.06.07,SXR-HE Magnetic System Production,AS_LBL_PROD_795,RCV: (SLAC) Magnetic System Set #16,1.0,131310.0,131310.0,131310.0,04-11-25,04-11-25,0,0,LBNL,0%,LBNL_MSSY1.LBNL M&S (>$500K) (NO ESC/NO G&A),LBNL M&S (>$500K) (NO ESC/NO G&A),Nonlabor,0.0d,1.0,1.0,At Completion Units,8/16/2024,8/16/2024,0,0,0,0,0,0,0,0,0,0,1.03_Accelerator Systems (AS),1.03.07_AS SXR-HE Undulator (Soft X-Ray) - LBNL,1.03.07.06_AS SXR-HE Undulator Procurement and Fabrication - LBNL,1.03.07.06.07_SXR-HE Magnetic System Production,AS_LBL_PROD_795_RCV: (SLAC) Magnetic System Set #16,M&S,,LBNL,M&S
111332,1.03,1.03.07,1.03.07.06,1.03.07.06.07,1.03.07.06.07,SXR-HE Magnetic System Production,AS_LBL_PROD_785,RCV: (Undulator Vendor)  Magnetic System Set #15,1.0,131310.0,131310.0,131310.0,03-21-25,03-21-25,0,0,LBNL,0%,LBNL_MSSY1.LBNL M&S (>$500K) (NO ESC/NO G&A),LBNL M&S (>$500K) (NO ESC/NO G&A),Nonlabor,0.0d,1.0,1.0,At Completion Units,7/26/2024,7/26/2024,0,0,0,0,0,0,0,0,0,0,1.03_Accelerator Systems (AS),1.03.07_AS SXR-HE Undulator (Soft X-Ray) - LBNL,1.03.07.06_AS SXR-HE Undulator Procurement and Fabrication - LBNL,1.03.07.06.07_SXR-HE Magnetic System Production,AS_LBL_PROD_785_RCV: (Undulator Vendor)  Magnetic System Set #15,M&S,,LBNL,M&S
111333,1.03,1.03.07,1.03.07.06,1.03.07.06.07,1.03.07.06.07,SXR-HE Magnetic System Production,AS_LBL_PROD_775,RCV: (SLAC) Magnetic System Set #14,1.0,131310.0,131310.0,131310.0,03-05-25,03-05-25,0,0,LBNL,0%,LBNL_MSSY1.LBNL M&S (>$500K) (NO ESC/NO G&A),LBNL M&S (>$500K) (NO ESC/NO G&A),Nonlabor,0.0d,1.0,1.0,At Completion Units,7/10/2024,7/10/2024,0,0,0,0,0,0,0,0,0,0,1.03_Accelerator Systems (AS),1.03.07_AS SXR-HE Undulator (Soft X-Ray) - LBNL,1.03.07.06_AS SXR-HE Undulator Procurement and Fabrication - LBNL,1.03.07.06.07_SXR-HE Magnetic System Production,AS_LBL_PROD_775_RCV: (SLAC) Magnetic System Set #14,M&S,,LBNL,M&S
111334,1.03,1.03.07,1.03.07.06,1.03.07.06.07,1.03.07.06.07,SXR-HE Magnetic System Production,AS_LBL_PROD_765,RCV: (Undulator Vendor)  Magnetic System Set #13,1.0,131310.0,131310.0,131310.0,02-11-25,02-11-25,0,0,LBNL,0%,LBNL_MSSY1.LBNL M&S (>$500K) (NO ESC/NO G&A),LBNL M&S (>$500K) (NO ESC/NO G&A),Nonlabor,0.0d,1.0,1.0,At Completion Units,6/18/2024,6/18/2024,0,0,0,0,0,0,0,0,0,0,1.03_Accelerator Systems (AS),1.03.07_AS SXR-HE Undulator (Soft X-Ray) - LBNL,1.03.07.06_AS SXR-HE Undulator Procurement and Fabrication - LBNL,1.03.07.06.07_SXR-HE Magnetic System Production,AS_LBL_PROD_765_RCV: (Undulator Vendor)  Magnetic System Set #13,M&S,,LBNL,M&S
111335,1.03,1.03.07,1.03.07.06,1.03.07.06.07,1.03.07.06.07,SXR-HE Magnetic System Production,AS_LBL_PROD_755,RCV: (SLAC)  Magnetic System Set #12,1.0,131310.0,131310.0,131310.0,01-24-25,01-24-25,0,0,LBNL,0%,LBNL_MSSY1.LBNL M&S (>$500K) (NO ESC/NO G&A),LBNL M&S (>$500K) (NO ESC/NO G&A),Nonlabor,0.0d,1.0,1.0,At Completion Units,5/31/2024,5/31/2024,0,0,0,0,0,0,0,0,0,0,1.03_Accelerator Systems (AS),1.03.07_AS SXR-HE Undulator (Soft X-Ray) - LBNL,1.03.07.06_AS SXR-HE Undulator Procurement and Fabrication - LBNL,1.03.07.06.07_SXR-HE Magnetic System Production,AS_LBL_PROD_755_RCV: (SLAC)  Magnetic System Set #12,M&S,,LBNL,M&S
111336,1.03,1.03.07,1.03.07.06,1.03.07.06.07,1.03.07.06.07,SXR-HE Magnetic System Production,AS_LBL_PROD_745,RCV: (Undulator Vendor) Magnetic System Set #11,1.0,131310.0,131310.0,131310.0,12-19-24,12-19-24,0,0,LBNL,0%,LBNL_MSSY1.LBNL M&S (>$500K) (NO ESC/NO G&A),LBNL M&S (>$500K) (NO ESC/NO G&A),Nonlabor,0.0d,1.0,1.0,At Completion Units,5/9/2024,5/9/2024,0,0,0,0,0,0,0,0,0,0,1.03_Accelerator Systems (AS),1.03.07_AS SXR-HE Undulator (Soft X-Ray) - LBNL,1.03.07.06_AS SXR-HE Undulator Procurement and Fabrication - LBNL,1.03.07.06.07_SXR-HE Magnetic System Production,AS_LBL_PROD_745_RCV: (Undulator Vendor) Magnetic System Set #11,M&S,,LBNL,M&S
111337,1.03,1.03.07,1.03.07.06,1.03.07.06.07,1.03.07.06.07,SXR-HE Magnetic System Production,AS_LBL_PROD_735,RCV: (SLAC)  Magnetic System Set #10,1.0,131310.0,131310.0,131310.0,12-03-24,12-03-24,0,0,LBNL,0%,LBNL_MSSY1.LBNL M&S (>$500K) (NO ESC/NO G&A),LBNL M&S (>$500K) (NO ESC/NO G&A),Nonlabor,0.0d,1.0,1.0,At Completion Units,4/23/2024,4/23/2024,0,0,0,0,0,0,0,0,0,0,1.03_Accelerator Systems (AS),1.03.07_AS SXR-HE Undulator (Soft X-Ray) - LBNL,1.03.07.06_AS SXR-HE Undulator Procurement and Fabrication - LBNL,1.03.07.06.07_SXR-HE Magnetic System Production,AS_LBL_PROD_735_RCV: (SLAC)  Magnetic System Set #10,M&S,,LBNL,M&S
111338,1.03,1.03.07,1.03.07.06,1.03.07.06.07,1.03.07.06.07,SXR-HE Magnetic System Production,AS_LBL_PROD_725,RCV: (Undulator Vendor)  Magnetic System Set #9,1.0,131310.0,131310.0,131310.0,11-08-24,11-08-24,0,0,LBNL,0%,LBNL_MSSY1.LBNL M&S (>$500K) (NO ESC/NO G&A),LBNL M&S (>$500K) (NO ESC/NO G&A),Nonlabor,0.0d,1.0,1.0,At Completion Units,4/2/2024,4/2/2024,0,0,0,0,0,0,0,0,0,0,1.03_Accelerator Systems (AS),1.03.07_AS SXR-HE Undulator (Soft X-Ray) - LBNL,1.03.07.06_AS SXR-HE Undulator Procurement and Fabrication - LBNL,1.03.07.06.07_SXR-HE Magnetic System Production,AS_LBL_PROD_725_RCV: (Undulator Vendor)  Magnetic System Set #9,M&S,,LBNL,M&S
111339,1.03,1.03.07,1.03.07.06,1.03.07.06.07,1.03.07.06.07,SXR-HE Magnetic System Production,AS_LBL_PROD_715,RCV: (SLAC)  Magnetic System Set #8,1.0,131310.0,131310.0,131310.0,10-23-24,10-23-24,0,0,LBNL,0%,LBNL_MSSY1.LBNL M&S (>$500K) (NO ESC/NO G&A),LBNL M&S (>$500K) (NO ESC/NO G&A),Nonlabor,0.0d,1.0,1.0,At Completion Units,3/15/2024,3/15/2024,0,0,0,0,0,0,0,0,0,0,1.03_Accelerator Systems (AS),1.03.07_AS SXR-HE Undulator (Soft X-Ray) - LBNL,1.03.07.06_AS SXR-HE Undulator Procurement and Fabrication - LBNL,1.03.07.06.07_SXR-HE Magnetic System Production,AS_LBL_PROD_715_RCV: (SLAC)  Magnetic System Set #8,M&S,,LBNL,M&S
111340,1.03,1.03.07,1.03.07.06,1.03.07.06.07,1.03.07.06.07,SXR-HE Magnetic System Production,AS_LBL_PROD_705,RCV: (Undulator Vendor)  Magnetic System Set #7,1.0,131310.0,131310.0,131310.0,10-02-24,10-02-24,0,0,LBNL,0%,LBNL_MSSY1.LBNL M&S (>$500K) (NO ESC/NO G&A),LBNL M&S (>$500K) (NO ESC/NO G&A),Nonlabor,0.0d,1.0,1.0,At Completion Units,2/23/2024,2/23/2024,0,0,0,0,0,0,0,0,0,0,1.03_Accelerator Systems (AS),1.03.07_AS SXR-HE Undulator (Soft X-Ray) - LBNL,1.03.07.06_AS SXR-HE Undulator Procurement and Fabrication - LBNL,1.03.07.06.07_SXR-HE Magnetic System Production,AS_LBL_PROD_705_RCV: (Undulator Vendor)  Magnetic System Set #7,M&S,,LBNL,M&S
111341,1.03,1.03.07,1.03.07.06,1.03.07.06.07,1.03.07.06.07,SXR-HE Magnetic System Production,AS_LBL_PROD_695,RCV: (SLAC)  Magnetic System Set #6,1.0,131310.0,131310.0,131310.0,09-16-24,09-16-24,0,0,LBNL,0%,LBNL_MSSY1.LBNL M&S (>$500K) (NO ESC/NO G&A),LBNL M&S (>$500K) (NO ESC/NO G&A),Nonlabor,0.0d,1.0,1.0,At Completion Units,2/6/2024,2/6/2024,0,0,0,0,0,0,0,0,0,0,1.03_Accelerator Systems (AS),1.03.07_AS SXR-HE Undulator (Soft X-Ray) - LBNL,1.03.07.06_AS SXR-HE Undulator Procurement and Fabrication - LBNL,1.03.07.06.07_SXR-HE Magnetic System Production,AS_LBL_PROD_695_RCV: (SLAC)  Magnetic System Set #6,M&S,,LBNL,M&S
111342,1.03,1.03.07,1.03.07.06,1.03.07.06.07,1.03.07.06.07,SXR-HE Magnetic System Production,AS_LBL_PROD_630,RCV: Magnetic System Set #2,1.0,131310.0,131310.0,131310.0,06-12-24,06-12-24,0,0,LBNL,0%,LBNL_MSSC1.LBNL M&S (<$500K) (NO ESC) (G&A),LBNL M&S (<$500K) (NO ESC) (G&A),Nonlabor,0.0d,1.0,1.0,At Completion Units,10/17/2023,10/17/2023,0,0,0,0,0,0,0,0,0,0,1.03_Accelerator Systems (AS),1.03.07_AS SXR-HE Undulator (Soft X-Ray) - LBNL,1.03.07.06_AS SXR-HE Undulator Procurement and Fabrication - LBNL,1.03.07.06.07_SXR-HE Magnetic System Production,AS_LBL_PROD_630_RCV: Magnetic System Set #2,M&S,,LBNL,M&S
111343,1.03,1.03.07,1.03.07.06,1.03.07.06.07,1.03.07.06.07,SXR-HE Magnetic System Production,AS_LBL_PROD_655,RCV: Magnetic System Set #3,1.0,131310.0,131310.0,131310.0,07-18-24,07-18-24,0,0,LBNL,0%,LBNL_MSSC1.LBNL M&S (<$500K) (NO ESC) (G&A),LBNL M&S (<$500K) (NO ESC) (G&A),Nonlabor,0.0d,1.0,1.0,At Completion Units,11/21/2023,11/21/2023,0,0,0,0,0,0,0,0,0,0,1.03_Accelerator Systems (AS),1.03.07_AS SXR-HE Undulator (Soft X-Ray) - LBNL,1.03.07.06_AS SXR-HE Undulator Procurement and Fabrication - LBNL,1.03.07.06.07_SXR-HE Magnetic System Production,AS_LBL_PROD_655_RCV: Magnetic System Set #3,M&S,,LBNL,M&S
111344,1.03,1.03.07,1.03.07.06,1.03.07.06.07,1.03.07.06.07,SXR-HE Magnetic System Production,AS_LBL_PROD_675,RCV: (SLAC)  Magnetic System Set #4,1.0,131310.0,131310.0,131310.0,08-07-24,08-07-24,0,0,LBNL,0%,LBNL_MSSC1.LBNL M&S (<$500K) (NO ESC) (G&A),LBNL M&S (<$500K) (NO ESC) (G&A),Nonlabor,0.0d,1.0,1.0,At Completion Units,12/13/2023,12/13/2023,0,0,0,0,0,0,0,0,0,0,1.03_Accelerator Systems (AS),1.03.07_AS SXR-HE Undulator (Soft X-Ray) - LBNL,1.03.07.06_AS SXR-HE Undulator Procurement and Fabrication - LBNL,1.03.07.06.07_SXR-HE Magnetic System Production,AS_LBL_PROD_675_RCV: (SLAC)  Magnetic System Set #4,M&S,,LBNL,M&S
111345,1.03,1.03.07,1.03.07.06,1.03.07.06.07,1.03.07.06.07,SXR-HE Magnetic System Production,AS_LBL_PROD_685,RCV: (Undulator Vendor)  Magnetic System Set #5,1.0,106070.0,106070.0,106070.0,08-23-24,08-23-24,0,0,LBNL,0%,LBNL_MSSC1.LBNL M&S (<$500K) (NO ESC) (G&A),LBNL M&S (<$500K) (NO ESC) (G&A),Nonlabor,0.0d,1.0,1.0,At Completion Units,1/16/2024,1/16/2024,0,0,0,0,0,0,0,0,0,0,1.03_Accelerator Systems (AS),1.03.07_AS SXR-HE Undulator (Soft X-Ray) - LBNL,1.03.07.06_AS SXR-HE Undulator Procurement and Fabrication - LBNL,1.03.07.06.07_SXR-HE Magnetic System Production,AS_LBL_PROD_685_RCV: (Undulator Vendor)  Magnetic System Set #5,M&S,,LBNL,M&S
111346,1.03,1.03.07,1.03.07.06,1.03.07.06.07,1.03.07.06.07,SXR-HE Magnetic System Production,AS_LBL_PROD_685,RCV: (Undulator Vendor)  Magnetic System Set #5,1.0,25240.0,25240.0,25240.0,08-23-24,08-23-24,0,0,LBNL,0%,LBNL_MSSY1.LBNL M&S (>$500K) (NO ESC/NO G&A),LBNL M&S (>$500K) (NO ESC/NO G&A),Nonlabor,0.0d,1.0,1.0,At Completion Units,1/16/2024,1/16/2024,0,0,0,0,0,0,0,0,0,0,1.03_Accelerator Systems (AS),1.03.07_AS SXR-HE Undulator (Soft X-Ray) - LBNL,1.03.07.06_AS SXR-HE Undulator Procurement and Fabrication - LBNL,1.03.07.06.07_SXR-HE Magnetic System Production,AS_LBL_PROD_685_RCV: (Undulator Vendor)  Magnetic System Set #5,M&S,,LBNL,M&S
111347,1.03,1.03.07,1.03.07.06,1.03.07.06.07,1.03.07.06.07,SXR-HE Magnetic System Production,AS_LBL_PROD_605,RCV: Magnetic System Set #1,1.0,131310.0,131310.0,131310.0,05-07-24,05-07-24,0,0,LBNL,0%,LBNL_MSSC1.LBNL M&S (<$500K) (NO ESC) (G&A),LBNL M&S (<$500K) (NO ESC) (G&A),Nonlabor,0.0d,1.0,1.0,At Completion Units,9/12/2023,9/12/2023,0,0,0,0,0,0,0,0,0,0,1.03_Accelerator Systems (AS),1.03.07_AS SXR-HE Undulator (Soft X-Ray) - LBNL,1.03.07.06_AS SXR-HE Undulator Procurement and Fabrication - LBNL,1.03.07.06.07_SXR-HE Magnetic System Production,AS_LBL_PROD_605_RCV: Magnetic System Set #1,M&S,,LBNL,M&S
111348,1.03,1.03.07,1.03.07.06,1.03.07.06.07,1.03.07.06.07,SXR-HE Magnetic System Production,AS_LBL_PROD_940,RCV: Production Magnetic System - Permanent Magnet Yield - QTY 354,1.0,52360.0,52360.0,52360.0,02-23-26,02-23-26,0,0,LBNL,0%,LBNL_MSSY1.LBNL M&S (>$500K) (NO ESC/NO G&A),LBNL M&S (>$500K) (NO ESC/NO G&A),Nonlabor,0.0d,1.0,1.0,At Completion Units,6/27/2025,6/27/2025,0,0,0,0,0,0,0,0,0,0,1.03_Accelerator Systems (AS),1.03.07_AS SXR-HE Undulator (Soft X-Ray) - LBNL,1.03.07.06_AS SXR-HE Undulator Procurement and Fabrication - LBNL,1.03.07.06.07_SXR-HE Magnetic System Production,AS_LBL_PROD_940_RCV: Production Magnetic System - Permanent Magnet Yield - QTY 354,M&S,,LBNL,M&S
111349,1.03,1.03.07,1.03.07.06,1.03.07.06.07,1.03.07.06.07,SXR-HE Magnetic System Production,AS_LBL_PROD_945,RCV: Production Magnetic System - Pole Yield - QTY 100,1.0,18701.0,18701.0,18701.0,02-23-26,02-23-26,0,0,LBNL,0%,LBNL_MSSY1.LBNL M&S (>$500K) (NO ESC/NO G&A),LBNL M&S (>$500K) (NO ESC/NO G&A),Nonlabor,0.0d,1.0,1.0,At Completion Units,6/27/2025,6/27/2025,0,0,0,0,0,0,0,0,0,0,1.03_Accelerator Systems (AS),1.03.07_AS SXR-HE Undulator (Soft X-Ray) - LBNL,1.03.07.06_AS SXR-HE Undulator Procurement and Fabrication - LBNL,1.03.07.06.07_SXR-HE Magnetic System Production,AS_LBL_PROD_945_RCV: Production Magnetic System - Pole Yield - QTY 100,M&S,,LBNL,M&S
111350,1.03,1.03.07,1.03.07.06,1.03.07.06.07,1.03.07.06.07,SXR-HE Magnetic System Production,AS_LBL_PROD_200,Update Procurement docs & contract - Production Magnetic System Sets 21-30,1.0,16.0,16.0,16.0,01-02-24,01-02-24,0,0,LBNL,0%,LBNL_E10.3.Mechanical Engineer 3,Mechanical Engineer 3,Labor,0.0d,1.0,1.0,At Completion Units,1/2/2024,1/2/2024,0,0,0,0,0,0,0,0,0,0,1.03_Accelerator Systems (AS),1.03.07_AS SXR-HE Undulator (Soft X-Ray) - LBNL,1.03.07.06_AS SXR-HE Undulator Procurement and Fabrication - LBNL,1.03.07.06.07_SXR-HE Magnetic System Production,AS_LBL_PROD_200_Update Procurement docs & contract - Production Magnetic System Sets 21-30,Mechanical,,SLAC,Labor
111351,1.03,1.03.07,1.03.07.06,1.03.07.06.07,1.03.07.06.07,SXR-HE Magnetic System Production,AS_LBL_PROD_180,Update Procurement docs & contract - Production Magnetic System Sets 1-20 & Magnetic Material,20.0,16.0,16.0,16.0,11-28-22,01-06-23,0,0,LBNL,0%,LBNL_E10.3.Mechanical Engineer 3,Mechanical Engineer 3,Labor,0.0d,20.0,20.0,At Completion Units,1/24/2023,2/21/2023,0,0,0,0,0,0,0,0,0,0,1.03_Accelerator Systems (AS),1.03.07_AS SXR-HE Undulator (Soft X-Ray) - LBNL,1.03.07.06_AS SXR-HE Undulator Procurement and Fabrication - LBNL,1.03.07.06.07_SXR-HE Magnetic System Production,AS_LBL_PROD_180_Update Procurement docs & contract - Production Magnetic System Sets 1-20 & Magnetic Material,Mechanical,,SLAC,Labor
111352,1.03,1.03.07,1.03.07.06,1.03.07.06.07,1.03.07.06.07,SXR-HE Magnetic System Production,AS_LBL_PROD_945,RCV: Production Magnetic System - Pole Yield - QTY 100,1.0,0.0,0.0,0.0,02-23-26,02-23-26,0,0,LBNL,0%,LBNL_MSSC.LBNL M&S (<$500K) (G&A),LBNL M&S (<$500K) (G&A),Nonlabor,0.0d,1.0,1.0,At Completion Units,6/27/2025,6/27/2025,0,0,0,0,0,0,0,0,0,0,1.03_Accelerator Systems (AS),1.03.07_AS SXR-HE Undulator (Soft X-Ray) - LBNL,1.03.07.06_AS SXR-HE Undulator Procurement and Fabrication - LBNL,1.03.07.06.07_SXR-HE Magnetic System Production,AS_LBL_PROD_945_RCV: Production Magnetic System - Pole Yield - QTY 100,M&S,,LBNL,M&S
111353,1.03,1.03.07,1.03.07.06,1.03.07.06.07,1.03.07.06.07,SXR-HE Magnetic System Production,AS_LBL_PROD_940,RCV: Production Magnetic System - Permanent Magnet Yield - QTY 354,1.0,0.0,0.0,0.0,02-23-26,02-23-26,0,0,LBNL,0%,LBNL_MSSC.LBNL M&S (<$500K) (G&A),LBNL M&S (<$500K) (G&A),Nonlabor,0.0d,1.0,1.0,At Completion Units,6/27/2025,6/27/2025,0,0,0,0,0,0,0,0,0,0,1.03_Accelerator Systems (AS),1.03.07_AS SXR-HE Undulator (Soft X-Ray) - LBNL,1.03.07.06_AS SXR-HE Undulator Procurement and Fabrication - LBNL,1.03.07.06.07_SXR-HE Magnetic System Production,AS_LBL_PROD_940_RCV: Production Magnetic System - Permanent Magnet Yield - QTY 354,M&S,,LBNL,M&S
111354,1.03,1.03.07,1.03.07.06,1.03.07.06.07,1.03.07.06.07,SXR-HE Magnetic System Production,AS_LBL_PROD_935,RCV: (SLAC) Magnetic System Set #30,1.0,0.0,0.0,0.0,02-20-26,02-20-26,0,0,LBNL,0%,LBNL_MSSC.LBNL M&S (<$500K) (G&A),LBNL M&S (<$500K) (G&A),Nonlabor,0.0d,1.0,1.0,At Completion Units,6/26/2025,6/26/2025,0,0,0,0,0,0,0,0,0,0,1.03_Accelerator Systems (AS),1.03.07_AS SXR-HE Undulator (Soft X-Ray) - LBNL,1.03.07.06_AS SXR-HE Undulator Procurement and Fabrication - LBNL,1.03.07.06.07_SXR-HE Magnetic System Production,AS_LBL_PROD_935_RCV: (SLAC) Magnetic System Set #30,M&S,,LBNL,M&S
111355,1.03,1.03.07,1.03.07.06,1.03.07.06.07,1.03.07.06.07,SXR-HE Magnetic System Production,AS_LBL_PROD_925,RCV: (SLAC) Magnetic System Set #29,1.0,0.0,0.0,0.0,01-20-26,01-20-26,0,0,LBNL,0%,LBNL_MSSC.LBNL M&S (<$500K) (G&A),LBNL M&S (<$500K) (G&A),Nonlabor,0.0d,1.0,1.0,At Completion Units,5/27/2025,5/27/2025,0,0,0,0,0,0,0,0,0,0,1.03_Accelerator Systems (AS),1.03.07_AS SXR-HE Undulator (Soft X-Ray) - LBNL,1.03.07.06_AS SXR-HE Undulator Procurement and Fabrication - LBNL,1.03.07.06.07_SXR-HE Magnetic System Production,AS_LBL_PROD_925_RCV: (SLAC) Magnetic System Set #29,M&S,,LBNL,M&S
111356,1.03,1.03.07,1.03.07.06,1.03.07.06.07,1.03.07.06.07,SXR-HE Magnetic System Production,AS_LBL_PROD_915,RCV: (SLAC) Magnetic System Set #28,1.0,0.0,0.0,0.0,12-15-25,12-15-25,0,0,LBNL,0%,LBNL_MSSC.LBNL M&S (<$500K) (G&A),LBNL M&S (<$500K) (G&A),Nonlabor,0.0d,1.0,1.0,At Completion Units,5/5/2025,5/5/2025,0,0,0,0,0,0,0,0,0,0,1.03_Accelerator Systems (AS),1.03.07_AS SXR-HE Undulator (Soft X-Ray) - LBNL,1.03.07.06_AS SXR-HE Undulator Procurement and Fabrication - LBNL,1.03.07.06.07_SXR-HE Magnetic System Production,AS_LBL_PROD_915_RCV: (SLAC) Magnetic System Set #28,M&S,,LBNL,M&S
111357,1.03,1.03.07,1.03.07.06,1.03.07.06.07,1.03.07.06.07,SXR-HE Magnetic System Production,AS_LBL_PROD_905,RCV: (SLAC) Magnetic System Set #27,1.0,0.0,0.0,0.0,11-20-25,11-20-25,0,0,LBNL,0%,LBNL_MSSC.LBNL M&S (<$500K) (G&A),LBNL M&S (<$500K) (G&A),Nonlabor,0.0d,1.0,1.0,At Completion Units,4/14/2025,4/14/2025,0,0,0,0,0,0,0,0,0,0,1.03_Accelerator Systems (AS),1.03.07_AS SXR-HE Undulator (Soft X-Ray) - LBNL,1.03.07.06_AS SXR-HE Undulator Procurement and Fabrication - LBNL,1.03.07.06.07_SXR-HE Magnetic System Production,AS_LBL_PROD_905_RCV: (SLAC) Magnetic System Set #27,M&S,,LBNL,M&S
111358,1.03,1.03.07,1.03.07.06,1.03.07.06.07,1.03.07.06.07,SXR-HE Magnetic System Production,AS_LBL_PROD_895,RCV: (SLAC) Magnetic System Set #26,1.0,0.0,0.0,0.0,10-30-25,10-30-25,0,0,LBNL,0%,LBNL_MSSC.LBNL M&S (<$500K) (G&A),LBNL M&S (<$500K) (G&A),Nonlabor,0.0d,1.0,1.0,At Completion Units,3/24/2025,3/24/2025,0,0,0,0,0,0,0,0,0,0,1.03_Accelerator Systems (AS),1.03.07_AS SXR-HE Undulator (Soft X-Ray) - LBNL,1.03.07.06_AS SXR-HE Undulator Procurement and Fabrication - LBNL,1.03.07.06.07_SXR-HE Magnetic System Production,AS_LBL_PROD_895_RCV: (SLAC) Magnetic System Set #26,M&S,,LBNL,M&S
111359,1.03,1.03.07,1.03.07.06,1.03.07.06.07,1.03.07.06.07,SXR-HE Magnetic System Production,AS_LBL_PROD_885,RCV: (SLAC) Magnetic System Set #25,1.0,0.0,0.0,0.0,10-09-25,10-09-25,0,0,LBNL,0%,LBNL_MSSC.LBNL M&S (<$500K) (G&A),LBNL M&S (<$500K) (G&A),Nonlabor,0.0d,1.0,1.0,At Completion Units,3/3/2025,3/3/2025,0,0,0,0,0,0,0,0,0,0,1.03_Accelerator Systems (AS),1.03.07_AS SXR-HE Undulator (Soft X-Ray) - LBNL,1.03.07.06_AS SXR-HE Undulator Procurement and Fabrication - LBNL,1.03.07.06.07_SXR-HE Magnetic System Production,AS_LBL_PROD_885_RCV: (SLAC) Magnetic System Set #25,M&S,,LBNL,M&S
111360,1.03,1.03.07,1.03.07.06,1.03.07.06.07,1.03.07.06.07,SXR-HE Magnetic System Production,AS_LBL_PROD_875,RCV: (SLAC) Magnetic System Set #24,1.0,0.0,0.0,0.0,09-18-25,09-18-25,0,0,LBNL,0%,LBNL_MSSC.LBNL M&S (<$500K) (G&A),LBNL M&S (<$500K) (G&A),Nonlabor,0.0d,1.0,1.0,At Completion Units,2/7/2025,2/7/2025,0,0,0,0,0,0,0,0,0,0,1.03_Accelerator Systems (AS),1.03.07_AS SXR-HE Undulator (Soft X-Ray) - LBNL,1.03.07.06_AS SXR-HE Undulator Procurement and Fabrication - LBNL,1.03.07.06.07_SXR-HE Magnetic System Production,AS_LBL_PROD_875_RCV: (SLAC) Magnetic System Set #24,M&S,,LBNL,M&S
111361,1.03,1.03.07,1.03.07.06,1.03.07.06.07,1.03.07.06.07,SXR-HE Magnetic System Production,AS_LBL_PROD_865,RCV: (SLAC) Magnetic System Set #23,1.0,0.0,0.0,0.0,08-27-25,08-27-25,0,0,LBNL,0%,LBNL_MSSC.LBNL M&S (<$500K) (G&A),LBNL M&S (<$500K) (G&A),Nonlabor,0.0d,1.0,1.0,At Completion Units,1/16/2025,1/16/2025,0,0,0,0,0,0,0,0,0,0,1.03_Accelerator Systems (AS),1.03.07_AS SXR-HE Undulator (Soft X-Ray) - LBNL,1.03.07.06_AS SXR-HE Undulator Procurement and Fabrication - LBNL,1.03.07.06.07_SXR-HE Magnetic System Production,AS_LBL_PROD_865_RCV: (SLAC) Magnetic System Set #23,M&S,,LBNL,M&S
111362,1.03,1.03.07,1.03.07.06,1.03.07.06.07,1.03.07.06.07,SXR-HE Magnetic System Production,AS_LBL_PROD_855,RCV: (SLAC) Magnetic System Set #22,1.0,0.0,0.0,0.0,08-06-25,08-06-25,0,0,LBNL,0%,LBNL_MSSC.LBNL M&S (<$500K) (G&A),LBNL M&S (<$500K) (G&A),Nonlabor,0.0d,1.0,1.0,At Completion Units,12/12/2024,12/12/2024,0,0,0,0,0,0,0,0,0,0,1.03_Accelerator Systems (AS),1.03.07_AS SXR-HE Undulator (Soft X-Ray) - LBNL,1.03.07.06_AS SXR-HE Undulator Procurement and Fabrication - LBNL,1.03.07.06.07_SXR-HE Magnetic System Production,AS_LBL_PROD_855_RCV: (SLAC) Magnetic System Set #22,M&S,,LBNL,M&S
111363,1.03,1.03.07,1.03.07.06,1.03.07.06.07,1.03.07.06.07,SXR-HE Magnetic System Production,AS_LBL_PROD_845,RCV: (Undulator Vendor) Magnetic System Set #21,1.0,0.0,0.0,0.0,07-16-25,07-16-25,0,0,LBNL,0%,LBNL_MSSC.LBNL M&S (<$500K) (G&A),LBNL M&S (<$500K) (G&A),Nonlabor,0.0d,1.0,1.0,At Completion Units,11/19/2024,11/19/2024,0,0,0,0,0,0,0,0,0,0,1.03_Accelerator Systems (AS),1.03.07_AS SXR-HE Undulator (Soft X-Ray) - LBNL,1.03.07.06_AS SXR-HE Undulator Procurement and Fabrication - LBNL,1.03.07.06.07_SXR-HE Magnetic System Production,AS_LBL_PROD_845_RCV: (Undulator Vendor) Magnetic System Set #21,M&S,,LBNL,M&S
111364,1.03,1.03.07,1.03.07.06,1.03.07.06.07,1.03.07.06.07,SXR-HE Magnetic System Production,AS_LBL_PROD_835,RCV: (SLAC)  Magnetic System Set #20,1.0,0.0,0.0,0.0,06-27-25,06-27-25,0,0,LBNL,0%,LBNL_MSSC.LBNL M&S (<$500K) (G&A),LBNL M&S (<$500K) (G&A),Nonlabor,0.0d,1.0,1.0,At Completion Units,11/1/2024,11/1/2024,0,0,0,0,0,0,0,0,0,0,1.03_Accelerator Systems (AS),1.03.07_AS SXR-HE Undulator (Soft X-Ray) - LBNL,1.03.07.06_AS SXR-HE Undulator Procurement and Fabrication - LBNL,1.03.07.06.07_SXR-HE Magnetic System Production,AS_LBL_PROD_835_RCV: (SLAC)  Magnetic System Set #20,M&S,,LBNL,M&S
111365,1.03,1.03.07,1.03.07.06,1.03.07.06.07,1.03.07.06.07,SXR-HE Magnetic System Production,AS_LBL_PROD_825,RCV: (Undulator Vendor) Magnetic System Set #19,1.0,0.0,0.0,0.0,06-06-25,06-06-25,0,0,LBNL,0%,LBNL_MSSC.LBNL M&S (<$500K) (G&A),LBNL M&S (<$500K) (G&A),Nonlabor,0.0d,1.0,1.0,At Completion Units,10/11/2024,10/11/2024,0,0,0,0,0,0,0,0,0,0,1.03_Accelerator Systems (AS),1.03.07_AS SXR-HE Undulator (Soft X-Ray) - LBNL,1.03.07.06_AS SXR-HE Undulator Procurement and Fabrication - LBNL,1.03.07.06.07_SXR-HE Magnetic System Production,AS_LBL_PROD_825_RCV: (Undulator Vendor) Magnetic System Set #19,M&S,,LBNL,M&S
111366,1.03,1.03.07,1.03.07.06,1.03.07.06.07,1.03.07.06.07,SXR-HE Magnetic System Production,AS_LBL_PROD_815,RCV: (SLAC) Magnetic System Set #18,1.0,0.0,0.0,0.0,05-20-25,05-20-25,0,0,LBNL,0%,LBNL_MSSC.LBNL M&S (<$500K) (G&A),LBNL M&S (<$500K) (G&A),Nonlabor,0.0d,1.0,1.0,At Completion Units,9/25/2024,9/25/2024,0,0,0,0,0,0,0,0,0,0,1.03_Accelerator Systems (AS),1.03.07_AS SXR-HE Undulator (Soft X-Ray) - LBNL,1.03.07.06_AS SXR-HE Undulator Procurement and Fabrication - LBNL,1.03.07.06.07_SXR-HE Magnetic System Production,AS_LBL_PROD_815_RCV: (SLAC) Magnetic System Set #18,M&S,,LBNL,M&S
111367,1.03,1.03.07,1.03.07.06,1.03.07.06.07,1.03.07.06.07,SXR-HE Magnetic System Production,AS_LBL_PROD_805,RCV: (Undulator Vendor)  Magnetic System Set #17,1.0,0.0,0.0,0.0,04-29-25,04-29-25,0,0,LBNL,0%,LBNL_MSSC.LBNL M&S (<$500K) (G&A),LBNL M&S (<$500K) (G&A),Nonlabor,0.0d,1.0,1.0,At Completion Units,9/4/2024,9/4/2024,0,0,0,0,0,0,0,0,0,0,1.03_Accelerator Systems (AS),1.03.07_AS SXR-HE Undulator (Soft X-Ray) - LBNL,1.03.07.06_AS SXR-HE Undulator Procurement and Fabrication - LBNL,1.03.07.06.07_SXR-HE Magnetic System Production,AS_LBL_PROD_805_RCV: (Undulator Vendor)  Magnetic System Set #17,M&S,,LBNL,M&S
111368,1.03,1.03.07,1.03.07.06,1.03.07.06.07,1.03.07.06.07,SXR-HE Magnetic System Production,AS_LBL_PROD_795,RCV: (SLAC) Magnetic System Set #16,1.0,0.0,0.0,0.0,04-11-25,04-11-25,0,0,LBNL,0%,LBNL_MSSC.LBNL M&S (<$500K) (G&A),LBNL M&S (<$500K) (G&A),Nonlabor,0.0d,1.0,1.0,At Completion Units,8/16/2024,8/16/2024,0,0,0,0,0,0,0,0,0,0,1.03_Accelerator Systems (AS),1.03.07_AS SXR-HE Undulator (Soft X-Ray) - LBNL,1.03.07.06_AS SXR-HE Undulator Procurement and Fabrication - LBNL,1.03.07.06.07_SXR-HE Magnetic System Production,AS_LBL_PROD_795_RCV: (SLAC) Magnetic System Set #16,M&S,,LBNL,M&S
111369,1.03,1.03.07,1.03.07.06,1.03.07.06.07,1.03.07.06.07,SXR-HE Magnetic System Production,AS_LBL_PROD_785,RCV: (Undulator Vendor)  Magnetic System Set #15,1.0,0.0,0.0,0.0,03-21-25,03-21-25,0,0,LBNL,0%,LBNL_MSSC.LBNL M&S (<$500K) (G&A),LBNL M&S (<$500K) (G&A),Nonlabor,0.0d,1.0,1.0,At Completion Units,7/26/2024,7/26/2024,0,0,0,0,0,0,0,0,0,0,1.03_Accelerator Systems (AS),1.03.07_AS SXR-HE Undulator (Soft X-Ray) - LBNL,1.03.07.06_AS SXR-HE Undulator Procurement and Fabrication - LBNL,1.03.07.06.07_SXR-HE Magnetic System Production,AS_LBL_PROD_785_RCV: (Undulator Vendor)  Magnetic System Set #15,M&S,,LBNL,M&S
111370,1.03,1.03.07,1.03.07.06,1.03.07.06.07,1.03.07.06.07,SXR-HE Magnetic System Production,AS_LBL_PROD_775,RCV: (SLAC) Magnetic System Set #14,1.0,0.0,0.0,0.0,03-05-25,03-05-25,0,0,LBNL,0%,LBNL_MSSC.LBNL M&S (<$500K) (G&A),LBNL M&S (<$500K) (G&A),Nonlabor,0.0d,1.0,1.0,At Completion Units,7/10/2024,7/10/2024,0,0,0,0,0,0,0,0,0,0,1.03_Accelerator Systems (AS),1.03.07_AS SXR-HE Undulator (Soft X-Ray) - LBNL,1.03.07.06_AS SXR-HE Undulator Procurement and Fabrication - LBNL,1.03.07.06.07_SXR-HE Magnetic System Production,AS_LBL_PROD_775_RCV: (SLAC) Magnetic System Set #14,M&S,,LBNL,M&S
111371,1.03,1.03.07,1.03.07.06,1.03.07.06.07,1.03.07.06.07,SXR-HE Magnetic System Production,AS_LBL_PROD_765,RCV: (Undulator Vendor)  Magnetic System Set #13,1.0,0.0,0.0,0.0,02-11-25,02-11-25,0,0,LBNL,0%,LBNL_MSSC.LBNL M&S (<$500K) (G&A),LBNL M&S (<$500K) (G&A),Nonlabor,0.0d,1.0,1.0,At Completion Units,6/18/2024,6/18/2024,0,0,0,0,0,0,0,0,0,0,1.03_Accelerator Systems (AS),1.03.07_AS SXR-HE Undulator (Soft X-Ray) - LBNL,1.03.07.06_AS SXR-HE Undulator Procurement and Fabrication - LBNL,1.03.07.06.07_SXR-HE Magnetic System Production,AS_LBL_PROD_765_RCV: (Undulator Vendor)  Magnetic System Set #13,M&S,,LBNL,M&S
111372,1.03,1.03.07,1.03.07.06,1.03.07.06.07,1.03.07.06.07,SXR-HE Magnetic System Production,AS_LBL_PROD_755,RCV: (SLAC)  Magnetic System Set #12,1.0,0.0,0.0,0.0,01-24-25,01-24-25,0,0,LBNL,0%,LBNL_MSSC.LBNL M&S (<$500K) (G&A),LBNL M&S (<$500K) (G&A),Nonlabor,0.0d,1.0,1.0,At Completion Units,5/31/2024,5/31/2024,0,0,0,0,0,0,0,0,0,0,1.03_Accelerator Systems (AS),1.03.07_AS SXR-HE Undulator (Soft X-Ray) - LBNL,1.03.07.06_AS SXR-HE Undulator Procurement and Fabrication - LBNL,1.03.07.06.07_SXR-HE Magnetic System Production,AS_LBL_PROD_755_RCV: (SLAC)  Magnetic System Set #12,M&S,,LBNL,M&S
111373,1.03,1.03.07,1.03.07.06,1.03.07.06.07,1.03.07.06.07,SXR-HE Magnetic System Production,AS_LBL_PROD_745,RCV: (Undulator Vendor) Magnetic System Set #11,1.0,0.0,0.0,0.0,12-19-24,12-19-24,0,0,LBNL,0%,LBNL_MSSC.LBNL M&S (<$500K) (G&A),LBNL M&S (<$500K) (G&A),Nonlabor,0.0d,1.0,1.0,At Completion Units,5/9/2024,5/9/2024,0,0,0,0,0,0,0,0,0,0,1.03_Accelerator Systems (AS),1.03.07_AS SXR-HE Undulator (Soft X-Ray) - LBNL,1.03.07.06_AS SXR-HE Undulator Procurement and Fabrication - LBNL,1.03.07.06.07_SXR-HE Magnetic System Production,AS_LBL_PROD_745_RCV: (Undulator Vendor) Magnetic System Set #11,M&S,,LBNL,M&S
111374,1.03,1.03.07,1.03.07.06,1.03.07.06.07,1.03.07.06.07,SXR-HE Magnetic System Production,AS_LBL_PROD_735,RCV: (SLAC)  Magnetic System Set #10,1.0,0.0,0.0,0.0,12-03-24,12-03-24,0,0,LBNL,0%,LBNL_MSSC.LBNL M&S (<$500K) (G&A),LBNL M&S (<$500K) (G&A),Nonlabor,0.0d,1.0,1.0,At Completion Units,4/23/2024,4/23/2024,0,0,0,0,0,0,0,0,0,0,1.03_Accelerator Systems (AS),1.03.07_AS SXR-HE Undulator (Soft X-Ray) - LBNL,1.03.07.06_AS SXR-HE Undulator Procurement and Fabrication - LBNL,1.03.07.06.07_SXR-HE Magnetic System Production,AS_LBL_PROD_735_RCV: (SLAC)  Magnetic System Set #10,M&S,,LBNL,M&S
111375,1.03,1.03.07,1.03.07.06,1.03.07.06.07,1.03.07.06.07,SXR-HE Magnetic System Production,AS_LBL_PROD_725,RCV: (Undulator Vendor)  Magnetic System Set #9,1.0,0.0,0.0,0.0,11-08-24,11-08-24,0,0,LBNL,0%,LBNL_MSSC.LBNL M&S (<$500K) (G&A),LBNL M&S (<$500K) (G&A),Nonlabor,0.0d,1.0,1.0,At Completion Units,4/2/2024,4/2/2024,0,0,0,0,0,0,0,0,0,0,1.03_Accelerator Systems (AS),1.03.07_AS SXR-HE Undulator (Soft X-Ray) - LBNL,1.03.07.06_AS SXR-HE Undulator Procurement and Fabrication - LBNL,1.03.07.06.07_SXR-HE Magnetic System Production,AS_LBL_PROD_725_RCV: (Undulator Vendor)  Magnetic System Set #9,M&S,,LBNL,M&S
111376,1.03,1.03.07,1.03.07.06,1.03.07.06.07,1.03.07.06.07,SXR-HE Magnetic System Production,AS_LBL_PROD_715,RCV: (SLAC)  Magnetic System Set #8,1.0,0.0,0.0,0.0,10-23-24,10-23-24,0,0,LBNL,0%,LBNL_MSSC.LBNL M&S (<$500K) (G&A),LBNL M&S (<$500K) (G&A),Nonlabor,0.0d,1.0,1.0,At Completion Units,3/15/2024,3/15/2024,0,0,0,0,0,0,0,0,0,0,1.03_Accelerator Systems (AS),1.03.07_AS SXR-HE Undulator (Soft X-Ray) - LBNL,1.03.07.06_AS SXR-HE Undulator Procurement and Fabrication - LBNL,1.03.07.06.07_SXR-HE Magnetic System Production,AS_LBL_PROD_715_RCV: (SLAC)  Magnetic System Set #8,M&S,,LBNL,M&S
111377,1.03,1.03.07,1.03.07.06,1.03.07.06.07,1.03.07.06.07,SXR-HE Magnetic System Production,AS_LBL_PROD_705,RCV: (Undulator Vendor)  Magnetic System Set #7,1.0,0.0,0.0,0.0,10-02-24,10-02-24,0,0,LBNL,0%,LBNL_MSSC.LBNL M&S (<$500K) (G&A),LBNL M&S (<$500K) (G&A),Nonlabor,0.0d,1.0,1.0,At Completion Units,2/23/2024,2/23/2024,0,0,0,0,0,0,0,0,0,0,1.03_Accelerator Systems (AS),1.03.07_AS SXR-HE Undulator (Soft X-Ray) - LBNL,1.03.07.06_AS SXR-HE Undulator Procurement and Fabrication - LBNL,1.03.07.06.07_SXR-HE Magnetic System Production,AS_LBL_PROD_705_RCV: (Undulator Vendor)  Magnetic System Set #7,M&S,,LBNL,M&S
111378,1.03,1.03.07,1.03.07.06,1.03.07.06.07,1.03.07.06.07,SXR-HE Magnetic System Production,AS_LBL_PROD_695,RCV: (SLAC)  Magnetic System Set #6,1.0,0.0,0.0,0.0,09-16-24,09-16-24,0,0,LBNL,0%,LBNL_MSSC.LBNL M&S (<$500K) (G&A),LBNL M&S (<$500K) (G&A),Nonlabor,0.0d,1.0,1.0,At Completion Units,2/6/2024,2/6/2024,0,0,0,0,0,0,0,0,0,0,1.03_Accelerator Systems (AS),1.03.07_AS SXR-HE Undulator (Soft X-Ray) - LBNL,1.03.07.06_AS SXR-HE Undulator Procurement and Fabrication - LBNL,1.03.07.06.07_SXR-HE Magnetic System Production,AS_LBL_PROD_695_RCV: (SLAC)  Magnetic System Set #6,M&S,,LBNL,M&S
111379,1.03,1.03.07,1.03.07.06,1.03.07.06.07,1.03.07.06.07,SXR-HE Magnetic System Production,AS_LBL_PROD_685,RCV: (Undulator Vendor)  Magnetic System Set #5,1.0,0.0,0.0,0.0,08-23-24,08-23-24,0,0,LBNL,0%,LBNL_MSSC.LBNL M&S (<$500K) (G&A),LBNL M&S (<$500K) (G&A),Nonlabor,0.0d,1.0,1.0,At Completion Units,1/16/2024,1/16/2024,0,0,0,0,0,0,0,0,0,0,1.03_Accelerator Systems (AS),1.03.07_AS SXR-HE Undulator (Soft X-Ray) - LBNL,1.03.07.06_AS SXR-HE Undulator Procurement and Fabrication - LBNL,1.03.07.06.07_SXR-HE Magnetic System Production,AS_LBL_PROD_685_RCV: (Undulator Vendor)  Magnetic System Set #5,M&S,,LBNL,M&S
111380,1.03,1.03.07,1.03.07.06,1.03.07.06.07,1.03.07.06.07,SXR-HE Magnetic System Production,AS_LBL_PROD_675,RCV: (SLAC)  Magnetic System Set #4,1.0,0.0,0.0,0.0,08-07-24,08-07-24,0,0,LBNL,0%,LBNL_MSSC.LBNL M&S (<$500K) (G&A),LBNL M&S (<$500K) (G&A),Nonlabor,0.0d,1.0,1.0,At Completion Units,12/13/2023,12/13/2023,0,0,0,0,0,0,0,0,0,0,1.03_Accelerator Systems (AS),1.03.07_AS SXR-HE Undulator (Soft X-Ray) - LBNL,1.03.07.06_AS SXR-HE Undulator Procurement and Fabrication - LBNL,1.03.07.06.07_SXR-HE Magnetic System Production,AS_LBL_PROD_675_RCV: (SLAC)  Magnetic System Set #4,M&S,,LBNL,M&S
111381,1.03,1.03.07,1.03.07.06,1.03.07.06.07,1.03.07.06.07,SXR-HE Magnetic System Production,AS_LBL_PROD_655,RCV: Magnetic System Set #3,1.0,0.0,0.0,0.0,07-18-24,07-18-24,0,0,LBNL,0%,LBNL_MSSC.LBNL M&S (<$500K) (G&A),LBNL M&S (<$500K) (G&A),Nonlabor,0.0d,1.0,1.0,At Completion Units,11/21/2023,11/21/2023,0,0,0,0,0,0,0,0,0,0,1.03_Accelerator Systems (AS),1.03.07_AS SXR-HE Undulator (Soft X-Ray) - LBNL,1.03.07.06_AS SXR-HE Undulator Procurement and Fabrication - LBNL,1.03.07.06.07_SXR-HE Magnetic System Production,AS_LBL_PROD_655_RCV: Magnetic System Set #3,M&S,,LBNL,M&S
111382,1.03,1.03.07,1.03.07.06,1.03.07.06.07,1.03.07.06.07,SXR-HE Magnetic System Production,AS_LBL_PROD_605,RCV: Magnetic System Set #1,1.0,0.0,0.0,0.0,05-07-24,05-07-24,0,0,LBNL,0%,LBNL_MSSC.LBNL M&S (<$500K) (G&A),LBNL M&S (<$500K) (G&A),Nonlabor,0.0d,1.0,1.0,At Completion Units,9/12/2023,9/12/2023,0,0,0,0,0,0,0,0,0,0,1.03_Accelerator Systems (AS),1.03.07_AS SXR-HE Undulator (Soft X-Ray) - LBNL,1.03.07.06_AS SXR-HE Undulator Procurement and Fabrication - LBNL,1.03.07.06.07_SXR-HE Magnetic System Production,AS_LBL_PROD_605_RCV: Magnetic System Set #1,M&S,,LBNL,M&S
111383,1.03,1.03.07,1.03.07.06,1.03.07.06.07,1.03.07.06.07,SXR-HE Magnetic System Production,AS_LBL_PROD_630,RCV: Magnetic System Set #2,1.0,0.0,0.0,0.0,06-12-24,06-12-24,0,0,LBNL,0%,LBNL_MSSC.LBNL M&S (<$500K) (G&A),LBNL M&S (<$500K) (G&A),Nonlabor,0.0d,1.0,1.0,At Completion Units,10/17/2023,10/17/2023,0,0,0,0,0,0,0,0,0,0,1.03_Accelerator Systems (AS),1.03.07_AS SXR-HE Undulator (Soft X-Ray) - LBNL,1.03.07.06_AS SXR-HE Undulator Procurement and Fabrication - LBNL,1.03.07.06.07_SXR-HE Magnetic System Production,AS_LBL_PROD_630_RCV: Magnetic System Set #2,M&S,,LBNL,M&S
111384,1.03,1.03.07,1.03.07.06,1.03.07.06.07,1.03.07.06.07,SXR-HE Magnetic System Production,AS_LBL_PROD_610,Unpack & Inspect & Ship (SLAC) - Magnetic System Set #1,22.0,40.0,40.0,40.0,05-08-24,06-07-24,0,0,LBNL,0%,LBNL_E10.4.Mechanical Engineer 4,Mechanical Engineer 4,Labor,0.0d,22.0,22.0,At Completion Units,9/13/2023,10/12/2023,0,0,0,0,0,0,0,0,0,0,1.03_Accelerator Systems (AS),1.03.07_AS SXR-HE Undulator (Soft X-Ray) - LBNL,1.03.07.06_AS SXR-HE Undulator Procurement and Fabrication - LBNL,1.03.07.06.07_SXR-HE Magnetic System Production,AS_LBL_PROD_610_Unpack & Inspect & Ship (SLAC) - Magnetic System Set #1,Mechanical,,SLAC,Labor
111385,1.03,1.03.07,1.03.07.06,1.03.07.06.07,1.03.07.06.07,SXR-HE Magnetic System Production,AS_LBL_PROD_945,RCV: Production Magnetic System - Pole Yield - QTY 100,1.0,0.0,0.0,0.0,02-23-26,02-23-26,0,0,LBNL,0%,LBNL_MSSY.LBNL M&S (>$500K) (NO G&A),LBNL M&S (>$500K) (NO G&A),Nonlabor,0.0d,1.0,1.0,At Completion Units,6/27/2025,6/27/2025,0,0,0,0,0,0,0,0,0,0,1.03_Accelerator Systems (AS),1.03.07_AS SXR-HE Undulator (Soft X-Ray) - LBNL,1.03.07.06_AS SXR-HE Undulator Procurement and Fabrication - LBNL,1.03.07.06.07_SXR-HE Magnetic System Production,AS_LBL_PROD_945_RCV: Production Magnetic System - Pole Yield - QTY 100,M&S,,LBNL,M&S
111386,1.03,1.03.07,1.03.07.06,1.03.07.06.07,1.03.07.06.07,SXR-HE Magnetic System Production,AS_LBL_PROD_940,RCV: Production Magnetic System - Permanent Magnet Yield - QTY 354,1.0,0.0,0.0,0.0,02-23-26,02-23-26,0,0,LBNL,0%,LBNL_MSSY.LBNL M&S (>$500K) (NO G&A),LBNL M&S (>$500K) (NO G&A),Nonlabor,0.0d,1.0,1.0,At Completion Units,6/27/2025,6/27/2025,0,0,0,0,0,0,0,0,0,0,1.03_Accelerator Systems (AS),1.03.07_AS SXR-HE Undulator (Soft X-Ray) - LBNL,1.03.07.06_AS SXR-HE Undulator Procurement and Fabrication - LBNL,1.03.07.06.07_SXR-HE Magnetic System Production,AS_LBL_PROD_940_RCV: Production Magnetic System - Permanent Magnet Yield - QTY 354,M&S,,LBNL,M&S
111387,1.03,1.03.07,1.03.07.06,1.03.07.06.07,1.03.07.06.07,SXR-HE Magnetic System Production,AS_LBL_PROD_935,RCV: (SLAC) Magnetic System Set #30,1.0,0.0,0.0,0.0,02-20-26,02-20-26,0,0,LBNL,0%,LBNL_MSSY.LBNL M&S (>$500K) (NO G&A),LBNL M&S (>$500K) (NO G&A),Nonlabor,0.0d,1.0,1.0,At Completion Units,6/26/2025,6/26/2025,0,0,0,0,0,0,0,0,0,0,1.03_Accelerator Systems (AS),1.03.07_AS SXR-HE Undulator (Soft X-Ray) - LBNL,1.03.07.06_AS SXR-HE Undulator Procurement and Fabrication - LBNL,1.03.07.06.07_SXR-HE Magnetic System Production,AS_LBL_PROD_935_RCV: (SLAC) Magnetic System Set #30,M&S,,LBNL,M&S
111388,1.03,1.03.07,1.03.07.06,1.03.07.06.07,1.03.07.06.07,SXR-HE Magnetic System Production,AS_LBL_PROD_925,RCV: (SLAC) Magnetic System Set #29,1.0,0.0,0.0,0.0,01-20-26,01-20-26,0,0,LBNL,0%,LBNL_MSSY.LBNL M&S (>$500K) (NO G&A),LBNL M&S (>$500K) (NO G&A),Nonlabor,0.0d,1.0,1.0,At Completion Units,5/27/2025,5/27/2025,0,0,0,0,0,0,0,0,0,0,1.03_Accelerator Systems (AS),1.03.07_AS SXR-HE Undulator (Soft X-Ray) - LBNL,1.03.07.06_AS SXR-HE Undulator Procurement and Fabrication - LBNL,1.03.07.06.07_SXR-HE Magnetic System Production,AS_LBL_PROD_925_RCV: (SLAC) Magnetic System Set #29,M&S,,LBNL,M&S
111389,1.03,1.03.07,1.03.07.06,1.03.07.06.07,1.03.07.06.07,SXR-HE Magnetic System Production,AS_LBL_PROD_915,RCV: (SLAC) Magnetic System Set #28,1.0,0.0,0.0,0.0,12-15-25,12-15-25,0,0,LBNL,0%,LBNL_MSSY.LBNL M&S (>$500K) (NO G&A),LBNL M&S (>$500K) (NO G&A),Nonlabor,0.0d,1.0,1.0,At Completion Units,5/5/2025,5/5/2025,0,0,0,0,0,0,0,0,0,0,1.03_Accelerator Systems (AS),1.03.07_AS SXR-HE Undulator (Soft X-Ray) - LBNL,1.03.07.06_AS SXR-HE Undulator Procurement and Fabrication - LBNL,1.03.07.06.07_SXR-HE Magnetic System Production,AS_LBL_PROD_915_RCV: (SLAC) Magnetic System Set #28,M&S,,LBNL,M&S
111390,1.03,1.03.07,1.03.07.06,1.03.07.06.07,1.03.07.06.07,SXR-HE Magnetic System Production,AS_LBL_PROD_905,RCV: (SLAC) Magnetic System Set #27,1.0,0.0,0.0,0.0,11-20-25,11-20-25,0,0,LBNL,0%,LBNL_MSSY.LBNL M&S (>$500K) (NO G&A),LBNL M&S (>$500K) (NO G&A),Nonlabor,0.0d,1.0,1.0,At Completion Units,4/14/2025,4/14/2025,0,0,0,0,0,0,0,0,0,0,1.03_Accelerator Systems (AS),1.03.07_AS SXR-HE Undulator (Soft X-Ray) - LBNL,1.03.07.06_AS SXR-HE Undulator Procurement and Fabrication - LBNL,1.03.07.06.07_SXR-HE Magnetic System Production,AS_LBL_PROD_905_RCV: (SLAC) Magnetic System Set #27,M&S,,LBNL,M&S
111391,1.03,1.03.07,1.03.07.06,1.03.07.06.07,1.03.07.06.07,SXR-HE Magnetic System Production,AS_LBL_PROD_895,RCV: (SLAC) Magnetic System Set #26,1.0,0.0,0.0,0.0,10-30-25,10-30-25,0,0,LBNL,0%,LBNL_MSSY.LBNL M&S (>$500K) (NO G&A),LBNL M&S (>$500K) (NO G&A),Nonlabor,0.0d,1.0,1.0,At Completion Units,3/24/2025,3/24/2025,0,0,0,0,0,0,0,0,0,0,1.03_Accelerator Systems (AS),1.03.07_AS SXR-HE Undulator (Soft X-Ray) - LBNL,1.03.07.06_AS SXR-HE Undulator Procurement and Fabrication - LBNL,1.03.07.06.07_SXR-HE Magnetic System Production,AS_LBL_PROD_895_RCV: (SLAC) Magnetic System Set #26,M&S,,LBNL,M&S
111392,1.03,1.03.07,1.03.07.06,1.03.07.06.07,1.03.07.06.07,SXR-HE Magnetic System Production,AS_LBL_PROD_885,RCV: (SLAC) Magnetic System Set #25,1.0,0.0,0.0,0.0,10-09-25,10-09-25,0,0,LBNL,0%,LBNL_MSSY.LBNL M&S (>$500K) (NO G&A),LBNL M&S (>$500K) (NO G&A),Nonlabor,0.0d,1.0,1.0,At Completion Units,3/3/2025,3/3/2025,0,0,0,0,0,0,0,0,0,0,1.03_Accelerator Systems (AS),1.03.07_AS SXR-HE Undulator (Soft X-Ray) - LBNL,1.03.07.06_AS SXR-HE Undulator Procurement and Fabrication - LBNL,1.03.07.06.07_SXR-HE Magnetic System Production,AS_LBL_PROD_885_RCV: (SLAC) Magnetic System Set #25,M&S,,LBNL,M&S
111393,1.03,1.03.07,1.03.07.06,1.03.07.06.07,1.03.07.06.07,SXR-HE Magnetic System Production,AS_LBL_PROD_875,RCV: (SLAC) Magnetic System Set #24,1.0,0.0,0.0,0.0,09-18-25,09-18-25,0,0,LBNL,0%,LBNL_MSSY.LBNL M&S (>$500K) (NO G&A),LBNL M&S (>$500K) (NO G&A),Nonlabor,0.0d,1.0,1.0,At Completion Units,2/7/2025,2/7/2025,0,0,0,0,0,0,0,0,0,0,1.03_Accelerator Systems (AS),1.03.07_AS SXR-HE Undulator (Soft X-Ray) - LBNL,1.03.07.06_AS SXR-HE Undulator Procurement and Fabrication - LBNL,1.03.07.06.07_SXR-HE Magnetic System Production,AS_LBL_PROD_875_RCV: (SLAC) Magnetic System Set #24,M&S,,LBNL,M&S
111394,1.03,1.03.07,1.03.07.06,1.03.07.06.07,1.03.07.06.07,SXR-HE Magnetic System Production,AS_LBL_PROD_865,RCV: (SLAC) Magnetic System Set #23,1.0,0.0,0.0,0.0,08-27-25,08-27-25,0,0,LBNL,0%,LBNL_MSSY.LBNL M&S (>$500K) (NO G&A),LBNL M&S (>$500K) (NO G&A),Nonlabor,0.0d,1.0,1.0,At Completion Units,1/16/2025,1/16/2025,0,0,0,0,0,0,0,0,0,0,1.03_Accelerator Systems (AS),1.03.07_AS SXR-HE Undulator (Soft X-Ray) - LBNL,1.03.07.06_AS SXR-HE Undulator Procurement and Fabrication - LBNL,1.03.07.06.07_SXR-HE Magnetic System Production,AS_LBL_PROD_865_RCV: (SLAC) Magnetic System Set #23,M&S,,LBNL,M&S
111395,1.03,1.03.07,1.03.07.06,1.03.07.06.07,1.03.07.06.07,SXR-HE Magnetic System Production,AS_LBL_PROD_855,RCV: (SLAC) Magnetic System Set #22,1.0,0.0,0.0,0.0,08-06-25,08-06-25,0,0,LBNL,0%,LBNL_MSSY.LBNL M&S (>$500K) (NO G&A),LBNL M&S (>$500K) (NO G&A),Nonlabor,0.0d,1.0,1.0,At Completion Units,12/12/2024,12/12/2024,0,0,0,0,0,0,0,0,0,0,1.03_Accelerator Systems (AS),1.03.07_AS SXR-HE Undulator (Soft X-Ray) - LBNL,1.03.07.06_AS SXR-HE Undulator Procurement and Fabrication - LBNL,1.03.07.06.07_SXR-HE Magnetic System Production,AS_LBL_PROD_855_RCV: (SLAC) Magnetic System Set #22,M&S,,LBNL,M&S
111396,1.03,1.03.07,1.03.07.06,1.03.07.06.07,1.03.07.06.07,SXR-HE Magnetic System Production,AS_LBL_PROD_845,RCV: (Undulator Vendor) Magnetic System Set #21,1.0,0.0,0.0,0.0,07-16-25,07-16-25,0,0,LBNL,0%,LBNL_MSSY.LBNL M&S (>$500K) (NO G&A),LBNL M&S (>$500K) (NO G&A),Nonlabor,0.0d,1.0,1.0,At Completion Units,11/19/2024,11/19/2024,0,0,0,0,0,0,0,0,0,0,1.03_Accelerator Systems (AS),1.03.07_AS SXR-HE Undulator (Soft X-Ray) - LBNL,1.03.07.06_AS SXR-HE Undulator Procurement and Fabrication - LBNL,1.03.07.06.07_SXR-HE Magnetic System Production,AS_LBL_PROD_845_RCV: (Undulator Vendor) Magnetic System Set #21,M&S,,LBNL,M&S
111397,1.03,1.03.07,1.03.07.06,1.03.07.06.07,1.03.07.06.07,SXR-HE Magnetic System Production,AS_LBL_PROD_835,RCV: (SLAC)  Magnetic System Set #20,1.0,0.0,0.0,0.0,06-27-25,06-27-25,0,0,LBNL,0%,LBNL_MSSY.LBNL M&S (>$500K) (NO G&A),LBNL M&S (>$500K) (NO G&A),Nonlabor,0.0d,1.0,1.0,At Completion Units,11/1/2024,11/1/2024,0,0,0,0,0,0,0,0,0,0,1.03_Accelerator Systems (AS),1.03.07_AS SXR-HE Undulator (Soft X-Ray) - LBNL,1.03.07.06_AS SXR-HE Undulator Procurement and Fabrication - LBNL,1.03.07.06.07_SXR-HE Magnetic System Production,AS_LBL_PROD_835_RCV: (SLAC)  Magnetic System Set #20,M&S,,LBNL,M&S
111398,1.03,1.03.07,1.03.07.06,1.03.07.06.07,1.03.07.06.07,SXR-HE Magnetic System Production,AS_LBL_PROD_825,RCV: (Undulator Vendor) Magnetic System Set #19,1.0,0.0,0.0,0.0,06-06-25,06-06-25,0,0,LBNL,0%,LBNL_MSSY.LBNL M&S (>$500K) (NO G&A),LBNL M&S (>$500K) (NO G&A),Nonlabor,0.0d,1.0,1.0,At Completion Units,10/11/2024,10/11/2024,0,0,0,0,0,0,0,0,0,0,1.03_Accelerator Systems (AS),1.03.07_AS SXR-HE Undulator (Soft X-Ray) - LBNL,1.03.07.06_AS SXR-HE Undulator Procurement and Fabrication - LBNL,1.03.07.06.07_SXR-HE Magnetic System Production,AS_LBL_PROD_825_RCV: (Undulator Vendor) Magnetic System Set #19,M&S,,LBNL,M&S
111399,1.03,1.03.07,1.03.07.06,1.03.07.06.07,1.03.07.06.07,SXR-HE Magnetic System Production,AS_LBL_PROD_815,RCV: (SLAC) Magnetic System Set #18,1.0,0.0,0.0,0.0,05-20-25,05-20-25,0,0,LBNL,0%,LBNL_MSSY.LBNL M&S (>$500K) (NO G&A),LBNL M&S (>$500K) (NO G&A),Nonlabor,0.0d,1.0,1.0,At Completion Units,9/25/2024,9/25/2024,0,0,0,0,0,0,0,0,0,0,1.03_Accelerator Systems (AS),1.03.07_AS SXR-HE Undulator (Soft X-Ray) - LBNL,1.03.07.06_AS SXR-HE Undulator Procurement and Fabrication - LBNL,1.03.07.06.07_SXR-HE Magnetic System Production,AS_LBL_PROD_815_RCV: (SLAC) Magnetic System Set #18,M&S,,LBNL,M&S
111400,1.03,1.03.07,1.03.07.06,1.03.07.06.07,1.03.07.06.07,SXR-HE Magnetic System Production,AS_LBL_PROD_805,RCV: (Undulator Vendor)  Magnetic System Set #17,1.0,0.0,0.0,0.0,04-29-25,04-29-25,0,0,LBNL,0%,LBNL_MSSY.LBNL M&S (>$500K) (NO G&A),LBNL M&S (>$500K) (NO G&A),Nonlabor,0.0d,1.0,1.0,At Completion Units,9/4/2024,9/4/2024,0,0,0,0,0,0,0,0,0,0,1.03_Accelerator Systems (AS),1.03.07_AS SXR-HE Undulator (Soft X-Ray) - LBNL,1.03.07.06_AS SXR-HE Undulator Procurement and Fabrication - LBNL,1.03.07.06.07_SXR-HE Magnetic System Production,AS_LBL_PROD_805_RCV: (Undulator Vendor)  Magnetic System Set #17,M&S,,LBNL,M&S
111401,1.03,1.03.07,1.03.07.06,1.03.07.06.07,1.03.07.06.07,SXR-HE Magnetic System Production,AS_LBL_PROD_795,RCV: (SLAC) Magnetic System Set #16,1.0,0.0,0.0,0.0,04-11-25,04-11-25,0,0,LBNL,0%,LBNL_MSSY.LBNL M&S (>$500K) (NO G&A),LBNL M&S (>$500K) (NO G&A),Nonlabor,0.0d,1.0,1.0,At Completion Units,8/16/2024,8/16/2024,0,0,0,0,0,0,0,0,0,0,1.03_Accelerator Systems (AS),1.03.07_AS SXR-HE Undulator (Soft X-Ray) - LBNL,1.03.07.06_AS SXR-HE Undulator Procurement and Fabrication - LBNL,1.03.07.06.07_SXR-HE Magnetic System Production,AS_LBL_PROD_795_RCV: (SLAC) Magnetic System Set #16,M&S,,LBNL,M&S
111402,1.03,1.03.07,1.03.07.06,1.03.07.06.07,1.03.07.06.07,SXR-HE Magnetic System Production,AS_LBL_PROD_785,RCV: (Undulator Vendor)  Magnetic System Set #15,1.0,0.0,0.0,0.0,03-21-25,03-21-25,0,0,LBNL,0%,LBNL_MSSY.LBNL M&S (>$500K) (NO G&A),LBNL M&S (>$500K) (NO G&A),Nonlabor,0.0d,1.0,1.0,At Completion Units,7/26/2024,7/26/2024,0,0,0,0,0,0,0,0,0,0,1.03_Accelerator Systems (AS),1.03.07_AS SXR-HE Undulator (Soft X-Ray) - LBNL,1.03.07.06_AS SXR-HE Undulator Procurement and Fabrication - LBNL,1.03.07.06.07_SXR-HE Magnetic System Production,AS_LBL_PROD_785_RCV: (Undulator Vendor)  Magnetic System Set #15,M&S,,LBNL,M&S
111403,1.03,1.03.07,1.03.07.06,1.03.07.06.07,1.03.07.06.07,SXR-HE Magnetic System Production,AS_LBL_PROD_775,RCV: (SLAC) Magnetic System Set #14,1.0,0.0,0.0,0.0,03-05-25,03-05-25,0,0,LBNL,0%,LBNL_MSSY.LBNL M&S (>$500K) (NO G&A),LBNL M&S (>$500K) (NO G&A),Nonlabor,0.0d,1.0,1.0,At Completion Units,7/10/2024,7/10/2024,0,0,0,0,0,0,0,0,0,0,1.03_Accelerator Systems (AS),1.03.07_AS SXR-HE Undulator (Soft X-Ray) - LBNL,1.03.07.06_AS SXR-HE Undulator Procurement and Fabrication - LBNL,1.03.07.06.07_SXR-HE Magnetic System Production,AS_LBL_PROD_775_RCV: (SLAC) Magnetic System Set #14,M&S,,LBNL,M&S
111404,1.03,1.03.07,1.03.07.06,1.03.07.06.07,1.03.07.06.07,SXR-HE Magnetic System Production,AS_LBL_PROD_765,RCV: (Undulator Vendor)  Magnetic System Set #13,1.0,0.0,0.0,0.0,02-11-25,02-11-25,0,0,LBNL,0%,LBNL_MSSY.LBNL M&S (>$500K) (NO G&A),LBNL M&S (>$500K) (NO G&A),Nonlabor,0.0d,1.0,1.0,At Completion Units,6/18/2024,6/18/2024,0,0,0,0,0,0,0,0,0,0,1.03_Accelerator Systems (AS),1.03.07_AS SXR-HE Undulator (Soft X-Ray) - LBNL,1.03.07.06_AS SXR-HE Undulator Procurement and Fabrication - LBNL,1.03.07.06.07_SXR-HE Magnetic System Production,AS_LBL_PROD_765_RCV: (Undulator Vendor)  Magnetic System Set #13,M&S,,LBNL,M&S
111405,1.03,1.03.07,1.03.07.06,1.03.07.06.07,1.03.07.06.07,SXR-HE Magnetic System Production,AS_LBL_PROD_755,RCV: (SLAC)  Magnetic System Set #12,1.0,0.0,0.0,0.0,01-24-25,01-24-25,0,0,LBNL,0%,LBNL_MSSY.LBNL M&S (>$500K) (NO G&A),LBNL M&S (>$500K) (NO G&A),Nonlabor,0.0d,1.0,1.0,At Completion Units,5/31/2024,5/31/2024,0,0,0,0,0,0,0,0,0,0,1.03_Accelerator Systems (AS),1.03.07_AS SXR-HE Undulator (Soft X-Ray) - LBNL,1.03.07.06_AS SXR-HE Undulator Procurement and Fabrication - LBNL,1.03.07.06.07_SXR-HE Magnetic System Production,AS_LBL_PROD_755_RCV: (SLAC)  Magnetic System Set #12,M&S,,LBNL,M&S
111406,1.03,1.03.07,1.03.07.06,1.03.07.06.07,1.03.07.06.07,SXR-HE Magnetic System Production,AS_LBL_PROD_745,RCV: (Undulator Vendor) Magnetic System Set #11,1.0,0.0,0.0,0.0,12-19-24,12-19-24,0,0,LBNL,0%,LBNL_MSSY.LBNL M&S (>$500K) (NO G&A),LBNL M&S (>$500K) (NO G&A),Nonlabor,0.0d,1.0,1.0,At Completion Units,5/9/2024,5/9/2024,0,0,0,0,0,0,0,0,0,0,1.03_Accelerator Systems (AS),1.03.07_AS SXR-HE Undulator (Soft X-Ray) - LBNL,1.03.07.06_AS SXR-HE Undulator Procurement and Fabrication - LBNL,1.03.07.06.07_SXR-HE Magnetic System Production,AS_LBL_PROD_745_RCV: (Undulator Vendor) Magnetic System Set #11,M&S,,LBNL,M&S
111407,1.03,1.03.07,1.03.07.06,1.03.07.06.07,1.03.07.06.07,SXR-HE Magnetic System Production,AS_LBL_PROD_735,RCV: (SLAC)  Magnetic System Set #10,1.0,0.0,0.0,0.0,12-03-24,12-03-24,0,0,LBNL,0%,LBNL_MSSY.LBNL M&S (>$500K) (NO G&A),LBNL M&S (>$500K) (NO G&A),Nonlabor,0.0d,1.0,1.0,At Completion Units,4/23/2024,4/23/2024,0,0,0,0,0,0,0,0,0,0,1.03_Accelerator Systems (AS),1.03.07_AS SXR-HE Undulator (Soft X-Ray) - LBNL,1.03.07.06_AS SXR-HE Undulator Procurement and Fabrication - LBNL,1.03.07.06.07_SXR-HE Magnetic System Production,AS_LBL_PROD_735_RCV: (SLAC)  Magnetic System Set #10,M&S,,LBNL,M&S
111408,1.03,1.03.07,1.03.07.06,1.03.07.06.07,1.03.07.06.07,SXR-HE Magnetic System Production,AS_LBL_PROD_725,RCV: (Undulator Vendor)  Magnetic System Set #9,1.0,0.0,0.0,0.0,11-08-24,11-08-24,0,0,LBNL,0%,LBNL_MSSY.LBNL M&S (>$500K) (NO G&A),LBNL M&S (>$500K) (NO G&A),Nonlabor,0.0d,1.0,1.0,At Completion Units,4/2/2024,4/2/2024,0,0,0,0,0,0,0,0,0,0,1.03_Accelerator Systems (AS),1.03.07_AS SXR-HE Undulator (Soft X-Ray) - LBNL,1.03.07.06_AS SXR-HE Undulator Procurement and Fabrication - LBNL,1.03.07.06.07_SXR-HE Magnetic System Production,AS_LBL_PROD_725_RCV: (Undulator Vendor)  Magnetic System Set #9,M&S,,LBNL,M&S
111409,1.03,1.03.07,1.03.07.06,1.03.07.06.07,1.03.07.06.07,SXR-HE Magnetic System Production,AS_LBL_PROD_715,RCV: (SLAC)  Magnetic System Set #8,1.0,0.0,0.0,0.0,10-23-24,10-23-24,0,0,LBNL,0%,LBNL_MSSY.LBNL M&S (>$500K) (NO G&A),LBNL M&S (>$500K) (NO G&A),Nonlabor,0.0d,1.0,1.0,At Completion Units,3/15/2024,3/15/2024,0,0,0,0,0,0,0,0,0,0,1.03_Accelerator Systems (AS),1.03.07_AS SXR-HE Undulator (Soft X-Ray) - LBNL,1.03.07.06_AS SXR-HE Undulator Procurement and Fabrication - LBNL,1.03.07.06.07_SXR-HE Magnetic System Production,AS_LBL_PROD_715_RCV: (SLAC)  Magnetic System Set #8,M&S,,LBNL,M&S
111410,1.03,1.03.07,1.03.07.06,1.03.07.06.07,1.03.07.06.07,SXR-HE Magnetic System Production,AS_LBL_PROD_705,RCV: (Undulator Vendor)  Magnetic System Set #7,1.0,0.0,0.0,0.0,10-02-24,10-02-24,0,0,LBNL,0%,LBNL_MSSY.LBNL M&S (>$500K) (NO G&A),LBNL M&S (>$500K) (NO G&A),Nonlabor,0.0d,1.0,1.0,At Completion Units,2/23/2024,2/23/2024,0,0,0,0,0,0,0,0,0,0,1.03_Accelerator Systems (AS),1.03.07_AS SXR-HE Undulator (Soft X-Ray) - LBNL,1.03.07.06_AS SXR-HE Undulator Procurement and Fabrication - LBNL,1.03.07.06.07_SXR-HE Magnetic System Production,AS_LBL_PROD_705_RCV: (Undulator Vendor)  Magnetic System Set #7,M&S,,LBNL,M&S
111411,1.03,1.03.07,1.03.07.06,1.03.07.06.07,1.03.07.06.07,SXR-HE Magnetic System Production,AS_LBL_PROD_695,RCV: (SLAC)  Magnetic System Set #6,1.0,0.0,0.0,0.0,09-16-24,09-16-24,0,0,LBNL,0%,LBNL_MSSY.LBNL M&S (>$500K) (NO G&A),LBNL M&S (>$500K) (NO G&A),Nonlabor,0.0d,1.0,1.0,At Completion Units,2/6/2024,2/6/2024,0,0,0,0,0,0,0,0,0,0,1.03_Accelerator Systems (AS),1.03.07_AS SXR-HE Undulator (Soft X-Ray) - LBNL,1.03.07.06_AS SXR-HE Undulator Procurement and Fabrication - LBNL,1.03.07.06.07_SXR-HE Magnetic System Production,AS_LBL_PROD_695_RCV: (SLAC)  Magnetic System Set #6,M&S,,LBNL,M&S
111412,1.03,1.03.07,1.03.07.06,1.03.07.06.07,1.03.07.06.07,SXR-HE Magnetic System Production,AS_LBL_PROD_685,RCV: (Undulator Vendor)  Magnetic System Set #5,1.0,0.0,0.0,0.0,08-23-24,08-23-24,0,0,LBNL,0%,LBNL_MSSY.LBNL M&S (>$500K) (NO G&A),LBNL M&S (>$500K) (NO G&A),Nonlabor,0.0d,1.0,1.0,At Completion Units,1/16/2024,1/16/2024,0,0,0,0,0,0,0,0,0,0,1.03_Accelerator Systems (AS),1.03.07_AS SXR-HE Undulator (Soft X-Ray) - LBNL,1.03.07.06_AS SXR-HE Undulator Procurement and Fabrication - LBNL,1.03.07.06.07_SXR-HE Magnetic System Production,AS_LBL_PROD_685_RCV: (Undulator Vendor)  Magnetic System Set #5,M&S,,LBNL,M&S
111413,1.03,1.03.07,1.03.07.06,1.03.07.06.07,1.03.07.06.07,SXR-HE Magnetic System Production,AS_LBL_PROD_260,AWARD: Production Magnetic System Sets 21-30,1.0,1384161.0,1384161.0,1384161.0,01-03-24,01-03-24,0,0,LBNL,0%,LBNL_AWARD.LBNL AWARDS,LBNL AWARDS,Nonlabor,0.0d,1.0,1.0,At Completion Units,1/3/2024,1/3/2024,0,0,0,0,0,0,0,0,0,0,1.03_Accelerator Systems (AS),1.03.07_AS SXR-HE Undulator (Soft X-Ray) - LBNL,1.03.07.06_AS SXR-HE Undulator Procurement and Fabrication - LBNL,1.03.07.06.07_SXR-HE Magnetic System Production,AS_LBL_PROD_260_AWARD: Production Magnetic System Sets 21-30,M&S,,LBNL,Labor
111414,1.03,1.03.07,1.03.07.06,1.03.07.06.07,1.03.07.06.07,SXR-HE Magnetic System Production,AS_LBL_PROD_190,AWARD: Production Magnetic System Sets 1-20 & Magnetic Material,1.0,2626200.0,2626200.0,2626200.0,10-02-23,10-02-23,0,0,LBNL,0%,LBNL_AWARD.LBNL AWARDS,LBNL AWARDS,Nonlabor,0.0d,1.0,1.0,At Completion Units,2/22/2023,2/22/2023,0,0,0,0,0,0,0,0,0,0,1.03_Accelerator Systems (AS),1.03.07_AS SXR-HE Undulator (Soft X-Ray) - LBNL,1.03.07.06_AS SXR-HE Undulator Procurement and Fabrication - LBNL,1.03.07.06.07_SXR-HE Magnetic System Production,AS_LBL_PROD_190_AWARD: Production Magnetic System Sets 1-20 & Magnetic Material,M&S,,LBNL,Labor
111415,1.03,1.03.07,1.03.07.06,1.03.07.06.07,1.03.07.06.07,SXR-HE Magnetic System Production,AS_LBL_PROD_930,Vendor Effort: Magnetic System Set #30,11.0,30.0,30.0,30.0,01-21-26,02-04-26,0,0,LBNL,0%,LBNL_E10.4.Mechanical Engineer 4,Mechanical Engineer 4,Labor,0.0d,11.0,11.0,At Completion Units,5/28/2025,6/11/2025,0,0,0,0,0,0,0,0,0,0,1.03_Accelerator Systems (AS),1.03.07_AS SXR-HE Undulator (Soft X-Ray) - LBNL,1.03.07.06_AS SXR-HE Undulator Procurement and Fabrication - LBNL,1.03.07.06.07_SXR-HE Magnetic System Production,AS_LBL_PROD_930_Vendor Effort: Magnetic System Set #30,Mechanical,,SLAC,Labor
111416,1.03,1.03.07,1.03.07.06,1.03.07.06.07,1.03.07.06.07,SXR-HE Magnetic System Production,AS_LBL_PROD_930,Vendor Effort: Magnetic System Set #30,11.0,18.0,18.0,18.0,01-21-26,02-04-26,0,0,LBNL,0%,LBNL_E10.3.Mechanical Engineer 3,Mechanical Engineer 3,Labor,0.0d,11.0,11.0,At Completion Units,5/28/2025,6/11/2025,0,0,0,0,0,0,0,0,0,0,1.03_Accelerator Systems (AS),1.03.07_AS SXR-HE Undulator (Soft X-Ray) - LBNL,1.03.07.06_AS SXR-HE Undulator Procurement and Fabrication - LBNL,1.03.07.06.07_SXR-HE Magnetic System Production,AS_LBL_PROD_930_Vendor Effort: Magnetic System Set #30,Mechanical,,SLAC,Labor
111417,1.03,1.03.07,1.03.07.06,1.03.07.06.07,1.03.07.06.07,SXR-HE Magnetic System Production,AS_LBL_PROD_930,Vendor Effort: Magnetic System Set #30,11.0,14.0,14.0,14.0,01-21-26,02-04-26,0,0,LBNL,0%,LBNL_S36.4.Mechanical Staff Sci/Engr,Mechanical Staff Sci/Engr,Labor,0.0d,11.0,11.0,At Completion Units,5/28/2025,6/11/2025,0,0,0,0,0,0,0,0,0,0,1.03_Accelerator Systems (AS),1.03.07_AS SXR-HE Undulator (Soft X-Ray) - LBNL,1.03.07.06_AS SXR-HE Undulator Procurement and Fabrication - LBNL,1.03.07.06.07_SXR-HE Magnetic System Production,AS_LBL_PROD_930_Vendor Effort: Magnetic System Set #30,Mechanical,,SLAC,Labor
111418,1.03,1.03.07,1.03.07.06,1.03.07.06.07,1.03.07.06.07,SXR-HE Magnetic System Production,AS_LBL_PROD_920,Vendor Effort: Magnetic System Set #29,11.0,30.0,30.0,30.0,12-16-25,01-13-26,0,0,LBNL,0%,LBNL_E10.4.Mechanical Engineer 4,Mechanical Engineer 4,Labor,0.0d,11.0,11.0,At Completion Units,5/6/2025,5/20/2025,0,0,0,0,0,0,0,0,0,0,1.03_Accelerator Systems (AS),1.03.07_AS SXR-HE Undulator (Soft X-Ray) - LBNL,1.03.07.06_AS SXR-HE Undulator Procurement and Fabrication - LBNL,1.03.07.06.07_SXR-HE Magnetic System Production,AS_LBL_PROD_920_Vendor Effort: Magnetic System Set #29,Mechanical,,SLAC,Labor
111419,1.03,1.03.07,1.03.07.06,1.03.07.06.07,1.03.07.06.07,SXR-HE Magnetic System Production,AS_LBL_PROD_920,Vendor Effort: Magnetic System Set #29,11.0,18.0,18.0,18.0,12-16-25,01-13-26,0,0,LBNL,0%,LBNL_E10.3.Mechanical Engineer 3,Mechanical Engineer 3,Labor,0.0d,11.0,11.0,At Completion Units,5/6/2025,5/20/2025,0,0,0,0,0,0,0,0,0,0,1.03_Accelerator Systems (AS),1.03.07_AS SXR-HE Undulator (Soft X-Ray) - LBNL,1.03.07.06_AS SXR-HE Undulator Procurement and Fabrication - LBNL,1.03.07.06.07_SXR-HE Magnetic System Production,AS_LBL_PROD_920_Vendor Effort: Magnetic System Set #29,Mechanical,,SLAC,Labor
111420,1.03,1.03.07,1.03.07.06,1.03.07.06.07,1.03.07.06.07,SXR-HE Magnetic System Production,AS_LBL_PROD_920,Vendor Effort: Magnetic System Set #29,11.0,14.0,14.0,14.0,12-16-25,01-13-26,0,0,LBNL,0%,LBNL_S36.4.Mechanical Staff Sci/Engr,Mechanical Staff Sci/Engr,Labor,0.0d,11.0,11.0,At Completion Units,5/6/2025,5/20/2025,0,0,0,0,0,0,0,0,0,0,1.03_Accelerator Systems (AS),1.03.07_AS SXR-HE Undulator (Soft X-Ray) - LBNL,1.03.07.06_AS SXR-HE Undulator Procurement and Fabrication - LBNL,1.03.07.06.07_SXR-HE Magnetic System Production,AS_LBL_PROD_920_Vendor Effort: Magnetic System Set #29,Mechanical,,SLAC,Labor
111421,1.03,1.03.07,1.03.07.06,1.03.07.06.07,1.03.07.06.07,SXR-HE Magnetic System Production,AS_LBL_PROD_910,Vendor Effort: Magnetic System Set #28,11.0,30.0,30.0,30.0,11-21-25,12-09-25,0,0,LBNL,0%,LBNL_E10.4.Mechanical Engineer 4,Mechanical Engineer 4,Labor,0.0d,11.0,11.0,At Completion Units,4/15/2025,4/29/2025,0,0,0,0,0,0,0,0,0,0,1.03_Accelerator Systems (AS),1.03.07_AS SXR-HE Undulator (Soft X-Ray) - LBNL,1.03.07.06_AS SXR-HE Undulator Procurement and Fabrication - LBNL,1.03.07.06.07_SXR-HE Magnetic System Production,AS_LBL_PROD_910_Vendor Effort: Magnetic System Set #28,Mechanical,,SLAC,Labor
111422,1.03,1.03.07,1.03.07.06,1.03.07.06.07,1.03.07.06.07,SXR-HE Magnetic System Production,AS_LBL_PROD_910,Vendor Effort: Magnetic System Set #28,11.0,18.0,18.0,18.0,11-21-25,12-09-25,0,0,LBNL,0%,LBNL_E10.3.Mechanical Engineer 3,Mechanical Engineer 3,Labor,0.0d,11.0,11.0,At Completion Units,4/15/2025,4/29/2025,0,0,0,0,0,0,0,0,0,0,1.03_Accelerator Systems (AS),1.03.07_AS SXR-HE Undulator (Soft X-Ray) - LBNL,1.03.07.06_AS SXR-HE Undulator Procurement and Fabrication - LBNL,1.03.07.06.07_SXR-HE Magnetic System Production,AS_LBL_PROD_910_Vendor Effort: Magnetic System Set #28,Mechanical,,SLAC,Labor
111423,1.03,1.03.07,1.03.07.06,1.03.07.06.07,1.03.07.06.07,SXR-HE Magnetic System Production,AS_LBL_PROD_910,Vendor Effort: Magnetic System Set #28,11.0,14.0,14.0,14.0,11-21-25,12-09-25,0,0,LBNL,0%,LBNL_S36.4.Mechanical Staff Sci/Engr,Mechanical Staff Sci/Engr,Labor,0.0d,11.0,11.0,At Completion Units,4/15/2025,4/29/2025,0,0,0,0,0,0,0,0,0,0,1.03_Accelerator Systems (AS),1.03.07_AS SXR-HE Undulator (Soft X-Ray) - LBNL,1.03.07.06_AS SXR-HE Undulator Procurement and Fabrication - LBNL,1.03.07.06.07_SXR-HE Magnetic System Production,AS_LBL_PROD_910_Vendor Effort: Magnetic System Set #28,Mechanical,,SLAC,Labor
111424,1.03,1.03.07,1.03.07.06,1.03.07.06.07,1.03.07.06.07,SXR-HE Magnetic System Production,AS_LBL_PROD_900,Vendor Effort: Magnetic System Set #27,11.0,30.0,30.0,30.0,10-31-25,11-14-25,0,0,LBNL,0%,LBNL_E10.4.Mechanical Engineer 4,Mechanical Engineer 4,Labor,0.0d,11.0,11.0,At Completion Units,3/25/2025,4/8/2025,0,0,0,0,0,0,0,0,0,0,1.03_Accelerator Systems (AS),1.03.07_AS SXR-HE Undulator (Soft X-Ray) - LBNL,1.03.07.06_AS SXR-HE Undulator Procurement and Fabrication - LBNL,1.03.07.06.07_SXR-HE Magnetic System Production,AS_LBL_PROD_900_Vendor Effort: Magnetic System Set #27,Mechanical,,SLAC,Labor
111425,1.03,1.03.07,1.03.07.06,1.03.07.06.07,1.03.07.06.07,SXR-HE Magnetic System Production,AS_LBL_PROD_900,Vendor Effort: Magnetic System Set #27,11.0,18.0,18.0,18.0,10-31-25,11-14-25,0,0,LBNL,0%,LBNL_E10.3.Mechanical Engineer 3,Mechanical Engineer 3,Labor,0.0d,11.0,11.0,At Completion Units,3/25/2025,4/8/2025,0,0,0,0,0,0,0,0,0,0,1.03_Accelerator Systems (AS),1.03.07_AS SXR-HE Undulator (Soft X-Ray) - LBNL,1.03.07.06_AS SXR-HE Undulator Procurement and Fabrication - LBNL,1.03.07.06.07_SXR-HE Magnetic System Production,AS_LBL_PROD_900_Vendor Effort: Magnetic System Set #27,Mechanical,,SLAC,Labor
111426,1.03,1.03.07,1.03.07.06,1.03.07.06.07,1.03.07.06.07,SXR-HE Magnetic System Production,AS_LBL_PROD_900,Vendor Effort: Magnetic System Set #27,11.0,14.0,14.0,14.0,10-31-25,11-14-25,0,0,LBNL,0%,LBNL_S36.4.Mechanical Staff Sci/Engr,Mechanical Staff Sci/Engr,Labor,0.0d,11.0,11.0,At Completion Units,3/25/2025,4/8/2025,0,0,0,0,0,0,0,0,0,0,1.03_Accelerator Systems (AS),1.03.07_AS SXR-HE Undulator (Soft X-Ray) - LBNL,1.03.07.06_AS SXR-HE Undulator Procurement and Fabrication - LBNL,1.03.07.06.07_SXR-HE Magnetic System Production,AS_LBL_PROD_900_Vendor Effort: Magnetic System Set #27,Mechanical,,SLAC,Labor
111427,1.03,1.03.07,1.03.07.06,1.03.07.06.07,1.03.07.06.07,SXR-HE Magnetic System Production,AS_LBL_PROD_890,Vendor Effort: Magnetic System Set #26,11.0,30.0,30.0,30.0,10-10-25,10-24-25,0,0,LBNL,0%,LBNL_E10.4.Mechanical Engineer 4,Mechanical Engineer 4,Labor,0.0d,11.0,11.0,At Completion Units,3/4/2025,3/18/2025,0,0,0,0,0,0,0,0,0,0,1.03_Accelerator Systems (AS),1.03.07_AS SXR-HE Undulator (Soft X-Ray) - LBNL,1.03.07.06_AS SXR-HE Undulator Procurement and Fabrication - LBNL,1.03.07.06.07_SXR-HE Magnetic System Production,AS_LBL_PROD_890_Vendor Effort: Magnetic System Set #26,Mechanical,,SLAC,Labor
111428,1.03,1.03.07,1.03.07.06,1.03.07.06.07,1.03.07.06.07,SXR-HE Magnetic System Production,AS_LBL_PROD_890,Vendor Effort: Magnetic System Set #26,11.0,18.0,18.0,18.0,10-10-25,10-24-25,0,0,LBNL,0%,LBNL_E10.3.Mechanical Engineer 3,Mechanical Engineer 3,Labor,0.0d,11.0,11.0,At Completion Units,3/4/2025,3/18/2025,0,0,0,0,0,0,0,0,0,0,1.03_Accelerator Systems (AS),1.03.07_AS SXR-HE Undulator (Soft X-Ray) - LBNL,1.03.07.06_AS SXR-HE Undulator Procurement and Fabrication - LBNL,1.03.07.06.07_SXR-HE Magnetic System Production,AS_LBL_PROD_890_Vendor Effort: Magnetic System Set #26,Mechanical,,SLAC,Labor
111429,1.03,1.03.07,1.03.07.06,1.03.07.06.07,1.03.07.06.07,SXR-HE Magnetic System Production,AS_LBL_PROD_890,Vendor Effort: Magnetic System Set #26,11.0,14.0,14.0,14.0,10-10-25,10-24-25,0,0,LBNL,0%,LBNL_S36.4.Mechanical Staff Sci/Engr,Mechanical Staff Sci/Engr,Labor,0.0d,11.0,11.0,At Completion Units,3/4/2025,3/18/2025,0,0,0,0,0,0,0,0,0,0,1.03_Accelerator Systems (AS),1.03.07_AS SXR-HE Undulator (Soft X-Ray) - LBNL,1.03.07.06_AS SXR-HE Undulator Procurement and Fabrication - LBNL,1.03.07.06.07_SXR-HE Magnetic System Production,AS_LBL_PROD_890_Vendor Effort: Magnetic System Set #26,Mechanical,,SLAC,Labor
111430,1.03,1.03.07,1.03.07.06,1.03.07.06.07,1.03.07.06.07,SXR-HE Magnetic System Production,AS_LBL_PROD_880,Vendor Effort: Magnetic System Set #25,11.0,30.0,30.0,30.0,09-19-25,10-03-25,0,0,LBNL,0%,LBNL_E10.4.Mechanical Engineer 4,Mechanical Engineer 4,Labor,0.0d,11.0,11.0,At Completion Units,2/10/2025,2/25/2025,0,0,0,0,0,0,0,0,0,0,1.03_Accelerator Systems (AS),1.03.07_AS SXR-HE Undulator (Soft X-Ray) - LBNL,1.03.07.06_AS SXR-HE Undulator Procurement and Fabrication - LBNL,1.03.07.06.07_SXR-HE Magnetic System Production,AS_LBL_PROD_880_Vendor Effort: Magnetic System Set #25,Mechanical,,SLAC,Labor
111431,1.03,1.03.07,1.03.07.06,1.03.07.06.07,1.03.07.06.07,SXR-HE Magnetic System Production,AS_LBL_PROD_880,Vendor Effort: Magnetic System Set #25,11.0,18.0,18.0,18.0,09-19-25,10-03-25,0,0,LBNL,0%,LBNL_E10.3.Mechanical Engineer 3,Mechanical Engineer 3,Labor,0.0d,11.0,11.0,At Completion Units,2/10/2025,2/25/2025,0,0,0,0,0,0,0,0,0,0,1.03_Accelerator Systems (AS),1.03.07_AS SXR-HE Undulator (Soft X-Ray) - LBNL,1.03.07.06_AS SXR-HE Undulator Procurement and Fabrication - LBNL,1.03.07.06.07_SXR-HE Magnetic System Production,AS_LBL_PROD_880_Vendor Effort: Magnetic System Set #25,Mechanical,,SLAC,Labor
111432,1.03,1.03.07,1.03.07.06,1.03.07.06.07,1.03.07.06.07,SXR-HE Magnetic System Production,AS_LBL_PROD_880,Vendor Effort: Magnetic System Set #25,11.0,14.0,14.0,14.0,09-19-25,10-03-25,0,0,LBNL,0%,LBNL_S36.4.Mechanical Staff Sci/Engr,Mechanical Staff Sci/Engr,Labor,0.0d,11.0,11.0,At Completion Units,2/10/2025,2/25/2025,0,0,0,0,0,0,0,0,0,0,1.03_Accelerator Systems (AS),1.03.07_AS SXR-HE Undulator (Soft X-Ray) - LBNL,1.03.07.06_AS SXR-HE Undulator Procurement and Fabrication - LBNL,1.03.07.06.07_SXR-HE Magnetic System Production,AS_LBL_PROD_880_Vendor Effort: Magnetic System Set #25,Mechanical,,SLAC,Labor
111433,1.03,1.03.07,1.03.07.06,1.03.07.06.07,1.03.07.06.07,SXR-HE Magnetic System Production,AS_LBL_PROD_870,Vendor Effort: Magnetic System Set #24,11.0,30.0,30.0,30.0,08-28-25,09-12-25,0,0,LBNL,0%,LBNL_E10.4.Mechanical Engineer 4,Mechanical Engineer 4,Labor,0.0d,11.0,11.0,At Completion Units,1/17/2025,2/3/2025,0,0,0,0,0,0,0,0,0,0,1.03_Accelerator Systems (AS),1.03.07_AS SXR-HE Undulator (Soft X-Ray) - LBNL,1.03.07.06_AS SXR-HE Undulator Procurement and Fabrication - LBNL,1.03.07.06.07_SXR-HE Magnetic System Production,AS_LBL_PROD_870_Vendor Effort: Magnetic System Set #24,Mechanical,,SLAC,Labor
111434,1.03,1.03.07,1.03.07.06,1.03.07.06.07,1.03.07.06.07,SXR-HE Magnetic System Production,AS_LBL_PROD_870,Vendor Effort: Magnetic System Set #24,11.0,18.0,18.0,18.0,08-28-25,09-12-25,0,0,LBNL,0%,LBNL_E10.3.Mechanical Engineer 3,Mechanical Engineer 3,Labor,0.0d,11.0,11.0,At Completion Units,1/17/2025,2/3/2025,0,0,0,0,0,0,0,0,0,0,1.03_Accelerator Systems (AS),1.03.07_AS SXR-HE Undulator (Soft X-Ray) - LBNL,1.03.07.06_AS SXR-HE Undulator Procurement and Fabrication - LBNL,1.03.07.06.07_SXR-HE Magnetic System Production,AS_LBL_PROD_870_Vendor Effort: Magnetic System Set #24,Mechanical,,SLAC,Labor
111435,1.03,1.03.07,1.03.07.06,1.03.07.06.07,1.03.07.06.07,SXR-HE Magnetic System Production,AS_LBL_PROD_870,Vendor Effort: Magnetic System Set #24,11.0,14.0,14.0,14.0,08-28-25,09-12-25,0,0,LBNL,0%,LBNL_S36.4.Mechanical Staff Sci/Engr,Mechanical Staff Sci/Engr,Labor,0.0d,11.0,11.0,At Completion Units,1/17/2025,2/3/2025,0,0,0,0,0,0,0,0,0,0,1.03_Accelerator Systems (AS),1.03.07_AS SXR-HE Undulator (Soft X-Ray) - LBNL,1.03.07.06_AS SXR-HE Undulator Procurement and Fabrication - LBNL,1.03.07.06.07_SXR-HE Magnetic System Production,AS_LBL_PROD_870_Vendor Effort: Magnetic System Set #24,Mechanical,,SLAC,Labor
111436,1.03,1.03.07,1.03.07.06,1.03.07.06.07,1.03.07.06.07,SXR-HE Magnetic System Production,AS_LBL_PROD_860,Vendor Effort: Magnetic System Set #23,11.0,30.0,30.0,30.0,08-07-25,08-21-25,0,0,LBNL,0%,LBNL_E10.4.Mechanical Engineer 4,Mechanical Engineer 4,Labor,0.0d,11.0,11.0,At Completion Units,12/13/2024,1/10/2025,0,0,0,0,0,0,0,0,0,0,1.03_Accelerator Systems (AS),1.03.07_AS SXR-HE Undulator (Soft X-Ray) - LBNL,1.03.07.06_AS SXR-HE Undulator Procurement and Fabrication - LBNL,1.03.07.06.07_SXR-HE Magnetic System Production,AS_LBL_PROD_860_Vendor Effort: Magnetic System Set #23,Mechanical,,SLAC,Labor
111437,1.03,1.03.07,1.03.07.06,1.03.07.06.07,1.03.07.06.07,SXR-HE Magnetic System Production,AS_LBL_PROD_860,Vendor Effort: Magnetic System Set #23,11.0,18.0,18.0,18.0,08-07-25,08-21-25,0,0,LBNL,0%,LBNL_E10.3.Mechanical Engineer 3,Mechanical Engineer 3,Labor,0.0d,11.0,11.0,At Completion Units,12/13/2024,1/10/2025,0,0,0,0,0,0,0,0,0,0,1.03_Accelerator Systems (AS),1.03.07_AS SXR-HE Undulator (Soft X-Ray) - LBNL,1.03.07.06_AS SXR-HE Undulator Procurement and Fabrication - LBNL,1.03.07.06.07_SXR-HE Magnetic System Production,AS_LBL_PROD_860_Vendor Effort: Magnetic System Set #23,Mechanical,,SLAC,Labor
111438,1.03,1.03.07,1.03.07.06,1.03.07.06.07,1.03.07.06.07,SXR-HE Magnetic System Production,AS_LBL_PROD_860,Vendor Effort: Magnetic System Set #23,11.0,14.0,14.0,14.0,08-07-25,08-21-25,0,0,LBNL,0%,LBNL_S36.4.Mechanical Staff Sci/Engr,Mechanical Staff Sci/Engr,Labor,0.0d,11.0,11.0,At Completion Units,12/13/2024,1/10/2025,0,0,0,0,0,0,0,0,0,0,1.03_Accelerator Systems (AS),1.03.07_AS SXR-HE Undulator (Soft X-Ray) - LBNL,1.03.07.06_AS SXR-HE Undulator Procurement and Fabrication - LBNL,1.03.07.06.07_SXR-HE Magnetic System Production,AS_LBL_PROD_860_Vendor Effort: Magnetic System Set #23,Mechanical,,SLAC,Labor
111439,1.03,1.03.07,1.03.07.06,1.03.07.06.07,1.03.07.06.07,SXR-HE Magnetic System Production,AS_LBL_PROD_850,Vendor Effort: Magnetic System Set #22,11.0,30.0,30.0,30.0,07-17-25,07-31-25,0,0,LBNL,0%,LBNL_E10.4.Mechanical Engineer 4,Mechanical Engineer 4,Labor,0.0d,11.0,11.0,At Completion Units,11/20/2024,12/6/2024,0,0,0,0,0,0,0,0,0,0,1.03_Accelerator Systems (AS),1.03.07_AS SXR-HE Undulator (Soft X-Ray) - LBNL,1.03.07.06_AS SXR-HE Undulator Procurement and Fabrication - LBNL,1.03.07.06.07_SXR-HE Magnetic System Production,AS_LBL_PROD_850_Vendor Effort: Magnetic System Set #22,Mechanical,,SLAC,Labor
111440,1.03,1.03.07,1.03.07.06,1.03.07.06.07,1.03.07.06.07,SXR-HE Magnetic System Production,AS_LBL_PROD_850,Vendor Effort: Magnetic System Set #22,11.0,18.0,18.0,18.0,07-17-25,07-31-25,0,0,LBNL,0%,LBNL_E10.3.Mechanical Engineer 3,Mechanical Engineer 3,Labor,0.0d,11.0,11.0,At Completion Units,11/20/2024,12/6/2024,0,0,0,0,0,0,0,0,0,0,1.03_Accelerator Systems (AS),1.03.07_AS SXR-HE Undulator (Soft X-Ray) - LBNL,1.03.07.06_AS SXR-HE Undulator Procurement and Fabrication - LBNL,1.03.07.06.07_SXR-HE Magnetic System Production,AS_LBL_PROD_850_Vendor Effort: Magnetic System Set #22,Mechanical,,SLAC,Labor
111441,1.03,1.03.07,1.03.07.06,1.03.07.06.07,1.03.07.06.07,SXR-HE Magnetic System Production,AS_LBL_PROD_850,Vendor Effort: Magnetic System Set #22,11.0,14.0,14.0,14.0,07-17-25,07-31-25,0,0,LBNL,0%,LBNL_S36.4.Mechanical Staff Sci/Engr,Mechanical Staff Sci/Engr,Labor,0.0d,11.0,11.0,At Completion Units,11/20/2024,12/6/2024,0,0,0,0,0,0,0,0,0,0,1.03_Accelerator Systems (AS),1.03.07_AS SXR-HE Undulator (Soft X-Ray) - LBNL,1.03.07.06_AS SXR-HE Undulator Procurement and Fabrication - LBNL,1.03.07.06.07_SXR-HE Magnetic System Production,AS_LBL_PROD_850_Vendor Effort: Magnetic System Set #22,Mechanical,,SLAC,Labor
111442,1.03,1.03.07,1.03.07.06,1.03.07.06.07,1.03.07.06.07,SXR-HE Magnetic System Production,AS_LBL_PROD_840,Vendor Effort: Magnetic System Set #21,11.0,30.0,30.0,30.0,06-30-25,07-15-25,0,0,LBNL,0%,LBNL_E10.4.Mechanical Engineer 4,Mechanical Engineer 4,Labor,0.0d,11.0,11.0,At Completion Units,11/4/2024,11/18/2024,0,0,0,0,0,0,0,0,0,0,1.03_Accelerator Systems (AS),1.03.07_AS SXR-HE Undulator (Soft X-Ray) - LBNL,1.03.07.06_AS SXR-HE Undulator Procurement and Fabrication - LBNL,1.03.07.06.07_SXR-HE Magnetic System Production,AS_LBL_PROD_840_Vendor Effort: Magnetic System Set #21,Mechanical,,SLAC,Labor
111443,1.03,1.03.07,1.03.07.06,1.03.07.06.07,1.03.07.06.07,SXR-HE Magnetic System Production,AS_LBL_PROD_840,Vendor Effort: Magnetic System Set #21,11.0,18.0,18.0,18.0,06-30-25,07-15-25,0,0,LBNL,0%,LBNL_E10.3.Mechanical Engineer 3,Mechanical Engineer 3,Labor,0.0d,11.0,11.0,At Completion Units,11/4/2024,11/18/2024,0,0,0,0,0,0,0,0,0,0,1.03_Accelerator Systems (AS),1.03.07_AS SXR-HE Undulator (Soft X-Ray) - LBNL,1.03.07.06_AS SXR-HE Undulator Procurement and Fabrication - LBNL,1.03.07.06.07_SXR-HE Magnetic System Production,AS_LBL_PROD_840_Vendor Effort: Magnetic System Set #21,Mechanical,,SLAC,Labor
111444,1.03,1.03.07,1.03.07.06,1.03.07.06.07,1.03.07.06.07,SXR-HE Magnetic System Production,AS_LBL_PROD_840,Vendor Effort: Magnetic System Set #21,11.0,14.0,14.0,14.0,06-30-25,07-15-25,0,0,LBNL,0%,LBNL_S36.4.Mechanical Staff Sci/Engr,Mechanical Staff Sci/Engr,Labor,0.0d,11.0,11.0,At Completion Units,11/4/2024,11/18/2024,0,0,0,0,0,0,0,0,0,0,1.03_Accelerator Systems (AS),1.03.07_AS SXR-HE Undulator (Soft X-Ray) - LBNL,1.03.07.06_AS SXR-HE Undulator Procurement and Fabrication - LBNL,1.03.07.06.07_SXR-HE Magnetic System Production,AS_LBL_PROD_840_Vendor Effort: Magnetic System Set #21,Mechanical,,SLAC,Labor
111445,1.03,1.03.07,1.03.07.06,1.03.07.06.07,1.03.07.06.07,SXR-HE Magnetic System Production,AS_LBL_PROD_830,Vendor Effort: Magnetic System Set #20,11.0,30.0,30.0,30.0,06-09-25,06-23-25,0,0,LBNL,0%,LBNL_E10.4.Mechanical Engineer 4,Mechanical Engineer 4,Labor,0.0d,11.0,11.0,At Completion Units,10/14/2024,10/28/2024,0,0,0,0,0,0,0,0,0,0,1.03_Accelerator Systems (AS),1.03.07_AS SXR-HE Undulator (Soft X-Ray) - LBNL,1.03.07.06_AS SXR-HE Undulator Procurement and Fabrication - LBNL,1.03.07.06.07_SXR-HE Magnetic System Production,AS_LBL_PROD_830_Vendor Effort: Magnetic System Set #20,Mechanical,,SLAC,Labor
111446,1.03,1.03.07,1.03.07.06,1.03.07.06.07,1.03.07.06.07,SXR-HE Magnetic System Production,AS_LBL_PROD_830,Vendor Effort: Magnetic System Set #20,11.0,18.0,18.0,18.0,06-09-25,06-23-25,0,0,LBNL,0%,LBNL_E10.3.Mechanical Engineer 3,Mechanical Engineer 3,Labor,0.0d,11.0,11.0,At Completion Units,10/14/2024,10/28/2024,0,0,0,0,0,0,0,0,0,0,1.03_Accelerator Systems (AS),1.03.07_AS SXR-HE Undulator (Soft X-Ray) - LBNL,1.03.07.06_AS SXR-HE Undulator Procurement and Fabrication - LBNL,1.03.07.06.07_SXR-HE Magnetic System Production,AS_LBL_PROD_830_Vendor Effort: Magnetic System Set #20,Mechanical,,SLAC,Labor
111447,1.03,1.03.07,1.03.07.06,1.03.07.06.07,1.03.07.06.07,SXR-HE Magnetic System Production,AS_LBL_PROD_830,Vendor Effort: Magnetic System Set #20,11.0,14.0,14.0,14.0,06-09-25,06-23-25,0,0,LBNL,0%,LBNL_S36.4.Mechanical Staff Sci/Engr,Mechanical Staff Sci/Engr,Labor,0.0d,11.0,11.0,At Completion Units,10/14/2024,10/28/2024,0,0,0,0,0,0,0,0,0,0,1.03_Accelerator Systems (AS),1.03.07_AS SXR-HE Undulator (Soft X-Ray) - LBNL,1.03.07.06_AS SXR-HE Undulator Procurement and Fabrication - LBNL,1.03.07.06.07_SXR-HE Magnetic System Production,AS_LBL_PROD_830_Vendor Effort: Magnetic System Set #20,Mechanical,,SLAC,Labor
111448,1.03,1.03.07,1.03.07.06,1.03.07.06.07,1.03.07.06.07,SXR-HE Magnetic System Production,AS_LBL_PROD_820,Vendor Effort: Magnetic System Set #19,11.0,30.0,30.0,30.0,05-21-25,06-05-25,0,0,LBNL,0%,LBNL_E10.4.Mechanical Engineer 4,Mechanical Engineer 4,Labor,0.0d,11.0,11.0,At Completion Units,9/26/2024,10/10/2024,0,0,0,0,0,0,0,0,0,0,1.03_Accelerator Systems (AS),1.03.07_AS SXR-HE Undulator (Soft X-Ray) - LBNL,1.03.07.06_AS SXR-HE Undulator Procurement and Fabrication - LBNL,1.03.07.06.07_SXR-HE Magnetic System Production,AS_LBL_PROD_820_Vendor Effort: Magnetic System Set #19,Mechanical,,SLAC,Labor
111449,1.03,1.03.07,1.03.07.06,1.03.07.06.07,1.03.07.06.07,SXR-HE Magnetic System Production,AS_LBL_PROD_820,Vendor Effort: Magnetic System Set #19,11.0,18.0,18.0,18.0,05-21-25,06-05-25,0,0,LBNL,0%,LBNL_E10.3.Mechanical Engineer 3,Mechanical Engineer 3,Labor,0.0d,11.0,11.0,At Completion Units,9/26/2024,10/10/2024,0,0,0,0,0,0,0,0,0,0,1.03_Accelerator Systems (AS),1.03.07_AS SXR-HE Undulator (Soft X-Ray) - LBNL,1.03.07.06_AS SXR-HE Undulator Procurement and Fabrication - LBNL,1.03.07.06.07_SXR-HE Magnetic System Production,AS_LBL_PROD_820_Vendor Effort: Magnetic System Set #19,Mechanical,,SLAC,Labor
111450,1.03,1.03.07,1.03.07.06,1.03.07.06.07,1.03.07.06.07,SXR-HE Magnetic System Production,AS_LBL_PROD_820,Vendor Effort: Magnetic System Set #19,11.0,14.0,14.0,14.0,05-21-25,06-05-25,0,0,LBNL,0%,LBNL_S36.4.Mechanical Staff Sci/Engr,Mechanical Staff Sci/Engr,Labor,0.0d,11.0,11.0,At Completion Units,9/26/2024,10/10/2024,0,0,0,0,0,0,0,0,0,0,1.03_Accelerator Systems (AS),1.03.07_AS SXR-HE Undulator (Soft X-Ray) - LBNL,1.03.07.06_AS SXR-HE Undulator Procurement and Fabrication - LBNL,1.03.07.06.07_SXR-HE Magnetic System Production,AS_LBL_PROD_820_Vendor Effort: Magnetic System Set #19,Mechanical,,SLAC,Labor
111451,1.03,1.03.07,1.03.07.06,1.03.07.06.07,1.03.07.06.07,SXR-HE Magnetic System Production,AS_LBL_PROD_810,Vendor Effort: Magnetic System Set #18,11.0,30.0,30.0,30.0,04-30-25,05-14-25,0,0,LBNL,0%,LBNL_E10.4.Mechanical Engineer 4,Mechanical Engineer 4,Labor,0.0d,11.0,11.0,At Completion Units,9/5/2024,9/19/2024,0,0,0,0,0,0,0,0,0,0,1.03_Accelerator Systems (AS),1.03.07_AS SXR-HE Undulator (Soft X-Ray) - LBNL,1.03.07.06_AS SXR-HE Undulator Procurement and Fabrication - LBNL,1.03.07.06.07_SXR-HE Magnetic System Production,AS_LBL_PROD_810_Vendor Effort: Magnetic System Set #18,Mechanical,,SLAC,Labor
111452,1.03,1.03.07,1.03.07.06,1.03.07.06.07,1.03.07.06.07,SXR-HE Magnetic System Production,AS_LBL_PROD_810,Vendor Effort: Magnetic System Set #18,11.0,18.0,18.0,18.0,04-30-25,05-14-25,0,0,LBNL,0%,LBNL_E10.3.Mechanical Engineer 3,Mechanical Engineer 3,Labor,0.0d,11.0,11.0,At Completion Units,9/5/2024,9/19/2024,0,0,0,0,0,0,0,0,0,0,1.03_Accelerator Systems (AS),1.03.07_AS SXR-HE Undulator (Soft X-Ray) - LBNL,1.03.07.06_AS SXR-HE Undulator Procurement and Fabrication - LBNL,1.03.07.06.07_SXR-HE Magnetic System Production,AS_LBL_PROD_810_Vendor Effort: Magnetic System Set #18,Mechanical,,SLAC,Labor
111453,1.03,1.03.07,1.03.07.06,1.03.07.06.07,1.03.07.06.07,SXR-HE Magnetic System Production,AS_LBL_PROD_810,Vendor Effort: Magnetic System Set #18,11.0,14.0,14.0,14.0,04-30-25,05-14-25,0,0,LBNL,0%,LBNL_S36.4.Mechanical Staff Sci/Engr,Mechanical Staff Sci/Engr,Labor,0.0d,11.0,11.0,At Completion Units,9/5/2024,9/19/2024,0,0,0,0,0,0,0,0,0,0,1.03_Accelerator Systems (AS),1.03.07_AS SXR-HE Undulator (Soft X-Ray) - LBNL,1.03.07.06_AS SXR-HE Undulator Procurement and Fabrication - LBNL,1.03.07.06.07_SXR-HE Magnetic System Production,AS_LBL_PROD_810_Vendor Effort: Magnetic System Set #18,Mechanical,,SLAC,Labor
111454,1.03,1.03.07,1.03.07.06,1.03.07.06.07,1.03.07.06.07,SXR-HE Magnetic System Production,AS_LBL_PROD_800,Vendor Effort: Magnetic System Set #17,11.0,30.0,30.0,30.0,04-14-25,04-28-25,0,0,LBNL,0%,LBNL_E10.4.Mechanical Engineer 4,Mechanical Engineer 4,Labor,0.0d,11.0,11.0,At Completion Units,8/19/2024,9/3/2024,0,0,0,0,0,0,0,0,0,0,1.03_Accelerator Systems (AS),1.03.07_AS SXR-HE Undulator (Soft X-Ray) - LBNL,1.03.07.06_AS SXR-HE Undulator Procurement and Fabrication - LBNL,1.03.07.06.07_SXR-HE Magnetic System Production,AS_LBL_PROD_800_Vendor Effort: Magnetic System Set #17,Mechanical,,SLAC,Labor
111455,1.03,1.03.07,1.03.07.06,1.03.07.06.07,1.03.07.06.07,SXR-HE Magnetic System Production,AS_LBL_PROD_800,Vendor Effort: Magnetic System Set #17,11.0,18.0,18.0,18.0,04-14-25,04-28-25,0,0,LBNL,0%,LBNL_E10.3.Mechanical Engineer 3,Mechanical Engineer 3,Labor,0.0d,11.0,11.0,At Completion Units,8/19/2024,9/3/2024,0,0,0,0,0,0,0,0,0,0,1.03_Accelerator Systems (AS),1.03.07_AS SXR-HE Undulator (Soft X-Ray) - LBNL,1.03.07.06_AS SXR-HE Undulator Procurement and Fabrication - LBNL,1.03.07.06.07_SXR-HE Magnetic System Production,AS_LBL_PROD_800_Vendor Effort: Magnetic System Set #17,Mechanical,,SLAC,Labor
111456,1.03,1.03.07,1.03.07.06,1.03.07.06.07,1.03.07.06.07,SXR-HE Magnetic System Production,AS_LBL_PROD_800,Vendor Effort: Magnetic System Set #17,11.0,14.0,14.0,14.0,04-14-25,04-28-25,0,0,LBNL,0%,LBNL_S36.4.Mechanical Staff Sci/Engr,Mechanical Staff Sci/Engr,Labor,0.0d,11.0,11.0,At Completion Units,8/19/2024,9/3/2024,0,0,0,0,0,0,0,0,0,0,1.03_Accelerator Systems (AS),1.03.07_AS SXR-HE Undulator (Soft X-Ray) - LBNL,1.03.07.06_AS SXR-HE Undulator Procurement and Fabrication - LBNL,1.03.07.06.07_SXR-HE Magnetic System Production,AS_LBL_PROD_800_Vendor Effort: Magnetic System Set #17,Mechanical,,SLAC,Labor
111457,1.03,1.03.07,1.03.07.06,1.03.07.06.07,1.03.07.06.07,SXR-HE Magnetic System Production,AS_LBL_PROD_790,Vendor Effort: Magnetic System Set #16,11.0,30.0,30.0,30.0,03-24-25,04-07-25,0,0,LBNL,0%,LBNL_E10.4.Mechanical Engineer 4,Mechanical Engineer 4,Labor,0.0d,11.0,11.0,At Completion Units,7/29/2024,8/12/2024,0,0,0,0,0,0,0,0,0,0,1.03_Accelerator Systems (AS),1.03.07_AS SXR-HE Undulator (Soft X-Ray) - LBNL,1.03.07.06_AS SXR-HE Undulator Procurement and Fabrication - LBNL,1.03.07.06.07_SXR-HE Magnetic System Production,AS_LBL_PROD_790_Vendor Effort: Magnetic System Set #16,Mechanical,,SLAC,Labor
111458,1.03,1.03.07,1.03.07.06,1.03.07.06.07,1.03.07.06.07,SXR-HE Magnetic System Production,AS_LBL_PROD_790,Vendor Effort: Magnetic System Set #16,11.0,18.0,18.0,18.0,03-24-25,04-07-25,0,0,LBNL,0%,LBNL_E10.3.Mechanical Engineer 3,Mechanical Engineer 3,Labor,0.0d,11.0,11.0,At Completion Units,7/29/2024,8/12/2024,0,0,0,0,0,0,0,0,0,0,1.03_Accelerator Systems (AS),1.03.07_AS SXR-HE Undulator (Soft X-Ray) - LBNL,1.03.07.06_AS SXR-HE Undulator Procurement and Fabrication - LBNL,1.03.07.06.07_SXR-HE Magnetic System Production,AS_LBL_PROD_790_Vendor Effort: Magnetic System Set #16,Mechanical,,SLAC,Labor
111459,1.03,1.03.07,1.03.07.06,1.03.07.06.07,1.03.07.06.07,SXR-HE Magnetic System Production,AS_LBL_PROD_790,Vendor Effort: Magnetic System Set #16,11.0,14.0,14.0,14.0,03-24-25,04-07-25,0,0,LBNL,0%,LBNL_S36.4.Mechanical Staff Sci/Engr,Mechanical Staff Sci/Engr,Labor,0.0d,11.0,11.0,At Completion Units,7/29/2024,8/12/2024,0,0,0,0,0,0,0,0,0,0,1.03_Accelerator Systems (AS),1.03.07_AS SXR-HE Undulator (Soft X-Ray) - LBNL,1.03.07.06_AS SXR-HE Undulator Procurement and Fabrication - LBNL,1.03.07.06.07_SXR-HE Magnetic System Production,AS_LBL_PROD_790_Vendor Effort: Magnetic System Set #16,Mechanical,,SLAC,Labor
111460,1.03,1.03.07,1.03.07.06,1.03.07.06.07,1.03.07.06.07,SXR-HE Magnetic System Production,AS_LBL_PROD_780,Vendor Effort: Magnetic System Set #15,11.0,30.0,30.0,30.0,03-06-25,03-20-25,0,0,LBNL,0%,LBNL_E10.4.Mechanical Engineer 4,Mechanical Engineer 4,Labor,0.0d,11.0,11.0,At Completion Units,7/11/2024,7/25/2024,0,0,0,0,0,0,0,0,0,0,1.03_Accelerator Systems (AS),1.03.07_AS SXR-HE Undulator (Soft X-Ray) - LBNL,1.03.07.06_AS SXR-HE Undulator Procurement and Fabrication - LBNL,1.03.07.06.07_SXR-HE Magnetic System Production,AS_LBL_PROD_780_Vendor Effort: Magnetic System Set #15,Mechanical,,SLAC,Labor
111461,1.03,1.03.07,1.03.07.06,1.03.07.06.07,1.03.07.06.07,SXR-HE Magnetic System Production,AS_LBL_PROD_780,Vendor Effort: Magnetic System Set #15,11.0,18.0,18.0,18.0,03-06-25,03-20-25,0,0,LBNL,0%,LBNL_E10.3.Mechanical Engineer 3,Mechanical Engineer 3,Labor,0.0d,11.0,11.0,At Completion Units,7/11/2024,7/25/2024,0,0,0,0,0,0,0,0,0,0,1.03_Accelerator Systems (AS),1.03.07_AS SXR-HE Undulator (Soft X-Ray) - LBNL,1.03.07.06_AS SXR-HE Undulator Procurement and Fabrication - LBNL,1.03.07.06.07_SXR-HE Magnetic System Production,AS_LBL_PROD_780_Vendor Effort: Magnetic System Set #15,Mechanical,,SLAC,Labor
111462,1.03,1.03.07,1.03.07.06,1.03.07.06.07,1.03.07.06.07,SXR-HE Magnetic System Production,AS_LBL_PROD_780,Vendor Effort: Magnetic System Set #15,11.0,14.0,14.0,14.0,03-06-25,03-20-25,0,0,LBNL,0%,LBNL_S36.4.Mechanical Staff Sci/Engr,Mechanical Staff Sci/Engr,Labor,0.0d,11.0,11.0,At Completion Units,7/11/2024,7/25/2024,0,0,0,0,0,0,0,0,0,0,1.03_Accelerator Systems (AS),1.03.07_AS SXR-HE Undulator (Soft X-Ray) - LBNL,1.03.07.06_AS SXR-HE Undulator Procurement and Fabrication - LBNL,1.03.07.06.07_SXR-HE Magnetic System Production,AS_LBL_PROD_780_Vendor Effort: Magnetic System Set #15,Mechanical,,SLAC,Labor
111463,1.03,1.03.07,1.03.07.06,1.03.07.06.07,1.03.07.06.07,SXR-HE Magnetic System Production,AS_LBL_PROD_770,Vendor Effort: Magnetic System Set #14,11.0,30.0,30.0,30.0,02-12-25,02-27-25,0,0,LBNL,0%,LBNL_E10.4.Mechanical Engineer 4,Mechanical Engineer 4,Labor,0.0d,11.0,11.0,At Completion Units,6/19/2024,7/3/2024,0,0,0,0,0,0,0,0,0,0,1.03_Accelerator Systems (AS),1.03.07_AS SXR-HE Undulator (Soft X-Ray) - LBNL,1.03.07.06_AS SXR-HE Undulator Procurement and Fabrication - LBNL,1.03.07.06.07_SXR-HE Magnetic System Production,AS_LBL_PROD_770_Vendor Effort: Magnetic System Set #14,Mechanical,,SLAC,Labor
111464,1.03,1.03.07,1.03.07.06,1.03.07.06.07,1.03.07.06.07,SXR-HE Magnetic System Production,AS_LBL_PROD_770,Vendor Effort: Magnetic System Set #14,11.0,18.0,18.0,18.0,02-12-25,02-27-25,0,0,LBNL,0%,LBNL_E10.3.Mechanical Engineer 3,Mechanical Engineer 3,Labor,0.0d,11.0,11.0,At Completion Units,6/19/2024,7/3/2024,0,0,0,0,0,0,0,0,0,0,1.03_Accelerator Systems (AS),1.03.07_AS SXR-HE Undulator (Soft X-Ray) - LBNL,1.03.07.06_AS SXR-HE Undulator Procurement and Fabrication - LBNL,1.03.07.06.07_SXR-HE Magnetic System Production,AS_LBL_PROD_770_Vendor Effort: Magnetic System Set #14,Mechanical,,SLAC,Labor
111465,1.03,1.03.07,1.03.07.06,1.03.07.06.07,1.03.07.06.07,SXR-HE Magnetic System Production,AS_LBL_PROD_770,Vendor Effort: Magnetic System Set #14,11.0,14.0,14.0,14.0,02-12-25,02-27-25,0,0,LBNL,0%,LBNL_S36.4.Mechanical Staff Sci/Engr,Mechanical Staff Sci/Engr,Labor,0.0d,11.0,11.0,At Completion Units,6/19/2024,7/3/2024,0,0,0,0,0,0,0,0,0,0,1.03_Accelerator Systems (AS),1.03.07_AS SXR-HE Undulator (Soft X-Ray) - LBNL,1.03.07.06_AS SXR-HE Undulator Procurement and Fabrication - LBNL,1.03.07.06.07_SXR-HE Magnetic System Production,AS_LBL_PROD_770_Vendor Effort: Magnetic System Set #14,Mechanical,,SLAC,Labor
111466,1.03,1.03.07,1.03.07.06,1.03.07.06.07,1.03.07.06.07,SXR-HE Magnetic System Production,AS_LBL_PROD_760,Vendor Effort: Magnetic System Set #13,11.0,30.0,30.0,30.0,01-27-25,02-10-25,0,0,LBNL,0%,LBNL_E10.4.Mechanical Engineer 4,Mechanical Engineer 4,Labor,0.0d,11.0,11.0,At Completion Units,6/3/2024,6/17/2024,0,0,0,0,0,0,0,0,0,0,1.03_Accelerator Systems (AS),1.03.07_AS SXR-HE Undulator (Soft X-Ray) - LBNL,1.03.07.06_AS SXR-HE Undulator Procurement and Fabrication - LBNL,1.03.07.06.07_SXR-HE Magnetic System Production,AS_LBL_PROD_760_Vendor Effort: Magnetic System Set #13,Mechanical,,SLAC,Labor
111467,1.03,1.03.07,1.03.07.06,1.03.07.06.07,1.03.07.06.07,SXR-HE Magnetic System Production,AS_LBL_PROD_760,Vendor Effort: Magnetic System Set #13,11.0,18.0,18.0,18.0,01-27-25,02-10-25,0,0,LBNL,0%,LBNL_E10.3.Mechanical Engineer 3,Mechanical Engineer 3,Labor,0.0d,11.0,11.0,At Completion Units,6/3/2024,6/17/2024,0,0,0,0,0,0,0,0,0,0,1.03_Accelerator Systems (AS),1.03.07_AS SXR-HE Undulator (Soft X-Ray) - LBNL,1.03.07.06_AS SXR-HE Undulator Procurement and Fabrication - LBNL,1.03.07.06.07_SXR-HE Magnetic System Production,AS_LBL_PROD_760_Vendor Effort: Magnetic System Set #13,Mechanical,,SLAC,Labor
111468,1.03,1.03.07,1.03.07.06,1.03.07.06.07,1.03.07.06.07,SXR-HE Magnetic System Production,AS_LBL_PROD_760,Vendor Effort: Magnetic System Set #13,11.0,14.0,14.0,14.0,01-27-25,02-10-25,0,0,LBNL,0%,LBNL_S36.4.Mechanical Staff Sci/Engr,Mechanical Staff Sci/Engr,Labor,0.0d,11.0,11.0,At Completion Units,6/3/2024,6/17/2024,0,0,0,0,0,0,0,0,0,0,1.03_Accelerator Systems (AS),1.03.07_AS SXR-HE Undulator (Soft X-Ray) - LBNL,1.03.07.06_AS SXR-HE Undulator Procurement and Fabrication - LBNL,1.03.07.06.07_SXR-HE Magnetic System Production,AS_LBL_PROD_760_Vendor Effort: Magnetic System Set #13,Mechanical,,SLAC,Labor
111469,1.03,1.03.07,1.03.07.06,1.03.07.06.07,1.03.07.06.07,SXR-HE Magnetic System Production,AS_LBL_PROD_750,Vendor Effort: Magnetic System Set #12,11.0,30.0,30.0,30.0,12-20-24,01-17-25,0,0,LBNL,0%,LBNL_E10.4.Mechanical Engineer 4,Mechanical Engineer 4,Labor,0.0d,11.0,11.0,At Completion Units,5/10/2024,5/24/2024,0,0,0,0,0,0,0,0,0,0,1.03_Accelerator Systems (AS),1.03.07_AS SXR-HE Undulator (Soft X-Ray) - LBNL,1.03.07.06_AS SXR-HE Undulator Procurement and Fabrication - LBNL,1.03.07.06.07_SXR-HE Magnetic System Production,AS_LBL_PROD_750_Vendor Effort: Magnetic System Set #12,Mechanical,,SLAC,Labor
111470,1.03,1.03.07,1.03.07.06,1.03.07.06.07,1.03.07.06.07,SXR-HE Magnetic System Production,AS_LBL_PROD_750,Vendor Effort: Magnetic System Set #12,11.0,18.0,18.0,18.0,12-20-24,01-17-25,0,0,LBNL,0%,LBNL_E10.3.Mechanical Engineer 3,Mechanical Engineer 3,Labor,0.0d,11.0,11.0,At Completion Units,5/10/2024,5/24/2024,0,0,0,0,0,0,0,0,0,0,1.03_Accelerator Systems (AS),1.03.07_AS SXR-HE Undulator (Soft X-Ray) - LBNL,1.03.07.06_AS SXR-HE Undulator Procurement and Fabrication - LBNL,1.03.07.06.07_SXR-HE Magnetic System Production,AS_LBL_PROD_750_Vendor Effort: Magnetic System Set #12,Mechanical,,SLAC,Labor
111471,1.03,1.03.07,1.03.07.06,1.03.07.06.07,1.03.07.06.07,SXR-HE Magnetic System Production,AS_LBL_PROD_750,Vendor Effort: Magnetic System Set #12,11.0,14.0,14.0,14.0,12-20-24,01-17-25,0,0,LBNL,0%,LBNL_S36.4.Mechanical Staff Sci/Engr,Mechanical Staff Sci/Engr,Labor,0.0d,11.0,11.0,At Completion Units,5/10/2024,5/24/2024,0,0,0,0,0,0,0,0,0,0,1.03_Accelerator Systems (AS),1.03.07_AS SXR-HE Undulator (Soft X-Ray) - LBNL,1.03.07.06_AS SXR-HE Undulator Procurement and Fabrication - LBNL,1.03.07.06.07_SXR-HE Magnetic System Production,AS_LBL_PROD_750_Vendor Effort: Magnetic System Set #12,Mechanical,,SLAC,Labor
111472,1.03,1.03.07,1.03.07.06,1.03.07.06.07,1.03.07.06.07,SXR-HE Magnetic System Production,AS_LBL_PROD_740,Vendor Effort: Magnetic System Set #11,11.0,30.0,30.0,30.0,12-04-24,12-18-24,0,0,LBNL,0%,LBNL_E10.4.Mechanical Engineer 4,Mechanical Engineer 4,Labor,0.0d,11.0,11.0,At Completion Units,4/24/2024,5/8/2024,0,0,0,0,0,0,0,0,0,0,1.03_Accelerator Systems (AS),1.03.07_AS SXR-HE Undulator (Soft X-Ray) - LBNL,1.03.07.06_AS SXR-HE Undulator Procurement and Fabrication - LBNL,1.03.07.06.07_SXR-HE Magnetic System Production,AS_LBL_PROD_740_Vendor Effort: Magnetic System Set #11,Mechanical,,SLAC,Labor
111473,1.03,1.03.07,1.03.07.06,1.03.07.06.07,1.03.07.06.07,SXR-HE Magnetic System Production,AS_LBL_PROD_740,Vendor Effort: Magnetic System Set #11,11.0,18.0,18.0,18.0,12-04-24,12-18-24,0,0,LBNL,0%,LBNL_E10.3.Mechanical Engineer 3,Mechanical Engineer 3,Labor,0.0d,11.0,11.0,At Completion Units,4/24/2024,5/8/2024,0,0,0,0,0,0,0,0,0,0,1.03_Accelerator Systems (AS),1.03.07_AS SXR-HE Undulator (Soft X-Ray) - LBNL,1.03.07.06_AS SXR-HE Undulator Procurement and Fabrication - LBNL,1.03.07.06.07_SXR-HE Magnetic System Production,AS_LBL_PROD_740_Vendor Effort: Magnetic System Set #11,Mechanical,,SLAC,Labor
111474,1.03,1.03.07,1.03.07.06,1.03.07.06.07,1.03.07.06.07,SXR-HE Magnetic System Production,AS_LBL_PROD_740,Vendor Effort: Magnetic System Set #11,11.0,14.0,14.0,14.0,12-04-24,12-18-24,0,0,LBNL,0%,LBNL_S36.4.Mechanical Staff Sci/Engr,Mechanical Staff Sci/Engr,Labor,0.0d,11.0,11.0,At Completion Units,4/24/2024,5/8/2024,0,0,0,0,0,0,0,0,0,0,1.03_Accelerator Systems (AS),1.03.07_AS SXR-HE Undulator (Soft X-Ray) - LBNL,1.03.07.06_AS SXR-HE Undulator Procurement and Fabrication - LBNL,1.03.07.06.07_SXR-HE Magnetic System Production,AS_LBL_PROD_740_Vendor Effort: Magnetic System Set #11,Mechanical,,SLAC,Labor
111475,1.03,1.03.07,1.03.07.06,1.03.07.06.07,1.03.07.06.07,SXR-HE Magnetic System Production,AS_LBL_PROD_730,Vendor Effort: Magnetic System Set #10,11.0,30.0,30.0,30.0,11-11-24,11-25-24,0,0,LBNL,0%,LBNL_E10.4.Mechanical Engineer 4,Mechanical Engineer 4,Labor,0.0d,11.0,11.0,At Completion Units,4/3/2024,4/17/2024,0,0,0,0,0,0,0,0,0,0,1.03_Accelerator Systems (AS),1.03.07_AS SXR-HE Undulator (Soft X-Ray) - LBNL,1.03.07.06_AS SXR-HE Undulator Procurement and Fabrication - LBNL,1.03.07.06.07_SXR-HE Magnetic System Production,AS_LBL_PROD_730_Vendor Effort: Magnetic System Set #10,Mechanical,,SLAC,Labor
111476,1.03,1.03.07,1.03.07.06,1.03.07.06.07,1.03.07.06.07,SXR-HE Magnetic System Production,AS_LBL_PROD_730,Vendor Effort: Magnetic System Set #10,11.0,18.0,18.0,18.0,11-11-24,11-25-24,0,0,LBNL,0%,LBNL_E10.3.Mechanical Engineer 3,Mechanical Engineer 3,Labor,0.0d,11.0,11.0,At Completion Units,4/3/2024,4/17/2024,0,0,0,0,0,0,0,0,0,0,1.03_Accelerator Systems (AS),1.03.07_AS SXR-HE Undulator (Soft X-Ray) - LBNL,1.03.07.06_AS SXR-HE Undulator Procurement and Fabrication - LBNL,1.03.07.06.07_SXR-HE Magnetic System Production,AS_LBL_PROD_730_Vendor Effort: Magnetic System Set #10,Mechanical,,SLAC,Labor
111477,1.03,1.03.07,1.03.07.06,1.03.07.06.07,1.03.07.06.07,SXR-HE Magnetic System Production,AS_LBL_PROD_730,Vendor Effort: Magnetic System Set #10,11.0,14.0,14.0,14.0,11-11-24,11-25-24,0,0,LBNL,0%,LBNL_S36.4.Mechanical Staff Sci/Engr,Mechanical Staff Sci/Engr,Labor,0.0d,11.0,11.0,At Completion Units,4/3/2024,4/17/2024,0,0,0,0,0,0,0,0,0,0,1.03_Accelerator Systems (AS),1.03.07_AS SXR-HE Undulator (Soft X-Ray) - LBNL,1.03.07.06_AS SXR-HE Undulator Procurement and Fabrication - LBNL,1.03.07.06.07_SXR-HE Magnetic System Production,AS_LBL_PROD_730_Vendor Effort: Magnetic System Set #10,Mechanical,,SLAC,Labor
111478,1.03,1.03.07,1.03.07.06,1.03.07.06.07,1.03.07.06.07,SXR-HE Magnetic System Production,AS_LBL_PROD_720,Vendor Effort: Magnetic System Set #9,11.0,30.0,30.0,30.0,10-24-24,11-07-24,0,0,LBNL,0%,LBNL_E10.4.Mechanical Engineer 4,Mechanical Engineer 4,Labor,0.0d,11.0,11.0,At Completion Units,3/18/2024,4/1/2024,0,0,0,0,0,0,0,0,0,0,1.03_Accelerator Systems (AS),1.03.07_AS SXR-HE Undulator (Soft X-Ray) - LBNL,1.03.07.06_AS SXR-HE Undulator Procurement and Fabrication - LBNL,1.03.07.06.07_SXR-HE Magnetic System Production,AS_LBL_PROD_720_Vendor Effort: Magnetic System Set #9,Mechanical,,SLAC,Labor
111479,1.03,1.03.07,1.03.07.06,1.03.07.06.07,1.03.07.06.07,SXR-HE Magnetic System Production,AS_LBL_PROD_720,Vendor Effort: Magnetic System Set #9,11.0,18.0,18.0,18.0,10-24-24,11-07-24,0,0,LBNL,0%,LBNL_E10.3.Mechanical Engineer 3,Mechanical Engineer 3,Labor,0.0d,11.0,11.0,At Completion Units,3/18/2024,4/1/2024,0,0,0,0,0,0,0,0,0,0,1.03_Accelerator Systems (AS),1.03.07_AS SXR-HE Undulator (Soft X-Ray) - LBNL,1.03.07.06_AS SXR-HE Undulator Procurement and Fabrication - LBNL,1.03.07.06.07_SXR-HE Magnetic System Production,AS_LBL_PROD_720_Vendor Effort: Magnetic System Set #9,Mechanical,,SLAC,Labor
111480,1.03,1.03.07,1.03.07.06,1.03.07.06.07,1.03.07.06.07,SXR-HE Magnetic System Production,AS_LBL_PROD_720,Vendor Effort: Magnetic System Set #9,11.0,14.0,14.0,14.0,10-24-24,11-07-24,0,0,LBNL,0%,LBNL_S36.4.Mechanical Staff Sci/Engr,Mechanical Staff Sci/Engr,Labor,0.0d,11.0,11.0,At Completion Units,3/18/2024,4/1/2024,0,0,0,0,0,0,0,0,0,0,1.03_Accelerator Systems (AS),1.03.07_AS SXR-HE Undulator (Soft X-Ray) - LBNL,1.03.07.06_AS SXR-HE Undulator Procurement and Fabrication - LBNL,1.03.07.06.07_SXR-HE Magnetic System Production,AS_LBL_PROD_720_Vendor Effort: Magnetic System Set #9,Mechanical,,SLAC,Labor
111481,1.03,1.03.07,1.03.07.06,1.03.07.06.07,1.03.07.06.07,SXR-HE Magnetic System Production,AS_LBL_PROD_710,Vendor Effort: Magnetic System Set #8,11.0,30.0,30.0,30.0,10-03-24,10-17-24,0,0,LBNL,0%,LBNL_E10.4.Mechanical Engineer 4,Mechanical Engineer 4,Labor,0.0d,11.0,11.0,At Completion Units,2/26/2024,3/11/2024,0,0,0,0,0,0,0,0,0,0,1.03_Accelerator Systems (AS),1.03.07_AS SXR-HE Undulator (Soft X-Ray) - LBNL,1.03.07.06_AS SXR-HE Undulator Procurement and Fabrication - LBNL,1.03.07.06.07_SXR-HE Magnetic System Production,AS_LBL_PROD_710_Vendor Effort: Magnetic System Set #8,Mechanical,,SLAC,Labor
111482,1.03,1.03.07,1.03.07.06,1.03.07.06.07,1.03.07.06.07,SXR-HE Magnetic System Production,AS_LBL_PROD_710,Vendor Effort: Magnetic System Set #8,11.0,18.0,18.0,18.0,10-03-24,10-17-24,0,0,LBNL,0%,LBNL_E10.3.Mechanical Engineer 3,Mechanical Engineer 3,Labor,0.0d,11.0,11.0,At Completion Units,2/26/2024,3/11/2024,0,0,0,0,0,0,0,0,0,0,1.03_Accelerator Systems (AS),1.03.07_AS SXR-HE Undulator (Soft X-Ray) - LBNL,1.03.07.06_AS SXR-HE Undulator Procurement and Fabrication - LBNL,1.03.07.06.07_SXR-HE Magnetic System Production,AS_LBL_PROD_710_Vendor Effort: Magnetic System Set #8,Mechanical,,SLAC,Labor
111483,1.03,1.03.07,1.03.07.06,1.03.07.06.07,1.03.07.06.07,SXR-HE Magnetic System Production,AS_LBL_PROD_710,Vendor Effort: Magnetic System Set #8,11.0,14.0,14.0,14.0,10-03-24,10-17-24,0,0,LBNL,0%,LBNL_S36.4.Mechanical Staff Sci/Engr,Mechanical Staff Sci/Engr,Labor,0.0d,11.0,11.0,At Completion Units,2/26/2024,3/11/2024,0,0,0,0,0,0,0,0,0,0,1.03_Accelerator Systems (AS),1.03.07_AS SXR-HE Undulator (Soft X-Ray) - LBNL,1.03.07.06_AS SXR-HE Undulator Procurement and Fabrication - LBNL,1.03.07.06.07_SXR-HE Magnetic System Production,AS_LBL_PROD_710_Vendor Effort: Magnetic System Set #8,Mechanical,,SLAC,Labor
111484,1.03,1.03.07,1.03.07.06,1.03.07.06.07,1.03.07.06.07,SXR-HE Magnetic System Production,AS_LBL_PROD_700,Vendor Effort: Magnetic System Set #7,11.0,30.0,30.0,30.0,09-17-24,10-01-24,0,0,LBNL,0%,LBNL_E10.4.Mechanical Engineer 4,Mechanical Engineer 4,Labor,0.0d,11.0,11.0,At Completion Units,2/7/2024,2/22/2024,0,0,0,0,0,0,0,0,0,0,1.03_Accelerator Systems (AS),1.03.07_AS SXR-HE Undulator (Soft X-Ray) - LBNL,1.03.07.06_AS SXR-HE Undulator Procurement and Fabrication - LBNL,1.03.07.06.07_SXR-HE Magnetic System Production,AS_LBL_PROD_700_Vendor Effort: Magnetic System Set #7,Mechanical,,SLAC,Labor
111485,1.03,1.03.07,1.03.07.06,1.03.07.06.07,1.03.07.06.07,SXR-HE Magnetic System Production,AS_LBL_PROD_700,Vendor Effort: Magnetic System Set #7,11.0,18.0,18.0,18.0,09-17-24,10-01-24,0,0,LBNL,0%,LBNL_E10.3.Mechanical Engineer 3,Mechanical Engineer 3,Labor,0.0d,11.0,11.0,At Completion Units,2/7/2024,2/22/2024,0,0,0,0,0,0,0,0,0,0,1.03_Accelerator Systems (AS),1.03.07_AS SXR-HE Undulator (Soft X-Ray) - LBNL,1.03.07.06_AS SXR-HE Undulator Procurement and Fabrication - LBNL,1.03.07.06.07_SXR-HE Magnetic System Production,AS_LBL_PROD_700_Vendor Effort: Magnetic System Set #7,Mechanical,,SLAC,Labor
111486,1.03,1.03.07,1.03.07.06,1.03.07.06.07,1.03.07.06.07,SXR-HE Magnetic System Production,AS_LBL_PROD_700,Vendor Effort: Magnetic System Set #7,11.0,14.0,14.0,14.0,09-17-24,10-01-24,0,0,LBNL,0%,LBNL_S36.4.Mechanical Staff Sci/Engr,Mechanical Staff Sci/Engr,Labor,0.0d,11.0,11.0,At Completion Units,2/7/2024,2/22/2024,0,0,0,0,0,0,0,0,0,0,1.03_Accelerator Systems (AS),1.03.07_AS SXR-HE Undulator (Soft X-Ray) - LBNL,1.03.07.06_AS SXR-HE Undulator Procurement and Fabrication - LBNL,1.03.07.06.07_SXR-HE Magnetic System Production,AS_LBL_PROD_700_Vendor Effort: Magnetic System Set #7,Mechanical,,SLAC,Labor
111487,1.03,1.03.07,1.03.07.06,1.03.07.06.07,1.03.07.06.07,SXR-HE Magnetic System Production,AS_LBL_PROD_690,Vendor Effort: Magnetic System Set #6,11.0,30.0,30.0,30.0,08-26-24,09-10-24,0,0,LBNL,0%,LBNL_E10.4.Mechanical Engineer 4,Mechanical Engineer 4,Labor,0.0d,11.0,11.0,At Completion Units,1/17/2024,1/31/2024,0,0,0,0,0,0,0,0,0,0,1.03_Accelerator Systems (AS),1.03.07_AS SXR-HE Undulator (Soft X-Ray) - LBNL,1.03.07.06_AS SXR-HE Undulator Procurement and Fabrication - LBNL,1.03.07.06.07_SXR-HE Magnetic System Production,AS_LBL_PROD_690_Vendor Effort: Magnetic System Set #6,Mechanical,,SLAC,Labor
111488,1.03,1.03.07,1.03.07.06,1.03.07.06.07,1.03.07.06.07,SXR-HE Magnetic System Production,AS_LBL_PROD_690,Vendor Effort: Magnetic System Set #6,11.0,18.0,18.0,18.0,08-26-24,09-10-24,0,0,LBNL,0%,LBNL_E10.3.Mechanical Engineer 3,Mechanical Engineer 3,Labor,0.0d,11.0,11.0,At Completion Units,1/17/2024,1/31/2024,0,0,0,0,0,0,0,0,0,0,1.03_Accelerator Systems (AS),1.03.07_AS SXR-HE Undulator (Soft X-Ray) - LBNL,1.03.07.06_AS SXR-HE Undulator Procurement and Fabrication - LBNL,1.03.07.06.07_SXR-HE Magnetic System Production,AS_LBL_PROD_690_Vendor Effort: Magnetic System Set #6,Mechanical,,SLAC,Labor
111489,1.03,1.03.07,1.03.07.06,1.03.07.06.07,1.03.07.06.07,SXR-HE Magnetic System Production,AS_LBL_PROD_690,Vendor Effort: Magnetic System Set #6,11.0,14.0,14.0,14.0,08-26-24,09-10-24,0,0,LBNL,0%,LBNL_S36.4.Mechanical Staff Sci/Engr,Mechanical Staff Sci/Engr,Labor,0.0d,11.0,11.0,At Completion Units,1/17/2024,1/31/2024,0,0,0,0,0,0,0,0,0,0,1.03_Accelerator Systems (AS),1.03.07_AS SXR-HE Undulator (Soft X-Ray) - LBNL,1.03.07.06_AS SXR-HE Undulator Procurement and Fabrication - LBNL,1.03.07.06.07_SXR-HE Magnetic System Production,AS_LBL_PROD_690_Vendor Effort: Magnetic System Set #6,Mechanical,,SLAC,Labor
111490,1.03,1.03.07,1.03.07.06,1.03.07.06.07,1.03.07.06.07,SXR-HE Magnetic System Production,AS_LBL_PROD_680,Vendor Effort: Magnetic System Set #5,11.0,30.0,30.0,30.0,08-08-24,08-22-24,0,0,LBNL,0%,LBNL_E10.4.Mechanical Engineer 4,Mechanical Engineer 4,Labor,0.0d,11.0,11.0,At Completion Units,12/14/2023,1/12/2024,0,0,0,0,0,0,0,0,0,0,1.03_Accelerator Systems (AS),1.03.07_AS SXR-HE Undulator (Soft X-Ray) - LBNL,1.03.07.06_AS SXR-HE Undulator Procurement and Fabrication - LBNL,1.03.07.06.07_SXR-HE Magnetic System Production,AS_LBL_PROD_680_Vendor Effort: Magnetic System Set #5,Mechanical,,SLAC,Labor
111491,1.03,1.03.07,1.03.07.06,1.03.07.06.07,1.03.07.06.07,SXR-HE Magnetic System Production,AS_LBL_PROD_680,Vendor Effort: Magnetic System Set #5,11.0,18.0,18.0,18.0,08-08-24,08-22-24,0,0,LBNL,0%,LBNL_E10.3.Mechanical Engineer 3,Mechanical Engineer 3,Labor,0.0d,11.0,11.0,At Completion Units,12/14/2023,1/12/2024,0,0,0,0,0,0,0,0,0,0,1.03_Accelerator Systems (AS),1.03.07_AS SXR-HE Undulator (Soft X-Ray) - LBNL,1.03.07.06_AS SXR-HE Undulator Procurement and Fabrication - LBNL,1.03.07.06.07_SXR-HE Magnetic System Production,AS_LBL_PROD_680_Vendor Effort: Magnetic System Set #5,Mechanical,,SLAC,Labor
111492,1.03,1.03.07,1.03.07.06,1.03.07.06.07,1.03.07.06.07,SXR-HE Magnetic System Production,AS_LBL_PROD_680,Vendor Effort: Magnetic System Set #5,11.0,14.0,14.0,14.0,08-08-24,08-22-24,0,0,LBNL,0%,LBNL_S36.4.Mechanical Staff Sci/Engr,Mechanical Staff Sci/Engr,Labor,0.0d,11.0,11.0,At Completion Units,12/14/2023,1/12/2024,0,0,0,0,0,0,0,0,0,0,1.03_Accelerator Systems (AS),1.03.07_AS SXR-HE Undulator (Soft X-Ray) - LBNL,1.03.07.06_AS SXR-HE Undulator Procurement and Fabrication - LBNL,1.03.07.06.07_SXR-HE Magnetic System Production,AS_LBL_PROD_680_Vendor Effort: Magnetic System Set #5,Mechanical,,SLAC,Labor
111493,1.03,1.03.07,1.03.07.06,1.03.07.06.07,1.03.07.06.07,SXR-HE Magnetic System Production,AS_LBL_PROD_670,Vendor Effort: Magnetic System Set #4,11.0,30.0,30.0,30.0,07-18-24,08-01-24,0,0,LBNL,0%,LBNL_E10.4.Mechanical Engineer 4,Mechanical Engineer 4,Labor,0.0d,11.0,11.0,At Completion Units,11/21/2023,12/7/2023,0,0,0,0,0,0,0,0,0,0,1.03_Accelerator Systems (AS),1.03.07_AS SXR-HE Undulator (Soft X-Ray) - LBNL,1.03.07.06_AS SXR-HE Undulator Procurement and Fabrication - LBNL,1.03.07.06.07_SXR-HE Magnetic System Production,AS_LBL_PROD_670_Vendor Effort: Magnetic System Set #4,Mechanical,,SLAC,Labor
111494,1.03,1.03.07,1.03.07.06,1.03.07.06.07,1.03.07.06.07,SXR-HE Magnetic System Production,AS_LBL_PROD_670,Vendor Effort: Magnetic System Set #4,11.0,18.0,18.0,18.0,07-18-24,08-01-24,0,0,LBNL,0%,LBNL_E10.3.Mechanical Engineer 3,Mechanical Engineer 3,Labor,0.0d,11.0,11.0,At Completion Units,11/21/2023,12/7/2023,0,0,0,0,0,0,0,0,0,0,1.03_Accelerator Systems (AS),1.03.07_AS SXR-HE Undulator (Soft X-Ray) - LBNL,1.03.07.06_AS SXR-HE Undulator Procurement and Fabrication - LBNL,1.03.07.06.07_SXR-HE Magnetic System Production,AS_LBL_PROD_670_Vendor Effort: Magnetic System Set #4,Mechanical,,SLAC,Labor
111495,1.03,1.03.07,1.03.07.06,1.03.07.06.07,1.03.07.06.07,SXR-HE Magnetic System Production,AS_LBL_PROD_670,Vendor Effort: Magnetic System Set #4,11.0,14.0,14.0,14.0,07-18-24,08-01-24,0,0,LBNL,0%,LBNL_S36.4.Mechanical Staff Sci/Engr,Mechanical Staff Sci/Engr,Labor,0.0d,11.0,11.0,At Completion Units,11/21/2023,12/7/2023,0,0,0,0,0,0,0,0,0,0,1.03_Accelerator Systems (AS),1.03.07_AS SXR-HE Undulator (Soft X-Ray) - LBNL,1.03.07.06_AS SXR-HE Undulator Procurement and Fabrication - LBNL,1.03.07.06.07_SXR-HE Magnetic System Production,AS_LBL_PROD_670_Vendor Effort: Magnetic System Set #4,Mechanical,,SLAC,Labor
111496,1.03,1.03.07,1.03.07.06,1.03.07.06.07,1.03.07.06.07,SXR-HE Magnetic System Production,AS_LBL_PROD_660,Unpack & Inspect & Ship (SLAC) - Magnetic System Set #3,5.0,0.0,0.0,0.0,07-19-24,07-25-24,0,0,LBNL,0%,LBNL_S36.4.Mechanical Staff Sci/Engr,Mechanical Staff Sci/Engr,Labor,0.0d,5.0,5.0,At Completion Units,11/22/2023,11/30/2023,0,0,0,0,0,0,0,0,0,0,1.03_Accelerator Systems (AS),1.03.07_AS SXR-HE Undulator (Soft X-Ray) - LBNL,1.03.07.06_AS SXR-HE Undulator Procurement and Fabrication - LBNL,1.03.07.06.07_SXR-HE Magnetic System Production,AS_LBL_PROD_660_Unpack & Inspect & Ship (SLAC) - Magnetic System Set #3,Mechanical,,SLAC,Labor
111497,1.03,1.03.07,1.03.07.06,1.03.07.06.07,1.03.07.06.07,SXR-HE Magnetic System Production,AS_LBL_PROD_660,Unpack & Inspect & Ship (SLAC) - Magnetic System Set #3,5.0,8.0,8.0,8.0,07-19-24,07-25-24,0,0,LBNL,0%,LBNL_E10.4.Mechanical Engineer 4,Mechanical Engineer 4,Labor,0.0d,5.0,5.0,At Completion Units,11/22/2023,11/30/2023,0,0,0,0,0,0,0,0,0,0,1.03_Accelerator Systems (AS),1.03.07_AS SXR-HE Undulator (Soft X-Ray) - LBNL,1.03.07.06_AS SXR-HE Undulator Procurement and Fabrication - LBNL,1.03.07.06.07_SXR-HE Magnetic System Production,AS_LBL_PROD_660_Unpack & Inspect & Ship (SLAC) - Magnetic System Set #3,Mechanical,,SLAC,Labor
111498,1.03,1.03.07,1.03.07.06,1.03.07.06.07,1.03.07.06.07,SXR-HE Magnetic System Production,AS_LBL_PROD_660,Unpack & Inspect & Ship (SLAC) - Magnetic System Set #3,5.0,0.0,0.0,0.0,07-19-24,07-25-24,0,0,LBNL,0%,LBNL_E10.3.Mechanical Engineer 3,Mechanical Engineer 3,Labor,0.0d,5.0,5.0,At Completion Units,11/22/2023,11/30/2023,0,0,0,0,0,0,0,0,0,0,1.03_Accelerator Systems (AS),1.03.07_AS SXR-HE Undulator (Soft X-Ray) - LBNL,1.03.07.06_AS SXR-HE Undulator Procurement and Fabrication - LBNL,1.03.07.06.07_SXR-HE Magnetic System Production,AS_LBL_PROD_660_Unpack & Inspect & Ship (SLAC) - Magnetic System Set #3,Mechanical,,SLAC,Labor
111499,1.03,1.03.07,1.03.07.06,1.03.07.06.07,1.03.07.06.07,SXR-HE Magnetic System Production,AS_LBL_PROD_645,Vendor Effort: Magnetic System Set #3,25.0,20.0,20.0,20.0,06-12-24,07-17-24,0,0,LBNL,0%,LBNL_S36.4.Mechanical Staff Sci/Engr,Mechanical Staff Sci/Engr,Labor,0.0d,25.0,25.0,At Completion Units,10/17/2023,11/20/2023,0,0,0,0,0,0,0,0,0,0,1.03_Accelerator Systems (AS),1.03.07_AS SXR-HE Undulator (Soft X-Ray) - LBNL,1.03.07.06_AS SXR-HE Undulator Procurement and Fabrication - LBNL,1.03.07.06.07_SXR-HE Magnetic System Production,AS_LBL_PROD_645_Vendor Effort: Magnetic System Set #3,Mechanical,,SLAC,Labor
111500,1.03,1.03.07,1.03.07.06,1.03.07.06.07,1.03.07.06.07,SXR-HE Magnetic System Production,AS_LBL_PROD_645,Vendor Effort: Magnetic System Set #3,25.0,32.0,32.0,32.0,06-12-24,07-17-24,0,0,LBNL,0%,LBNL_E10.4.Mechanical Engineer 4,Mechanical Engineer 4,Labor,0.0d,25.0,25.0,At Completion Units,10/17/2023,11/20/2023,0,0,0,0,0,0,0,0,0,0,1.03_Accelerator Systems (AS),1.03.07_AS SXR-HE Undulator (Soft X-Ray) - LBNL,1.03.07.06_AS SXR-HE Undulator Procurement and Fabrication - LBNL,1.03.07.06.07_SXR-HE Magnetic System Production,AS_LBL_PROD_645_Vendor Effort: Magnetic System Set #3,Mechanical,,SLAC,Labor
111501,1.03,1.03.07,1.03.07.06,1.03.07.06.07,1.03.07.06.07,SXR-HE Magnetic System Production,AS_LBL_PROD_645,Vendor Effort: Magnetic System Set #3,25.0,24.0,24.0,24.0,06-12-24,07-17-24,0,0,LBNL,0%,LBNL_E10.3.Mechanical Engineer 3,Mechanical Engineer 3,Labor,0.0d,25.0,25.0,At Completion Units,10/17/2023,11/20/2023,0,0,0,0,0,0,0,0,0,0,1.03_Accelerator Systems (AS),1.03.07_AS SXR-HE Undulator (Soft X-Ray) - LBNL,1.03.07.06_AS SXR-HE Undulator Procurement and Fabrication - LBNL,1.03.07.06.07_SXR-HE Magnetic System Production,AS_LBL_PROD_645_Vendor Effort: Magnetic System Set #3,Mechanical,,SLAC,Labor
111502,1.03,1.03.07,1.03.07.06,1.03.07.06.07,1.03.07.06.07,SXR-HE Magnetic System Production,AS_LBL_PROD_635,Unpack & Inspect & Ship (SLAC) - Magnetic System Set #2,5.0,0.0,0.0,0.0,06-13-24,06-19-24,0,0,LBNL,0%,LBNL_S36.4.Mechanical Staff Sci/Engr,Mechanical Staff Sci/Engr,Labor,0.0d,5.0,5.0,At Completion Units,10/18/2023,10/24/2023,0,0,0,0,0,0,0,0,0,0,1.03_Accelerator Systems (AS),1.03.07_AS SXR-HE Undulator (Soft X-Ray) - LBNL,1.03.07.06_AS SXR-HE Undulator Procurement and Fabrication - LBNL,1.03.07.06.07_SXR-HE Magnetic System Production,AS_LBL_PROD_635_Unpack & Inspect & Ship (SLAC) - Magnetic System Set #2,Mechanical,,SLAC,Labor
111503,1.03,1.03.07,1.03.07.06,1.03.07.06.07,1.03.07.06.07,SXR-HE Magnetic System Production,AS_LBL_PROD_635,Unpack & Inspect & Ship (SLAC) - Magnetic System Set #2,5.0,8.0,8.0,8.0,06-13-24,06-19-24,0,0,LBNL,0%,LBNL_E10.4.Mechanical Engineer 4,Mechanical Engineer 4,Labor,0.0d,5.0,5.0,At Completion Units,10/18/2023,10/24/2023,0,0,0,0,0,0,0,0,0,0,1.03_Accelerator Systems (AS),1.03.07_AS SXR-HE Undulator (Soft X-Ray) - LBNL,1.03.07.06_AS SXR-HE Undulator Procurement and Fabrication - LBNL,1.03.07.06.07_SXR-HE Magnetic System Production,AS_LBL_PROD_635_Unpack & Inspect & Ship (SLAC) - Magnetic System Set #2,Mechanical,,SLAC,Labor
111504,1.03,1.03.07,1.03.07.06,1.03.07.06.07,1.03.07.06.07,SXR-HE Magnetic System Production,AS_LBL_PROD_635,Unpack & Inspect & Ship (SLAC) - Magnetic System Set #2,5.0,0.0,0.0,0.0,06-13-24,06-19-24,0,0,LBNL,0%,LBNL_E10.3.Mechanical Engineer 3,Mechanical Engineer 3,Labor,0.0d,5.0,5.0,At Completion Units,10/18/2023,10/24/2023,0,0,0,0,0,0,0,0,0,0,1.03_Accelerator Systems (AS),1.03.07_AS SXR-HE Undulator (Soft X-Ray) - LBNL,1.03.07.06_AS SXR-HE Undulator Procurement and Fabrication - LBNL,1.03.07.06.07_SXR-HE Magnetic System Production,AS_LBL_PROD_635_Unpack & Inspect & Ship (SLAC) - Magnetic System Set #2,Mechanical,,SLAC,Labor
111505,1.03,1.03.07,1.03.07.06,1.03.07.06.07,1.03.07.06.07,SXR-HE Magnetic System Production,AS_LBL_PROD_620,Vendor Effort: Magnetic System Set #2,35.0,20.0,20.0,20.0,04-23-24,06-11-24,0,0,LBNL,0%,LBNL_S36.4.Mechanical Staff Sci/Engr,Mechanical Staff Sci/Engr,Labor,0.0d,35.0,35.0,At Completion Units,8/28/2023,10/16/2023,0,0,0,0,0,0,0,0,0,0,1.03_Accelerator Systems (AS),1.03.07_AS SXR-HE Undulator (Soft X-Ray) - LBNL,1.03.07.06_AS SXR-HE Undulator Procurement and Fabrication - LBNL,1.03.07.06.07_SXR-HE Magnetic System Production,AS_LBL_PROD_620_Vendor Effort: Magnetic System Set #2,Mechanical,,SLAC,Labor
111506,1.03,1.03.07,1.03.07.06,1.03.07.06.07,1.03.07.06.07,SXR-HE Magnetic System Production,AS_LBL_PROD_620,Vendor Effort: Magnetic System Set #2,35.0,32.0,32.0,32.0,04-23-24,06-11-24,0,0,LBNL,0%,LBNL_E10.4.Mechanical Engineer 4,Mechanical Engineer 4,Labor,0.0d,35.0,35.0,At Completion Units,8/28/2023,10/16/2023,0,0,0,0,0,0,0,0,0,0,1.03_Accelerator Systems (AS),1.03.07_AS SXR-HE Undulator (Soft X-Ray) - LBNL,1.03.07.06_AS SXR-HE Undulator Procurement and Fabrication - LBNL,1.03.07.06.07_SXR-HE Magnetic System Production,AS_LBL_PROD_620_Vendor Effort: Magnetic System Set #2,Mechanical,,SLAC,Labor
111507,1.03,1.03.07,1.03.07.06,1.03.07.06.07,1.03.07.06.07,SXR-HE Magnetic System Production,AS_LBL_PROD_620,Vendor Effort: Magnetic System Set #2,35.0,24.0,24.0,24.0,04-23-24,06-11-24,0,0,LBNL,0%,LBNL_E10.3.Mechanical Engineer 3,Mechanical Engineer 3,Labor,0.0d,35.0,35.0,At Completion Units,8/28/2023,10/16/2023,0,0,0,0,0,0,0,0,0,0,1.03_Accelerator Systems (AS),1.03.07_AS SXR-HE Undulator (Soft X-Ray) - LBNL,1.03.07.06_AS SXR-HE Undulator Procurement and Fabrication - LBNL,1.03.07.06.07_SXR-HE Magnetic System Production,AS_LBL_PROD_620_Vendor Effort: Magnetic System Set #2,Mechanical,,SLAC,Labor
111508,1.03,1.03.07,1.03.07.06,1.03.07.06.07,1.03.07.06.07,SXR-HE Magnetic System Production,AS_LBL_PROD_190,AWARD: Production Magnetic System Sets 1-20 & Magnetic Material,1.0,0.0,0.0,0.0,10-02-23,10-02-23,0,0,LBNL,0%,LBNL_MSSY1.LBNL M&S (>$500K) (NO ESC/NO G&A),LBNL M&S (>$500K) (NO ESC/NO G&A),Nonlabor,0.0d,1.0,1.0,At Completion Units,2/22/2023,2/22/2023,0,0,0,0,0,0,0,0,0,0,1.03_Accelerator Systems (AS),1.03.07_AS SXR-HE Undulator (Soft X-Ray) - LBNL,1.03.07.06_AS SXR-HE Undulator Procurement and Fabrication - LBNL,1.03.07.06.07_SXR-HE Magnetic System Production,AS_LBL_PROD_190_AWARD: Production Magnetic System Sets 1-20 & Magnetic Material,M&S,,LBNL,M&S
111509,1.03,1.03.07,1.03.07.06,1.03.07.06.07,1.03.07.06.07,SXR-HE Magnetic System Production,AS_LBL_PROD_270,Vendor Effort: Magnetic System Set #1,120.0,80.0,80.0,80.0,10-03-23,04-08-24,0,0,LBNL,0%,LBNL_E10.4.Mechanical Engineer 4,Mechanical Engineer 4,Labor,0.0d,120.0,120.0,At Completion Units,2/23/2023,8/11/2023,0,0,0,0,0,0,0,0,0,0,1.03_Accelerator Systems (AS),1.03.07_AS SXR-HE Undulator (Soft X-Ray) - LBNL,1.03.07.06_AS SXR-HE Undulator Procurement and Fabrication - LBNL,1.03.07.06.07_SXR-HE Magnetic System Production,AS_LBL_PROD_270_Vendor Effort: Magnetic System Set #1,Mechanical,,SLAC,Labor
111510,1.03,1.03.07,1.03.07.06,1.03.07.06.07,1.03.07.06.07,SXR-HE Magnetic System Production,AS_LBL_PROD_280,Review QA Documentation - Magnetic System Set #1,10.0,40.0,40.0,40.0,04-09-24,04-22-24,0,0,LBNL,0%,LBNL_E10.4.Mechanical Engineer 4,Mechanical Engineer 4,Labor,0.0d,10.0,10.0,At Completion Units,8/14/2023,8/25/2023,0,0,0,0,0,0,0,0,0,0,1.03_Accelerator Systems (AS),1.03.07_AS SXR-HE Undulator (Soft X-Ray) - LBNL,1.03.07.06_AS SXR-HE Undulator Procurement and Fabrication - LBNL,1.03.07.06.07_SXR-HE Magnetic System Production,AS_LBL_PROD_280_Review QA Documentation - Magnetic System Set #1,Mechanical,,SLAC,Labor
111511,1.03,1.03.07,1.03.07.06,1.03.07.06.07,1.03.07.06.07,SXR-HE Magnetic System Production,AS_LBL_PROD_280,Review QA Documentation - Magnetic System Set #1,10.0,40.0,40.0,40.0,04-09-24,04-22-24,0,0,LBNL,0%,LBNL_S36.4.Mechanical Staff Sci/Engr,Mechanical Staff Sci/Engr,Labor,0.0d,10.0,10.0,At Completion Units,8/14/2023,8/25/2023,0,0,0,0,0,0,0,0,0,0,1.03_Accelerator Systems (AS),1.03.07_AS SXR-HE Undulator (Soft X-Ray) - LBNL,1.03.07.06_AS SXR-HE Undulator Procurement and Fabrication - LBNL,1.03.07.06.07_SXR-HE Magnetic System Production,AS_LBL_PROD_280_Review QA Documentation - Magnetic System Set #1,Mechanical,,SLAC,Labor
111512,1.03,1.03.07,1.03.07.06,1.03.07.06.07,1.03.07.06.07,SXR-HE Magnetic System Production,AS_LBL_PROD_270,Vendor Effort: Magnetic System Set #1,120.0,40.0,40.0,40.0,10-03-23,04-08-24,0,0,LBNL,0%,LBNL_S36.4.Mechanical Staff Sci/Engr,Mechanical Staff Sci/Engr,Labor,0.0d,120.0,120.0,At Completion Units,2/23/2023,8/11/2023,0,0,0,0,0,0,0,0,0,0,1.03_Accelerator Systems (AS),1.03.07_AS SXR-HE Undulator (Soft X-Ray) - LBNL,1.03.07.06_AS SXR-HE Undulator Procurement and Fabrication - LBNL,1.03.07.06.07_SXR-HE Magnetic System Production,AS_LBL_PROD_270_Vendor Effort: Magnetic System Set #1,Mechanical,,SLAC,Labor
111513,1.03,1.03.07,1.03.07.06,1.03.07.06.07,1.03.07.06.07,SXR-HE Magnetic System Production,AS_LBL_PROD_270,Vendor Effort: Magnetic System Set #1,120.0,40.0,40.0,40.0,10-03-23,04-08-24,0,0,LBNL,0%,LBNL_N30.2.Sr Mechanical Engr Associate,Sr Mechanical Engr Associate,Labor,0.0d,120.0,120.0,At Completion Units,2/23/2023,8/11/2023,0,0,0,0,0,0,0,0,0,0,1.03_Accelerator Systems (AS),1.03.07_AS SXR-HE Undulator (Soft X-Ray) - LBNL,1.03.07.06_AS SXR-HE Undulator Procurement and Fabrication - LBNL,1.03.07.06.07_SXR-HE Magnetic System Production,AS_LBL_PROD_270_Vendor Effort: Magnetic System Set #1,Mechanical,,SLAC,Labor
111514,1.03,1.03.07,1.03.07.06,1.03.07.06.07,1.03.07.06.07,SXR-HE Magnetic System Production,AS_LBL_PROD_270,Vendor Effort: Magnetic System Set #1,120.0,140.0,140.0,140.0,10-03-23,04-08-24,0,0,LBNL,0%,LBNL_E10.3.Mechanical Engineer 3,Mechanical Engineer 3,Labor,0.0d,120.0,120.0,At Completion Units,2/23/2023,8/11/2023,0,0,0,0,0,0,0,0,0,0,1.03_Accelerator Systems (AS),1.03.07_AS SXR-HE Undulator (Soft X-Ray) - LBNL,1.03.07.06_AS SXR-HE Undulator Procurement and Fabrication - LBNL,1.03.07.06.07_SXR-HE Magnetic System Production,AS_LBL_PROD_270_Vendor Effort: Magnetic System Set #1,Mechanical,,SLAC,Labor
111515,1.03,1.03.07,1.03.07.06,1.03.07.06.07,1.03.07.06.07,SXR-HE Magnetic System Production,AS_LBL_PROD_260,AWARD: Production Magnetic System Sets 21-30,1.0,0.0,0.0,0.0,01-03-24,01-03-24,0,0,LBNL,0%,LBNL_MSSY1.LBNL M&S (>$500K) (NO ESC/NO G&A),LBNL M&S (>$500K) (NO ESC/NO G&A),Nonlabor,0.0d,1.0,1.0,At Completion Units,1/3/2024,1/3/2024,0,0,0,0,0,0,0,0,0,0,1.03_Accelerator Systems (AS),1.03.07_AS SXR-HE Undulator (Soft X-Ray) - LBNL,1.03.07.06_AS SXR-HE Undulator Procurement and Fabrication - LBNL,1.03.07.06.07_SXR-HE Magnetic System Production,AS_LBL_PROD_260_AWARD: Production Magnetic System Sets 21-30,M&S,,LBNL,M&S
111516,1.03,1.03.07,1.03.07.06,1.03.07.06.07,1.03.07.06.07,SXR-HE Magnetic System Production,AS_LBL_PROD_260,AWARD: Production Magnetic System Sets 21-30,1.0,0.0,0.0,0.0,01-03-24,01-03-24,0,0,LBNL,0%,LBNL_MSSC.LBNL M&S (<$500K) (G&A),LBNL M&S (<$500K) (G&A),Nonlabor,0.0d,1.0,1.0,At Completion Units,1/3/2024,1/3/2024,0,0,0,0,0,0,0,0,0,0,1.03_Accelerator Systems (AS),1.03.07_AS SXR-HE Undulator (Soft X-Ray) - LBNL,1.03.07.06_AS SXR-HE Undulator Procurement and Fabrication - LBNL,1.03.07.06.07_SXR-HE Magnetic System Production,AS_LBL_PROD_260_AWARD: Production Magnetic System Sets 21-30,M&S,,LBNL,M&S
111517,1.03,1.03.07,1.03.07.06,1.03.07.06.07,1.03.07.06.07,SXR-HE Magnetic System Production,AS_LBL_PROD_190,AWARD: Production Magnetic System Sets 1-20 & Magnetic Material,1.0,0.0,0.0,0.0,10-02-23,10-02-23,0,0,LBNL,0%,LBNL_MSSC.LBNL M&S (<$500K) (G&A),LBNL M&S (<$500K) (G&A),Nonlabor,0.0d,1.0,1.0,At Completion Units,2/22/2023,2/22/2023,0,0,0,0,0,0,0,0,0,0,1.03_Accelerator Systems (AS),1.03.07_AS SXR-HE Undulator (Soft X-Ray) - LBNL,1.03.07.06_AS SXR-HE Undulator Procurement and Fabrication - LBNL,1.03.07.06.07_SXR-HE Magnetic System Production,AS_LBL_PROD_190_AWARD: Production Magnetic System Sets 1-20 & Magnetic Material,M&S,,LBNL,M&S
111518,1.03,1.03.07,1.03.07.06,1.03.07.06.07,1.03.07.06.07,SXR-HE Magnetic System Production,AS_LBL_PROD_190,AWARD: Production Magnetic System Sets 1-20 & Magnetic Material,1.0,0.0,0.0,0.0,10-02-23,10-02-23,0,0,LBNL,0%,LBNL_MSSY.LBNL M&S (>$500K) (NO G&A),LBNL M&S (>$500K) (NO G&A),Nonlabor,0.0d,1.0,1.0,At Completion Units,2/22/2023,2/22/2023,0,0,0,0,0,0,0,0,0,0,1.03_Accelerator Systems (AS),1.03.07_AS SXR-HE Undulator (Soft X-Ray) - LBNL,1.03.07.06_AS SXR-HE Undulator Procurement and Fabrication - LBNL,1.03.07.06.07_SXR-HE Magnetic System Production,AS_LBL_PROD_190_AWARD: Production Magnetic System Sets 1-20 & Magnetic Material,M&S,,LBNL,M&S
111838,1.03,1.03.07,1.03.07.06,1.03.07.06.08,1.03.07.06.08,SXR-HE New Undulator Procurement: Mechanical System & Integration,AS_LBL_PROC_320,Develop Documents - SXR - Mechanical System Top Jaw Motors LLP,40.0,12.0,12.0,12.0,11-30-21,02-08-22,0,0,LBNL,0%,LBNL_E10.3.Mechanical Engineer 3,Mechanical Engineer 3,Labor,0.0d,40.0,40.0,At Completion Units,nn,,0,0,0,0,0,0,0,0,0,0,1.03_Accelerator Systems (AS),1.03.07_AS SXR-HE Undulator (Soft X-Ray) - LBNL,1.03.07.06_AS SXR-HE Undulator Procurement and Fabrication - LBNL,1.03.07.06.08_SXR-HE New Undulator Procurement: Mechanical System & Integration,AS_LBL_PROC_320_Develop Documents - SXR - Mechanical System Top Jaw Motors LLP,Mechanical,,SLAC,Labor
111839,1.03,1.03.07,1.03.07.06,1.03.07.06.08,1.03.07.06.08,SXR-HE New Undulator Procurement: Mechanical System & Integration,AS_LBL_PROC_700,Request for Information & Qualified Vendor Evaluation - New Undulator Mechanical System & Integration,30.0,12.0,12.0,12.0,03-16-22,04-26-22,0,0,LBNL,0%,LBNL_E10.4.Mechanical Engineer 4,Mechanical Engineer 4,Labor,0.0d,30.0,30.0,At Completion Units,3/8/2022,4/18/2022,0,0,0,0,0,0,0,0,0,0,1.03_Accelerator Systems (AS),1.03.07_AS SXR-HE Undulator (Soft X-Ray) - LBNL,1.03.07.06_AS SXR-HE Undulator Procurement and Fabrication - LBNL,1.03.07.06.08_SXR-HE New Undulator Procurement: Mechanical System & Integration,AS_LBL_PROC_700_Request for Information & Qualified Vendor Evaluation - New Undulator Mechanical System & Integration,Mechanical,,SLAC,Labor
111840,1.03,1.03.07,1.03.07.06,1.03.07.06.08,1.03.07.06.08,SXR-HE New Undulator Procurement: Mechanical System & Integration,AS_LBL_PROC_700,Request for Information & Qualified Vendor Evaluation - New Undulator Mechanical System & Integration,30.0,60.0,60.0,60.0,03-16-22,04-26-22,0,0,LBNL,0%,LBNL_E10.3.Mechanical Engineer 3,Mechanical Engineer 3,Labor,0.0d,30.0,30.0,At Completion Units,3/8/2022,4/18/2022,0,0,0,0,0,0,0,0,0,0,1.03_Accelerator Systems (AS),1.03.07_AS SXR-HE Undulator (Soft X-Ray) - LBNL,1.03.07.06_AS SXR-HE Undulator Procurement and Fabrication - LBNL,1.03.07.06.08_SXR-HE New Undulator Procurement: Mechanical System & Integration,AS_LBL_PROC_700_Request for Information & Qualified Vendor Evaluation - New Undulator Mechanical System & Integration,Mechanical,,SLAC,Labor
111841,1.03,1.03.07,1.03.07.06,1.03.07.06.08,1.03.07.06.08,SXR-HE New Undulator Procurement: Mechanical System & Integration,AS_LBL_PROC_980,AWARD: Mechanical System Subcontract,1.0,3086470.0,3086470.0,3086470.0,10-02-23,10-02-23,0,0,LBNL,0%,LBNL_AWARD.LBNL AWARDS,LBNL AWARDS,Nonlabor,0.0d,1.0,1.0,At Completion Units,1/24/2023,1/24/2023,0,0,0,0,0,0,0,0,0,0,1.03_Accelerator Systems (AS),1.03.07_AS SXR-HE Undulator (Soft X-Ray) - LBNL,1.03.07.06_AS SXR-HE Undulator Procurement and Fabrication - LBNL,1.03.07.06.08_SXR-HE New Undulator Procurement: Mechanical System & Integration,AS_LBL_PROC_980_AWARD: Mechanical System Subcontract,M&S,,LBNL,Labor
111842,1.03,1.03.07,1.03.07.06,1.03.07.06.08,1.03.07.06.08,SXR-HE New Undulator Procurement: Mechanical System & Integration,AS_LBL_PROC_870,Evaluations / Negotiations - New Undulator Mechanical System & Integration,25.0,20.0,20.0,20.0,07-25-22,08-26-22,0,0,LBNL,0%,LBNL_N30.2.Sr Mechanical Engr Associate,Sr Mechanical Engr Associate,Labor,0.0d,25.0,25.0,At Completion Units,7/15/2022,8/18/2022,0,0,0,0,0,0,0,0,0,0,1.03_Accelerator Systems (AS),1.03.07_AS SXR-HE Undulator (Soft X-Ray) - LBNL,1.03.07.06_AS SXR-HE Undulator Procurement and Fabrication - LBNL,1.03.07.06.08_SXR-HE New Undulator Procurement: Mechanical System & Integration,AS_LBL_PROC_870_Evaluations / Negotiations - New Undulator Mechanical System & Integration,Mechanical,,SLAC,Labor
111843,1.03,1.03.07,1.03.07.06,1.03.07.06.08,1.03.07.06.08,SXR-HE New Undulator Procurement: Mechanical System & Integration,AS_LBL_PROC_930,Contract (CRB) and Legal Review - New Undulator Mechanical System & Integration,10.0,16.0,16.0,16.0,09-27-22,10-10-22,0,0,LBNL,0%,LBNL_E10.3.Mechanical Engineer 3,Mechanical Engineer 3,Labor,0.0d,10.0,10.0,At Completion Units,9/19/2022,9/30/2022,0,0,0,0,0,0,0,0,0,0,1.03_Accelerator Systems (AS),1.03.07_AS SXR-HE Undulator (Soft X-Ray) - LBNL,1.03.07.06_AS SXR-HE Undulator Procurement and Fabrication - LBNL,1.03.07.06.08_SXR-HE New Undulator Procurement: Mechanical System & Integration,AS_LBL_PROC_930_Contract (CRB) and Legal Review - New Undulator Mechanical System & Integration,Mechanical,,SLAC,Labor
111844,1.03,1.03.07,1.03.07.06,1.03.07.06.08,1.03.07.06.08,SXR-HE New Undulator Procurement: Mechanical System & Integration,AS_LBL_PROC_870,Evaluations / Negotiations - New Undulator Mechanical System & Integration,25.0,0.0,0.0,0.0,07-25-22,08-26-22,0,0,LBNL,0%,LBNL_D50.1.LBNL_Software Developer 1,LBNL_Software Developer 1,Labor,0.0d,25.0,25.0,At Completion Units,7/15/2022,8/18/2022,0,0,0,0,0,0,0,0,0,0,1.03_Accelerator Systems (AS),1.03.07_AS SXR-HE Undulator (Soft X-Ray) - LBNL,1.03.07.06_AS SXR-HE Undulator Procurement and Fabrication - LBNL,1.03.07.06.08_SXR-HE New Undulator Procurement: Mechanical System & Integration,AS_LBL_PROC_870_Evaluations / Negotiations - New Undulator Mechanical System & Integration,Software e SoftwareDeveloper1,,SLAC,Labor
111845,1.03,1.03.07,1.03.07.06,1.03.07.06.08,1.03.07.06.08,SXR-HE New Undulator Procurement: Mechanical System & Integration,AS_LBL_PROC_870,Evaluations / Negotiations - New Undulator Mechanical System & Integration,25.0,40.0,40.0,40.0,07-25-22,08-26-22,0,0,LBNL,0%,LBNL_E10.4.Mechanical Engineer 4,Mechanical Engineer 4,Labor,0.0d,25.0,25.0,At Completion Units,7/15/2022,8/18/2022,0,0,0,0,0,0,0,0,0,0,1.03_Accelerator Systems (AS),1.03.07_AS SXR-HE Undulator (Soft X-Ray) - LBNL,1.03.07.06_AS SXR-HE Undulator Procurement and Fabrication - LBNL,1.03.07.06.08_SXR-HE New Undulator Procurement: Mechanical System & Integration,AS_LBL_PROC_870_Evaluations / Negotiations - New Undulator Mechanical System & Integration,Mechanical,,SLAC,Labor
111846,1.03,1.03.07,1.03.07.06,1.03.07.06.08,1.03.07.06.08,SXR-HE New Undulator Procurement: Mechanical System & Integration,AS_LBL_PROC_870,Evaluations / Negotiations - New Undulator Mechanical System & Integration,25.0,92.0,92.0,92.0,07-25-22,08-26-22,0,0,LBNL,0%,LBNL_E10.3.Mechanical Engineer 3,Mechanical Engineer 3,Labor,0.0d,25.0,25.0,At Completion Units,7/15/2022,8/18/2022,0,0,0,0,0,0,0,0,0,0,1.03_Accelerator Systems (AS),1.03.07_AS SXR-HE Undulator (Soft X-Ray) - LBNL,1.03.07.06_AS SXR-HE Undulator Procurement and Fabrication - LBNL,1.03.07.06.08_SXR-HE New Undulator Procurement: Mechanical System & Integration,AS_LBL_PROC_870_Evaluations / Negotiations - New Undulator Mechanical System & Integration,Mechanical,,SLAC,Labor
111847,1.03,1.03.07,1.03.07.06,1.03.07.06.08,1.03.07.06.08,SXR-HE New Undulator Procurement: Mechanical System & Integration,AS_LBL_PROC_780,Prepare & Conduct PRR and Respond to Recommendations - New Undulator Mechanical System & Integration,5.0,2.0,2.0,2.0,06-16-22,06-22-22,0,0,LBNL,0%,LBNL_E10.4.Mechanical Engineer 4,Mechanical Engineer 4,Labor,0.0d,5.0,5.0,At Completion Units,6/8/2022,6/14/2022,0,0,0,0,0,0,0,0,0,0,1.03_Accelerator Systems (AS),1.03.07_AS SXR-HE Undulator (Soft X-Ray) - LBNL,1.03.07.06_AS SXR-HE Undulator Procurement and Fabrication - LBNL,1.03.07.06.08_SXR-HE New Undulator Procurement: Mechanical System & Integration,AS_LBL_PROC_780_Prepare & Conduct PRR and Respond to Recommendations - New Undulator Mechanical System & Integration,Mechanical,,SLAC,Labor
111848,1.03,1.03.07,1.03.07.06,1.03.07.06.08,1.03.07.06.08,SXR-HE New Undulator Procurement: Mechanical System & Integration,AS_LBL_PROC_780,Prepare & Conduct PRR and Respond to Recommendations - New Undulator Mechanical System & Integration,5.0,60.0,60.0,60.0,06-16-22,06-22-22,0,0,LBNL,0%,LBNL_E10.3.Mechanical Engineer 3,Mechanical Engineer 3,Labor,0.0d,5.0,5.0,At Completion Units,6/8/2022,6/14/2022,0,0,0,0,0,0,0,0,0,0,1.03_Accelerator Systems (AS),1.03.07_AS SXR-HE Undulator (Soft X-Ray) - LBNL,1.03.07.06_AS SXR-HE Undulator Procurement and Fabrication - LBNL,1.03.07.06.08_SXR-HE New Undulator Procurement: Mechanical System & Integration,AS_LBL_PROC_780_Prepare & Conduct PRR and Respond to Recommendations - New Undulator Mechanical System & Integration,Mechanical,,SLAC,Labor
111849,1.03,1.03.07,1.03.07.06,1.03.07.06.08,1.03.07.06.08,SXR-HE New Undulator Procurement: Mechanical System & Integration,AS_LBL_PROC_760,Procurement Reviews - CRB - New Undulator Mechanical System & Integration,20.0,24.0,24.0,24.0,05-18-22,06-15-22,0,0,LBNL,0%,LBNL_E10.3.Mechanical Engineer 3,Mechanical Engineer 3,Labor,0.0d,20.0,20.0,At Completion Units,5/10/2022,6/7/2022,0,0,0,0,0,0,0,0,0,0,1.03_Accelerator Systems (AS),1.03.07_AS SXR-HE Undulator (Soft X-Ray) - LBNL,1.03.07.06_AS SXR-HE Undulator Procurement and Fabrication - LBNL,1.03.07.06.08_SXR-HE New Undulator Procurement: Mechanical System & Integration,AS_LBL_PROC_760_Procurement Reviews - CRB - New Undulator Mechanical System & Integration,Mechanical,,SLAC,Labor
111850,1.03,1.03.07,1.03.07.06,1.03.07.06.08,1.03.07.06.08,SXR-HE New Undulator Procurement: Mechanical System & Integration,AS_LBL_PROC_750,"Prepare RFP (AAP, TPRR, and draft RFP) - New Undulator Mechanical System & Integration",30.0,23.1,23.1,23.1,04-06-22,05-17-22,0,0,LBNL,0%,LBNL_N30.2.Sr Mechanical Engr Associate,Sr Mechanical Engr Associate,Labor,0.0d,30.0,30.0,At Completion Units,3/29/2022,5/9/2022,0,0,0,0,0,0,0,0,0,0,1.03_Accelerator Systems (AS),1.03.07_AS SXR-HE Undulator (Soft X-Ray) - LBNL,1.03.07.06_AS SXR-HE Undulator Procurement and Fabrication - LBNL,1.03.07.06.08_SXR-HE New Undulator Procurement: Mechanical System & Integration,"AS_LBL_PROC_750_Prepare RFP (AAP, TPRR, and draft RFP) - New Undulator Mechanical System & Integration",Mechanical,,SLAC,Labor
111851,1.03,1.03.07,1.03.07.06,1.03.07.06.08,1.03.07.06.08,SXR-HE New Undulator Procurement: Mechanical System & Integration,AS_LBL_PROC_750,"Prepare RFP (AAP, TPRR, and draft RFP) - New Undulator Mechanical System & Integration",30.0,185.0,185.0,185.0,04-06-22,05-17-22,0,0,LBNL,0%,LBNL_E10.3.Mechanical Engineer 3,Mechanical Engineer 3,Labor,0.0d,30.0,30.0,At Completion Units,3/29/2022,5/9/2022,0,0,0,0,0,0,0,0,0,0,1.03_Accelerator Systems (AS),1.03.07_AS SXR-HE Undulator (Soft X-Ray) - LBNL,1.03.07.06_AS SXR-HE Undulator Procurement and Fabrication - LBNL,1.03.07.06.08_SXR-HE New Undulator Procurement: Mechanical System & Integration,"AS_LBL_PROC_750_Prepare RFP (AAP, TPRR, and draft RFP) - New Undulator Mechanical System & Integration",Mechanical,,SLAC,Labor
111852,1.03,1.03.07,1.03.07.06,1.03.07.06.08,1.03.07.06.08,SXR-HE New Undulator Procurement: Mechanical System & Integration,AS_LBL_PROC_710,Review and Update Technical Docs - New Undulator Mechanical System & Integration,15.0,120.0,120.0,120.0,03-16-22,04-05-22,0,0,LBNL,0%,LBNL_E10.3.Mechanical Engineer 3,Mechanical Engineer 3,Labor,0.0d,15.0,15.0,At Completion Units,3/8/2022,3/28/2022,0,0,0,0,0,0,0,0,0,0,1.03_Accelerator Systems (AS),1.03.07_AS SXR-HE Undulator (Soft X-Ray) - LBNL,1.03.07.06_AS SXR-HE Undulator Procurement and Fabrication - LBNL,1.03.07.06.08_SXR-HE New Undulator Procurement: Mechanical System & Integration,AS_LBL_PROC_710_Review and Update Technical Docs - New Undulator Mechanical System & Integration,Mechanical,,SLAC,Labor
111853,1.03,1.03.07,1.03.07.06,1.03.07.06.08,1.03.07.06.08,SXR-HE New Undulator Procurement: Mechanical System & Integration,AS_LBL_PROC_640,Finalize Technical Procurement Package for New Undulator Mechanical System & Integration,20.0,15.0,15.0,15.0,02-15-22,03-15-22,0,0,LBNL,0%,LBNL_E10.4.Mechanical Engineer 4,Mechanical Engineer 4,Labor,0.0d,20.0,20.0,At Completion Units,2/7/2022,3/7/2022,0,0,0,0,0,0,0,0,0,0,1.03_Accelerator Systems (AS),1.03.07_AS SXR-HE Undulator (Soft X-Ray) - LBNL,1.03.07.06_AS SXR-HE Undulator Procurement and Fabrication - LBNL,1.03.07.06.08_SXR-HE New Undulator Procurement: Mechanical System & Integration,AS_LBL_PROC_640_Finalize Technical Procurement Package for New Undulator Mechanical System & Integration,Mechanical,,SLAC,Labor
111854,1.03,1.03.07,1.03.07.06,1.03.07.06.08,1.03.07.06.08,SXR-HE New Undulator Procurement: Mechanical System & Integration,AS_LBL_PROC_640,Finalize Technical Procurement Package for New Undulator Mechanical System & Integration,20.0,65.0,65.0,65.0,02-15-22,03-15-22,0,0,LBNL,0%,LBNL_E10.3.Mechanical Engineer 3,Mechanical Engineer 3,Labor,0.0d,20.0,20.0,At Completion Units,2/7/2022,3/7/2022,0,0,0,0,0,0,0,0,0,0,1.03_Accelerator Systems (AS),1.03.07_AS SXR-HE Undulator (Soft X-Ray) - LBNL,1.03.07.06_AS SXR-HE Undulator Procurement and Fabrication - LBNL,1.03.07.06.08_SXR-HE New Undulator Procurement: Mechanical System & Integration,AS_LBL_PROC_640_Finalize Technical Procurement Package for New Undulator Mechanical System & Integration,Mechanical,,SLAC,Labor
112174,1.03,1.03.07,1.03.07.06,1.03.07.06.09,1.03.07.06.09,SXR-HE New Undulator Production: Mechanical System & Integration,AS_LBL_PROD_369,Ship SXR - Mechanical System Top Jaw Motors from SLAC To Mechanical System Vendor,30.0,12225.0,12225.0,12225.0,11-28-23,01-24-24,0,0,0,0%,LBNL_MSSC.LBNL M&S (<$500K) (G&A),LBNL M&S (<$500K) (G&A),Nonlabor,0.0d,30.0,30.0,At Completion Units,nn,,0,0,0,0,0,0,0,0,0,0,1.03_Accelerator Systems (AS),1.03.07_AS SXR-HE Undulator (Soft X-Ray) - LBNL,1.03.07.06_AS SXR-HE Undulator Procurement and Fabrication - LBNL,1.03.07.06.09_SXR-HE New Undulator Production: Mechanical System & Integration,AS_LBL_PROD_369_Ship SXR - Mechanical System Top Jaw Motors from SLAC To Mechanical System Vendor,M&S,,LBNL,M&S
112175,1.03,1.03.07,1.03.07.06,1.03.07.06.09,1.03.07.06.09,SXR-HE New Undulator Production: Mechanical System & Integration,AS_LBL_PROD_480,RCV: Encoders and Compensating Spring Stacks,1.0,271000.0,271000.0,271000.0,05-07-24,05-07-24,0,0,LBNL,0%,LBNL_MSSC.LBNL M&S (<$500K) (G&A),LBNL M&S (<$500K) (G&A),Nonlabor,0.0d,1.0,1.0,At Completion Units,8/14/2023,8/14/2023,0,0,0,0,0,0,0,0,0,0,1.03_Accelerator Systems (AS),1.03.07_AS SXR-HE Undulator (Soft X-Ray) - LBNL,1.03.07.06_AS SXR-HE Undulator Procurement and Fabrication - LBNL,1.03.07.06.09_SXR-HE New Undulator Production: Mechanical System & Integration,AS_LBL_PROD_480_RCV: Encoders and Compensating Spring Stacks,M&S,,LBNL,M&S
112176,1.03,1.03.07,1.03.07.06,1.03.07.06.09,1.03.07.06.09,SXR-HE New Undulator Production: Mechanical System & Integration,AS_LBL_PROD_455,RCV: (SLAC) New Undulator #8,1.0,0.0,0.0,0.0,11-11-25,11-11-25,0,0,LBNL,0%,LBNL_MSSC1.LBNL M&S (<$500K) (NO ESC) (G&A),LBNL M&S (<$500K) (NO ESC) (G&A),Nonlabor,0.0d,1.0,1.0,At Completion Units,1/21/2025,1/21/2025,0,0,0,0,0,0,0,0,0,0,1.03_Accelerator Systems (AS),1.03.07_AS SXR-HE Undulator (Soft X-Ray) - LBNL,1.03.07.06_AS SXR-HE Undulator Procurement and Fabrication - LBNL,1.03.07.06.09_SXR-HE New Undulator Production: Mechanical System & Integration,AS_LBL_PROD_455_RCV: (SLAC) New Undulator #8,M&S,,LBNL,M&S
112177,1.03,1.03.07,1.03.07.06,1.03.07.06.09,1.03.07.06.09,SXR-HE New Undulator Production: Mechanical System & Integration,AS_LBL_PROD_480,RCV: Encoders and Compensating Spring Stacks,1.0,0.0,0.0,0.0,05-07-24,05-07-24,0,0,LBNL,0%,LBNL_MSSY1.LBNL M&S (>$500K) (NO ESC/NO G&A),LBNL M&S (>$500K) (NO ESC/NO G&A),Nonlabor,0.0d,1.0,1.0,At Completion Units,8/14/2023,8/14/2023,0,0,0,0,0,0,0,0,0,0,1.03_Accelerator Systems (AS),1.03.07_AS SXR-HE Undulator (Soft X-Ray) - LBNL,1.03.07.06_AS SXR-HE Undulator Procurement and Fabrication - LBNL,1.03.07.06.09_SXR-HE New Undulator Production: Mechanical System & Integration,AS_LBL_PROD_480_RCV: Encoders and Compensating Spring Stacks,M&S,,LBNL,M&S
112178,1.03,1.03.07,1.03.07.06,1.03.07.06.09,1.03.07.06.09,SXR-HE New Undulator Production: Mechanical System & Integration,AS_LBL_PROD_465,RCV: (SLAC) New Undulator #9,1.0,0.0,0.0,0.0,12-18-25,12-18-25,0,0,LBNL,0%,LBNL_MSSC1.LBNL M&S (<$500K) (NO ESC) (G&A),LBNL M&S (<$500K) (NO ESC) (G&A),Nonlabor,0.0d,1.0,1.0,At Completion Units,2/26/2025,2/26/2025,0,0,0,0,0,0,0,0,0,0,1.03_Accelerator Systems (AS),1.03.07_AS SXR-HE Undulator (Soft X-Ray) - LBNL,1.03.07.06_AS SXR-HE Undulator Procurement and Fabrication - LBNL,1.03.07.06.09_SXR-HE New Undulator Production: Mechanical System & Integration,AS_LBL_PROD_465_RCV: (SLAC) New Undulator #9,M&S,,LBNL,M&S
112179,1.03,1.03.07,1.03.07.06,1.03.07.06.09,1.03.07.06.09,SXR-HE New Undulator Production: Mechanical System & Integration,AS_LBL_PROD_455,RCV: (SLAC) New Undulator #8,1.0,0.0,0.0,0.0,11-11-25,11-11-25,0,0,LBNL,0%,LBNL_MSSY.LBNL M&S (>$500K) (NO G&A),LBNL M&S (>$500K) (NO G&A),Nonlabor,0.0d,1.0,1.0,At Completion Units,1/21/2025,1/21/2025,0,0,0,0,0,0,0,0,0,0,1.03_Accelerator Systems (AS),1.03.07_AS SXR-HE Undulator (Soft X-Ray) - LBNL,1.03.07.06_AS SXR-HE Undulator Procurement and Fabrication - LBNL,1.03.07.06.09_SXR-HE New Undulator Production: Mechanical System & Integration,AS_LBL_PROD_455_RCV: (SLAC) New Undulator #8,M&S,,LBNL,M&S
112180,1.03,1.03.07,1.03.07.06,1.03.07.06.09,1.03.07.06.09,SXR-HE New Undulator Production: Mechanical System & Integration,AS_LBL_PROD_435,RCV: (SLAC) New Undulator #6,1.0,0.0,0.0,0.0,09-02-25,09-02-25,0,0,LBNL,0%,LBNL_MSSY.LBNL M&S (>$500K) (NO G&A),LBNL M&S (>$500K) (NO G&A),Nonlabor,0.0d,1.0,1.0,At Completion Units,10/24/2024,10/24/2024,0,0,0,0,0,0,0,0,0,0,1.03_Accelerator Systems (AS),1.03.07_AS SXR-HE Undulator (Soft X-Ray) - LBNL,1.03.07.06_AS SXR-HE Undulator Procurement and Fabrication - LBNL,1.03.07.06.09_SXR-HE New Undulator Production: Mechanical System & Integration,AS_LBL_PROD_435_RCV: (SLAC) New Undulator #6,M&S,,LBNL,M&S
112181,1.03,1.03.07,1.03.07.06,1.03.07.06.09,1.03.07.06.09,SXR-HE New Undulator Production: Mechanical System & Integration,AS_LBL_PROD_425,RCV: (SLAC) New Undulator #5,1.0,0.0,0.0,0.0,07-18-25,07-18-25,0,0,LBNL,0%,LBNL_MSSY.LBNL M&S (>$500K) (NO G&A),LBNL M&S (>$500K) (NO G&A),Nonlabor,0.0d,1.0,1.0,At Completion Units,9/11/2024,9/11/2024,0,0,0,0,0,0,0,0,0,0,1.03_Accelerator Systems (AS),1.03.07_AS SXR-HE Undulator (Soft X-Ray) - LBNL,1.03.07.06_AS SXR-HE Undulator Procurement and Fabrication - LBNL,1.03.07.06.09_SXR-HE New Undulator Production: Mechanical System & Integration,AS_LBL_PROD_425_RCV: (SLAC) New Undulator #5,M&S,,LBNL,M&S
112182,1.03,1.03.07,1.03.07.06,1.03.07.06.09,1.03.07.06.09,SXR-HE New Undulator Production: Mechanical System & Integration,AS_LBL_PROD_415,RCV: (SLAC) New Undulator #4,1.0,0.0,0.0,0.0,06-12-25,06-12-25,0,0,LBNL,0%,LBNL_MSSY.LBNL M&S (>$500K) (NO G&A),LBNL M&S (>$500K) (NO G&A),Nonlabor,0.0d,1.0,1.0,At Completion Units,8/6/2024,8/6/2024,0,0,0,0,0,0,0,0,0,0,1.03_Accelerator Systems (AS),1.03.07_AS SXR-HE Undulator (Soft X-Ray) - LBNL,1.03.07.06_AS SXR-HE Undulator Procurement and Fabrication - LBNL,1.03.07.06.09_SXR-HE New Undulator Production: Mechanical System & Integration,AS_LBL_PROD_415_RCV: (SLAC) New Undulator #4,M&S,,LBNL,M&S
112183,1.03,1.03.07,1.03.07.06,1.03.07.06.09,1.03.07.06.09,SXR-HE New Undulator Production: Mechanical System & Integration,AS_LBL_PROD_405,RCV: (SLAC) New Undulator #3,1.0,0.0,0.0,0.0,05-07-25,05-07-25,0,0,LBNL,0%,LBNL_MSSC.LBNL M&S (<$500K) (G&A),LBNL M&S (<$500K) (G&A),Nonlabor,0.0d,1.0,1.0,At Completion Units,7/1/2024,7/1/2024,0,0,0,0,0,0,0,0,0,0,1.03_Accelerator Systems (AS),1.03.07_AS SXR-HE Undulator (Soft X-Ray) - LBNL,1.03.07.06_AS SXR-HE Undulator Procurement and Fabrication - LBNL,1.03.07.06.09_SXR-HE New Undulator Production: Mechanical System & Integration,AS_LBL_PROD_405_RCV: (SLAC) New Undulator #3,M&S,,LBNL,M&S
112184,1.03,1.03.07,1.03.07.06,1.03.07.06.09,1.03.07.06.09,SXR-HE New Undulator Production: Mechanical System & Integration,AS_LBL_PROD_395,RCV: (SLAC) New Undulator #2,1.0,0.0,0.0,0.0,04-02-25,04-02-25,0,0,LBNL,0%,LBNL_MSSC.LBNL M&S (<$500K) (G&A),LBNL M&S (<$500K) (G&A),Nonlabor,0.0d,1.0,1.0,At Completion Units,5/24/2024,5/24/2024,0,0,0,0,0,0,0,0,0,0,1.03_Accelerator Systems (AS),1.03.07_AS SXR-HE Undulator (Soft X-Ray) - LBNL,1.03.07.06_AS SXR-HE Undulator Procurement and Fabrication - LBNL,1.03.07.06.09_SXR-HE New Undulator Production: Mechanical System & Integration,AS_LBL_PROD_395_RCV: (SLAC) New Undulator #2,M&S,,LBNL,M&S
112185,1.03,1.03.07,1.03.07.06,1.03.07.06.09,1.03.07.06.09,SXR-HE New Undulator Production: Mechanical System & Integration,AS_LBL_PROD_385,RCV: (SLAC) New Undulator #1,1.0,305330.0,305330.0,305330.0,01-27-25,01-27-25,0,0,LBNL,0%,LBNL_MSSC1.LBNL M&S (<$500K) (NO ESC) (G&A),LBNL M&S (<$500K) (NO ESC) (G&A),Nonlabor,0.0d,1.0,1.0,At Completion Units,3/21/2024,3/21/2024,0,0,0,0,0,0,0,0,0,0,1.03_Accelerator Systems (AS),1.03.07_AS SXR-HE Undulator (Soft X-Ray) - LBNL,1.03.07.06_AS SXR-HE Undulator Procurement and Fabrication - LBNL,1.03.07.06.09_SXR-HE New Undulator Production: Mechanical System & Integration,AS_LBL_PROD_385_RCV: (SLAC) New Undulator #1,M&S,,LBNL,M&S
112186,1.03,1.03.07,1.03.07.06,1.03.07.06.09,1.03.07.06.09,SXR-HE New Undulator Production: Mechanical System & Integration,AS_LBL_PROD_465,RCV: (SLAC) New Undulator #9,1.0,305330.0,305330.0,305330.0,12-18-25,12-18-25,0,0,LBNL,0%,LBNL_MSSY1.LBNL M&S (>$500K) (NO ESC/NO G&A),LBNL M&S (>$500K) (NO ESC/NO G&A),Nonlabor,0.0d,1.0,1.0,At Completion Units,2/26/2025,2/26/2025,0,0,0,0,0,0,0,0,0,0,1.03_Accelerator Systems (AS),1.03.07_AS SXR-HE Undulator (Soft X-Ray) - LBNL,1.03.07.06_AS SXR-HE Undulator Procurement and Fabrication - LBNL,1.03.07.06.09_SXR-HE New Undulator Production: Mechanical System & Integration,AS_LBL_PROD_465_RCV: (SLAC) New Undulator #9,M&S,,LBNL,M&S
112187,1.03,1.03.07,1.03.07.06,1.03.07.06.09,1.03.07.06.09,SXR-HE New Undulator Production: Mechanical System & Integration,AS_LBL_PROD_455,RCV: (SLAC) New Undulator #8,1.0,305330.0,305330.0,305330.0,11-11-25,11-11-25,0,0,LBNL,0%,LBNL_MSSY1.LBNL M&S (>$500K) (NO ESC/NO G&A),LBNL M&S (>$500K) (NO ESC/NO G&A),Nonlabor,0.0d,1.0,1.0,At Completion Units,1/21/2025,1/21/2025,0,0,0,0,0,0,0,0,0,0,1.03_Accelerator Systems (AS),1.03.07_AS SXR-HE Undulator (Soft X-Ray) - LBNL,1.03.07.06_AS SXR-HE Undulator Procurement and Fabrication - LBNL,1.03.07.06.09_SXR-HE New Undulator Production: Mechanical System & Integration,AS_LBL_PROD_455_RCV: (SLAC) New Undulator #8,M&S,,LBNL,M&S
112188,1.03,1.03.07,1.03.07.06,1.03.07.06.09,1.03.07.06.09,SXR-HE New Undulator Production: Mechanical System & Integration,AS_LBL_PROD_445,RCV: (SLAC) New Undulator #7,1.0,110660.0,110660.0,110660.0,10-07-25,10-07-25,0,0,LBNL,0%,LBNL_MSSY1.LBNL M&S (>$500K) (NO ESC/NO G&A),LBNL M&S (>$500K) (NO ESC/NO G&A),Nonlabor,0.0d,1.0,1.0,At Completion Units,12/2/2024,12/2/2024,0,0,0,0,0,0,0,0,0,0,1.03_Accelerator Systems (AS),1.03.07_AS SXR-HE Undulator (Soft X-Ray) - LBNL,1.03.07.06_AS SXR-HE Undulator Procurement and Fabrication - LBNL,1.03.07.06.09_SXR-HE New Undulator Production: Mechanical System & Integration,AS_LBL_PROD_445_RCV: (SLAC) New Undulator #7,M&S,,LBNL,M&S
112189,1.03,1.03.07,1.03.07.06,1.03.07.06.09,1.03.07.06.09,SXR-HE New Undulator Production: Mechanical System & Integration,AS_LBL_PROD_435,RCV: (SLAC) New Undulator #6,1.0,0.0,0.0,0.0,09-02-25,09-02-25,0,0,LBNL,0%,LBNL_MSSY1.LBNL M&S (>$500K) (NO ESC/NO G&A),LBNL M&S (>$500K) (NO ESC/NO G&A),Nonlabor,0.0d,1.0,1.0,At Completion Units,10/24/2024,10/24/2024,0,0,0,0,0,0,0,0,0,0,1.03_Accelerator Systems (AS),1.03.07_AS SXR-HE Undulator (Soft X-Ray) - LBNL,1.03.07.06_AS SXR-HE Undulator Procurement and Fabrication - LBNL,1.03.07.06.09_SXR-HE New Undulator Production: Mechanical System & Integration,AS_LBL_PROD_435_RCV: (SLAC) New Undulator #6,M&S,,LBNL,M&S
112190,1.03,1.03.07,1.03.07.06,1.03.07.06.09,1.03.07.06.09,SXR-HE New Undulator Production: Mechanical System & Integration,AS_LBL_PROD_425,RCV: (SLAC) New Undulator #5,1.0,305330.0,305330.0,305330.0,07-18-25,07-18-25,0,0,LBNL,0%,LBNL_MSSY1.LBNL M&S (>$500K) (NO ESC/NO G&A),LBNL M&S (>$500K) (NO ESC/NO G&A),Nonlabor,0.0d,1.0,1.0,At Completion Units,9/11/2024,9/11/2024,0,0,0,0,0,0,0,0,0,0,1.03_Accelerator Systems (AS),1.03.07_AS SXR-HE Undulator (Soft X-Ray) - LBNL,1.03.07.06_AS SXR-HE Undulator Procurement and Fabrication - LBNL,1.03.07.06.09_SXR-HE New Undulator Production: Mechanical System & Integration,AS_LBL_PROD_425_RCV: (SLAC) New Undulator #5,M&S,,LBNL,M&S
112191,1.03,1.03.07,1.03.07.06,1.03.07.06.09,1.03.07.06.09,SXR-HE New Undulator Production: Mechanical System & Integration,AS_LBL_PROD_415,RCV: (SLAC) New Undulator #4,1.0,305330.0,305330.0,305330.0,06-12-25,06-12-25,0,0,LBNL,0%,LBNL_MSSY1.LBNL M&S (>$500K) (NO ESC/NO G&A),LBNL M&S (>$500K) (NO ESC/NO G&A),Nonlabor,0.0d,1.0,1.0,At Completion Units,8/6/2024,8/6/2024,0,0,0,0,0,0,0,0,0,0,1.03_Accelerator Systems (AS),1.03.07_AS SXR-HE Undulator (Soft X-Ray) - LBNL,1.03.07.06_AS SXR-HE Undulator Procurement and Fabrication - LBNL,1.03.07.06.09_SXR-HE New Undulator Production: Mechanical System & Integration,AS_LBL_PROD_415_RCV: (SLAC) New Undulator #4,M&S,,LBNL,M&S
112192,1.03,1.03.07,1.03.07.06,1.03.07.06.09,1.03.07.06.09,SXR-HE New Undulator Production: Mechanical System & Integration,AS_LBL_PROD_405,RCV: (SLAC) New Undulator #3,1.0,305330.0,305330.0,305330.0,05-07-25,05-07-25,0,0,LBNL,0%,LBNL_MSSY1.LBNL M&S (>$500K) (NO ESC/NO G&A),LBNL M&S (>$500K) (NO ESC/NO G&A),Nonlabor,0.0d,1.0,1.0,At Completion Units,7/1/2024,7/1/2024,0,0,0,0,0,0,0,0,0,0,1.03_Accelerator Systems (AS),1.03.07_AS SXR-HE Undulator (Soft X-Ray) - LBNL,1.03.07.06_AS SXR-HE Undulator Procurement and Fabrication - LBNL,1.03.07.06.09_SXR-HE New Undulator Production: Mechanical System & Integration,AS_LBL_PROD_405_RCV: (SLAC) New Undulator #3,M&S,,LBNL,M&S
112193,1.03,1.03.07,1.03.07.06,1.03.07.06.09,1.03.07.06.09,SXR-HE New Undulator Production: Mechanical System & Integration,AS_LBL_PROD_395,RCV: (SLAC) New Undulator #2,1.0,110660.0,110660.0,110660.0,04-02-25,04-02-25,0,0,LBNL,0%,LBNL_MSSY1.LBNL M&S (>$500K) (NO ESC/NO G&A),LBNL M&S (>$500K) (NO ESC/NO G&A),Nonlabor,0.0d,1.0,1.0,At Completion Units,5/24/2024,5/24/2024,0,0,0,0,0,0,0,0,0,0,1.03_Accelerator Systems (AS),1.03.07_AS SXR-HE Undulator (Soft X-Ray) - LBNL,1.03.07.06_AS SXR-HE Undulator Procurement and Fabrication - LBNL,1.03.07.06.09_SXR-HE New Undulator Production: Mechanical System & Integration,AS_LBL_PROD_395_RCV: (SLAC) New Undulator #2,M&S,,LBNL,M&S
112194,1.03,1.03.07,1.03.07.06,1.03.07.06.09,1.03.07.06.09,SXR-HE New Undulator Production: Mechanical System & Integration,AS_LBL_PROD_395,RCV: (SLAC) New Undulator #2,1.0,194670.0,194670.0,194670.0,04-02-25,04-02-25,0,0,LBNL,0%,LBNL_MSSC1.LBNL M&S (<$500K) (NO ESC) (G&A),LBNL M&S (<$500K) (NO ESC) (G&A),Nonlabor,0.0d,1.0,1.0,At Completion Units,5/24/2024,5/24/2024,0,0,0,0,0,0,0,0,0,0,1.03_Accelerator Systems (AS),1.03.07_AS SXR-HE Undulator (Soft X-Ray) - LBNL,1.03.07.06_AS SXR-HE Undulator Procurement and Fabrication - LBNL,1.03.07.06.09_SXR-HE New Undulator Production: Mechanical System & Integration,AS_LBL_PROD_395_RCV: (SLAC) New Undulator #2,M&S,,LBNL,M&S
112195,1.03,1.03.07,1.03.07.06,1.03.07.06.09,1.03.07.06.09,SXR-HE New Undulator Production: Mechanical System & Integration,AS_LBL_PROD_385,RCV: (SLAC) New Undulator #1,1.0,0.0,0.0,0.0,01-27-25,01-27-25,0,0,LBNL,0%,LBNL_MSSY1.LBNL M&S (>$500K) (NO ESC/NO G&A),LBNL M&S (>$500K) (NO ESC/NO G&A),Nonlabor,0.0d,1.0,1.0,At Completion Units,3/21/2024,3/21/2024,0,0,0,0,0,0,0,0,0,0,1.03_Accelerator Systems (AS),1.03.07_AS SXR-HE Undulator (Soft X-Ray) - LBNL,1.03.07.06_AS SXR-HE Undulator Procurement and Fabrication - LBNL,1.03.07.06.09_SXR-HE New Undulator Production: Mechanical System & Integration,AS_LBL_PROD_385_RCV: (SLAC) New Undulator #1,M&S,,LBNL,M&S
112196,1.03,1.03.07,1.03.07.06,1.03.07.06.09,1.03.07.06.09,SXR-HE New Undulator Production: Mechanical System & Integration,AS_LBL_PROD_445,RCV: (SLAC) New Undulator #7,1.0,0.0,0.0,0.0,10-07-25,10-07-25,0,0,LBNL,0%,LBNL_MSSY.LBNL M&S (>$500K) (NO G&A),LBNL M&S (>$500K) (NO G&A),Nonlabor,0.0d,1.0,1.0,At Completion Units,12/2/2024,12/2/2024,0,0,0,0,0,0,0,0,0,0,1.03_Accelerator Systems (AS),1.03.07_AS SXR-HE Undulator (Soft X-Ray) - LBNL,1.03.07.06_AS SXR-HE Undulator Procurement and Fabrication - LBNL,1.03.07.06.09_SXR-HE New Undulator Production: Mechanical System & Integration,AS_LBL_PROD_445_RCV: (SLAC) New Undulator #7,M&S,,LBNL,M&S
112197,1.03,1.03.07,1.03.07.06,1.03.07.06.09,1.03.07.06.09,SXR-HE New Undulator Production: Mechanical System & Integration,AS_LBL_PROD_435,RCV: (SLAC) New Undulator #6,1.0,0.0,0.0,0.0,09-02-25,09-02-25,0,0,LBNL,0%,LBNL_MSSC.LBNL M&S (<$500K) (G&A),LBNL M&S (<$500K) (G&A),Nonlabor,0.0d,1.0,1.0,At Completion Units,10/24/2024,10/24/2024,0,0,0,0,0,0,0,0,0,0,1.03_Accelerator Systems (AS),1.03.07_AS SXR-HE Undulator (Soft X-Ray) - LBNL,1.03.07.06_AS SXR-HE Undulator Procurement and Fabrication - LBNL,1.03.07.06.09_SXR-HE New Undulator Production: Mechanical System & Integration,AS_LBL_PROD_435_RCV: (SLAC) New Undulator #6,M&S,,LBNL,M&S
112198,1.03,1.03.07,1.03.07.06,1.03.07.06.09,1.03.07.06.09,SXR-HE New Undulator Production: Mechanical System & Integration,AS_LBL_PROD_385,RCV: (SLAC) New Undulator #1,1.0,0.0,0.0,0.0,01-27-25,01-27-25,0,0,LBNL,0%,LBNL_MSSY.LBNL M&S (>$500K) (NO G&A),LBNL M&S (>$500K) (NO G&A),Nonlabor,0.0d,1.0,1.0,At Completion Units,3/21/2024,3/21/2024,0,0,0,0,0,0,0,0,0,0,1.03_Accelerator Systems (AS),1.03.07_AS SXR-HE Undulator (Soft X-Ray) - LBNL,1.03.07.06_AS SXR-HE Undulator Procurement and Fabrication - LBNL,1.03.07.06.09_SXR-HE New Undulator Production: Mechanical System & Integration,AS_LBL_PROD_385_RCV: (SLAC) New Undulator #1,M&S,,LBNL,M&S
112199,1.03,1.03.07,1.03.07.06,1.03.07.06.09,1.03.07.06.09,SXR-HE New Undulator Production: Mechanical System & Integration,AS_LBL_PROD_385,RCV: (SLAC) New Undulator #1,1.0,0.0,0.0,0.0,01-27-25,01-27-25,0,0,LBNL,0%,LBNL_MSSC.LBNL M&S (<$500K) (G&A),LBNL M&S (<$500K) (G&A),Nonlabor,0.0d,1.0,1.0,At Completion Units,3/21/2024,3/21/2024,0,0,0,0,0,0,0,0,0,0,1.03_Accelerator Systems (AS),1.03.07_AS SXR-HE Undulator (Soft X-Ray) - LBNL,1.03.07.06_AS SXR-HE Undulator Procurement and Fabrication - LBNL,1.03.07.06.09_SXR-HE New Undulator Production: Mechanical System & Integration,AS_LBL_PROD_385_RCV: (SLAC) New Undulator #1,M&S,,LBNL,M&S
112200,1.03,1.03.07,1.03.07.06,1.03.07.06.09,1.03.07.06.09,SXR-HE New Undulator Production: Mechanical System & Integration,AS_LBL_PROD_465,RCV: (SLAC) New Undulator #9,1.0,0.0,0.0,0.0,12-18-25,12-18-25,0,0,LBNL,0%,LBNL_MSSY.LBNL M&S (>$500K) (NO G&A),LBNL M&S (>$500K) (NO G&A),Nonlabor,0.0d,1.0,1.0,At Completion Units,2/26/2025,2/26/2025,0,0,0,0,0,0,0,0,0,0,1.03_Accelerator Systems (AS),1.03.07_AS SXR-HE Undulator (Soft X-Ray) - LBNL,1.03.07.06_AS SXR-HE Undulator Procurement and Fabrication - LBNL,1.03.07.06.09_SXR-HE New Undulator Production: Mechanical System & Integration,AS_LBL_PROD_465_RCV: (SLAC) New Undulator #9,M&S,,LBNL,M&S
112201,1.03,1.03.07,1.03.07.06,1.03.07.06.09,1.03.07.06.09,SXR-HE New Undulator Production: Mechanical System & Integration,AS_LBL_PROD_445,RCV: (SLAC) New Undulator #7,1.0,194670.0,194670.0,194670.0,10-07-25,10-07-25,0,0,LBNL,0%,LBNL_MSSC1.LBNL M&S (<$500K) (NO ESC) (G&A),LBNL M&S (<$500K) (NO ESC) (G&A),Nonlabor,0.0d,1.0,1.0,At Completion Units,12/2/2024,12/2/2024,0,0,0,0,0,0,0,0,0,0,1.03_Accelerator Systems (AS),1.03.07_AS SXR-HE Undulator (Soft X-Ray) - LBNL,1.03.07.06_AS SXR-HE Undulator Procurement and Fabrication - LBNL,1.03.07.06.09_SXR-HE New Undulator Production: Mechanical System & Integration,AS_LBL_PROD_445_RCV: (SLAC) New Undulator #7,M&S,,LBNL,M&S
112202,1.03,1.03.07,1.03.07.06,1.03.07.06.09,1.03.07.06.09,SXR-HE New Undulator Production: Mechanical System & Integration,AS_LBL_PROD_435,RCV: (SLAC) New Undulator #6,1.0,305330.0,305330.0,305330.0,09-02-25,09-02-25,0,0,LBNL,0%,LBNL_MSSC1.LBNL M&S (<$500K) (NO ESC) (G&A),LBNL M&S (<$500K) (NO ESC) (G&A),Nonlabor,0.0d,1.0,1.0,At Completion Units,10/24/2024,10/24/2024,0,0,0,0,0,0,0,0,0,0,1.03_Accelerator Systems (AS),1.03.07_AS SXR-HE Undulator (Soft X-Ray) - LBNL,1.03.07.06_AS SXR-HE Undulator Procurement and Fabrication - LBNL,1.03.07.06.09_SXR-HE New Undulator Production: Mechanical System & Integration,AS_LBL_PROD_435_RCV: (SLAC) New Undulator #6,M&S,,LBNL,M&S
112203,1.03,1.03.07,1.03.07.06,1.03.07.06.09,1.03.07.06.09,SXR-HE New Undulator Production: Mechanical System & Integration,AS_LBL_PROD_425,RCV: (SLAC) New Undulator #5,1.0,0.0,0.0,0.0,07-18-25,07-18-25,0,0,LBNL,0%,LBNL_MSSC1.LBNL M&S (<$500K) (NO ESC) (G&A),LBNL M&S (<$500K) (NO ESC) (G&A),Nonlabor,0.0d,1.0,1.0,At Completion Units,9/11/2024,9/11/2024,0,0,0,0,0,0,0,0,0,0,1.03_Accelerator Systems (AS),1.03.07_AS SXR-HE Undulator (Soft X-Ray) - LBNL,1.03.07.06_AS SXR-HE Undulator Procurement and Fabrication - LBNL,1.03.07.06.09_SXR-HE New Undulator Production: Mechanical System & Integration,AS_LBL_PROD_425_RCV: (SLAC) New Undulator #5,M&S,,LBNL,M&S
112204,1.03,1.03.07,1.03.07.06,1.03.07.06.09,1.03.07.06.09,SXR-HE New Undulator Production: Mechanical System & Integration,AS_LBL_PROD_415,RCV: (SLAC) New Undulator #4,1.0,0.0,0.0,0.0,06-12-25,06-12-25,0,0,LBNL,0%,LBNL_MSSC1.LBNL M&S (<$500K) (NO ESC) (G&A),LBNL M&S (<$500K) (NO ESC) (G&A),Nonlabor,0.0d,1.0,1.0,At Completion Units,8/6/2024,8/6/2024,0,0,0,0,0,0,0,0,0,0,1.03_Accelerator Systems (AS),1.03.07_AS SXR-HE Undulator (Soft X-Ray) - LBNL,1.03.07.06_AS SXR-HE Undulator Procurement and Fabrication - LBNL,1.03.07.06.09_SXR-HE New Undulator Production: Mechanical System & Integration,AS_LBL_PROD_415_RCV: (SLAC) New Undulator #4,M&S,,LBNL,M&S
112205,1.03,1.03.07,1.03.07.06,1.03.07.06.09,1.03.07.06.09,SXR-HE New Undulator Production: Mechanical System & Integration,AS_LBL_PROD_405,RCV: (SLAC) New Undulator #3,1.0,0.0,0.0,0.0,05-07-25,05-07-25,0,0,LBNL,0%,LBNL_MSSC1.LBNL M&S (<$500K) (NO ESC) (G&A),LBNL M&S (<$500K) (NO ESC) (G&A),Nonlabor,0.0d,1.0,1.0,At Completion Units,7/1/2024,7/1/2024,0,0,0,0,0,0,0,0,0,0,1.03_Accelerator Systems (AS),1.03.07_AS SXR-HE Undulator (Soft X-Ray) - LBNL,1.03.07.06_AS SXR-HE Undulator Procurement and Fabrication - LBNL,1.03.07.06.09_SXR-HE New Undulator Production: Mechanical System & Integration,AS_LBL_PROD_405_RCV: (SLAC) New Undulator #3,M&S,,LBNL,M&S
112206,1.03,1.03.07,1.03.07.06,1.03.07.06.09,1.03.07.06.09,SXR-HE New Undulator Production: Mechanical System & Integration,AS_LBL_PROD_395,RCV: (SLAC) New Undulator #2,1.0,0.0,0.0,0.0,04-02-25,04-02-25,0,0,LBNL,0%,LBNL_MSSY.LBNL M&S (>$500K) (NO G&A),LBNL M&S (>$500K) (NO G&A),Nonlabor,0.0d,1.0,1.0,At Completion Units,5/24/2024,5/24/2024,0,0,0,0,0,0,0,0,0,0,1.03_Accelerator Systems (AS),1.03.07_AS SXR-HE Undulator (Soft X-Ray) - LBNL,1.03.07.06_AS SXR-HE Undulator Procurement and Fabrication - LBNL,1.03.07.06.09_SXR-HE New Undulator Production: Mechanical System & Integration,AS_LBL_PROD_395_RCV: (SLAC) New Undulator #2,M&S,,LBNL,M&S
112207,1.03,1.03.07,1.03.07.06,1.03.07.06.09,1.03.07.06.09,SXR-HE New Undulator Production: Mechanical System & Integration,AS_LBL_PROD_470,Vendor Effort: Encoders and Compensating Spring Stacks,140.0,160.0,160.0,160.0,10-03-23,05-06-24,0,0,LBNL,0%,LBNL_E10.3.Mechanical Engineer 3,Mechanical Engineer 3,Labor,0.0d,140.0,140.0,At Completion Units,1/25/2023,8/11/2023,0,0,0,0,0,0,0,0,0,0,1.03_Accelerator Systems (AS),1.03.07_AS SXR-HE Undulator (Soft X-Ray) - LBNL,1.03.07.06_AS SXR-HE Undulator Procurement and Fabrication - LBNL,1.03.07.06.09_SXR-HE New Undulator Production: Mechanical System & Integration,AS_LBL_PROD_470_Vendor Effort: Encoders and Compensating Spring Stacks,Mechanical,,SLAC,Labor
112208,1.03,1.03.07,1.03.07.06,1.03.07.06.09,1.03.07.06.09,SXR-HE New Undulator Production: Mechanical System & Integration,AS_LBL_PROD_460,Vendor Effort: New Undulator #9,25.0,120.0,120.0,120.0,11-04-25,12-10-25,0,0,LBNL,0%,LBNL_E10.4.Mechanical Engineer 4,Mechanical Engineer 4,Labor,0.0d,25.0,25.0,At Completion Units,1/13/2025,2/18/2025,0,0,0,0,0,0,0,0,0,0,1.03_Accelerator Systems (AS),1.03.07_AS SXR-HE Undulator (Soft X-Ray) - LBNL,1.03.07.06_AS SXR-HE Undulator Procurement and Fabrication - LBNL,1.03.07.06.09_SXR-HE New Undulator Production: Mechanical System & Integration,AS_LBL_PROD_460_Vendor Effort: New Undulator #9,Mechanical,,SLAC,Labor
112209,1.03,1.03.07,1.03.07.06,1.03.07.06.09,1.03.07.06.09,SXR-HE New Undulator Production: Mechanical System & Integration,AS_LBL_PROD_460,Vendor Effort: New Undulator #9,25.0,72.0,72.0,72.0,11-04-25,12-10-25,0,0,LBNL,0%,LBNL_E10.3.Mechanical Engineer 3,Mechanical Engineer 3,Labor,0.0d,25.0,25.0,At Completion Units,1/13/2025,2/18/2025,0,0,0,0,0,0,0,0,0,0,1.03_Accelerator Systems (AS),1.03.07_AS SXR-HE Undulator (Soft X-Ray) - LBNL,1.03.07.06_AS SXR-HE Undulator Procurement and Fabrication - LBNL,1.03.07.06.09_SXR-HE New Undulator Production: Mechanical System & Integration,AS_LBL_PROD_460_Vendor Effort: New Undulator #9,Mechanical,,SLAC,Labor
112210,1.03,1.03.07,1.03.07.06,1.03.07.06.09,1.03.07.06.09,SXR-HE New Undulator Production: Mechanical System & Integration,AS_LBL_PROD_450,Vendor Effort: New Undulator #8,25.0,120.0,120.0,120.0,09-30-25,11-03-25,0,0,LBNL,0%,LBNL_E10.4.Mechanical Engineer 4,Mechanical Engineer 4,Labor,0.0d,25.0,25.0,At Completion Units,11/21/2024,1/10/2025,0,0,0,0,0,0,0,0,0,0,1.03_Accelerator Systems (AS),1.03.07_AS SXR-HE Undulator (Soft X-Ray) - LBNL,1.03.07.06_AS SXR-HE Undulator Procurement and Fabrication - LBNL,1.03.07.06.09_SXR-HE New Undulator Production: Mechanical System & Integration,AS_LBL_PROD_450_Vendor Effort: New Undulator #8,Mechanical,,SLAC,Labor
112211,1.03,1.03.07,1.03.07.06,1.03.07.06.09,1.03.07.06.09,SXR-HE New Undulator Production: Mechanical System & Integration,AS_LBL_PROD_450,Vendor Effort: New Undulator #8,25.0,72.0,72.0,72.0,09-30-25,11-03-25,0,0,LBNL,0%,LBNL_E10.3.Mechanical Engineer 3,Mechanical Engineer 3,Labor,0.0d,25.0,25.0,At Completion Units,11/21/2024,1/10/2025,0,0,0,0,0,0,0,0,0,0,1.03_Accelerator Systems (AS),1.03.07_AS SXR-HE Undulator (Soft X-Ray) - LBNL,1.03.07.06_AS SXR-HE Undulator Procurement and Fabrication - LBNL,1.03.07.06.09_SXR-HE New Undulator Production: Mechanical System & Integration,AS_LBL_PROD_450_Vendor Effort: New Undulator #8,Mechanical,,SLAC,Labor
112212,1.03,1.03.07,1.03.07.06,1.03.07.06.09,1.03.07.06.09,SXR-HE New Undulator Production: Mechanical System & Integration,AS_LBL_PROD_440,Vendor Effort: New Undulator #7,25.0,72.0,72.0,72.0,08-25-25,09-29-25,0,0,LBNL,0%,LBNL_E10.3.Mechanical Engineer 3,Mechanical Engineer 3,Labor,0.0d,25.0,25.0,At Completion Units,10/17/2024,11/20/2024,0,0,0,0,0,0,0,0,0,0,1.03_Accelerator Systems (AS),1.03.07_AS SXR-HE Undulator (Soft X-Ray) - LBNL,1.03.07.06_AS SXR-HE Undulator Procurement and Fabrication - LBNL,1.03.07.06.09_SXR-HE New Undulator Production: Mechanical System & Integration,AS_LBL_PROD_440_Vendor Effort: New Undulator #7,Mechanical,,SLAC,Labor
112213,1.03,1.03.07,1.03.07.06,1.03.07.06.09,1.03.07.06.09,SXR-HE New Undulator Production: Mechanical System & Integration,AS_LBL_PROD_440,Vendor Effort: New Undulator #7,25.0,120.0,120.0,120.0,08-25-25,09-29-25,0,0,LBNL,0%,LBNL_E10.4.Mechanical Engineer 4,Mechanical Engineer 4,Labor,0.0d,25.0,25.0,At Completion Units,10/17/2024,11/20/2024,0,0,0,0,0,0,0,0,0,0,1.03_Accelerator Systems (AS),1.03.07_AS SXR-HE Undulator (Soft X-Ray) - LBNL,1.03.07.06_AS SXR-HE Undulator Procurement and Fabrication - LBNL,1.03.07.06.09_SXR-HE New Undulator Production: Mechanical System & Integration,AS_LBL_PROD_440_Vendor Effort: New Undulator #7,Mechanical,,SLAC,Labor
112214,1.03,1.03.07,1.03.07.06,1.03.07.06.09,1.03.07.06.09,SXR-HE New Undulator Production: Mechanical System & Integration,AS_LBL_PROD_430,Vendor Effort: New Undulator #6,25.0,120.0,120.0,120.0,07-21-25,08-22-25,0,0,LBNL,0%,LBNL_E10.4.Mechanical Engineer 4,Mechanical Engineer 4,Labor,0.0d,25.0,25.0,At Completion Units,9/12/2024,10/16/2024,0,0,0,0,0,0,0,0,0,0,1.03_Accelerator Systems (AS),1.03.07_AS SXR-HE Undulator (Soft X-Ray) - LBNL,1.03.07.06_AS SXR-HE Undulator Procurement and Fabrication - LBNL,1.03.07.06.09_SXR-HE New Undulator Production: Mechanical System & Integration,AS_LBL_PROD_430_Vendor Effort: New Undulator #6,Mechanical,,SLAC,Labor
112215,1.03,1.03.07,1.03.07.06,1.03.07.06.09,1.03.07.06.09,SXR-HE New Undulator Production: Mechanical System & Integration,AS_LBL_PROD_430,Vendor Effort: New Undulator #6,25.0,72.0,72.0,72.0,07-21-25,08-22-25,0,0,LBNL,0%,LBNL_E10.3.Mechanical Engineer 3,Mechanical Engineer 3,Labor,0.0d,25.0,25.0,At Completion Units,9/12/2024,10/16/2024,0,0,0,0,0,0,0,0,0,0,1.03_Accelerator Systems (AS),1.03.07_AS SXR-HE Undulator (Soft X-Ray) - LBNL,1.03.07.06_AS SXR-HE Undulator Procurement and Fabrication - LBNL,1.03.07.06.09_SXR-HE New Undulator Production: Mechanical System & Integration,AS_LBL_PROD_430_Vendor Effort: New Undulator #6,Mechanical,,SLAC,Labor
112216,1.03,1.03.07,1.03.07.06,1.03.07.06.09,1.03.07.06.09,SXR-HE New Undulator Production: Mechanical System & Integration,AS_LBL_PROD_420,Vendor Effort: New Undulator #5,25.0,72.0,72.0,72.0,06-05-25,07-10-25,0,0,LBNL,0%,LBNL_E10.3.Mechanical Engineer 3,Mechanical Engineer 3,Labor,0.0d,25.0,25.0,At Completion Units,7/30/2024,9/3/2024,0,0,0,0,0,0,0,0,0,0,1.03_Accelerator Systems (AS),1.03.07_AS SXR-HE Undulator (Soft X-Ray) - LBNL,1.03.07.06_AS SXR-HE Undulator Procurement and Fabrication - LBNL,1.03.07.06.09_SXR-HE New Undulator Production: Mechanical System & Integration,AS_LBL_PROD_420_Vendor Effort: New Undulator #5,Mechanical,,SLAC,Labor
112217,1.03,1.03.07,1.03.07.06,1.03.07.06.09,1.03.07.06.09,SXR-HE New Undulator Production: Mechanical System & Integration,AS_LBL_PROD_420,Vendor Effort: New Undulator #5,25.0,120.0,120.0,120.0,06-05-25,07-10-25,0,0,LBNL,0%,LBNL_E10.4.Mechanical Engineer 4,Mechanical Engineer 4,Labor,0.0d,25.0,25.0,At Completion Units,7/30/2024,9/3/2024,0,0,0,0,0,0,0,0,0,0,1.03_Accelerator Systems (AS),1.03.07_AS SXR-HE Undulator (Soft X-Ray) - LBNL,1.03.07.06_AS SXR-HE Undulator Procurement and Fabrication - LBNL,1.03.07.06.09_SXR-HE New Undulator Production: Mechanical System & Integration,AS_LBL_PROD_420_Vendor Effort: New Undulator #5,Mechanical,,SLAC,Labor
112218,1.03,1.03.07,1.03.07.06,1.03.07.06.09,1.03.07.06.09,SXR-HE New Undulator Production: Mechanical System & Integration,AS_LBL_PROD_410,Vendor Effort: New Undulator #4,25.0,120.0,120.0,120.0,04-30-25,06-04-25,0,0,LBNL,0%,LBNL_E10.4.Mechanical Engineer 4,Mechanical Engineer 4,Labor,0.0d,25.0,25.0,At Completion Units,6/24/2024,7/29/2024,0,0,0,0,0,0,0,0,0,0,1.03_Accelerator Systems (AS),1.03.07_AS SXR-HE Undulator (Soft X-Ray) - LBNL,1.03.07.06_AS SXR-HE Undulator Procurement and Fabrication - LBNL,1.03.07.06.09_SXR-HE New Undulator Production: Mechanical System & Integration,AS_LBL_PROD_410_Vendor Effort: New Undulator #4,Mechanical,,SLAC,Labor
112219,1.03,1.03.07,1.03.07.06,1.03.07.06.09,1.03.07.06.09,SXR-HE New Undulator Production: Mechanical System & Integration,AS_LBL_PROD_410,Vendor Effort: New Undulator #4,25.0,72.0,72.0,72.0,04-30-25,06-04-25,0,0,LBNL,0%,LBNL_E10.3.Mechanical Engineer 3,Mechanical Engineer 3,Labor,0.0d,25.0,25.0,At Completion Units,6/24/2024,7/29/2024,0,0,0,0,0,0,0,0,0,0,1.03_Accelerator Systems (AS),1.03.07_AS SXR-HE Undulator (Soft X-Ray) - LBNL,1.03.07.06_AS SXR-HE Undulator Procurement and Fabrication - LBNL,1.03.07.06.09_SXR-HE New Undulator Production: Mechanical System & Integration,AS_LBL_PROD_410_Vendor Effort: New Undulator #4,Mechanical,,SLAC,Labor
112220,1.03,1.03.07,1.03.07.06,1.03.07.06.09,1.03.07.06.09,SXR-HE New Undulator Production: Mechanical System & Integration,AS_LBL_PROD_400,Vendor Effort: New Undulator #3,25.0,96.0,96.0,96.0,03-26-25,04-29-25,0,0,LBNL,0%,LBNL_E10.3.Mechanical Engineer 3,Mechanical Engineer 3,Labor,0.0d,25.0,25.0,At Completion Units,5/17/2024,6/21/2024,0,0,0,0,0,0,0,0,0,0,1.03_Accelerator Systems (AS),1.03.07_AS SXR-HE Undulator (Soft X-Ray) - LBNL,1.03.07.06_AS SXR-HE Undulator Procurement and Fabrication - LBNL,1.03.07.06.09_SXR-HE New Undulator Production: Mechanical System & Integration,AS_LBL_PROD_400_Vendor Effort: New Undulator #3,Mechanical,,SLAC,Labor
112221,1.03,1.03.07,1.03.07.06,1.03.07.06.09,1.03.07.06.09,SXR-HE New Undulator Production: Mechanical System & Integration,AS_LBL_PROD_400,Vendor Effort: New Undulator #3,25.0,120.0,120.0,120.0,03-26-25,04-29-25,0,0,LBNL,0%,LBNL_E10.4.Mechanical Engineer 4,Mechanical Engineer 4,Labor,0.0d,25.0,25.0,At Completion Units,5/17/2024,6/21/2024,0,0,0,0,0,0,0,0,0,0,1.03_Accelerator Systems (AS),1.03.07_AS SXR-HE Undulator (Soft X-Ray) - LBNL,1.03.07.06_AS SXR-HE Undulator Procurement and Fabrication - LBNL,1.03.07.06.09_SXR-HE New Undulator Production: Mechanical System & Integration,AS_LBL_PROD_400_Vendor Effort: New Undulator #3,Mechanical,,SLAC,Labor
112222,1.03,1.03.07,1.03.07.06,1.03.07.06.09,1.03.07.06.09,SXR-HE New Undulator Production: Mechanical System & Integration,AS_LBL_PROD_390,Vendor Effort: New Undulator #2,40.0,120.0,120.0,120.0,01-28-25,03-25-25,0,0,LBNL,0%,LBNL_E10.4.Mechanical Engineer 4,Mechanical Engineer 4,Labor,0.0d,40.0,40.0,At Completion Units,3/22/2024,5/16/2024,0,0,0,0,0,0,0,0,0,0,1.03_Accelerator Systems (AS),1.03.07_AS SXR-HE Undulator (Soft X-Ray) - LBNL,1.03.07.06_AS SXR-HE Undulator Procurement and Fabrication - LBNL,1.03.07.06.09_SXR-HE New Undulator Production: Mechanical System & Integration,AS_LBL_PROD_390_Vendor Effort: New Undulator #2,Mechanical,,SLAC,Labor
112223,1.03,1.03.07,1.03.07.06,1.03.07.06.09,1.03.07.06.09,SXR-HE New Undulator Production: Mechanical System & Integration,AS_LBL_PROD_390,Vendor Effort: New Undulator #2,40.0,96.0,96.0,96.0,01-28-25,03-25-25,0,0,LBNL,0%,LBNL_E10.3.Mechanical Engineer 3,Mechanical Engineer 3,Labor,0.0d,40.0,40.0,At Completion Units,3/22/2024,5/16/2024,0,0,0,0,0,0,0,0,0,0,1.03_Accelerator Systems (AS),1.03.07_AS SXR-HE Undulator (Soft X-Ray) - LBNL,1.03.07.06_AS SXR-HE Undulator Procurement and Fabrication - LBNL,1.03.07.06.09_SXR-HE New Undulator Production: Mechanical System & Integration,AS_LBL_PROD_390_Vendor Effort: New Undulator #2,Mechanical,,SLAC,Labor
112224,1.03,1.03.07,1.03.07.06,1.03.07.06.09,1.03.07.06.09,SXR-HE New Undulator Production: Mechanical System & Integration,AS_LBL_PROD_380,Vendor Effort: New Undulator #1,40.0,120.0,120.0,120.0,11-06-24,01-16-25,0,0,LBNL,0%,LBNL_E10.4.Mechanical Engineer 4,Mechanical Engineer 4,Labor,0.0d,40.0,40.0,At Completion Units,1/17/2024,3/13/2024,0,0,0,0,0,0,0,0,0,0,1.03_Accelerator Systems (AS),1.03.07_AS SXR-HE Undulator (Soft X-Ray) - LBNL,1.03.07.06_AS SXR-HE Undulator Procurement and Fabrication - LBNL,1.03.07.06.09_SXR-HE New Undulator Production: Mechanical System & Integration,AS_LBL_PROD_380_Vendor Effort: New Undulator #1,Mechanical,,SLAC,Labor
112225,1.03,1.03.07,1.03.07.06,1.03.07.06.09,1.03.07.06.09,SXR-HE New Undulator Production: Mechanical System & Integration,AS_LBL_PROD_380,Vendor Effort: New Undulator #1,40.0,96.0,96.0,96.0,11-06-24,01-16-25,0,0,LBNL,0%,LBNL_E10.3.Mechanical Engineer 3,Mechanical Engineer 3,Labor,0.0d,40.0,40.0,At Completion Units,1/17/2024,3/13/2024,0,0,0,0,0,0,0,0,0,0,1.03_Accelerator Systems (AS),1.03.07_AS SXR-HE Undulator (Soft X-Ray) - LBNL,1.03.07.06_AS SXR-HE Undulator Procurement and Fabrication - LBNL,1.03.07.06.09_SXR-HE New Undulator Production: Mechanical System & Integration,AS_LBL_PROD_380_Vendor Effort: New Undulator #1,Mechanical,,SLAC,Labor
112226,1.03,1.03.07,1.03.07.06,1.03.07.06.09,1.03.07.06.09,SXR-HE New Undulator Production: Mechanical System & Integration,AS_LBL_PROD_370,"Vendor Effort: Mechanical System Long Lead Items Fab - Schneeberger rails, motor, drive assembly  (4-6 commercial)",200.0,80.0,80.0,80.0,01-25-24,11-05-24,0,0,LBNL,0%,LBNL_N30.2.Sr Mechanical Engr Associate,Sr Mechanical Engr Associate,Labor,0.0d,200.0,200.0,At Completion Units,1/25/2023,11/6/2023,0,0,0,0,0,0,0,0,0,0,1.03_Accelerator Systems (AS),1.03.07_AS SXR-HE Undulator (Soft X-Ray) - LBNL,1.03.07.06_AS SXR-HE Undulator Procurement and Fabrication - LBNL,1.03.07.06.09_SXR-HE New Undulator Production: Mechanical System & Integration,"AS_LBL_PROD_370_Vendor Effort: Mechanical System Long Lead Items Fab - Schneeberger rails, motor, drive assembly  (4-6 commercial)",Mechanical,,SLAC,Labor
112227,1.03,1.03.07,1.03.07.06,1.03.07.06.09,1.03.07.06.09,SXR-HE New Undulator Production: Mechanical System & Integration,AS_LBL_PROD_370,"Vendor Effort: Mechanical System Long Lead Items Fab - Schneeberger rails, motor, drive assembly  (4-6 commercial)",200.0,350.0,350.0,350.0,01-25-24,11-05-24,0,0,LBNL,0%,LBNL_E10.3.Mechanical Engineer 3,Mechanical Engineer 3,Labor,0.0d,200.0,200.0,At Completion Units,1/25/2023,11/6/2023,0,0,0,0,0,0,0,0,0,0,1.03_Accelerator Systems (AS),1.03.07_AS SXR-HE Undulator (Soft X-Ray) - LBNL,1.03.07.06_AS SXR-HE Undulator Procurement and Fabrication - LBNL,1.03.07.06.09_SXR-HE New Undulator Production: Mechanical System & Integration,"AS_LBL_PROD_370_Vendor Effort: Mechanical System Long Lead Items Fab - Schneeberger rails, motor, drive assembly  (4-6 commercial)",Mechanical,,SLAC,Labor
112866,1.03,1.03.07,1.03.07.20,1.03.07.20.02,1.03.07.20.02,SXR-HE Undulator Pre-Production and 1st Production Installation Support,AS_LBL_INST_140,Production Support - Magnet Module Installation,20.0,40.0,40.0,40.0,06-10-24,07-08-24,0,0,LBNL,0%,LBNL_E10.4.Mechanical Engineer 4,Mechanical Engineer 4,Labor,0.0d,20.0,20.0,At Completion Units,10/13/2023,11/9/2023,0,0,0,0,0,0,0,0,0,0,1.03_Accelerator Systems (AS),1.03.07_AS SXR-HE Undulator (Soft X-Ray) - LBNL,1.03.07.20_AS SXR-HE Undulator Installation (Pre-Prod/1st Prod) - LBNL,1.03.07.20.02_SXR-HE Undulator Pre-Production and 1st Production Installation Support,AS_LBL_INST_140_Production Support - Magnet Module Installation,Mechanical,,SLAC,Labor
112867,1.03,1.03.07,1.03.07.20,1.03.07.20.02,1.03.07.20.02,SXR-HE Undulator Pre-Production and 1st Production Installation Support,AS_LBL_INST_140,Production Support - Magnet Module Installation,20.0,40.0,40.0,40.0,06-10-24,07-08-24,0,0,LBNL,0%,LBNL_706.4.Mechanical Engr Tech IV,Mechanical Engr Tech IV,Labor,0.0d,20.0,20.0,At Completion Units,10/13/2023,11/9/2023,0,0,0,0,0,0,0,0,0,0,1.03_Accelerator Systems (AS),1.03.07_AS SXR-HE Undulator (Soft X-Ray) - LBNL,1.03.07.20_AS SXR-HE Undulator Installation (Pre-Prod/1st Prod) - LBNL,1.03.07.20.02_SXR-HE Undulator Pre-Production and 1st Production Installation Support,AS_LBL_INST_140_Production Support - Magnet Module Installation,Mechanical,Tech,SLAC,Labor
112868,1.03,1.03.07,1.03.07.20,1.03.07.20.02,1.03.07.20.02,SXR-HE Undulator Pre-Production and 1st Production Installation Support,AS_LBL_INST_130,Revise Magnet Module QA & Drawing Documentation,20.0,40.0,40.0,40.0,07-29-22,08-25-22,0,0,LBNL,0%,LBNL_N30.2.Sr Mechanical Engr Associate,Sr Mechanical Engr Associate,Labor,0.0d,20.0,20.0,At Completion Units,9/12/2022,10/7/2022,0,0,0,0,0,0,0,0,0,0,1.03_Accelerator Systems (AS),1.03.07_AS SXR-HE Undulator (Soft X-Ray) - LBNL,1.03.07.20_AS SXR-HE Undulator Installation (Pre-Prod/1st Prod) - LBNL,1.03.07.20.02_SXR-HE Undulator Pre-Production and 1st Production Installation Support,AS_LBL_INST_130_Revise Magnet Module QA & Drawing Documentation,Mechanical,,SLAC,Labor
112869,1.03,1.03.07,1.03.07.20,1.03.07.20.02,1.03.07.20.02,SXR-HE Undulator Pre-Production and 1st Production Installation Support,AS_LBL_INST_130,Revise Magnet Module QA & Drawing Documentation,20.0,80.0,80.0,80.0,07-29-22,08-25-22,0,0,LBNL,0%,LBNL_E10.4.Mechanical Engineer 4,Mechanical Engineer 4,Labor,0.0d,20.0,20.0,At Completion Units,9/12/2022,10/7/2022,0,0,0,0,0,0,0,0,0,0,1.03_Accelerator Systems (AS),1.03.07_AS SXR-HE Undulator (Soft X-Ray) - LBNL,1.03.07.20_AS SXR-HE Undulator Installation (Pre-Prod/1st Prod) - LBNL,1.03.07.20.02_SXR-HE Undulator Pre-Production and 1st Production Installation Support,AS_LBL_INST_130_Revise Magnet Module QA & Drawing Documentation,Mechanical,,SLAC,Labor
112870,1.03,1.03.07,1.03.07.20,1.03.07.20.02,1.03.07.20.02,SXR-HE Undulator Pre-Production and 1st Production Installation Support,AS_LBL_INST_120,Pre-Production Support - Magnet Module Testing,80.0,160.0,160.0,160.0,07-29-22,11-18-22,0,0,LBNL,0%,LBNL_S36.4.Mechanical Staff Sci/Engr,Mechanical Staff Sci/Engr,Labor,0.0d,80.0,80.0,At Completion Units,9/12/2022,1/18/2023,0,0,0,0,0,0,0,0,0,0,1.03_Accelerator Systems (AS),1.03.07_AS SXR-HE Undulator (Soft X-Ray) - LBNL,1.03.07.20_AS SXR-HE Undulator Installation (Pre-Prod/1st Prod) - LBNL,1.03.07.20.02_SXR-HE Undulator Pre-Production and 1st Production Installation Support,AS_LBL_INST_120_Pre-Production Support - Magnet Module Testing,Mechanical,,SLAC,Labor
112871,1.03,1.03.07,1.03.07.20,1.03.07.20.02,1.03.07.20.02,SXR-HE Undulator Pre-Production and 1st Production Installation Support,AS_LBL_INST_110,Pre-Production Support - Magnet Module Installation,20.0,80.0,80.0,80.0,06-30-22,07-28-22,0,0,LBNL,0%,LBNL_E10.4.Mechanical Engineer 4,Mechanical Engineer 4,Labor,0.0d,20.0,20.0,At Completion Units,8/12/2022,9/9/2022,0,0,0,0,0,0,0,0,0,0,1.03_Accelerator Systems (AS),1.03.07_AS SXR-HE Undulator (Soft X-Ray) - LBNL,1.03.07.20_AS SXR-HE Undulator Installation (Pre-Prod/1st Prod) - LBNL,1.03.07.20.02_SXR-HE Undulator Pre-Production and 1st Production Installation Support,AS_LBL_INST_110_Pre-Production Support - Magnet Module Installation,Mechanical,,SLAC,Labor
112872,1.03,1.03.07,1.03.07.20,1.03.07.20.02,1.03.07.20.02,SXR-HE Undulator Pre-Production and 1st Production Installation Support,AS_LBL_INST_110,Pre-Production Support - Magnet Module Installation,20.0,80.0,80.0,80.0,06-30-22,07-28-22,0,0,LBNL,0%,LBNL_706.4.Mechanical Engr Tech IV,Mechanical Engr Tech IV,Labor,0.0d,20.0,20.0,At Completion Units,8/12/2022,9/9/2022,0,0,0,0,0,0,0,0,0,0,1.03_Accelerator Systems (AS),1.03.07_AS SXR-HE Undulator (Soft X-Ray) - LBNL,1.03.07.20_AS SXR-HE Undulator Installation (Pre-Prod/1st Prod) - LBNL,1.03.07.20.02_SXR-HE Undulator Pre-Production and 1st Production Installation Support,AS_LBL_INST_110_Pre-Production Support - Magnet Module Installation,Mechanical,Tech,SLAC,Labor
112873,1.03,1.03.07,1.03.07.20,1.03.07.20.02,1.03.07.20.02,SXR-HE Undulator Pre-Production and 1st Production Installation Support,AS_LBL_INST_105,Pre-Production Support - Undulator Disassembly,20.0,80.0,80.0,80.0,06-02-22,06-29-22,0,0,LBNL,0%,LBNL_706.4.Mechanical Engr Tech IV,Mechanical Engr Tech IV,Labor,0.0d,20.0,20.0,At Completion Units,4/5/2022,5/2/2022,0,0,0,0,0,0,0,0,0,0,1.03_Accelerator Systems (AS),1.03.07_AS SXR-HE Undulator (Soft X-Ray) - LBNL,1.03.07.20_AS SXR-HE Undulator Installation (Pre-Prod/1st Prod) - LBNL,1.03.07.20.02_SXR-HE Undulator Pre-Production and 1st Production Installation Support,AS_LBL_INST_105_Pre-Production Support - Undulator Disassembly,Mechanical,Tech,SLAC,Labor
112874,1.03,1.03.07,1.03.07.20,1.03.07.20.02,1.03.07.20.02,SXR-HE Undulator Pre-Production and 1st Production Installation Support,AS_LBL_INST_105,Pre-Production Support - Undulator Disassembly,20.0,80.0,80.0,80.0,06-02-22,06-29-22,0,0,LBNL,0%,LBNL_E10.4.Mechanical Engineer 4,Mechanical Engineer 4,Labor,0.0d,20.0,20.0,At Completion Units,4/5/2022,5/2/2022,0,0,0,0,0,0,0,0,0,0,1.03_Accelerator Systems (AS),1.03.07_AS SXR-HE Undulator (Soft X-Ray) - LBNL,1.03.07.20_AS SXR-HE Undulator Installation (Pre-Prod/1st Prod) - LBNL,1.03.07.20.02_SXR-HE Undulator Pre-Production and 1st Production Installation Support,AS_LBL_INST_105_Pre-Production Support - Undulator Disassembly,Mechanical,,SLAC,Labor
298343,1.03,1.03,1.03,1.03,1.03,Accelerator Systems (AS),AS_M4_1000,COMP: Accelerator Systems Ready for CD-1,0.0,0.0,0.0,0.0,0,0,MS_FY_2019: FS,AS_HPRF_SSA_5460: FS,0,0,0,0,0,0,0.0,0.0,0,nn,06-08-18,0,0.0h,0.0h,100%,$0,0.0h,0,0,$0,$0,1.03_Accelerator Systems (AS),,,,AS_M4_1000_COMP: Accelerator Systems Ready for CD-1
298344,1.03,1.03,1.03,1.03,1.03,Accelerator Systems (AS),AS_M4_3065,COMP: CDS Design Build Spec Complete,0.0,0.0,0.0,0.0,0,07-13-22,"AS_CDS_BT_5070: FS, AS_CDS_DB_5070: FS, AS_CDS_EC_5070: FS, AS_CDS_IB3_5070: FS, AS_CDS_PD_5089: FS, AS_CDS_TL_5070: FS, AS_CDS_VB_5070: FS, AS_CDS_VL_5070: FS",MS_L3_1340: FS,0,0,0,0,0,0,0.0,0.0,0,nn,07-13-22,0,0.0h,0.0h,0%,$0,0.0h,2099.5d,0,$0,$0,1.03_Accelerator Systems (AS),,,,AS_M4_3065_COMP: CDS Design Build Spec Complete
298345,1.03,1.03,1.03,1.03,1.03,Accelerator Systems (AS),AS_M4_3080,COMP: Final Design Review - Undulator System,0.0,0.0,0.0,0.0,0,08-02-22,"AS_SXU_DE_1090: FS, AS_SXU_DE_1410: FS",MS_L3_1360: FS 40.0d,0,0,0,0,0,0,0.0,0.0,0,nn,08-02-22,0,0.0h,0.0h,0%,$0,0.0h,2045.5d,0,$0,$0,1.03_Accelerator Systems (AS),,,,AS_M4_3080_COMP: Final Design Review - Undulator System
298346,1.03,1.03,1.03,1.03,1.03,Accelerator Systems (AS),AS_M4_3090,COMP: Final Design Review - Linac System,0.0,0.0,0.0,0.0,0,04-10-23,"AS_HPRF_WAV_5190: FS, AS_ScL_L34_5090: FS, AS_ScL_L3B_5090: FS, AS_ScL_L4_5090: FS, AS_ScL_L4EDG_5090: FS",MS_L3_1490: FS 40.0d,0,0,0,0,0,0,0.0,0.0,0,nn,04-10-23,0,0.0h,0.0h,0%,$0,0.0h,1941.5d,0,$0,$0,1.03_Accelerator Systems (AS),,,,AS_M4_3090_COMP: Final Design Review - Linac System
298347,1.03,1.03,1.03,1.03,1.03,Accelerator Systems (AS),AS_M4_3000,COMP: AS Ready for CD-2/3,0.0,0.0,0.0,0.0,0,04-24-23,"AS_ScL_1000: FS, AS_CDS_9000: FS, AS_LBL_L4_00: FS, AS_SXU_1000: FS, AS_BTL_9000: FS","PM_REV_1070: FS, MS_L3_1220: FS 40.0d",0,0,0,0,0,0,0.0,0.0,0,nn,04-24-23,0,0.0h,0.0h,0%,$0,0.0h,58.0d,0,$0,$0,1.03_Accelerator Systems (AS),,,,AS_M4_3000_COMP: AS Ready for CD-2/3
298348,1.03,1.03,1.03,1.03,1.03,Accelerator Systems (AS),AS_M4_DTS1_1020,"COMP: AS Ready for Linac Downtime (Short #1, FY23)",0.0,0.0,0.0,0.0,0,07-26-23,"AS_ScL_IRR_9130: FS, AS_SXU_INST_4030: FS","MS_L3_1480: FS 40.0d, PM_DTS1_1110: FF",0,0,0,0,0,0,0.0,0.0,0,nn,07-26-23,0,0.0h,0.0h,0%,$0,0.0h,3.0d,0,$0,$0,1.03_Accelerator Systems (AS),,,,"AS_M4_DTS1_1020_COMP: AS Ready for Linac Downtime (Short #1, FY23)"
298349,1.03,1.03,1.03,1.03,1.03,Accelerator Systems (AS),AS_M4_1020,"START: AS Linac Downtime (Short #1, FY23)",0.0,0.0,0.0,0.0,0,08-01-23,PM_DTS1_1120: SS,AS_HPRF_CAP_9090: FS,0,0,0,0,0,0,0.0,0.0,0,nn,08-01-23,0,0.0h,0.0h,0%,$0,0.0h,12.0d,0,$0,$0,1.03_Accelerator Systems (AS),,,,"AS_M4_1020_START: AS Linac Downtime (Short #1, FY23)"
298350,1.03,1.03,1.03,1.03,1.03,Accelerator Systems (AS),AS_M4_3010,COMP: AS Approved CD-2/3 Performance Baseline / Start of Construction,0.0,0.0,0.0,0.0,0,09-29-23,PM_REV_1130: FS,"AS_BTL_MANF_1000: FS, AS_CDS_DB_6180: FS, AS_HPRF_CAP_6130: FS, AS_HPRF_CND_6120: FS, AS_HPRF_CNX_6010: FS, AS_HPRF_SSA_6010: FS, AS_HPRF_ST_6160: FS, AS_HPRF_WAV_6120: FS, AS_ScL_CM_RQD_9010: FS, AS_ScL_TOO_CMx_6010: FS, AS_ScL_TOO_VAC_6010: FS, AS_ScL_TOO_WLD_6010: FS, AS_ScL_VAC_DOG_6200: FS, AS_ScL_VAC_L34_6200: FS, AS_ScL_VAC_SCP_6010: FS, AS_LBL_PROD_190: FS, AS_LBL_PROC_980: FS, AS_SXU_MANF_3510: FS, AS_SXU_MANF_3680: FS, AS_SXU_MANF_3880: FS, AS_SXU_MANF_4080: FS, AS_SXU_MANF_4280: FS, AS_SXU_MANF_4430: FS, AS_SXU_MANF_4630: FS, AS_SXU_MANF_5230: FS, AS_SXU_MANF_5515: FS, AS_SXU_MANF_3310: FS, AS_CDS_IB_6180: FS, AS_CDS_TL_6170: FS, AS_CDS_VL_6180: FS, AS_CDS_VB_6150: FS, AS_CDS_EC_6150: FS, AS_SXU_MANF_5810: FS, AS_SXU_MANF_5820: FS, AS_SXU_MANF_5830: FS, AS_SXU_MANF_5840: FS, AS_SXU_MANF_5850: FS, AS_SXU_MANF_5860: FS, AS_SXU_MANF_5870: FS",0,0,0,0,0,0,0.0,0.0,0,nn,09-29-23,0,0.0h,0.0h,0%,$0,0.0h,-256.5d,0,$0,$0,1.03_Accelerator Systems (AS),,,,AS_M4_3010_COMP: AS Approved CD-2/3 Performance Baseline / Start of Construction
298351,1.03,1.03,1.03,1.03,1.03,Accelerator Systems (AS),AS_M4_3060,COMP: Final Design Review - Accelerator Systems,0.0,0.0,0.0,0.0,0,04-03-24,"AS_BTL_DE_1040: FS, AS_CDS_BT_6140: FS, AS_CDS_DB_6170: FS, AS_CDS_EC_6140: FS, AS_CDS_IB_6170: FS, AS_CDS_SU_5050: FS, AS_CDS_TL_6160: FS, AS_CDS_TU_5050: FS, AS_CDS_VB_6140: FS, AS_CDS_VL_6170: FS, AS_DES_1060: FS, AS_DMP_DE_1050: FS, AS_HPRF_WAV_5190: FS, AS_LBL_DE_280: FS, AS_ScL_L34_5090: FS, AS_ScL_L3B_5090: FS, AS_ScL_L4_5090: FS, AS_ScL_L4EDG_5090: FS, AS_SXU_DE_1090: FS, AS_SXU_DE_1410: FS",MS_L3_1300: FS 40.0d,0,0,0,0,0,0,0.0,0.0,0,nn,04-03-24,0,0.0h,0.0h,0%,$0,0.0h,1642.5d,0,$0,$0,1.03_Accelerator Systems (AS),,,,AS_M4_3060_COMP: Final Design Review - Accelerator Systems
298352,1.03,1.03,1.03,1.03,1.03,Accelerator Systems (AS),AS_M4_3070,COMP: Final Design Review - Cryo Disbribution System,0.0,0.0,0.0,0.0,0,04-03-24,"AS_CDS_BT_6140: FS, AS_CDS_DB_6170: FS, AS_CDS_EC_6140: FS, AS_CDS_IB_6170: FS, AS_CDS_SU_5050: FS, AS_CDS_TL_6160: FS, AS_CDS_TU_5050: FS, AS_CDS_VB_6140: FS, AS_CDS_VL_6170: FS",MS_L3_1340: FS 40.0d,0,0,0,0,0,0,0.0,0.0,0,nn,04-03-24,0,0.0h,0.0h,0%,$0,0.0h,1642.5d,0,$0,$0,1.03_Accelerator Systems (AS),,,,AS_M4_3070_COMP: Final Design Review - Cryo Disbribution System
298353,1.03,1.03,1.03,1.03,1.03,Accelerator Systems (AS),AS_M4_DTS2_1020,"COMP: AS Ready for Linac Downtime (Short #2, FY24)",0.0,0.0,0.0,0.0,0,06-04-24,AS_ScL_IRR_9230: FS,"MS_L3_1480: FS 40.0d, AS_M4_DTS2_1030: FS",0,0,0,0,0,0,0.0,0.0,0,nn,06-04-24,0,0.0h,0.0h,0%,$0,0.0h,82.0d,0,$0,$0,1.03_Accelerator Systems (AS),,,,"AS_M4_DTS2_1020_COMP: AS Ready for Linac Downtime (Short #2, FY24)"
298354,1.03,1.03,1.03,1.03,1.03,Accelerator Systems (AS),AS_M4_1030,"START: AS Linac Downtime (Short #2, FY24)",0.0,0.0,0.0,0.0,0,08-01-24,PM_DTS2_1210: FS,"AS_BSY_INST_1000: FS, AS_BSY_INST_1010: FS, AS_BSY_INST_1060: FS, AS_CDS_DB_9040: FS, AS_CDS_SHLD_9110: FS, AS_DOG_INST_1000: FS, AS_DOG_INST_1010: FS, AS_DOG_INST_1020: FS, AS_DOG_INST_1030: FS, AS_DOG_INST_1100: FS, AS_EBD_INST_1000: FS, AS_EBD_INST_1060: FS, AS_ScL_CM00_SUP_030: FS, AS_ScL_IRR_9300: FS, AS_SXU_INST_5000: FS, AS_SPD_INST_1100: FS, AS_HPRF_CAP_9650: FS, AS_HPRF_CAP_9290: FS, AS_SPD_INST_1000: FS, AS_SPD_INST_1010: FS, AS_SXU_INST_5010: FS",0,0,0,0,0,0,0.0,0.0,0,nn,08-01-24,0,0.0h,0.0h,0%,$0,0.0h,-3.0d,0,$0,$0,1.03_Accelerator Systems (AS),,,,"AS_M4_1030_START: AS Linac Downtime (Short #2, FY24)"
298355,1.03,1.03,1.03,1.03,1.03,Accelerator Systems (AS),AS_M4_DTS1_1030,"COMP: AS Installation Complete for Linac Downtime (Short #1, FY23)",0.0,0.0,0.0,0.0,0,09-25-24,"AS_HPRF_CAP_9130: FS, AS_BTL_MANF_2100: FS","PM_DTS1_1130: FS, AS_M4_3120: FS",0,0,0,0,0,0,0.0,0.0,0,nn,09-25-24,0,0.0h,0.0h,0%,$0,0.0h,-240.0d,0,$0,$0,1.03_Accelerator Systems (AS),,,,"AS_M4_DTS1_1030_COMP: AS Installation Complete for Linac Downtime (Short #1, FY23)"
298356,1.03,1.03,1.03,1.03,1.03,Accelerator Systems (AS),AS_M4_DTS2_1030,"COMP: AS Installation Complete for Linac Downtime (Short #2, FY24)",0.0,0.0,0.0,0.0,0,10-03-24,"AS_SXU_INST_5000: FS, AS_EBD_INST_1080: FS, AS_SPD_INST_1130: FS, AS_EBD_INST_1060: FS, AS_EBD_INST_1070: FS, AS_BSY_INST_1060: FS, AS_BSY_INST_1080: FS, AS_BSY_INST_1080: FF, AS_DOG_INST_3110: FS, AS_EBD_INST_2060: FS, AS_SPD_INST_1100: FS, AS_SPD_INST_1120: FS, AS_M4_DTS2_1020: FS","PM_DTS2_1230: FS, AS_M4_3120: FS",0,0,0,0,0,0,0.0,0.0,0,nn,10-03-24,0,0.0h,0.0h,0%,$0,0.0h,-3.0d,0,$0,$0,1.03_Accelerator Systems (AS),,,,"AS_M4_DTS2_1030_COMP: AS Installation Complete for Linac Downtime (Short #2, FY24)"
298357,1.03,1.03,1.03,1.03,1.03,Accelerator Systems (AS),AS_M4_3050,COMP: BTL Mechanical Installation Complete,0.0,0.0,0.0,0.0,0,11-21-24,"AS_DOG_INST_1130: FS, AS_DOG_INST_1120: FS, AS_DOG_INST_1110: FS, AS_DOG_INST_2060: FS, AS_DOG_INST_1100: FS, AS_SPD_INST_2060: FS","MS_L3_1710: FS 40.0d, AS_M4_3120: FS",0,0,0,0,0,0,0.0,0.0,0,nn,11-21-24,0,0.0h,0.0h,0%,$0,0.0h,1479.5d,0,$0,$0,1.03_Accelerator Systems (AS),,,,AS_M4_3050_COMP: BTL Mechanical Installation Complete
298358,1.03,1.03,1.03,1.03,1.03,Accelerator Systems (AS),AS_M4_DTL1_1000,"COMP: AS Ready for Linac Downtime (Long, FY25-26)",0.0,0.0,0.0,0.0,0,01-13-25,AS_ScL_IRR_9330: FS,"MS_L3_1480: FS 40.0d, PM_DTL1_1310: FS",0,0,0,0,0,0,0.0,0.0,0,nn,01-13-25,0,0.0h,0.0h,0%,$0,0.0h,53.0d,0,$0,$0,1.03_Accelerator Systems (AS),,,,"AS_M4_DTL1_1000_COMP: AS Ready for Linac Downtime (Long, FY25-26)"
298359,1.03,1.03,1.03,1.03,1.03,Accelerator Systems (AS),AS_M4_1010,"START: AS Linac Downtime (Long, FY25-26)",0.0,0.0,0.0,0.0,0,04-01-25,PM_DTL1_1310: FS,"AS_ScL_L34_9010: FS, AS_CDS_EC3_9190: FS, AS_CDS_IB_9040: FS, AS_CDS_TL_9050: FS, AS_HPRF_ST_9050: FS, AS_HPRF_WGCM_9100: FS, AS_ScL_CM00_RIG_9100: FS, AS_ScL_CM00_SUP_110: FS, AS_ScL_CM00_SUP_115: FS, AS_ScL_EXT_9100: FS, AS_ScL_EXT_9110: FS, AS_ScL_EXT_9120: FS, AS_ScL_INS_9010: FS, AS_ScL_INS_9020: FS, AS_ScL_INS_9030: FS, AS_ScL_INS_9040: FS, AS_ScL_INS_9050: FS, AS_ScL_INS_9060: FS, AS_ScL_INS_9070: FS, AS_ScL_INS_9080: FS, AS_ScL_INS_CSM_9010: FS, AS_HPRF_CAP_9295: FS, AS_HPRF_CAP_9790: FS",0,0,0,0,0,0,0.0,0.0,0,nn,04-01-25,0,0.0h,0.0h,0%,$0,0.0h,193.0d,0,$0,$0,1.03_Accelerator Systems (AS),,,,"AS_M4_1010_START: AS Linac Downtime (Long, FY25-26)"
298360,1.03,1.03,1.03,1.03,1.03,Accelerator Systems (AS),AS_M4_SXR_1010,COMP: SXU Installed - 30%,0.0,0.0,0.0,0.0,0,04-24-25,AS_SXU_INST_0100: FS,AS_M4_SXR_1030: FS,0,0,0,0,0,0,0.0,0.0,0,nn,04-24-25,0,0.0h,0.0h,0%,$0,0.0h,1383.5d,0,$0,$0,1.03_Accelerator Systems (AS),,,,AS_M4_SXR_1010_COMP: SXU Installed - 30%
298361,1.03,1.03,1.03,1.03,1.03,Accelerator Systems (AS),AS_M4_DTL1_1010,"COMP: AS Installation Complete for Linac Downtime (Long, FY25-26)",0.0,0.0,0.0,0.0,0,06-11-25,"AS_HPRF_CAP_9950: FS, AS_BTL_MANF_1010: FS, AS_BTL_MANF_2000: FS","PM_DTL1_1330: FS, AS_M4_3120: FS",0,0,0,0,0,0,0.0,0.0,0,nn,06-11-25,0,0.0h,0.0h,0%,$0,0.0h,193.0d,0,$0,$0,1.03_Accelerator Systems (AS),,,,"AS_M4_DTL1_1010_COMP: AS Installation Complete for Linac Downtime (Long, FY25-26)"
298362,1.03,1.03,1.03,1.03,1.03,Accelerator Systems (AS),AS_M4_SXR_1020,COMP: SXU Installed - 60%,0.0,0.0,0.0,0.0,0,11-07-25,AS_SXU_INST_0101: FS,AS_M4_SXR_1030: FS,0,0,0,0,0,0,0.0,0.0,0,nn,11-07-25,0,0.0h,0.0h,0%,$0,0.0h,1245.5d,0,$0,$0,1.03_Accelerator Systems (AS),,,,AS_M4_SXR_1020_COMP: SXU Installed - 60%
298363,1.03,1.03,1.03,1.03,1.03,Accelerator Systems (AS),AS_M4_SXR_1030,COMP:  SXU Installed - 100%,0.0,0.0,0.0,0.0,0,01-27-26,"AS_M4_SXR_1020: FS, AS_SXU_INST_0102: FS, AS_M4_SXR_1010: FS","AS_M4_3020: FS, AS_M4_3120: FS",0,0,0,0,0,0,0.0,0.0,0,nn,01-27-26,0,0.0h,0.0h,0%,$0,0.0h,1201.5d,0,$0,$0,1.03_Accelerator Systems (AS),,,,AS_M4_SXR_1030_COMP:  SXU Installed - 100%
298364,1.03,1.03,1.03,1.03,1.03,Accelerator Systems (AS),AS_M4_3020,COMP: SXR Ready for Commissioning (TTO),0.0,0.0,0.0,0.0,0,03-12-26,"AS_M4_SXR_1030: FS, AS_LBL_L4_10: FS, AS_SXU_1010: FS, AS_SXU_INST_8480: FS",MS_L3_1710: FS 40.0d,0,0,0,0,0,0,0.0,0.0,0,nn,03-12-26,0,0.0h,0.0h,0%,$0,0.0h,1170.5d,0,$0,$0,1.03_Accelerator Systems (AS),,,,AS_M4_3020_COMP: SXR Ready for Commissioning (TTO)
298365,1.03,1.03,1.03,1.03,1.03,Accelerator Systems (AS),AS_M4_3040,COMP: CDS Mechanical Installation Complete,0.0,0.0,0.0,0.0,0,02-05-27,AS_CDS_9010: FS,"MS_L3_1600: FS 40.0d, MS_L3_1710: FS 40.0d, AS_M4_3120: FS",0,0,0,0,0,0,0.0,0.0,0,nn,02-05-27,0,0.0h,0.0h,0%,$0,0.0h,950.5d,0,$0,$0,1.03_Accelerator Systems (AS),,,,AS_M4_3040_COMP: CDS Mechanical Installation Complete
298366,1.03,1.03,1.03,1.03,1.03,Accelerator Systems (AS),AS_M4_3030,COMP: ScL Mechanical Installation Complete,0.0,0.0,0.0,0.0,0,05-12-27,"AS_HPRF_INST_5030: FS, AS_HPRF_WGCM_9900: FS, AS_HPRF_WGKG_9740: FS, AS_ScL_CM32_9013: FS, AS_ScL_CM59_9010: FS, AS_ScL_EXT_9180: FS, AS_ScL_EXT_9300: FS, AS_ScL_L34_9140: FS, AS_ScL_L4_SPI_9020: FS, AS_ScL_L4A_9100: FS, AS_ScL_L4B_9100: FS","MS_L3_1560: FS 40.0d, MS_L3_1710: FS 40.0d, AS_M4_3120: FS",0,0,0,0,0,0,0.0,0.0,0,nn,05-12-27,0,0.0h,0.0h,0%,$0,0.0h,883.5d,0,$0,$0,1.03_Accelerator Systems (AS),,,,AS_M4_3030_COMP: ScL Mechanical Installation Complete
298367,1.03,1.03,1.03,1.03,1.03,Accelerator Systems (AS),AS_M4_3110,COMP: ARR - Cu Linac,0.0,0.0,0.0,0.0,0,05-12-27,AS_HPRF_WGCM_9900: FS,MS_L3_1650: FS 40.0d,0,0,0,0,0,0,0.0,0.0,0,nn,05-12-27,0,0.0h,0.0h,0%,$0,0.0h,943.5d,0,$0,$0,1.03_Accelerator Systems (AS),,,,AS_M4_3110_COMP: ARR - Cu Linac
298368,1.03,1.03,1.03,1.03,1.03,Accelerator Systems (AS),AS_M4_3120,COMP: Accelerator Systems - Ready for CD-4,0.0,0.0,0.0,0.0,0,05-12-27,"AS_M4_3030: FS, AS_M4_3040: FS, AS_M4_3050: FS, AS_M4_DTL1_1010: FS, AS_M4_DTS1_1030: FS, AS_M4_DTS2_1030: FS, AS_M4_SXR_1030: FS",MS_L3_1940: FS 40.0d,0,0,0,0,0,0,0.0,0.0,0,nn,05-12-27,0,0.0h,0.0h,0%,$0,0.0h,883.5d,0,$0,$0,1.03_Accelerator Systems (AS),,,,AS_M4_3120_COMP: Accelerator Systems - Ready for CD-4
298369,1.03,1.03,1.03,1.03,1.03,Accelerator Systems (AS),AS_M4_3100,COMP: ARR - SC Linac,0.0,0.0,0.0,0.0,0,05-12-27,AS_HPRF_WGCM_9900: FS,MS_L3_1640: FS 40.0d,0,0,0,0,0,0,0.0,0.0,0,nn,05-12-27,0,0.0h,0.0h,0%,$0,0.0h,883.5d,0,$0,$0,1.03_Accelerator Systems (AS),,,,AS_M4_3100_COMP: ARR - SC Linac
298370,1.03,1.03.01,1.03.01.05,1.03.01.05.02,1.03.01.05.02,Accelerator Systems - Integrated Design Review,AS_DES_1000,"START: Prelim. Design - Integrated Design Review (AS,CS, IF) for (CP, KG, housing)",0.0,0.0,0.0,0.0,0,02-16-23,"AS_ScL_L4_5040: FS, AS_ScL_L4EDG_5040: FS, AS_ScL_L3B_5040: FS, AS_ScL_L34_5040: FS, AS_HPRF_WAV_5140: FS","AS_DES_1010: FS, AS_DES_1020: FS",0,0,0,0,0,0,0.0,0.0,0,nn,02-16-23,0,0.0h,0.0h,0%,$0,0.0h,359.0d,0,$0,$0,1.03_Accelerator Systems (AS),1.03.01_AS Accelerator Systems Management & Integration,1.03.01.05_Accelerator Systems - Integrated CAD Modeling,1.03.01.05.02_Accelerator Systems - Integrated Design Review,"AS_DES_1000_START: Prelim. Design - Integrated Design Review (AS,CS, IF) for (CP, KG, housing)"
298371,1.03,1.03.01,1.03.01.05,1.03.01.05.02,1.03.01.05.02,Accelerator Systems - Integrated Design Review,AS_DES_1040,"COMP: Prelim. Design Review - Integrated Design Review (AS,CS, IF) for (CP, KG, housing)",0.0,0.0,0.0,0.0,0,03-27-23,AS_DES_1030: FS,AS_DES_1050: FS,0,0,0,0,0,0,0.0,0.0,0,nn,03-27-23,0,0.0h,0.0h,0%,$0,0.0h,359.0d,0,$0,$0,1.03_Accelerator Systems (AS),1.03.01_AS Accelerator Systems Management & Integration,1.03.01.05_Accelerator Systems - Integrated CAD Modeling,1.03.01.05.02_Accelerator Systems - Integrated Design Review,"AS_DES_1040_COMP: Prelim. Design Review - Integrated Design Review (AS,CS, IF) for (CP, KG, housing)"
298372,1.03,1.03.01,1.03.01.05,1.03.01.05.02,1.03.01.05.02,Accelerator Systems - Integrated Design Review,AS_DES_1080,"COMP: Design - Integrated Design Review (AS,CS, IF) for (CP, KG, housing)",0.0,0.0,0.0,0.0,0,10-06-23,AS_DES_1070: FS,AS_ScL_IRR_9300: FS,0,0,0,0,0,0,0.0,0.0,0,nn,10-06-23,DM-A11-10%,0.0h,0.0h,0%,$0,0.0h,249.0d,0,$0,$0,1.03_Accelerator Systems (AS),1.03.01_AS Accelerator Systems Management & Integration,1.03.01.05_Accelerator Systems - Integrated CAD Modeling,1.03.01.05.02_Accelerator Systems - Integrated Design Review,"AS_DES_1080_COMP: Design - Integrated Design Review (AS,CS, IF) for (CP, KG, housing)"
298373,1.03,1.03.03,1.03.03,1.03.03,1.03.03,AS Superconducting Linac System (ScL),AS_ScL_1000,COMP: ScL Ready for CD-2/3,0.0,0.0,0.0,0.0,0,04-24-23,"AS_HPRF_WAV_5210: FS, AS_ScL_L3B_5110: FS, AS_ScL_L4_5110: FS, AS_ScL_L4EDG_5110: FS, AS_ScL_L34_5110: FS",AS_M4_3000: FS,0,0,0,0,0,0,0.0,0.0,0,nn,04-24-23,0,0.0h,0.0h,0%,$0,0.0h,58.0d,0,$0,$0,1.03_Accelerator Systems (AS),1.03.03_AS Superconducting Linac System (ScL),,,AS_ScL_1000_COMP: ScL Ready for CD-2/3
298374,1.03,1.03.03,1.03.03.05,1.03.03.05.05,1.03.03.05.05,ScL Design L3B Linac Modification,AS_ScL_L3B_5005,WAIT: Prelim. Design - L3B Linac Modification,40.0,0.0,0.0,0.0,10-31-22,01-10-23,AS_ScL_L34_5060: FS,AS_ScL_L3B_5010: FS,0,0,0,0,0,0,0.0,0.0,0,10-31-22,01-10-23,0,0.0h,0.0h,0%,$0,0.0h,58.0d,0,$0,$0,1.03_Accelerator Systems (AS),1.03.03_AS Superconducting Linac System (ScL),1.03.03.05_AS Superconducting Linac System Engineering and Design,1.03.03.05.05_ScL Design L3B Linac Modification,AS_ScL_L3B_5005_WAIT: Prelim. Design - L3B Linac Modification
298375,1.03,1.03.03,1.03.03.05,1.03.03.05.05,1.03.03.05.05,ScL Design L3B Linac Modification,AS_ScL_L3B_5010,START: Prelim. Design - L3B Linac Modification,0.0,0.0,0.0,0.0,0,01-10-23,"AS_ScL_L34_5020: FF, AS_ScL_L4_5020: FS, AS_ScL_L3B_5005: FS",AS_ScL_L3B_5020: FS,0,0,0,0,0,0,0.0,0.0,0,nn,01-10-23,0,0.0h,0.0h,0%,$0,0.0h,58.0d,0,$0,$0,1.03_Accelerator Systems (AS),1.03.03_AS Superconducting Linac System (ScL),1.03.03.05_AS Superconducting Linac System Engineering and Design,1.03.03.05.05_ScL Design L3B Linac Modification,AS_ScL_L3B_5010_START: Prelim. Design - L3B Linac Modification
298376,1.03,1.03.03,1.03.03.05,1.03.03.05.05,1.03.03.05.05,ScL Design L3B Linac Modification,AS_ScL_L3B_5060,COMP: Prelim. Design Review - L3B Linac Modification,0.0,0.0,0.0,0.0,0,03-03-23,AS_ScL_L3B_5050: FS,AS_ScL_L3B_5070: FS,0,0,0,0,0,0,0.0,0.0,0,nn,03-03-23,DM-A08-60%,0.0h,0.0h,0%,$0,0.0h,58.0d,0,$0,$0,1.03_Accelerator Systems (AS),1.03.03_AS Superconducting Linac System (ScL),1.03.03.05_AS Superconducting Linac System Engineering and Design,1.03.03.05.05_ScL Design L3B Linac Modification,AS_ScL_L3B_5060_COMP: Prelim. Design Review - L3B Linac Modification
298377,1.03,1.03.03,1.03.03.05,1.03.03.05.05,1.03.03.05.05,ScL Design L3B Linac Modification,AS_ScL_L3B_5110,COMP: Design - L3B Linac Modification,0.0,0.0,0.0,0.0,0,04-24-23,AS_ScL_L3B_5100: FS,"AS_ScL_1000: FS, AS_ScL_IRR_9300: FS",0,0,0,0,0,0,0.0,0.0,0,nn,04-24-23,DM-A11-10%,0.0h,0.0h,0%,$0,0.0h,58.0d,0,$0,$0,1.03_Accelerator Systems (AS),1.03.03_AS Superconducting Linac System (ScL),1.03.03.05_AS Superconducting Linac System Engineering and Design,1.03.03.05.05_ScL Design L3B Linac Modification,AS_ScL_L3B_5110_COMP: Design - L3B Linac Modification
298378,1.03,1.03.03,1.03.03.05,1.03.03.05.10,1.03.03.05.10,ScL Design L3/L4 Transition,AS_ScL_L34_5010,START: Prelim. Design - L3/L4 Transition,0.0,0.0,0.0,0.0,0,08-10-22,"AS_ScL_L4EDG_5020: FS, AS_ScL_L4EDG_5110: FS",AS_ScL_L34_5020: FS,0,0,0,0,0,0,0.0,0.0,0,nn,08-10-22,0,0.0h,0.0h,0%,$0,0.0h,58.0d,0,$0,$0,1.03_Accelerator Systems (AS),1.03.03_AS Superconducting Linac System (ScL),1.03.03.05_AS Superconducting Linac System Engineering and Design,1.03.03.05.10_ScL Design L3/L4 Transition,AS_ScL_L34_5010_START: Prelim. Design - L3/L4 Transition
298379,1.03,1.03.03,1.03.03.05,1.03.03.05.10,1.03.03.05.10,ScL Design L3/L4 Transition,AS_ScL_L34_5060,COMP: Prelim. Design - L3/L4 Transition,0.0,0.0,0.0,0.0,0,10-28-22,AS_ScL_L34_5050: FS,"AS_ScL_L34_5070: FS, AS_ScL_L4_5020: FS, AS_ScL_L3B_5005: FS, AS_ScL_L4_5010: FS",0,0,0,0,0,0,0.0,0.0,0,nn,10-28-22,0,0.0h,0.0h,0%,$0,0.0h,58.0d,0,$0,$0,1.03_Accelerator Systems (AS),1.03.03_AS Superconducting Linac System (ScL),1.03.03.05_AS Superconducting Linac System Engineering and Design,1.03.03.05.10_ScL Design L3/L4 Transition,AS_ScL_L34_5060_COMP: Prelim. Design - L3/L4 Transition
298380,1.03,1.03.03,1.03.03.05,1.03.03.05.10,1.03.03.05.10,ScL Design L3/L4 Transition,AS_ScL_L34_5110,COMP: Design - L3/L4 Transition,0.0,0.0,0.0,0.0,0,01-19-23,AS_ScL_L34_5100: FS,"AS_ScL_1000: FS, AS_ScL_VAC_L34_6200: FS, AS_ScL_VAC_L34_6220: FS",0,0,0,0,0,0,0.0,0.0,0,nn,01-19-23,DM-A11-10%,0.0h,0.0h,0%,$0,0.0h,124.0d,0,$0,$0,1.03_Accelerator Systems (AS),1.03.03_AS Superconducting Linac System (ScL),1.03.03.05_AS Superconducting Linac System Engineering and Design,1.03.03.05.10_ScL Design L3/L4 Transition,AS_ScL_L34_5110_COMP: Design - L3/L4 Transition
298381,1.03,1.03.03,1.03.03.05,1.03.03.05.20,1.03.03.05.20,ScL Design L4 Linac,AS_ScL_L4_5010,START: Prelim. Design - L4 Linac,0.0,0.0,0.0,0.0,0,10-28-22,AS_ScL_L34_5060: FS,AS_ScL_L4_5020: FS,0,0,0,0,0,0,0.0,0.0,0,nn,10-28-22,0,0.0h,0.0h,0%,$0,0.0h,58.0d,0,$0,$0,1.03_Accelerator Systems (AS),1.03.03_AS Superconducting Linac System (ScL),1.03.03.05_AS Superconducting Linac System Engineering and Design,1.03.03.05.20_ScL Design L4 Linac,AS_ScL_L4_5010_START: Prelim. Design - L4 Linac
298382,1.03,1.03.03,1.03.03.05,1.03.03.05.20,1.03.03.05.20,ScL Design L4 Linac,AS_ScL_L4_5060,COMP: Prelim. Design - L4 Linac,0.0,0.0,0.0,0.0,0,02-02-23,AS_ScL_L4_5050: FS,AS_ScL_L4_5070: FS,0,0,0,0,0,0,0.0,0.0,0,nn,02-02-23,0,0.0h,0.0h,0%,$0,0.0h,58.0d,0,$0,$0,1.03_Accelerator Systems (AS),1.03.03_AS Superconducting Linac System (ScL),1.03.03.05_AS Superconducting Linac System Engineering and Design,1.03.03.05.20_ScL Design L4 Linac,AS_ScL_L4_5060_COMP: Prelim. Design - L4 Linac
298383,1.03,1.03.03,1.03.03.05,1.03.03.05.20,1.03.03.05.20,ScL Design L4 Linac,AS_ScL_L4_5110,COMP: Design - L4 Linac,0.0,0.0,0.0,0.0,0,04-24-23,AS_ScL_L4_5100: FS,"AS_ScL_1000: FS, AS_ScL_VAC_SCP_6010: FS",0,0,0,0,0,0,0.0,0.0,0,nn,04-24-23,DM-A11-10%,0.0h,0.0h,0%,$0,0.0h,58.0d,0,$0,$0,1.03_Accelerator Systems (AS),1.03.03_AS Superconducting Linac System (ScL),1.03.03.05_AS Superconducting Linac System Engineering and Design,1.03.03.05.20_ScL Design L4 Linac,AS_ScL_L4_5110_COMP: Design - L4 Linac
298384,1.03,1.03.03,1.03.03.05,1.03.03.05.30,1.03.03.05.30,ScL Design L4E & DogLeg,AS_ScL_L4EDG_5010,START: Prelim. Design - L4E & Dogleg,0.0,0.0,0.0,0.0,0,0,MS_FY_2021_Q2: FS,AS_ScL_L4EDG_5020: FS,0,0,0,0,0,0,0.0,0.0,0,nn,03-02-21,0,0.0h,0.0h,100%,$0,0.0h,0,0,$0,$0,1.03_Accelerator Systems (AS),1.03.03_AS Superconducting Linac System (ScL),1.03.03.05_AS Superconducting Linac System Engineering and Design,1.03.03.05.30_ScL Design L4E & DogLeg,AS_ScL_L4EDG_5010_START: Prelim. Design - L4E & Dogleg
298385,1.03,1.03.03,1.03.03.05,1.03.03.05.30,1.03.03.05.30,ScL Design L4E & DogLeg,AS_ScL_L4EDG_5060,COMP: Prelim. Design - L4E & Dogleg,0.0,0.0,0.0,0.0,0,04-29-22,AS_ScL_L4EDG_5050: FF,AS_ScL_L4EDG_5070: FS,0,0,0,0,0,0,0.0,0.0,0,nn,04-29-22,0,0.0h,0.0h,0%,$0,0.0h,58.0d,0,$0,$0,1.03_Accelerator Systems (AS),1.03.03_AS Superconducting Linac System (ScL),1.03.03.05_AS Superconducting Linac System Engineering and Design,1.03.03.05.30_ScL Design L4E & DogLeg,AS_ScL_L4EDG_5060_COMP: Prelim. Design - L4E & Dogleg
298386,1.03,1.03.03,1.03.03.05,1.03.03.05.30,1.03.03.05.30,ScL Design L4E & DogLeg,AS_ScL_L4EDG_5110,COMP: Design - L4E & Dogleg,0.0,0.0,0.0,0.0,0,08-10-22,AS_ScL_L4EDG_5100: FS,"AS_ScL_1000: FS, AS_ScL_VAC_DOG_6200: FS, AS_ScL_L34_5010: FS",0,0,0,0,0,0,0.0,0.0,0,nn,08-10-22,DM-A11-10%,0.0h,0.0h,0%,$0,0.0h,58.0d,0,$0,$0,1.03_Accelerator Systems (AS),1.03.03_AS Superconducting Linac System (ScL),1.03.03.05_AS Superconducting Linac System Engineering and Design,1.03.03.05.30_ScL Design L4E & DogLeg,AS_ScL_L4EDG_5110_COMP: Design - L4E & Dogleg
298387,1.03,1.03.03,1.03.03.05,1.03.03.05.90,1.03.03.05.90,HPRF - System Design Reviews,AS_HPRF_WAV_5110,START: Prelim. Design - HPRF System,0.0,0.0,0.0,0.0,0,04-21-22,AS_HPRF_LYT_5020: FS,AS_HPRF_WAV_5120: FS,0,0,0,0,0,0,0.0,0.0,0,nn,04-21-22,0,0.0h,0.0h,0%,$0,0.0h,206.0d,0,$0,$0,1.03_Accelerator Systems (AS),1.03.03_AS Superconducting Linac System (ScL),1.03.03.05_AS Superconducting Linac System Engineering and Design,1.03.03.05.90_HPRF - System Design Reviews,AS_HPRF_WAV_5110_START: Prelim. Design - HPRF System
298388,1.03,1.03.03,1.03.03.05,1.03.03.05.90,1.03.03.05.90,HPRF - System Design Reviews,AS_HPRF_WAV_5160,COMP: Prelim. Design - HPRF System,0.0,0.0,0.0,0.0,0,06-20-22,AS_HPRF_WAV_5150: FS,AS_HPRF_WAV_5170: FS,0,0,0,0,0,0,0.0,0.0,0,nn,06-20-22,0,0.0h,0.0h,0%,$0,0.0h,206.0d,0,$0,$0,1.03_Accelerator Systems (AS),1.03.03_AS Superconducting Linac System (ScL),1.03.03.05_AS Superconducting Linac System Engineering and Design,1.03.03.05.90_HPRF - System Design Reviews,AS_HPRF_WAV_5160_COMP: Prelim. Design - HPRF System
298389,1.03,1.03.03,1.03.03.05,1.03.03.05.90,1.03.03.05.90,HPRF - System Design Reviews,AS_HPRF_WAV_5210,COMP: Design - HPRF System,0.0,0.0,0.0,0.0,0,12-09-22,"AS_HPRF_WAV_5200: FS, AS_HPRF_ST_5040: FS, AS_HPRF_WAV_5100: FS, AS_HPRF_WAV_5090: FS, AS_HPRF_WAV_5300: FS","AS_ScL_1000: FS, AS_HPRF_CND_6010: FS, AS_HPRF_ST_6080: FS, AS_HPRF_WAV_6010: FS",0,0,0,0,0,0,0.0,0.0,0,nn,12-09-22,DM-A11-10%,0.0h,0.0h,0%,$0,0.0h,142.0d,0,$0,$0,1.03_Accelerator Systems (AS),1.03.03_AS Superconducting Linac System (ScL),1.03.03.05_AS Superconducting Linac System Engineering and Design,1.03.03.05.90_HPRF - System Design Reviews,AS_HPRF_WAV_5210_COMP: Design - HPRF System
298390,1.03,1.03.03,1.03.03.06,1.03.03.06.20,1.03.03.06.20,ScL - Warm Beamline Accelerator Components - Procurement,AS_ScL_VAC_L34_6220,Prepare RFP - Vacuum L3/L4,10.0,0.0,0.0,0.0,10-24-23,11-06-23,"AS_ScL_VAC_L34_6210: FS, AS_ScL_L34_5110: FS",AS_ScL_VAC_L34_6230: FS,0,0,0,0,0,0,0.0,0.0,0,10-24-23,11-06-23,0,0.0h,0.0h,0%,$0,0.0h,1455.5d,0,$0,$0,1.03_Accelerator Systems (AS),1.03.03_AS Superconducting Linac System (ScL),1.03.03.06_AS Superconducting Linac System Procurement and Fabrication,1.03.03.06.20_ScL - Warm Beamline Accelerator Components - Procurement,AS_ScL_VAC_L34_6220_Prepare RFP - Vacuum L3/L4
298391,1.03,1.03.03,1.03.03.06,1.03.03.06.20,1.03.03.06.20,ScL - Warm Beamline Accelerator Components - Procurement,AS_ScL_VAC_SCP_6030,Prepare RFP - Procure / Fab Helium Scavaging Pumps + Hardware,10.0,0.0,0.0,0.0,10-24-23,11-06-23,AS_ScL_VAC_SCP_6020: FS,AS_ScL_VAC_SCP_6040: FS,0,0,0,0,0,0,0.0,0.0,0,10-24-23,11-06-23,0,0.0h,0.0h,0%,$0,0.0h,1507.5d,0,$0,$0,1.03_Accelerator Systems (AS),1.03.03_AS Superconducting Linac System (ScL),1.03.03.06_AS Superconducting Linac System Procurement and Fabrication,1.03.03.06.20_ScL - Warm Beamline Accelerator Components - Procurement,AS_ScL_VAC_SCP_6030_Prepare RFP - Procure / Fab Helium Scavaging Pumps + Hardware
298392,1.03,1.03.03,1.03.03.06,1.03.03.06.20,1.03.03.06.20,ScL - Warm Beamline Accelerator Components - Procurement,AS_ScL_VAC_DOG_6220,Prepare RFP - Vacuum Dog Leg,10.0,0.0,0.0,0.0,10-24-23,11-06-23,AS_ScL_VAC_DOG_6210: FS,AS_ScL_VAC_DOG_6230: FS,0,0,0,0,0,0,0.0,0.0,0,10-24-23,11-06-23,0,0.0h,0.0h,0%,$0,0.0h,1455.5d,0,$0,$0,1.03_Accelerator Systems (AS),1.03.03_AS Superconducting Linac System (ScL),1.03.03.06_AS Superconducting Linac System Procurement and Fabrication,1.03.03.06.20_ScL - Warm Beamline Accelerator Components - Procurement,AS_ScL_VAC_DOG_6220_Prepare RFP - Vacuum Dog Leg
298393,1.03,1.03.03,1.03.03.06,1.03.03.06.20,1.03.03.06.20,ScL - Warm Beamline Accelerator Components - Procurement,AS_ScL_VAC_L34_6230,Release RFP - Vacuum L3/L4,2.0,0.0,0.0,0.0,11-07-23,11-08-23,AS_ScL_VAC_L34_6220: FS,AS_ScL_VAC_L34_6240: FS,0,0,0,0,0,0,0.0,0.0,0,11-07-23,11-08-23,0,0.0h,0.0h,0%,$0,0.0h,1455.5d,0,$0,$0,1.03_Accelerator Systems (AS),1.03.03_AS Superconducting Linac System (ScL),1.03.03.06_AS Superconducting Linac System Procurement and Fabrication,1.03.03.06.20_ScL - Warm Beamline Accelerator Components - Procurement,AS_ScL_VAC_L34_6230_Release RFP - Vacuum L3/L4
298394,1.03,1.03.03,1.03.03.06,1.03.03.06.20,1.03.03.06.20,ScL - Warm Beamline Accelerator Components - Procurement,AS_ScL_VAC_SCP_6040,Release RFP - Procure / Fab Helium Scavaging Pumps + Hardware,2.0,0.0,0.0,0.0,11-07-23,11-08-23,AS_ScL_VAC_SCP_6030: FS,AS_ScL_VAC_SCP_6050: FS,0,0,0,0,0,0,0.0,0.0,0,11-07-23,11-08-23,0,0.0h,0.0h,0%,$0,0.0h,1507.5d,0,$0,$0,1.03_Accelerator Systems (AS),1.03.03_AS Superconducting Linac System (ScL),1.03.03.06_AS Superconducting Linac System Procurement and Fabrication,1.03.03.06.20_ScL - Warm Beamline Accelerator Components - Procurement,AS_ScL_VAC_SCP_6040_Release RFP - Procure / Fab Helium Scavaging Pumps + Hardware
298395,1.03,1.03.03,1.03.03.06,1.03.03.06.20,1.03.03.06.20,ScL - Warm Beamline Accelerator Components - Procurement,AS_ScL_VAC_DOG_6230,Release RFP - Vacuum Dog Leg,2.0,0.0,0.0,0.0,11-07-23,11-08-23,AS_ScL_VAC_DOG_6220: FS,AS_ScL_VAC_DOG_6240: FS,0,0,0,0,0,0,0.0,0.0,0,11-07-23,11-08-23,0,0.0h,0.0h,0%,$0,0.0h,1455.5d,0,$0,$0,1.03_Accelerator Systems (AS),1.03.03_AS Superconducting Linac System (ScL),1.03.03.06_AS Superconducting Linac System Procurement and Fabrication,1.03.03.06.20_ScL - Warm Beamline Accelerator Components - Procurement,AS_ScL_VAC_DOG_6230_Release RFP - Vacuum Dog Leg
298396,1.03,1.03.03,1.03.03.06,1.03.03.06.20,1.03.03.06.20,ScL - Warm Beamline Accelerator Components - Procurement,AS_ScL_VAC_L34_6240,Vendor Proposal Effort - Vacuum L3/L4,10.0,0.0,0.0,0.0,11-09-23,11-22-23,AS_ScL_VAC_L34_6230: FS,AS_ScL_VAC_L34_6250: FS,0,0,0,0,0,0,0.0,0.0,0,11-09-23,11-22-23,0,0.0h,0.0h,0%,$0,0.0h,1455.5d,0,$0,$0,1.03_Accelerator Systems (AS),1.03.03_AS Superconducting Linac System (ScL),1.03.03.06_AS Superconducting Linac System Procurement and Fabrication,1.03.03.06.20_ScL - Warm Beamline Accelerator Components - Procurement,AS_ScL_VAC_L34_6240_Vendor Proposal Effort - Vacuum L3/L4
298397,1.03,1.03.03,1.03.03.06,1.03.03.06.20,1.03.03.06.20,ScL - Warm Beamline Accelerator Components - Procurement,AS_ScL_VAC_SCP_6050,Vendor Proposal Effort - Procure / Fab Helium Scavaging Pumps + Hardware,10.0,0.0,0.0,0.0,11-09-23,11-22-23,AS_ScL_VAC_SCP_6040: FS,AS_ScL_VAC_SCP_6060: FS,0,0,0,0,0,0,0.0,0.0,0,11-09-23,11-22-23,0,0.0h,0.0h,0%,$0,0.0h,1507.5d,0,$0,$0,1.03_Accelerator Systems (AS),1.03.03_AS Superconducting Linac System (ScL),1.03.03.06_AS Superconducting Linac System Procurement and Fabrication,1.03.03.06.20_ScL - Warm Beamline Accelerator Components - Procurement,AS_ScL_VAC_SCP_6050_Vendor Proposal Effort - Procure / Fab Helium Scavaging Pumps + Hardware
298398,1.03,1.03.03,1.03.03.06,1.03.03.06.20,1.03.03.06.20,ScL - Warm Beamline Accelerator Components - Procurement,AS_ScL_VAC_DOG_6240,Vendor Proposal Effort - Vacuum Dog Leg,10.0,0.0,0.0,0.0,11-09-23,11-22-23,AS_ScL_VAC_DOG_6230: FS,AS_ScL_VAC_DOG_6250: FS,0,0,0,0,0,0,0.0,0.0,0,11-09-23,11-22-23,0,0.0h,0.0h,0%,$0,0.0h,1455.5d,0,$0,$0,1.03_Accelerator Systems (AS),1.03.03_AS Superconducting Linac System (ScL),1.03.03.06_AS Superconducting Linac System Procurement and Fabrication,1.03.03.06.20_ScL - Warm Beamline Accelerator Components - Procurement,AS_ScL_VAC_DOG_6240_Vendor Proposal Effort - Vacuum Dog Leg
298399,1.03,1.03.03,1.03.03.06,1.03.03.06.20,1.03.03.06.20,ScL - Warm Beamline Accelerator Components - Procurement,AS_ScL_VAC_L34_6250,RCV: Vendor Proposal - Vacuum L3/L4,0.0,0.0,0.0,0.0,0,11-22-23,AS_ScL_VAC_L34_6240: FS,AS_ScL_VAC_L34_6260: FS,0,0,0,0,0,0,0.0,0.0,0,nn,11-22-23,0,0.0h,0.0h,0%,$0,0.0h,1455.5d,0,$0,$0,1.03_Accelerator Systems (AS),1.03.03_AS Superconducting Linac System (ScL),1.03.03.06_AS Superconducting Linac System Procurement and Fabrication,1.03.03.06.20_ScL - Warm Beamline Accelerator Components - Procurement,AS_ScL_VAC_L34_6250_RCV: Vendor Proposal - Vacuum L3/L4
298400,1.03,1.03.03,1.03.03.06,1.03.03.06.20,1.03.03.06.20,ScL - Warm Beamline Accelerator Components - Procurement,AS_ScL_VAC_SCP_6060,RCV: Vendor Proposal - Procure / Fab Helium Scavaging Pumps + Hardware,0.0,0.0,0.0,0.0,0,11-22-23,AS_ScL_VAC_SCP_6050: FS,AS_ScL_VAC_SCP_6070: FS,0,0,0,0,0,0,0.0,0.0,0,nn,11-22-23,0,0.0h,0.0h,0%,$0,0.0h,1507.5d,0,$0,$0,1.03_Accelerator Systems (AS),1.03.03_AS Superconducting Linac System (ScL),1.03.03.06_AS Superconducting Linac System Procurement and Fabrication,1.03.03.06.20_ScL - Warm Beamline Accelerator Components - Procurement,AS_ScL_VAC_SCP_6060_RCV: Vendor Proposal - Procure / Fab Helium Scavaging Pumps + Hardware
298401,1.03,1.03.03,1.03.03.06,1.03.03.06.20,1.03.03.06.20,ScL - Warm Beamline Accelerator Components - Procurement,AS_ScL_VAC_DOG_6250,RCV: Vendor Proposal - Vacuum Dog Leg,0.0,0.0,0.0,0.0,0,11-22-23,AS_ScL_VAC_DOG_6240: FS,AS_ScL_VAC_DOG_6260: FS,0,0,0,0,0,0,0.0,0.0,0,nn,11-22-23,0,0.0h,0.0h,0%,$0,0.0h,1455.5d,0,$0,$0,1.03_Accelerator Systems (AS),1.03.03_AS Superconducting Linac System (ScL),1.03.03.06_AS Superconducting Linac System Procurement and Fabrication,1.03.03.06.20_ScL - Warm Beamline Accelerator Components - Procurement,AS_ScL_VAC_DOG_6250_RCV: Vendor Proposal - Vacuum Dog Leg
298402,1.03,1.03.03,1.03.03.06,1.03.03.06.20,1.03.03.06.20,ScL - Warm Beamline Accelerator Components - Procurement,AS_ScL_VAC_L34_6260,Evaluations/Negotiations - Vacuum L3/L4,20.0,0.0,0.0,0.0,11-27-23,01-08-24,AS_ScL_VAC_L34_6250: FS,AS_ScL_VAC_L34_6270: FS,0,0,0,0,0,0,0.0,0.0,0,11-27-23,01-08-24,0,0.0h,0.0h,0%,$0,0.0h,1455.5d,0,$0,$0,1.03_Accelerator Systems (AS),1.03.03_AS Superconducting Linac System (ScL),1.03.03.06_AS Superconducting Linac System Procurement and Fabrication,1.03.03.06.20_ScL - Warm Beamline Accelerator Components - Procurement,AS_ScL_VAC_L34_6260_Evaluations/Negotiations - Vacuum L3/L4
298403,1.03,1.03.03,1.03.03.06,1.03.03.06.20,1.03.03.06.20,ScL - Warm Beamline Accelerator Components - Procurement,AS_ScL_VAC_SCP_6070,Evaluations/Negotiations - Procure / Fab Helium Scavaging Pumps + Hardware,20.0,0.0,0.0,0.0,11-27-23,01-08-24,AS_ScL_VAC_SCP_6060: FS,AS_ScL_VAC_SCP_6080: FS,0,0,0,0,0,0,0.0,0.0,0,11-27-23,01-08-24,0,0.0h,0.0h,0%,$0,0.0h,1507.5d,0,$0,$0,1.03_Accelerator Systems (AS),1.03.03_AS Superconducting Linac System (ScL),1.03.03.06_AS Superconducting Linac System Procurement and Fabrication,1.03.03.06.20_ScL - Warm Beamline Accelerator Components - Procurement,AS_ScL_VAC_SCP_6070_Evaluations/Negotiations - Procure / Fab Helium Scavaging Pumps + Hardware
298404,1.03,1.03.03,1.03.03.06,1.03.03.06.20,1.03.03.06.20,ScL - Warm Beamline Accelerator Components - Procurement,AS_ScL_VAC_DOG_6260,Evaluations/Negotiations - Vacuum Dog Leg,20.0,0.0,0.0,0.0,11-27-23,01-08-24,AS_ScL_VAC_DOG_6250: FS,AS_ScL_VAC_DOG_6270: FS,0,0,0,0,0,0,0.0,0.0,0,11-27-23,01-08-24,0,0.0h,0.0h,0%,$0,0.0h,1455.5d,0,$0,$0,1.03_Accelerator Systems (AS),1.03.03_AS Superconducting Linac System (ScL),1.03.03.06_AS Superconducting Linac System Procurement and Fabrication,1.03.03.06.20_ScL - Warm Beamline Accelerator Components - Procurement,AS_ScL_VAC_DOG_6260_Evaluations/Negotiations - Vacuum Dog Leg
298405,1.03,1.03.03,1.03.03.06,1.03.03.06.20,1.03.03.06.20,ScL - Warm Beamline Accelerator Components - Procurement,AS_ScL_VAC_SCP_6080,Prepare Award Documents - Procure / Fab Helium Scavaging Pumps + Hardware,5.0,0.0,0.0,0.0,01-09-24,01-16-24,AS_ScL_VAC_SCP_6070: FS,AS_ScL_VAC_SCP_6090: FS,0,0,0,0,0,0,0.0,0.0,0,01-09-24,01-16-24,0,0.0h,0.0h,0%,$0,0.0h,1507.5d,0,$0,$0,1.03_Accelerator Systems (AS),1.03.03_AS Superconducting Linac System (ScL),1.03.03.06_AS Superconducting Linac System Procurement and Fabrication,1.03.03.06.20_ScL - Warm Beamline Accelerator Components - Procurement,AS_ScL_VAC_SCP_6080_Prepare Award Documents - Procure / Fab Helium Scavaging Pumps + Hardware
298406,1.03,1.03.03,1.03.03.06,1.03.03.06.20,1.03.03.06.20,ScL - Warm Beamline Accelerator Components - Procurement,AS_ScL_VAC_L34_6310,COMP: Procurement - Vacuum L3/L4,0.0,0.0,0.0,0.0,0,04-12-24,AS_ScL_VAC_L34_6300: FS,AS_ScL_VAC_L34_6320: FS,0,0,0,0,0,0,0.0,0.0,0,nn,04-12-24,0,0.0h,0.0h,0%,$0,0.0h,1455.5d,0,$0,$0,1.03_Accelerator Systems (AS),1.03.03_AS Superconducting Linac System (ScL),1.03.03.06_AS Superconducting Linac System Procurement and Fabrication,1.03.03.06.20_ScL - Warm Beamline Accelerator Components - Procurement,AS_ScL_VAC_L34_6310_COMP: Procurement - Vacuum L3/L4
298407,1.03,1.03.03,1.03.03.06,1.03.03.06.20,1.03.03.06.20,ScL - Warm Beamline Accelerator Components - Procurement,AS_ScL_VAC_SCP_6120,COMP: Procure / Fab Helium Scavaging Pumps + Hardware,0.0,0.0,0.0,0.0,0,04-12-24,AS_ScL_VAC_SCP_6110: FS,AS_ScL_VAC_SCP_6130: FS,0,0,0,0,0,0,0.0,0.0,0,nn,04-12-24,0,0.0h,0.0h,0%,$0,0.0h,1507.5d,0,$0,$0,1.03_Accelerator Systems (AS),1.03.03_AS Superconducting Linac System (ScL),1.03.03.06_AS Superconducting Linac System Procurement and Fabrication,1.03.03.06.20_ScL - Warm Beamline Accelerator Components - Procurement,AS_ScL_VAC_SCP_6120_COMP: Procure / Fab Helium Scavaging Pumps + Hardware
298408,1.03,1.03.03,1.03.03.06,1.03.03.06.20,1.03.03.06.20,ScL - Warm Beamline Accelerator Components - Procurement,AS_ScL_VAC_DOG_6310,COMP: Procurement - Vacuum Dog Leg,0.0,0.0,0.0,0.0,0,04-12-24,AS_ScL_VAC_DOG_6300: FS,AS_ScL_VAC_DOG_6320: FS,0,0,0,0,0,0,0.0,0.0,0,nn,04-12-24,0,0.0h,0.0h,0%,$0,0.0h,1455.5d,0,$0,$0,1.03_Accelerator Systems (AS),1.03.03_AS Superconducting Linac System (ScL),1.03.03.06_AS Superconducting Linac System Procurement and Fabrication,1.03.03.06.20_ScL - Warm Beamline Accelerator Components - Procurement,AS_ScL_VAC_DOG_6310_COMP: Procurement - Vacuum Dog Leg
298409,1.03,1.03.03,1.03.03.06,1.03.03.06.40,1.03.03.06.40,ScL - Tooling - Procurement,AS_ScL_TOO_CMx_6030,Prepare RFP - CM_Tooling for CM Install / Transport,10.0,0.0,0.0,0.0,10-24-23,11-06-23,AS_ScL_TOO_CMx_6020: FS,AS_ScL_TOO_CMx_6040: FS,0,0,0,0,0,0,0.0,0.0,0,10-24-23,11-06-23,0,0.0h,0.0h,0%,$0,0.0h,1335.5d,0,$0,$0,1.03_Accelerator Systems (AS),1.03.03_AS Superconducting Linac System (ScL),1.03.03.06_AS Superconducting Linac System Procurement and Fabrication,1.03.03.06.40_ScL - Tooling - Procurement,AS_ScL_TOO_CMx_6030_Prepare RFP - CM_Tooling for CM Install / Transport
298410,1.03,1.03.03,1.03.03.06,1.03.03.06.40,1.03.03.06.40,ScL - Tooling - Procurement,AS_ScL_TOO_VAC_6030,Prepare RFP - CM_Tooling for Vacuum,10.0,0.0,0.0,0.0,10-24-23,11-06-23,AS_ScL_TOO_VAC_6020: FS,AS_ScL_TOO_VAC_6040: FS,0,0,0,0,0,0,0.0,0.0,0,10-24-23,11-06-23,0,0.0h,0.0h,0%,$0,0.0h,1335.5d,0,$0,$0,1.03_Accelerator Systems (AS),1.03.03_AS Superconducting Linac System (ScL),1.03.03.06_AS Superconducting Linac System Procurement and Fabrication,1.03.03.06.40_ScL - Tooling - Procurement,AS_ScL_TOO_VAC_6030_Prepare RFP - CM_Tooling for Vacuum
298411,1.03,1.03.03,1.03.03.06,1.03.03.06.40,1.03.03.06.40,ScL - Tooling - Procurement,AS_ScL_TOO_WLD_6030,Prepare RFP - CM_Tooling for Welding,10.0,0.0,0.0,0.0,10-24-23,11-06-23,AS_ScL_TOO_WLD_6020: FS,AS_ScL_TOO_WLD_6040: FS,0,0,0,0,0,0,0.0,0.0,0,10-24-23,11-06-23,0,0.0h,0.0h,0%,$0,0.0h,1335.5d,0,$0,$0,1.03_Accelerator Systems (AS),1.03.03_AS Superconducting Linac System (ScL),1.03.03.06_AS Superconducting Linac System Procurement and Fabrication,1.03.03.06.40_ScL - Tooling - Procurement,AS_ScL_TOO_WLD_6030_Prepare RFP - CM_Tooling for Welding
298412,1.03,1.03.03,1.03.03.06,1.03.03.06.40,1.03.03.06.40,ScL - Tooling - Procurement,AS_ScL_TOO_CMx_6040,Release RFP - CM_Tooling for CM Install / Transport,2.0,0.0,0.0,0.0,11-07-23,11-08-23,AS_ScL_TOO_CMx_6030: FS,AS_ScL_TOO_CMx_6050: FS,0,0,0,0,0,0,0.0,0.0,0,11-07-23,11-08-23,0,0.0h,0.0h,0%,$0,0.0h,1335.5d,0,$0,$0,1.03_Accelerator Systems (AS),1.03.03_AS Superconducting Linac System (ScL),1.03.03.06_AS Superconducting Linac System Procurement and Fabrication,1.03.03.06.40_ScL - Tooling - Procurement,AS_ScL_TOO_CMx_6040_Release RFP - CM_Tooling for CM Install / Transport
298413,1.03,1.03.03,1.03.03.06,1.03.03.06.40,1.03.03.06.40,ScL - Tooling - Procurement,AS_ScL_TOO_VAC_6040,Release RFP - CM_Tooling for Vacuum,2.0,0.0,0.0,0.0,11-07-23,11-08-23,AS_ScL_TOO_VAC_6030: FS,AS_ScL_TOO_VAC_6050: FS,0,0,0,0,0,0,0.0,0.0,0,11-07-23,11-08-23,0,0.0h,0.0h,0%,$0,0.0h,1335.5d,0,$0,$0,1.03_Accelerator Systems (AS),1.03.03_AS Superconducting Linac System (ScL),1.03.03.06_AS Superconducting Linac System Procurement and Fabrication,1.03.03.06.40_ScL - Tooling - Procurement,AS_ScL_TOO_VAC_6040_Release RFP - CM_Tooling for Vacuum
298414,1.03,1.03.03,1.03.03.06,1.03.03.06.40,1.03.03.06.40,ScL - Tooling - Procurement,AS_ScL_TOO_WLD_6040,Release RFP - CM_Tooling for Welding,2.0,0.0,0.0,0.0,11-07-23,11-08-23,AS_ScL_TOO_WLD_6030: FS,AS_ScL_TOO_WLD_6050: FS,0,0,0,0,0,0,0.0,0.0,0,11-07-23,11-08-23,0,0.0h,0.0h,0%,$0,0.0h,1335.5d,0,$0,$0,1.03_Accelerator Systems (AS),1.03.03_AS Superconducting Linac System (ScL),1.03.03.06_AS Superconducting Linac System Procurement and Fabrication,1.03.03.06.40_ScL - Tooling - Procurement,AS_ScL_TOO_WLD_6040_Release RFP - CM_Tooling for Welding
298415,1.03,1.03.03,1.03.03.06,1.03.03.06.40,1.03.03.06.40,ScL - Tooling - Procurement,AS_ScL_TOO_CMx_6050,Vendor Proposal Effort - CM_Tooling for CM Install / Transport,10.0,0.0,0.0,0.0,11-09-23,11-22-23,AS_ScL_TOO_CMx_6040: FS,AS_ScL_TOO_CMx_6060: FS,0,0,0,0,0,0,0.0,0.0,0,11-09-23,11-22-23,0,0.0h,0.0h,0%,$0,0.0h,1335.5d,0,$0,$0,1.03_Accelerator Systems (AS),1.03.03_AS Superconducting Linac System (ScL),1.03.03.06_AS Superconducting Linac System Procurement and Fabrication,1.03.03.06.40_ScL - Tooling - Procurement,AS_ScL_TOO_CMx_6050_Vendor Proposal Effort - CM_Tooling for CM Install / Transport
298416,1.03,1.03.03,1.03.03.06,1.03.03.06.40,1.03.03.06.40,ScL - Tooling - Procurement,AS_ScL_TOO_VAC_6050,Vendor Proposal Effort - CM_Tooling for Vacuum,10.0,0.0,0.0,0.0,11-09-23,11-22-23,AS_ScL_TOO_VAC_6040: FS,AS_ScL_TOO_VAC_6060: FS,0,0,0,0,0,0,0.0,0.0,0,11-09-23,11-22-23,0,0.0h,0.0h,0%,$0,0.0h,1335.5d,0,$0,$0,1.03_Accelerator Systems (AS),1.03.03_AS Superconducting Linac System (ScL),1.03.03.06_AS Superconducting Linac System Procurement and Fabrication,1.03.03.06.40_ScL - Tooling - Procurement,AS_ScL_TOO_VAC_6050_Vendor Proposal Effort - CM_Tooling for Vacuum
298417,1.03,1.03.03,1.03.03.06,1.03.03.06.40,1.03.03.06.40,ScL - Tooling - Procurement,AS_ScL_TOO_WLD_6050,Vendor Proposal Effort - CM_Tooling for Welding,10.0,0.0,0.0,0.0,11-09-23,11-22-23,AS_ScL_TOO_WLD_6040: FS,AS_ScL_TOO_WLD_6060: FS,0,0,0,0,0,0,0.0,0.0,0,11-09-23,11-22-23,0,0.0h,0.0h,0%,$0,0.0h,1335.5d,0,$0,$0,1.03_Accelerator Systems (AS),1.03.03_AS Superconducting Linac System (ScL),1.03.03.06_AS Superconducting Linac System Procurement and Fabrication,1.03.03.06.40_ScL - Tooling - Procurement,AS_ScL_TOO_WLD_6050_Vendor Proposal Effort - CM_Tooling for Welding
298418,1.03,1.03.03,1.03.03.06,1.03.03.06.40,1.03.03.06.40,ScL - Tooling - Procurement,AS_ScL_TOO_CMx_6060,RCV: Vendor Proposal - CM_Tooling for CM Install / Transport,0.0,0.0,0.0,0.0,0,11-22-23,AS_ScL_TOO_CMx_6050: FS,AS_ScL_TOO_CMx_6070: FS,0,0,0,0,0,0,0.0,0.0,0,nn,11-22-23,0,0.0h,0.0h,0%,$0,0.0h,1335.5d,0,$0,$0,1.03_Accelerator Systems (AS),1.03.03_AS Superconducting Linac System (ScL),1.03.03.06_AS Superconducting Linac System Procurement and Fabrication,1.03.03.06.40_ScL - Tooling - Procurement,AS_ScL_TOO_CMx_6060_RCV: Vendor Proposal - CM_Tooling for CM Install / Transport
298419,1.03,1.03.03,1.03.03.06,1.03.03.06.40,1.03.03.06.40,ScL - Tooling - Procurement,AS_ScL_TOO_VAC_6060,RCV: Vendor Proposal - CM_Tooling for Vacuum,0.0,0.0,0.0,0.0,0,11-22-23,AS_ScL_TOO_VAC_6050: FS,AS_ScL_TOO_VAC_6070: FS,0,0,0,0,0,0,0.0,0.0,0,nn,11-22-23,0,0.0h,0.0h,0%,$0,0.0h,1335.5d,0,$0,$0,1.03_Accelerator Systems (AS),1.03.03_AS Superconducting Linac System (ScL),1.03.03.06_AS Superconducting Linac System Procurement and Fabrication,1.03.03.06.40_ScL - Tooling - Procurement,AS_ScL_TOO_VAC_6060_RCV: Vendor Proposal - CM_Tooling for Vacuum
298420,1.03,1.03.03,1.03.03.06,1.03.03.06.40,1.03.03.06.40,ScL - Tooling - Procurement,AS_ScL_TOO_WLD_6060,RCV: Vendor Proposal - CM_Tooling for Welding,0.0,0.0,0.0,0.0,0,11-22-23,AS_ScL_TOO_WLD_6050: FS,AS_ScL_TOO_WLD_6070: FS,0,0,0,0,0,0,0.0,0.0,0,nn,11-22-23,0,0.0h,0.0h,0%,$0,0.0h,1335.5d,0,$0,$0,1.03_Accelerator Systems (AS),1.03.03_AS Superconducting Linac System (ScL),1.03.03.06_AS Superconducting Linac System Procurement and Fabrication,1.03.03.06.40_ScL - Tooling - Procurement,AS_ScL_TOO_WLD_6060_RCV: Vendor Proposal - CM_Tooling for Welding
298421,1.03,1.03.03,1.03.03.06,1.03.03.06.40,1.03.03.06.40,ScL - Tooling - Procurement,AS_ScL_TOO_CMx_6070,Evaluations/Negotiations - CM_Tooling for CM Install / Transport,20.0,0.0,0.0,0.0,11-27-23,01-08-24,AS_ScL_TOO_CMx_6060: FS,AS_ScL_TOO_CMx_6080: FS,0,0,0,0,0,0,0.0,0.0,0,11-27-23,01-08-24,0,0.0h,0.0h,0%,$0,0.0h,1335.5d,0,$0,$0,1.03_Accelerator Systems (AS),1.03.03_AS Superconducting Linac System (ScL),1.03.03.06_AS Superconducting Linac System Procurement and Fabrication,1.03.03.06.40_ScL - Tooling - Procurement,AS_ScL_TOO_CMx_6070_Evaluations/Negotiations - CM_Tooling for CM Install / Transport
298422,1.03,1.03.03,1.03.03.06,1.03.03.06.40,1.03.03.06.40,ScL - Tooling - Procurement,AS_ScL_TOO_VAC_6070,Evaluations/Negotiations - CM_Tooling for Vacuum,20.0,0.0,0.0,0.0,11-27-23,01-08-24,AS_ScL_TOO_VAC_6060: FS,AS_ScL_TOO_VAC_6080: FS,0,0,0,0,0,0,0.0,0.0,0,11-27-23,01-08-24,0,0.0h,0.0h,0%,$0,0.0h,1335.5d,0,$0,$0,1.03_Accelerator Systems (AS),1.03.03_AS Superconducting Linac System (ScL),1.03.03.06_AS Superconducting Linac System Procurement and Fabrication,1.03.03.06.40_ScL - Tooling - Procurement,AS_ScL_TOO_VAC_6070_Evaluations/Negotiations - CM_Tooling for Vacuum
298423,1.03,1.03.03,1.03.03.06,1.03.03.06.40,1.03.03.06.40,ScL - Tooling - Procurement,AS_ScL_TOO_WLD_6070,Evaluations/Negotiations - CM_Tooling for Welding,20.0,0.0,0.0,0.0,11-27-23,01-08-24,AS_ScL_TOO_WLD_6060: FS,AS_ScL_TOO_WLD_6080: FS,0,0,0,0,0,0,0.0,0.0,0,11-27-23,01-08-24,0,0.0h,0.0h,0%,$0,0.0h,1335.5d,0,$0,$0,1.03_Accelerator Systems (AS),1.03.03_AS Superconducting Linac System (ScL),1.03.03.06_AS Superconducting Linac System Procurement and Fabrication,1.03.03.06.40_ScL - Tooling - Procurement,AS_ScL_TOO_WLD_6070_Evaluations/Negotiations - CM_Tooling for Welding
298424,1.03,1.03.03,1.03.03.06,1.03.03.06.40,1.03.03.06.40,ScL - Tooling - Procurement,AS_ScL_TOO_CMx_6120,COMP: Procurement - CM_Tooling for CM Install / Transport,0.0,0.0,0.0,0.0,0,04-12-24,AS_ScL_TOO_CMx_6110: FS,AS_ScL_CM00_RIG_9100: FS,0,0,0,0,0,0,0.0,0.0,0,nn,04-12-24,0,0.0h,0.0h,0%,$0,0.0h,1335.5d,0,$0,$0,1.03_Accelerator Systems (AS),1.03.03_AS Superconducting Linac System (ScL),1.03.03.06_AS Superconducting Linac System Procurement and Fabrication,1.03.03.06.40_ScL - Tooling - Procurement,AS_ScL_TOO_CMx_6120_COMP: Procurement - CM_Tooling for CM Install / Transport
298425,1.03,1.03.03,1.03.03.06,1.03.03.06.40,1.03.03.06.40,ScL - Tooling - Procurement,AS_ScL_TOO_VAC_6120,COMP: Procurement - CM_Tooling for Vacuum,0.0,0.0,0.0,0.0,0,04-12-24,AS_ScL_TOO_VAC_6110: FS,AS_ScL_CM00_RIG_9100: FS,0,0,0,0,0,0,0.0,0.0,0,nn,04-12-24,0,0.0h,0.0h,0%,$0,0.0h,1335.5d,0,$0,$0,1.03_Accelerator Systems (AS),1.03.03_AS Superconducting Linac System (ScL),1.03.03.06_AS Superconducting Linac System Procurement and Fabrication,1.03.03.06.40_ScL - Tooling - Procurement,AS_ScL_TOO_VAC_6120_COMP: Procurement - CM_Tooling for Vacuum
298426,1.03,1.03.03,1.03.03.06,1.03.03.06.40,1.03.03.06.40,ScL - Tooling - Procurement,AS_ScL_TOO_WLD_6120,COMP: Procurement - CM_Tooling for Welding,0.0,0.0,0.0,0.0,0,04-12-24,AS_ScL_TOO_WLD_6110: FS,AS_ScL_CM00_RIG_9100: FS,0,0,0,0,0,0,0.0,0.0,0,nn,04-12-24,0,0.0h,0.0h,0%,$0,0.0h,1335.5d,0,$0,$0,1.03_Accelerator Systems (AS),1.03.03_AS Superconducting Linac System (ScL),1.03.03.06_AS Superconducting Linac System Procurement and Fabrication,1.03.03.06.40_ScL - Tooling - Procurement,AS_ScL_TOO_WLD_6120_COMP: Procurement - CM_Tooling for Welding
298427,1.03,1.03.03,1.03.03.06,1.03.03.06.60,1.03.03.06.60,HPRF - First Article SSAs - Procurement,AS_HPRF_SSA_5460,Procure and receive WR650 Reflectometer 1st Art SSA,20.0,0.0,0.0,0.0,0,0,AS_M4_1000: FS,"AS_HPRF_SSA_5300: FF, AS_HPRF_SSA_5470: SS",0,0,0,0,0,0,0.0,0.0,0,05-21-20,06-18-20,0,0.0h,0.0h,100%,$0,0.0h,0,0,$0,$0,1.03_Accelerator Systems (AS),1.03.03_AS Superconducting Linac System (ScL),1.03.03.06_AS Superconducting Linac System Procurement and Fabrication,1.03.03.06.60_HPRF - First Article SSAs - Procurement,AS_HPRF_SSA_5460_Procure and receive WR650 Reflectometer 1st Art SSA
298428,1.03,1.03.03,1.03.03.06,1.03.03.06.60,1.03.03.06.60,HPRF - First Article SSAs - Procurement,AS_HPRF_SSA_5470,Procure and receive 1.3 GHz Isolator 1st Art SSA (qty 18),20.0,0.0,0.0,0.0,0,0,AS_HPRF_SSA_5460: SS,AS_HPRF_SSA_5300: FF,0,0,0,0,0,0,0.0,0.0,0,05-21-20,06-18-20,0,0.0h,0.0h,100%,$0,0.0h,0,0,$0,$0,1.03_Accelerator Systems (AS),1.03.03_AS Superconducting Linac System (ScL),1.03.03.06_AS Superconducting Linac System Procurement and Fabrication,1.03.03.06.60_HPRF - First Article SSAs - Procurement,AS_HPRF_SSA_5470_Procure and receive 1.3 GHz Isolator 1st Art SSA (qty 18)
298429,1.03,1.03.03,1.03.03.06,1.03.03.06.60,1.03.03.06.60,HPRF - First Article SSAs - Procurement,AS_HPRF_SSA_5310,Prepare RFP - 1st Art SSA,20.0,0.0,0.0,0.0,0,0,AS_HPRF_SSA_5300: FS,AS_HPRF_SSA_5320: FS,0,0,0,0,0,0,0.0,0.0,0,06-03-19,06-28-19,0,0.0h,0.0h,100%,$0,0.0h,0,0,$0,$0,1.03_Accelerator Systems (AS),1.03.03_AS Superconducting Linac System (ScL),1.03.03.06_AS Superconducting Linac System Procurement and Fabrication,1.03.03.06.60_HPRF - First Article SSAs - Procurement,AS_HPRF_SSA_5310_Prepare RFP - 1st Art SSA
298430,1.03,1.03.03,1.03.03.06,1.03.03.06.60,1.03.03.06.60,HPRF - First Article SSAs - Procurement,AS_HPRF_SSA_5320,RELEASE: RFP - 1st Art SSA,1.0,0.0,0.0,0.0,0,0,AS_HPRF_SSA_5310: FS,AS_HPRF_SSA_5330: FS,0,0,0,0,0,0,0.0,0.0,0,06-28-19,06-28-19,0,0.0h,0.0h,100%,$0,0.0h,0,0,$0,$0,1.03_Accelerator Systems (AS),1.03.03_AS Superconducting Linac System (ScL),1.03.03.06_AS Superconducting Linac System Procurement and Fabrication,1.03.03.06.60_HPRF - First Article SSAs - Procurement,AS_HPRF_SSA_5320_RELEASE: RFP - 1st Art SSA
298431,1.03,1.03.03,1.03.03.06,1.03.03.06.60,1.03.03.06.60,HPRF - First Article SSAs - Procurement,AS_HPRF_SSA_5330,Vendor Proposal Effort - 1st Art SSA,30.0,0.0,0.0,0.0,0,0,AS_HPRF_SSA_5320: FS,AS_HPRF_SSA_5340: FS,0,0,0,0,0,0,0.0,0.0,0,06-12-19,07-24-19,0,0.0h,0.0h,100%,$0,0.0h,0,0,$0,$0,1.03_Accelerator Systems (AS),1.03.03_AS Superconducting Linac System (ScL),1.03.03.06_AS Superconducting Linac System Procurement and Fabrication,1.03.03.06.60_HPRF - First Article SSAs - Procurement,AS_HPRF_SSA_5330_Vendor Proposal Effort - 1st Art SSA
298432,1.03,1.03.03,1.03.03.06,1.03.03.06.60,1.03.03.06.60,HPRF - First Article SSAs - Procurement,AS_HPRF_SSA_5340,RCV: Vendor Proposal - 1st Art SSA,0.0,0.0,0.0,0.0,0,0,AS_HPRF_SSA_5330: FS,AS_HPRF_SSA_5350: FS,0,0,0,0,0,0,0.0,0.0,0,nn,09-03-19,0,0.0h,0.0h,100%,$0,0.0h,0,0,$0,$0,1.03_Accelerator Systems (AS),1.03.03_AS Superconducting Linac System (ScL),1.03.03.06_AS Superconducting Linac System Procurement and Fabrication,1.03.03.06.60_HPRF - First Article SSAs - Procurement,AS_HPRF_SSA_5340_RCV: Vendor Proposal - 1st Art SSA
298433,1.03,1.03.03,1.03.03.06,1.03.03.06.60,1.03.03.06.60,HPRF - First Article SSAs - Procurement,AS_HPRF_SSA_5350,Evaluation - Negotiations of 1st Art SSA,6.0,0.0,0.0,0.0,0,0,AS_HPRF_SSA_5340: FS,AS_HPRF_SSA_5360: FS,0,0,0,0,0,0,0.0,0.0,0,09-04-19,09-11-19,0,0.0h,0.0h,100%,$0,0.0h,0,0,$0,$0,1.03_Accelerator Systems (AS),1.03.03_AS Superconducting Linac System (ScL),1.03.03.06_AS Superconducting Linac System Procurement and Fabrication,1.03.03.06.60_HPRF - First Article SSAs - Procurement,AS_HPRF_SSA_5350_Evaluation - Negotiations of 1st Art SSA
298434,1.03,1.03.03,1.03.03.06,1.03.03.06.60,1.03.03.06.60,HPRF - First Article SSAs - Procurement,AS_HPRF_SSA_5360,Prepare Award Documents - 1st Art SSA,10.0,0.0,0.0,0.0,0,0,AS_HPRF_SSA_5350: FS,AS_HPRF_SSA_5370: FS,0,0,0,0,0,0,0.0,0.0,0,09-03-19,09-16-19,0,0.0h,0.0h,100%,$0,0.0h,0,0,$0,$0,1.03_Accelerator Systems (AS),1.03.03_AS Superconducting Linac System (ScL),1.03.03.06_AS Superconducting Linac System Procurement and Fabrication,1.03.03.06.60_HPRF - First Article SSAs - Procurement,AS_HPRF_SSA_5360_Prepare Award Documents - 1st Art SSA
298435,1.03,1.03.03,1.03.03.06,1.03.03.06.60,1.03.03.06.60,HPRF - First Article SSAs - Procurement,AS_HPRF_SSA_5380,Vendor Fabrication - 1st Art SSA,120.0,0.0,0.0,0.0,0,0,AS_HPRF_SSA_5370: FS,"AS_HPRF_SSA_5390: FS, AS_HPRF_SSA_5400: FS, AS_HPRF_SSA_5410: FS",0,0,0,0,0,0,0.0,0.0,0,07-01-20,01-04-21,0,0.0h,0.0h,100%,$0,0.0h,0,0,$0,$0,1.03_Accelerator Systems (AS),1.03.03_AS Superconducting Linac System (ScL),1.03.03.06_AS Superconducting Linac System Procurement and Fabrication,1.03.03.06.60_HPRF - First Article SSAs - Procurement,AS_HPRF_SSA_5380_Vendor Fabrication - 1st Art SSA
298436,1.03,1.03.03,1.03.03.06,1.03.03.06.60,1.03.03.06.60,HPRF - First Article SSAs - Procurement,AS_HPRF_SSA_5440,COMP: 1st Art SSA Design Verification,0.0,0.0,0.0,0.0,0,12-01-21,"AS_HPRF_SSA_5420: FS, AS_HPRF_SSA_5480: FS, AS_HPRF_SSA_5430: FS",AS_HPRF_NP_5010: FS,0,0,0,0,0,0,0.0,0.0,0,nn,12-01-21,0,0.0h,0.0h,0%,$0,0.0h,178.0d,0,$0,$0,1.03_Accelerator Systems (AS),1.03.03_AS Superconducting Linac System (ScL),1.03.03.06_AS Superconducting Linac System Procurement and Fabrication,1.03.03.06.60_HPRF - First Article SSAs - Procurement,AS_HPRF_SSA_5440_COMP: 1st Art SSA Design Verification
298437,1.03,1.03.03,1.03.03.06,1.03.03.06.61,1.03.03.06.61,HPRF - SSAs - Procurement,AS_HPRF_SSA_6030,"Prepare RFP (ASP,PRR, TPRR,etc.) - SSAs",35.0,0.0,0.0,0.0,10-31-23,01-04-24,AS_HPRF_SSA_6020: FS,AS_HPRF_SSA_6040: FS,0,0,0,0,0,0,0.0,0.0,0,10-31-23,01-04-24,0,0.0h,0.0h,0%,$0,0.0h,-256.5d,0,$0,$0,1.03_Accelerator Systems (AS),1.03.03_AS Superconducting Linac System (ScL),1.03.03.06_AS Superconducting Linac System Procurement and Fabrication,1.03.03.06.61_HPRF - SSAs - Procurement,"AS_HPRF_SSA_6030_Prepare RFP (ASP,PRR, TPRR,etc.) - SSAs"
298438,1.03,1.03.03,1.03.03.06,1.03.03.06.61,1.03.03.06.61,HPRF - SSAs - Procurement,AS_HPRF_SSA_6040,SLAC legal review/approve RFP,5.0,0.0,0.0,0.0,01-05-24,01-11-24,AS_HPRF_SSA_6030: FS,AS_HPRF_SSA_6050: FS,0,0,0,0,0,0,0.0,0.0,0,01-05-24,01-11-24,0,0.0h,0.0h,0%,$0,0.0h,-256.5d,0,$0,$0,1.03_Accelerator Systems (AS),1.03.03_AS Superconducting Linac System (ScL),1.03.03.06_AS Superconducting Linac System Procurement and Fabrication,1.03.03.06.61_HPRF - SSAs - Procurement,AS_HPRF_SSA_6040_SLAC legal review/approve RFP
298439,1.03,1.03.03,1.03.03.06,1.03.03.06.61,1.03.03.06.61,HPRF - SSAs - Procurement,AS_HPRF_SSA_6050,Release RFP - SSAs,5.0,0.0,0.0,0.0,01-12-24,01-19-24,AS_HPRF_SSA_6040: FS,AS_HPRF_SSA_6060: FS,0,0,0,0,0,0,0.0,0.0,0,01-12-24,01-19-24,0,0.0h,0.0h,0%,$0,0.0h,-256.5d,0,$0,$0,1.03_Accelerator Systems (AS),1.03.03_AS Superconducting Linac System (ScL),1.03.03.06_AS Superconducting Linac System Procurement and Fabrication,1.03.03.06.61_HPRF - SSAs - Procurement,AS_HPRF_SSA_6050_Release RFP - SSAs
298440,1.03,1.03.03,1.03.03.06,1.03.03.06.61,1.03.03.06.61,HPRF - SSAs - Procurement,AS_HPRF_SSA_6060,Vendor Proposal Effort - SSAs,35.0,0.0,0.0,0.0,01-22-24,03-11-24,AS_HPRF_SSA_6050: FS,AS_HPRF_SSA_6070: FS,0,0,0,0,0,0,0.0,0.0,0,01-22-24,03-11-24,0,0.0h,0.0h,0%,$0,0.0h,-256.5d,0,$0,$0,1.03_Accelerator Systems (AS),1.03.03_AS Superconducting Linac System (ScL),1.03.03.06_AS Superconducting Linac System Procurement and Fabrication,1.03.03.06.61_HPRF - SSAs - Procurement,AS_HPRF_SSA_6060_Vendor Proposal Effort - SSAs
298441,1.03,1.03.03,1.03.03.06,1.03.03.06.61,1.03.03.06.61,HPRF - SSAs - Procurement,AS_HPRF_SSA_6070,RCV: Vendor Proposal - SSAs,0.0,0.0,0.0,0.0,0,03-11-24,AS_HPRF_SSA_6060: FS,AS_HPRF_SSA_6080: FS,0,0,0,0,0,0,0.0,0.0,0,nn,03-11-24,0,0.0h,0.0h,0%,$0,0.0h,-256.5d,0,$0,$0,1.03_Accelerator Systems (AS),1.03.03_AS Superconducting Linac System (ScL),1.03.03.06_AS Superconducting Linac System Procurement and Fabrication,1.03.03.06.61_HPRF - SSAs - Procurement,AS_HPRF_SSA_6070_RCV: Vendor Proposal - SSAs
298442,1.03,1.03.03,1.03.03.06,1.03.03.06.61,1.03.03.06.61,HPRF - SSAs - Procurement,AS_HPRF_SSA_6080,Evaluations/Negotiations - SSAs,55.0,0.0,0.0,0.0,03-12-24,05-28-24,AS_HPRF_SSA_6070: FS,AS_HPRF_SSA_6090: FS,0,0,0,0,0,0,0.0,0.0,0,03-12-24,05-28-24,0,0.0h,0.0h,0%,$0,0.0h,-256.5d,0,$0,$0,1.03_Accelerator Systems (AS),1.03.03_AS Superconducting Linac System (ScL),1.03.03.06_AS Superconducting Linac System Procurement and Fabrication,1.03.03.06.61_HPRF - SSAs - Procurement,AS_HPRF_SSA_6080_Evaluations/Negotiations - SSAs
298443,1.03,1.03.03,1.03.03.06,1.03.03.06.61,1.03.03.06.61,HPRF - SSAs - Procurement,AS_HPRF_SSA_6100,(Foreign Only) Buy American ACT Review,10.0,0.0,0.0,0.0,06-05-24,06-18-24,AS_HPRF_SSA_6090: FS,AS_HPRF_SSA_6110: FS,0,0,0,0,0,0,0.0,0.0,0,06-05-24,06-18-24,0,0.0h,0.0h,0%,$0,0.0h,-256.5d,0,$0,$0,1.03_Accelerator Systems (AS),1.03.03_AS Superconducting Linac System (ScL),1.03.03.06_AS Superconducting Linac System Procurement and Fabrication,1.03.03.06.61_HPRF - SSAs - Procurement,AS_HPRF_SSA_6100_(Foreign Only) Buy American ACT Review
298444,1.03,1.03.03,1.03.03.06,1.03.03.06.61,1.03.03.06.61,HPRF - SSAs - Procurement,AS_HPRF_SSA_6110,SLAC legal review/approve Award docs,5.0,0.0,0.0,0.0,06-19-24,06-25-24,AS_HPRF_SSA_6100: FS,AS_HPRF_SSA_6120: FS,0,0,0,0,0,0,0.0,0.0,0,06-19-24,06-25-24,0,0.0h,0.0h,0%,$0,0.0h,-256.5d,0,$0,$0,1.03_Accelerator Systems (AS),1.03.03_AS Superconducting Linac System (ScL),1.03.03.06_AS Superconducting Linac System Procurement and Fabrication,1.03.03.06.61_HPRF - SSAs - Procurement,AS_HPRF_SSA_6110_SLAC legal review/approve Award docs
298445,1.03,1.03.03,1.03.03.06,1.03.03.06.61,1.03.03.06.61,HPRF - SSAs - Procurement,AS_HPRF_SSA_6150,COMP: Procurement - SSAs,0.0,0.0,0.0,0.0,0,06-27-25,AS_HPRF_SSA_6140: FS,AS_HPRF_SSA_6160: FS,0,0,0,0,0,0,0.0,0.0,0,nn,06-27-25,0,0.0h,0.0h,0%,$0,0.0h,-256.5d,0,$0,$0,1.03_Accelerator Systems (AS),1.03.03_AS Superconducting Linac System (ScL),1.03.03.06_AS Superconducting Linac System Procurement and Fabrication,1.03.03.06.61_HPRF - SSAs - Procurement,AS_HPRF_SSA_6150_COMP: Procurement - SSAs
298446,1.03,1.03.03,1.03.03.06,1.03.03.06.65,1.03.03.06.65,HPRF - Radiation Caps - Procurement,AS_HPRF_CAP_6130,Prepare Requisition (Specs/SOW/ETC) - Radiation Caps,15.0,0.0,0.0,0.0,10-02-23,10-20-23,"AS_M4_3010: FS, AS_HPRF_LYT_5040: FS",AS_HPRF_CAP_6140: FS,0,0,0,0,0,0,0.0,0.0,0,10-02-23,10-20-23,0,0.0h,0.0h,0%,$0,0.0h,-176.0d,0,$0,$0,1.03_Accelerator Systems (AS),1.03.03_AS Superconducting Linac System (ScL),1.03.03.06_AS Superconducting Linac System Procurement and Fabrication,1.03.03.06.65_HPRF - Radiation Caps - Procurement,AS_HPRF_CAP_6130_Prepare Requisition (Specs/SOW/ETC) - Radiation Caps
298447,1.03,1.03.03,1.03.03.06,1.03.03.06.65,1.03.03.06.65,HPRF - Radiation Caps - Procurement,AS_HPRF_CAP_6150,Prepare RFP - Radiation Caps,10.0,0.0,0.0,0.0,10-24-23,11-06-23,AS_HPRF_CAP_6140: FS,AS_HPRF_CAP_6160: FS,0,0,0,0,0,0,0.0,0.0,0,10-24-23,11-06-23,0,0.0h,0.0h,0%,$0,0.0h,-176.0d,0,$0,$0,1.03_Accelerator Systems (AS),1.03.03_AS Superconducting Linac System (ScL),1.03.03.06_AS Superconducting Linac System Procurement and Fabrication,1.03.03.06.65_HPRF - Radiation Caps - Procurement,AS_HPRF_CAP_6150_Prepare RFP - Radiation Caps
298448,1.03,1.03.03,1.03.03.06,1.03.03.06.65,1.03.03.06.65,HPRF - Radiation Caps - Procurement,AS_HPRF_CAP_6160,Release RFP - Radiation Caps,2.0,0.0,0.0,0.0,11-07-23,11-08-23,AS_HPRF_CAP_6150: FS,AS_HPRF_CAP_6170: FS,0,0,0,0,0,0,0.0,0.0,0,11-07-23,11-08-23,0,0.0h,0.0h,0%,$0,0.0h,-176.0d,0,$0,$0,1.03_Accelerator Systems (AS),1.03.03_AS Superconducting Linac System (ScL),1.03.03.06_AS Superconducting Linac System Procurement and Fabrication,1.03.03.06.65_HPRF - Radiation Caps - Procurement,AS_HPRF_CAP_6160_Release RFP - Radiation Caps
298449,1.03,1.03.03,1.03.03.06,1.03.03.06.65,1.03.03.06.65,HPRF - Radiation Caps - Procurement,AS_HPRF_CAP_6170,Vendor Proposal Effort - Radiation Caps,10.0,0.0,0.0,0.0,11-09-23,11-22-23,AS_HPRF_CAP_6160: FS,AS_HPRF_CAP_6180: FS,0,0,0,0,0,0,0.0,0.0,0,11-09-23,11-22-23,0,0.0h,0.0h,0%,$0,0.0h,-176.0d,0,$0,$0,1.03_Accelerator Systems (AS),1.03.03_AS Superconducting Linac System (ScL),1.03.03.06_AS Superconducting Linac System Procurement and Fabrication,1.03.03.06.65_HPRF - Radiation Caps - Procurement,AS_HPRF_CAP_6170_Vendor Proposal Effort - Radiation Caps
298450,1.03,1.03.03,1.03.03.06,1.03.03.06.65,1.03.03.06.65,HPRF - Radiation Caps - Procurement,AS_HPRF_CAP_6180,RCV: Vendor Proposal - Radiation Caps,0.0,0.0,0.0,0.0,0,11-22-23,AS_HPRF_CAP_6170: FS,AS_HPRF_CAP_6190: FS,0,0,0,0,0,0,0.0,0.0,0,nn,11-22-23,0,0.0h,0.0h,0%,$0,0.0h,-176.0d,0,$0,$0,1.03_Accelerator Systems (AS),1.03.03_AS Superconducting Linac System (ScL),1.03.03.06_AS Superconducting Linac System Procurement and Fabrication,1.03.03.06.65_HPRF - Radiation Caps - Procurement,AS_HPRF_CAP_6180_RCV: Vendor Proposal - Radiation Caps
298451,1.03,1.03.03,1.03.03.06,1.03.03.06.65,1.03.03.06.65,HPRF - Radiation Caps - Procurement,AS_HPRF_CAP_6190,Evaluations/Negotiations - Radiation Caps,20.0,0.0,0.0,0.0,11-27-23,01-08-24,AS_HPRF_CAP_6180: FS,AS_HPRF_CAP_6200: FS,0,0,0,0,0,0,0.0,0.0,0,11-27-23,01-08-24,0,0.0h,0.0h,0%,$0,0.0h,-176.0d,0,$0,$0,1.03_Accelerator Systems (AS),1.03.03_AS Superconducting Linac System (ScL),1.03.03.06_AS Superconducting Linac System Procurement and Fabrication,1.03.03.06.65_HPRF - Radiation Caps - Procurement,AS_HPRF_CAP_6190_Evaluations/Negotiations - Radiation Caps
298452,1.03,1.03.03,1.03.03.06,1.03.03.06.65,1.03.03.06.65,HPRF - Radiation Caps - Procurement,AS_HPRF_CAP_6200,Prepare Award Documents - Radiation Caps,5.0,0.0,0.0,0.0,01-09-24,01-16-24,AS_HPRF_CAP_6190: FS,AS_HPRF_CAP_6210: FS,0,0,0,0,0,0,0.0,0.0,0,01-09-24,01-16-24,0,0.0h,0.0h,0%,$0,0.0h,-176.0d,0,$0,$0,1.03_Accelerator Systems (AS),1.03.03_AS Superconducting Linac System (ScL),1.03.03.06_AS Superconducting Linac System Procurement and Fabrication,1.03.03.06.65_HPRF - Radiation Caps - Procurement,AS_HPRF_CAP_6200_Prepare Award Documents - Radiation Caps
298453,1.03,1.03.03,1.03.03.06,1.03.03.06.65,1.03.03.06.65,HPRF - Radiation Caps - Procurement,AS_HPRF_CAP_6240,COMP: Procurement - Radiation Caps,0.0,0.0,0.0,0.0,0,04-12-24,AS_HPRF_CAP_6230: FS,AS_HPRF_CAP_6250: FS,0,0,0,0,0,0,0.0,0.0,0,nn,04-12-24,0,0.0h,0.0h,0%,$0,0.0h,-176.0d,0,$0,$0,1.03_Accelerator Systems (AS),1.03.03_AS Superconducting Linac System (ScL),1.03.03.06_AS Superconducting Linac System Procurement and Fabrication,1.03.03.06.65_HPRF - Radiation Caps - Procurement,AS_HPRF_CAP_6240_COMP: Procurement - Radiation Caps
298454,1.03,1.03.03,1.03.03.06,1.03.03.06.66,1.03.03.06.66,HPRF - Vertical Penetration Conduits - Procurement,AS_HPRF_CND_6030,"Prepare RFP (ASP,PRR, TPRR,etc.) - Vertical Penetration Conduits",35.0,0.0,0.0,0.0,03-02-23,04-19-23,AS_HPRF_CND_6020: FS,AS_HPRF_CND_6040: FS,0,0,0,0,0,0,0.0,0.0,0,03-02-23,04-19-23,0,0.0h,0.0h,0%,$0,0.0h,243.0d,0,$0,$0,1.03_Accelerator Systems (AS),1.03.03_AS Superconducting Linac System (ScL),1.03.03.06_AS Superconducting Linac System Procurement and Fabrication,1.03.03.06.66_HPRF - Vertical Penetration Conduits - Procurement,"AS_HPRF_CND_6030_Prepare RFP (ASP,PRR, TPRR,etc.) - Vertical Penetration Conduits"
298455,1.03,1.03.03,1.03.03.06,1.03.03.06.66,1.03.03.06.66,HPRF - Vertical Penetration Conduits - Procurement,AS_HPRF_CND_6040,SLAC legal review/approve RFP - Vertical Penetration Conduits,5.0,0.0,0.0,0.0,04-20-23,04-26-23,AS_HPRF_CND_6030: FS,AS_HPRF_CND_6050: FS,0,0,0,0,0,0,0.0,0.0,0,04-20-23,04-26-23,0,0.0h,0.0h,0%,$0,0.0h,243.0d,0,$0,$0,1.03_Accelerator Systems (AS),1.03.03_AS Superconducting Linac System (ScL),1.03.03.06_AS Superconducting Linac System Procurement and Fabrication,1.03.03.06.66_HPRF - Vertical Penetration Conduits - Procurement,AS_HPRF_CND_6040_SLAC legal review/approve RFP - Vertical Penetration Conduits
298456,1.03,1.03.03,1.03.03.06,1.03.03.06.66,1.03.03.06.66,HPRF - Vertical Penetration Conduits - Procurement,AS_HPRF_CND_6050,Release RFP - Vertical Penetration Conduits,5.0,0.0,0.0,0.0,04-27-23,05-03-23,AS_HPRF_CND_6040: FS,AS_HPRF_CND_6060: FS,0,0,0,0,0,0,0.0,0.0,0,04-27-23,05-03-23,0,0.0h,0.0h,0%,$0,0.0h,243.0d,0,$0,$0,1.03_Accelerator Systems (AS),1.03.03_AS Superconducting Linac System (ScL),1.03.03.06_AS Superconducting Linac System Procurement and Fabrication,1.03.03.06.66_HPRF - Vertical Penetration Conduits - Procurement,AS_HPRF_CND_6050_Release RFP - Vertical Penetration Conduits
298457,1.03,1.03.03,1.03.03.06,1.03.03.06.66,1.03.03.06.66,HPRF - Vertical Penetration Conduits - Procurement,AS_HPRF_CND_6060,Vendor Proposal Effort - Vertical Penetration Conduits,35.0,0.0,0.0,0.0,05-04-23,06-22-23,AS_HPRF_CND_6050: FS,AS_HPRF_CND_6070: FS,0,0,0,0,0,0,0.0,0.0,0,05-04-23,06-22-23,0,0.0h,0.0h,0%,$0,0.0h,243.0d,0,$0,$0,1.03_Accelerator Systems (AS),1.03.03_AS Superconducting Linac System (ScL),1.03.03.06_AS Superconducting Linac System Procurement and Fabrication,1.03.03.06.66_HPRF - Vertical Penetration Conduits - Procurement,AS_HPRF_CND_6060_Vendor Proposal Effort - Vertical Penetration Conduits
298458,1.03,1.03.03,1.03.03.06,1.03.03.06.66,1.03.03.06.66,HPRF - Vertical Penetration Conduits - Procurement,AS_HPRF_CND_6070,RCV: Vendor Proposal - Vertical Penetration Conduits,0.0,0.0,0.0,0.0,0,06-22-23,AS_HPRF_CND_6060: FS,AS_HPRF_CND_6080: FS,0,0,0,0,0,0,0.0,0.0,0,nn,06-22-23,0,0.0h,0.0h,0%,$0,0.0h,243.0d,0,$0,$0,1.03_Accelerator Systems (AS),1.03.03_AS Superconducting Linac System (ScL),1.03.03.06_AS Superconducting Linac System Procurement and Fabrication,1.03.03.06.66_HPRF - Vertical Penetration Conduits - Procurement,AS_HPRF_CND_6070_RCV: Vendor Proposal - Vertical Penetration Conduits
298459,1.03,1.03.03,1.03.03.06,1.03.03.06.66,1.03.03.06.66,HPRF - Vertical Penetration Conduits - Procurement,AS_HPRF_CND_6080,Evaluations/Negotiations - Vertical Penetration Conduits,55.0,0.0,0.0,0.0,06-23-23,09-11-23,AS_HPRF_CND_6070: FS,AS_HPRF_CND_6090: FS,0,0,0,0,0,0,0.0,0.0,0,06-23-23,09-11-23,0,0.0h,0.0h,0%,$0,0.0h,243.0d,0,$0,$0,1.03_Accelerator Systems (AS),1.03.03_AS Superconducting Linac System (ScL),1.03.03.06_AS Superconducting Linac System Procurement and Fabrication,1.03.03.06.66_HPRF - Vertical Penetration Conduits - Procurement,AS_HPRF_CND_6080_Evaluations/Negotiations - Vertical Penetration Conduits
298460,1.03,1.03.03,1.03.03.06,1.03.03.06.66,1.03.03.06.66,HPRF - Vertical Penetration Conduits - Procurement,AS_HPRF_CND_6090,Prepare Award Documents - Vertical Penetration Conduits,5.0,0.0,0.0,0.0,09-12-23,09-18-23,AS_HPRF_CND_6080: FS,AS_HPRF_CND_6100: FS,0,0,0,0,0,0,0.0,0.0,0,09-12-23,09-18-23,0,0.0h,0.0h,0%,$0,0.0h,243.0d,0,$0,$0,1.03_Accelerator Systems (AS),1.03.03_AS Superconducting Linac System (ScL),1.03.03.06_AS Superconducting Linac System Procurement and Fabrication,1.03.03.06.66_HPRF - Vertical Penetration Conduits - Procurement,AS_HPRF_CND_6090_Prepare Award Documents - Vertical Penetration Conduits
298461,1.03,1.03.03,1.03.03.06,1.03.03.06.66,1.03.03.06.66,HPRF - Vertical Penetration Conduits - Procurement,AS_HPRF_CND_6100,(Foreign Only) Buy American ACT Review - Vertical Penetration Conduits,10.0,0.0,0.0,0.0,09-19-23,10-02-23,AS_HPRF_CND_6090: FS,AS_HPRF_CND_6110: FS,0,0,0,0,0,0,0.0,0.0,0,09-19-23,10-02-23,0,0.0h,0.0h,0%,$0,0.0h,243.0d,0,$0,$0,1.03_Accelerator Systems (AS),1.03.03_AS Superconducting Linac System (ScL),1.03.03.06_AS Superconducting Linac System Procurement and Fabrication,1.03.03.06.66_HPRF - Vertical Penetration Conduits - Procurement,AS_HPRF_CND_6100_(Foreign Only) Buy American ACT Review - Vertical Penetration Conduits
298462,1.03,1.03.03,1.03.03.06,1.03.03.06.66,1.03.03.06.66,HPRF - Vertical Penetration Conduits - Procurement,AS_HPRF_CND_6110,SLAC legal review/approve Award docs - Vertical Penetration Conduits,5.0,0.0,0.0,0.0,10-03-23,10-09-23,AS_HPRF_CND_6100: FS,AS_HPRF_CND_6120: FS,0,0,0,0,0,0,0.0,0.0,0,10-03-23,10-09-23,0,0.0h,0.0h,0%,$0,0.0h,243.0d,0,$0,$0,1.03_Accelerator Systems (AS),1.03.03_AS Superconducting Linac System (ScL),1.03.03.06_AS Superconducting Linac System Procurement and Fabrication,1.03.03.06.66_HPRF - Vertical Penetration Conduits - Procurement,AS_HPRF_CND_6110_SLAC legal review/approve Award docs - Vertical Penetration Conduits
298463,1.03,1.03.03,1.03.03.06,1.03.03.06.66,1.03.03.06.66,HPRF - Vertical Penetration Conduits - Procurement,AS_HPRF_CND_6130,Vendor Effort - Vertical Penetration Conduits,100.0,0.0,0.0,0.0,10-17-23,03-25-24,AS_HPRF_CND_6120: FS,AS_HPRF_CND_6140: FS,0,0,0,0,0,0,0.0,0.0,0,10-17-23,03-25-24,0,0.0h,0.0h,0%,$0,0.0h,243.0d,0,$0,$0,1.03_Accelerator Systems (AS),1.03.03_AS Superconducting Linac System (ScL),1.03.03.06_AS Superconducting Linac System Procurement and Fabrication,1.03.03.06.66_HPRF - Vertical Penetration Conduits - Procurement,AS_HPRF_CND_6130_Vendor Effort - Vertical Penetration Conduits
298464,1.03,1.03.03,1.03.03.06,1.03.03.06.66,1.03.03.06.66,HPRF - Vertical Penetration Conduits - Procurement,AS_HPRF_CND_6150,COMP: Procurement - Vertical Penetration Conduits,0.0,0.0,0.0,0.0,0,03-26-24,AS_HPRF_CND_6140: FS,AS_HPRF_CND_6160: FS,0,0,0,0,0,0,0.0,0.0,0,nn,03-26-24,0,0.0h,0.0h,0%,$0,0.0h,243.0d,0,$0,$0,1.03_Accelerator Systems (AS),1.03.03_AS Superconducting Linac System (ScL),1.03.03.06_AS Superconducting Linac System Procurement and Fabrication,1.03.03.06.66_HPRF - Vertical Penetration Conduits - Procurement,AS_HPRF_CND_6150_COMP: Procurement - Vertical Penetration Conduits
298465,1.03,1.03.03,1.03.03.06,1.03.03.06.67,1.03.03.06.67,HPRF - Frames and Structure - Procurement,AS_HPRF_ST_6100,Prepare RFP - Frames & Structure,15.0,0.0,0.0,0.0,02-01-23,02-22-23,AS_HPRF_ST_6090: FS,AS_HPRF_ST_6110: FS,0,0,0,0,0,0,0.0,0.0,0,02-01-23,02-22-23,0,0.0h,0.0h,0%,$0,0.0h,1564.5d,0,$0,$0,1.03_Accelerator Systems (AS),1.03.03_AS Superconducting Linac System (ScL),1.03.03.06_AS Superconducting Linac System Procurement and Fabrication,1.03.03.06.67_HPRF - Frames and Structure - Procurement,AS_HPRF_ST_6100_Prepare RFP - Frames & Structure
298466,1.03,1.03.03,1.03.03.06,1.03.03.06.67,1.03.03.06.67,HPRF - Frames and Structure - Procurement,AS_HPRF_ST_6110,Release RFP - Frames & Structure,5.0,0.0,0.0,0.0,02-23-23,03-01-23,AS_HPRF_ST_6100: FS,AS_HPRF_ST_6120: FS,0,0,0,0,0,0,0.0,0.0,0,02-23-23,03-01-23,0,0.0h,0.0h,0%,$0,0.0h,1564.5d,0,$0,$0,1.03_Accelerator Systems (AS),1.03.03_AS Superconducting Linac System (ScL),1.03.03.06_AS Superconducting Linac System Procurement and Fabrication,1.03.03.06.67_HPRF - Frames and Structure - Procurement,AS_HPRF_ST_6110_Release RFP - Frames & Structure
298467,1.03,1.03.03,1.03.03.06,1.03.03.06.67,1.03.03.06.67,HPRF - Frames and Structure - Procurement,AS_HPRF_ST_6120,Vendor Proposal Effort - Frames & Structure,15.0,0.0,0.0,0.0,03-02-23,03-22-23,AS_HPRF_ST_6110: FS,AS_HPRF_ST_6130: FS,0,0,0,0,0,0,0.0,0.0,0,03-02-23,03-22-23,0,0.0h,0.0h,0%,$0,0.0h,1564.5d,0,$0,$0,1.03_Accelerator Systems (AS),1.03.03_AS Superconducting Linac System (ScL),1.03.03.06_AS Superconducting Linac System Procurement and Fabrication,1.03.03.06.67_HPRF - Frames and Structure - Procurement,AS_HPRF_ST_6120_Vendor Proposal Effort - Frames & Structure
298468,1.03,1.03.03,1.03.03.06,1.03.03.06.67,1.03.03.06.67,HPRF - Frames and Structure - Procurement,AS_HPRF_ST_6130,RCV: Vendor Proposal - Frames & Structure,0.0,0.0,0.0,0.0,0,03-22-23,AS_HPRF_ST_6120: FS,AS_HPRF_ST_6140: FS,0,0,0,0,0,0,0.0,0.0,0,nn,03-22-23,0,0.0h,0.0h,0%,$0,0.0h,1564.5d,0,$0,$0,1.03_Accelerator Systems (AS),1.03.03_AS Superconducting Linac System (ScL),1.03.03.06_AS Superconducting Linac System Procurement and Fabrication,1.03.03.06.67_HPRF - Frames and Structure - Procurement,AS_HPRF_ST_6130_RCV: Vendor Proposal - Frames & Structure
298469,1.03,1.03.03,1.03.03.06,1.03.03.06.67,1.03.03.06.67,HPRF - Frames and Structure - Procurement,AS_HPRF_ST_6140,Evaluations/Negotiations - Frames & Structure,20.0,0.0,0.0,0.0,03-23-23,04-19-23,AS_HPRF_ST_6130: FS,AS_HPRF_ST_6150: FS,0,0,0,0,0,0,0.0,0.0,0,03-23-23,04-19-23,0,0.0h,0.0h,0%,$0,0.0h,1564.5d,0,$0,$0,1.03_Accelerator Systems (AS),1.03.03_AS Superconducting Linac System (ScL),1.03.03.06_AS Superconducting Linac System Procurement and Fabrication,1.03.03.06.67_HPRF - Frames and Structure - Procurement,AS_HPRF_ST_6140_Evaluations/Negotiations - Frames & Structure
298470,1.03,1.03.03,1.03.03.06,1.03.03.06.67,1.03.03.06.67,HPRF - Frames and Structure - Procurement,AS_HPRF_ST_6150,Prepare Award Documents - Frames & Structure,5.0,0.0,0.0,0.0,04-20-23,04-26-23,AS_HPRF_ST_6140: FS,AS_HPRF_ST_6160: FS,0,0,0,0,0,0,0.0,0.0,0,04-20-23,04-26-23,0,0.0h,0.0h,0%,$0,0.0h,1564.5d,0,$0,$0,1.03_Accelerator Systems (AS),1.03.03_AS Superconducting Linac System (ScL),1.03.03.06_AS Superconducting Linac System Procurement and Fabrication,1.03.03.06.67_HPRF - Frames and Structure - Procurement,AS_HPRF_ST_6150_Prepare Award Documents - Frames & Structure
298471,1.03,1.03.03,1.03.03.06,1.03.03.06.67,1.03.03.06.67,HPRF - Frames and Structure - Procurement,AS_HPRF_ST_6170,Vendor Effort - Frames & Structure,60.0,0.0,0.0,0.0,10-03-23,01-11-24,AS_HPRF_ST_6160: FS,AS_HPRF_ST_6180: FS,0,0,0,0,0,0,0.0,0.0,0,10-03-23,01-11-24,0,0.0h,0.0h,0%,$0,0.0h,1455.5d,0,$0,$0,1.03_Accelerator Systems (AS),1.03.03_AS Superconducting Linac System (ScL),1.03.03.06_AS Superconducting Linac System Procurement and Fabrication,1.03.03.06.67_HPRF - Frames and Structure - Procurement,AS_HPRF_ST_6170_Vendor Effort - Frames & Structure
298472,1.03,1.03.03,1.03.03.06,1.03.03.06.67,1.03.03.06.67,HPRF - Frames and Structure - Procurement,AS_HPRF_ST_6190,COMP: Procurement - Frames & Structure,0.0,0.0,0.0,0.0,0,01-12-24,AS_HPRF_ST_6180: FS,AS_HPRF_ST_6200: FS,0,0,0,0,0,0,0.0,0.0,0,nn,01-12-24,0,0.0h,0.0h,0%,$0,0.0h,1455.5d,0,$0,$0,1.03_Accelerator Systems (AS),1.03.03_AS Superconducting Linac System (ScL),1.03.03.06_AS Superconducting Linac System Procurement and Fabrication,1.03.03.06.67_HPRF - Frames and Structure - Procurement,AS_HPRF_ST_6190_COMP: Procurement - Frames & Structure
298473,1.03,1.03.03,1.03.03.06,1.03.03.06.70,1.03.03.06.70,HPRF - Waveguide - Procurement,AS_HPRF_WAV_6030,"Prepare RFP (ASP,PRR, TPRR,etc.) - HPRF Waveguide Procurement",35.0,0.0,0.0,0.0,02-01-23,03-22-23,AS_HPRF_WAV_6020: FS,AS_HPRF_WAV_6040: FS,0,0,0,0,0,0,0.0,0.0,0,02-01-23,03-22-23,0,0.0h,0.0h,0%,$0,0.0h,243.0d,0,$0,$0,1.03_Accelerator Systems (AS),1.03.03_AS Superconducting Linac System (ScL),1.03.03.06_AS Superconducting Linac System Procurement and Fabrication,1.03.03.06.70_HPRF - Waveguide - Procurement,"AS_HPRF_WAV_6030_Prepare RFP (ASP,PRR, TPRR,etc.) - HPRF Waveguide Procurement"
298474,1.03,1.03.03,1.03.03.06,1.03.03.06.70,1.03.03.06.70,HPRF - Waveguide - Procurement,AS_HPRF_WAV_6040,SLAC legal review/approve RFP,5.0,0.0,0.0,0.0,03-23-23,03-29-23,AS_HPRF_WAV_6030: FS,AS_HPRF_WAV_6050: FS,0,0,0,0,0,0,0.0,0.0,0,03-23-23,03-29-23,0,0.0h,0.0h,0%,$0,0.0h,243.0d,0,$0,$0,1.03_Accelerator Systems (AS),1.03.03_AS Superconducting Linac System (ScL),1.03.03.06_AS Superconducting Linac System Procurement and Fabrication,1.03.03.06.70_HPRF - Waveguide - Procurement,AS_HPRF_WAV_6040_SLAC legal review/approve RFP
298475,1.03,1.03.03,1.03.03.06,1.03.03.06.70,1.03.03.06.70,HPRF - Waveguide - Procurement,AS_HPRF_WAV_6050,Release RFP - HPRF Waveguide Procurement,5.0,0.0,0.0,0.0,03-30-23,04-05-23,AS_HPRF_WAV_6040: FS,AS_HPRF_WAV_6060: FS,0,0,0,0,0,0,0.0,0.0,0,03-30-23,04-05-23,0,0.0h,0.0h,0%,$0,0.0h,243.0d,0,$0,$0,1.03_Accelerator Systems (AS),1.03.03_AS Superconducting Linac System (ScL),1.03.03.06_AS Superconducting Linac System Procurement and Fabrication,1.03.03.06.70_HPRF - Waveguide - Procurement,AS_HPRF_WAV_6050_Release RFP - HPRF Waveguide Procurement
298476,1.03,1.03.03,1.03.03.06,1.03.03.06.70,1.03.03.06.70,HPRF - Waveguide - Procurement,AS_HPRF_WAV_6060,Vendor Proposal Effort - HPRF Waveguide Procurement,35.0,0.0,0.0,0.0,04-06-23,05-24-23,AS_HPRF_WAV_6050: FS,AS_HPRF_WAV_6070: FS,0,0,0,0,0,0,0.0,0.0,0,04-06-23,05-24-23,0,0.0h,0.0h,0%,$0,0.0h,243.0d,0,$0,$0,1.03_Accelerator Systems (AS),1.03.03_AS Superconducting Linac System (ScL),1.03.03.06_AS Superconducting Linac System Procurement and Fabrication,1.03.03.06.70_HPRF - Waveguide - Procurement,AS_HPRF_WAV_6060_Vendor Proposal Effort - HPRF Waveguide Procurement
298477,1.03,1.03.03,1.03.03.06,1.03.03.06.70,1.03.03.06.70,HPRF - Waveguide - Procurement,AS_HPRF_WAV_6070,RCV: Vendor Proposal - HPRF Waveguide Procurement,0.0,0.0,0.0,0.0,0,05-24-23,AS_HPRF_WAV_6060: FS,AS_HPRF_WAV_6080: FS,0,0,0,0,0,0,0.0,0.0,0,nn,05-24-23,0,0.0h,0.0h,0%,$0,0.0h,243.0d,0,$0,$0,1.03_Accelerator Systems (AS),1.03.03_AS Superconducting Linac System (ScL),1.03.03.06_AS Superconducting Linac System Procurement and Fabrication,1.03.03.06.70_HPRF - Waveguide - Procurement,AS_HPRF_WAV_6070_RCV: Vendor Proposal - HPRF Waveguide Procurement
298478,1.03,1.03.03,1.03.03.06,1.03.03.06.70,1.03.03.06.70,HPRF - Waveguide - Procurement,AS_HPRF_WAV_6080,Evaluations/Negotiations - HPRF Waveguide Procurement,30.0,0.0,0.0,0.0,05-25-23,07-07-23,AS_HPRF_WAV_6070: FS,AS_HPRF_WAV_6090: FS,0,0,0,0,0,0,0.0,0.0,0,05-25-23,07-07-23,0,0.0h,0.0h,0%,$0,0.0h,243.0d,0,$0,$0,1.03_Accelerator Systems (AS),1.03.03_AS Superconducting Linac System (ScL),1.03.03.06_AS Superconducting Linac System Procurement and Fabrication,1.03.03.06.70_HPRF - Waveguide - Procurement,AS_HPRF_WAV_6080_Evaluations/Negotiations - HPRF Waveguide Procurement
298479,1.03,1.03.03,1.03.03.06,1.03.03.06.70,1.03.03.06.70,HPRF - Waveguide - Procurement,AS_HPRF_WAV_6100,(Foreign Only) Buy American ACT Review,10.0,0.0,0.0,0.0,07-17-23,07-28-23,AS_HPRF_WAV_6090: FS,AS_HPRF_WAV_6110: FS,0,0,0,0,0,0,0.0,0.0,0,07-17-23,07-28-23,0,0.0h,0.0h,0%,$0,0.0h,243.0d,0,$0,$0,1.03_Accelerator Systems (AS),1.03.03_AS Superconducting Linac System (ScL),1.03.03.06_AS Superconducting Linac System Procurement and Fabrication,1.03.03.06.70_HPRF - Waveguide - Procurement,AS_HPRF_WAV_6100_(Foreign Only) Buy American ACT Review
298480,1.03,1.03.03,1.03.03.06,1.03.03.06.70,1.03.03.06.70,HPRF - Waveguide - Procurement,AS_HPRF_WAV_6110,SLAC legal review/approve Award docs,5.0,0.0,0.0,0.0,07-31-23,08-04-23,AS_HPRF_WAV_6100: FS,AS_HPRF_WAV_6120: FS,0,0,0,0,0,0,0.0,0.0,0,07-31-23,08-04-23,0,0.0h,0.0h,0%,$0,0.0h,243.0d,0,$0,$0,1.03_Accelerator Systems (AS),1.03.03_AS Superconducting Linac System (ScL),1.03.03.06_AS Superconducting Linac System Procurement and Fabrication,1.03.03.06.70_HPRF - Waveguide - Procurement,AS_HPRF_WAV_6110_SLAC legal review/approve Award docs
298481,1.03,1.03.03,1.03.03.06,1.03.03.06.70,1.03.03.06.70,HPRF - Waveguide - Procurement,AS_HPRF_WAV_6160,COMP: HPRF Waveguide Procurement,0.0,0.0,0.0,0.0,0,04-29-24,AS_HPRF_WAV_6150: FS,"AS_HPRF_WAV_6170: FS, AS_HPRF_WAV_6180: FS, AS_HPRF_WAV_6190: FS, AS_HPRF_WAV_6210: FS, AS_HPRF_WAV_6220: FS, AS_HPRF_WAV_6200: FS, AS_HPRF_WAV_6230: FS",0,0,0,0,0,0,0.0,0.0,0,nn,04-29-24,0,0.0h,0.0h,0%,$0,0.0h,204.0d,0,$0,$0,1.03_Accelerator Systems (AS),1.03.03_AS Superconducting Linac System (ScL),1.03.03.06_AS Superconducting Linac System Procurement and Fabrication,1.03.03.06.70_HPRF - Waveguide - Procurement,AS_HPRF_WAV_6160_COMP: HPRF Waveguide Procurement
298482,1.03,1.03.03,1.03.03.06,1.03.03.06.71,1.03.03.06.71,HPRF - Isolators - Procurement,AS_HPRF_ISL_6030,"Prepare RFP (ASP,PRR, TPRR,etc.) - Isolators",35.0,0.0,0.0,0.0,01-22-24,03-11-24,AS_HPRF_ISL_6020: FS,AS_HPRF_ISL_6040: FS,0,0,0,0,0,0,0.0,0.0,0,01-22-24,03-11-24,0,0.0h,0.0h,0%,$0,0.0h,1083.0d,0,$0,$0,1.03_Accelerator Systems (AS),1.03.03_AS Superconducting Linac System (ScL),1.03.03.06_AS Superconducting Linac System Procurement and Fabrication,1.03.03.06.71_HPRF - Isolators - Procurement,"AS_HPRF_ISL_6030_Prepare RFP (ASP,PRR, TPRR,etc.) - Isolators"
298483,1.03,1.03.03,1.03.03.06,1.03.03.06.71,1.03.03.06.71,HPRF - Isolators - Procurement,AS_HPRF_ISL_6040,SLAC legal review/approve RFP,5.0,0.0,0.0,0.0,03-12-24,03-18-24,AS_HPRF_ISL_6030: FS,AS_HPRF_ISL_6050: FS,0,0,0,0,0,0,0.0,0.0,0,03-12-24,03-18-24,0,0.0h,0.0h,0%,$0,0.0h,1083.0d,0,$0,$0,1.03_Accelerator Systems (AS),1.03.03_AS Superconducting Linac System (ScL),1.03.03.06_AS Superconducting Linac System Procurement and Fabrication,1.03.03.06.71_HPRF - Isolators - Procurement,AS_HPRF_ISL_6040_SLAC legal review/approve RFP
298484,1.03,1.03.03,1.03.03.06,1.03.03.06.71,1.03.03.06.71,HPRF - Isolators - Procurement,AS_HPRF_ISL_6050,Release RFP - Isolators,5.0,0.0,0.0,0.0,03-19-24,03-25-24,AS_HPRF_ISL_6040: FS,AS_HPRF_ISL_6060: FS,0,0,0,0,0,0,0.0,0.0,0,03-19-24,03-25-24,0,0.0h,0.0h,0%,$0,0.0h,1083.0d,0,$0,$0,1.03_Accelerator Systems (AS),1.03.03_AS Superconducting Linac System (ScL),1.03.03.06_AS Superconducting Linac System Procurement and Fabrication,1.03.03.06.71_HPRF - Isolators - Procurement,AS_HPRF_ISL_6050_Release RFP - Isolators
298485,1.03,1.03.03,1.03.03.06,1.03.03.06.71,1.03.03.06.71,HPRF - Isolators - Procurement,AS_HPRF_ISL_6060,Vendor Proposal Effort - Isolators,35.0,0.0,0.0,0.0,03-26-24,05-13-24,AS_HPRF_ISL_6050: FS,AS_HPRF_ISL_6070: FS,0,0,0,0,0,0,0.0,0.0,0,03-26-24,05-13-24,0,0.0h,0.0h,0%,$0,0.0h,1083.0d,0,$0,$0,1.03_Accelerator Systems (AS),1.03.03_AS Superconducting Linac System (ScL),1.03.03.06_AS Superconducting Linac System Procurement and Fabrication,1.03.03.06.71_HPRF - Isolators - Procurement,AS_HPRF_ISL_6060_Vendor Proposal Effort - Isolators
298486,1.03,1.03.03,1.03.03.06,1.03.03.06.71,1.03.03.06.71,HPRF - Isolators - Procurement,AS_HPRF_ISL_6070,RCV: Vendor Proposal - Isolators,0.0,0.0,0.0,0.0,0,05-13-24,AS_HPRF_ISL_6060: FS,AS_HPRF_ISL_6080: FS,0,0,0,0,0,0,0.0,0.0,0,nn,05-13-24,0,0.0h,0.0h,0%,$0,0.0h,1083.0d,0,$0,$0,1.03_Accelerator Systems (AS),1.03.03_AS Superconducting Linac System (ScL),1.03.03.06_AS Superconducting Linac System Procurement and Fabrication,1.03.03.06.71_HPRF - Isolators - Procurement,AS_HPRF_ISL_6070_RCV: Vendor Proposal - Isolators
298487,1.03,1.03.03,1.03.03.06,1.03.03.06.71,1.03.03.06.71,HPRF - Isolators - Procurement,AS_HPRF_ISL_6080,Evaluations/Negotiations - Isolators,55.0,0.0,0.0,0.0,05-14-24,07-31-24,AS_HPRF_ISL_6070: FS,AS_HPRF_ISL_6090: FS,0,0,0,0,0,0,0.0,0.0,0,05-14-24,07-31-24,0,0.0h,0.0h,0%,$0,0.0h,1083.0d,0,$0,$0,1.03_Accelerator Systems (AS),1.03.03_AS Superconducting Linac System (ScL),1.03.03.06_AS Superconducting Linac System Procurement and Fabrication,1.03.03.06.71_HPRF - Isolators - Procurement,AS_HPRF_ISL_6080_Evaluations/Negotiations - Isolators
298488,1.03,1.03.03,1.03.03.06,1.03.03.06.71,1.03.03.06.71,HPRF - Isolators - Procurement,AS_HPRF_ISL_6100,(Foreign Only) Buy American ACT Review,10.0,0.0,0.0,0.0,08-08-24,08-21-24,AS_HPRF_ISL_6090: FS,AS_HPRF_ISL_6110: FS,0,0,0,0,0,0,0.0,0.0,0,08-08-24,08-21-24,0,0.0h,0.0h,0%,$0,0.0h,1083.0d,0,$0,$0,1.03_Accelerator Systems (AS),1.03.03_AS Superconducting Linac System (ScL),1.03.03.06_AS Superconducting Linac System Procurement and Fabrication,1.03.03.06.71_HPRF - Isolators - Procurement,AS_HPRF_ISL_6100_(Foreign Only) Buy American ACT Review
298489,1.03,1.03.03,1.03.03.06,1.03.03.06.71,1.03.03.06.71,HPRF - Isolators - Procurement,AS_HPRF_ISL_6110,SLAC legal review/approve Award docs,5.0,0.0,0.0,0.0,08-22-24,08-28-24,AS_HPRF_ISL_6100: FS,AS_HPRF_ISL_6120: FS,0,0,0,0,0,0,0.0,0.0,0,08-22-24,08-28-24,0,0.0h,0.0h,0%,$0,0.0h,1083.0d,0,$0,$0,1.03_Accelerator Systems (AS),1.03.03_AS Superconducting Linac System (ScL),1.03.03.06_AS Superconducting Linac System Procurement and Fabrication,1.03.03.06.71_HPRF - Isolators - Procurement,AS_HPRF_ISL_6110_SLAC legal review/approve Award docs
298490,1.03,1.03.03,1.03.03.06,1.03.03.06.71,1.03.03.06.71,HPRF - Isolators - Procurement,AS_HPRF_ISL_6170,COMP: Procurement - Isolators,0.0,0.0,0.0,0.0,0,02-12-25,AS_HPRF_ISL_6150: FS,AS_HPRF_ISL_6180: FS,0,0,0,0,0,0,0.0,0.0,0,nn,02-12-25,0,0.0h,0.0h,0%,$0,0.0h,1083.0d,0,$0,$0,1.03_Accelerator Systems (AS),1.03.03_AS Superconducting Linac System (ScL),1.03.03.06_AS Superconducting Linac System Procurement and Fabrication,1.03.03.06.71_HPRF - Isolators - Procurement,AS_HPRF_ISL_6170_COMP: Procurement - Isolators
298491,1.03,1.03.03,1.03.03.06,1.03.03.06.72,1.03.03.06.72,HPRF - NIRP Systems - Procurement,AS_HPRF_NPA_6030,Prepare RFP - Air Parts - NIRP,15.0,0.0,0.0,0.0,11-30-23,01-04-24,AS_HPRF_NPA_6020: FS,AS_HPRF_NPA_6040: FS,0,0,0,0,0,0,0.0,0.0,0,11-30-23,01-04-24,0,0.0h,0.0h,0%,$0,0.0h,1380.5d,0,$0,$0,1.03_Accelerator Systems (AS),1.03.03_AS Superconducting Linac System (ScL),1.03.03.06_AS Superconducting Linac System Procurement and Fabrication,1.03.03.06.72_HPRF - NIRP Systems - Procurement,AS_HPRF_NPA_6030_Prepare RFP - Air Parts - NIRP
298492,1.03,1.03.03,1.03.03.06,1.03.03.06.72,1.03.03.06.72,HPRF - NIRP Systems - Procurement,AS_HPRF_NPA_6040,Release RFP - Air Parts - NIRP,5.0,0.0,0.0,0.0,01-05-24,01-11-24,AS_HPRF_NPA_6030: FS,AS_HPRF_NPA_6050: FS,0,0,0,0,0,0,0.0,0.0,0,01-05-24,01-11-24,0,0.0h,0.0h,0%,$0,0.0h,1380.5d,0,$0,$0,1.03_Accelerator Systems (AS),1.03.03_AS Superconducting Linac System (ScL),1.03.03.06_AS Superconducting Linac System Procurement and Fabrication,1.03.03.06.72_HPRF - NIRP Systems - Procurement,AS_HPRF_NPA_6040_Release RFP - Air Parts - NIRP
298493,1.03,1.03.03,1.03.03.06,1.03.03.06.72,1.03.03.06.72,HPRF - NIRP Systems - Procurement,AS_HPRF_NPA_6050,Vendor Proposal Effort - Air Parts - NIRP,15.0,0.0,0.0,0.0,01-12-24,02-02-24,AS_HPRF_NPA_6040: FS,AS_HPRF_NPA_6060: FS,0,0,0,0,0,0,0.0,0.0,0,01-12-24,02-02-24,0,0.0h,0.0h,0%,$0,0.0h,1380.5d,0,$0,$0,1.03_Accelerator Systems (AS),1.03.03_AS Superconducting Linac System (ScL),1.03.03.06_AS Superconducting Linac System Procurement and Fabrication,1.03.03.06.72_HPRF - NIRP Systems - Procurement,AS_HPRF_NPA_6050_Vendor Proposal Effort - Air Parts - NIRP
298494,1.03,1.03.03,1.03.03.06,1.03.03.06.72,1.03.03.06.72,HPRF - NIRP Systems - Procurement,AS_HPRF_NPA_6060,RCV: Vendor Proposal - Air Parts - NIRP,0.0,0.0,0.0,0.0,0,02-02-24,AS_HPRF_NPA_6050: FS,AS_HPRF_NPA_6070: FS,0,0,0,0,0,0,0.0,0.0,0,nn,02-02-24,0,0.0h,0.0h,0%,$0,0.0h,1380.5d,0,$0,$0,1.03_Accelerator Systems (AS),1.03.03_AS Superconducting Linac System (ScL),1.03.03.06_AS Superconducting Linac System Procurement and Fabrication,1.03.03.06.72_HPRF - NIRP Systems - Procurement,AS_HPRF_NPA_6060_RCV: Vendor Proposal - Air Parts - NIRP
298495,1.03,1.03.03,1.03.03.06,1.03.03.06.72,1.03.03.06.72,HPRF - NIRP Systems - Procurement,AS_HPRF_NPA_6070,Evaluations/Negotiations - Air Parts - NIRP,35.0,0.0,0.0,0.0,02-05-24,03-25-24,AS_HPRF_NPA_6060: FS,AS_HPRF_NPA_6080: FS,0,0,0,0,0,0,0.0,0.0,0,02-05-24,03-25-24,0,0.0h,0.0h,0%,$0,0.0h,1380.5d,0,$0,$0,1.03_Accelerator Systems (AS),1.03.03_AS Superconducting Linac System (ScL),1.03.03.06_AS Superconducting Linac System Procurement and Fabrication,1.03.03.06.72_HPRF - NIRP Systems - Procurement,AS_HPRF_NPA_6070_Evaluations/Negotiations - Air Parts - NIRP
298496,1.03,1.03.03,1.03.03.06,1.03.03.06.72,1.03.03.06.72,HPRF - NIRP Systems - Procurement,AS_HPRF_NPA_6080,Prepare Award Documents - Air Parts - NIRP,5.0,0.0,0.0,0.0,03-26-24,04-01-24,AS_HPRF_NPA_6070: FS,AS_HPRF_NPA_6090: FS,0,0,0,0,0,0,0.0,0.0,0,03-26-24,04-01-24,0,0.0h,0.0h,0%,$0,0.0h,1380.5d,0,$0,$0,1.03_Accelerator Systems (AS),1.03.03_AS Superconducting Linac System (ScL),1.03.03.06_AS Superconducting Linac System Procurement and Fabrication,1.03.03.06.72_HPRF - NIRP Systems - Procurement,AS_HPRF_NPA_6080_Prepare Award Documents - Air Parts - NIRP
298497,1.03,1.03.03,1.03.03.06,1.03.03.06.72,1.03.03.06.72,HPRF - NIRP Systems - Procurement,AS_HPRF_NPA_6100,Vendor Effort - Air Parts - NIRP,60.0,0.0,0.0,0.0,04-03-24,06-26-24,AS_HPRF_NPA_6090: FS,AS_HPRF_NPA_6110: FS,0,0,0,0,0,0,0.0,0.0,0,04-03-24,06-26-24,0,0.0h,0.0h,0%,$0,0.0h,1380.5d,0,$0,$0,1.03_Accelerator Systems (AS),1.03.03_AS Superconducting Linac System (ScL),1.03.03.06_AS Superconducting Linac System Procurement and Fabrication,1.03.03.06.72_HPRF - NIRP Systems - Procurement,AS_HPRF_NPA_6100_Vendor Effort - Air Parts - NIRP
298498,1.03,1.03.03,1.03.03.06,1.03.03.06.72,1.03.03.06.72,HPRF - NIRP Systems - Procurement,AS_HPRF_NPA_6120,COMP: Procurement - Air Parts - NIRP,0.0,0.0,0.0,0.0,0,06-27-24,AS_HPRF_NPA_6110: FS,AS_HPRF_NPA_6130: FS,0,0,0,0,0,0,0.0,0.0,0,nn,06-27-24,0,0.0h,0.0h,0%,$0,0.0h,1380.5d,0,$0,$0,1.03_Accelerator Systems (AS),1.03.03_AS Superconducting Linac System (ScL),1.03.03.06_AS Superconducting Linac System Procurement and Fabrication,1.03.03.06.72_HPRF - NIRP Systems - Procurement,AS_HPRF_NPA_6120_COMP: Procurement - Air Parts - NIRP
298499,1.03,1.03.03,1.03.03.06,1.03.03.06.73,1.03.03.06.73,HPRF - Gaskets and Connectors - Procurement,AS_HPRF_CNX_6030,Prepare RFP - Gaskets and Connectors,10.0,0.0,0.0,0.0,10-24-23,11-06-23,AS_HPRF_CNX_6020: FS,AS_HPRF_CNX_6040: FS,0,0,0,0,0,0,0.0,0.0,0,10-24-23,11-06-23,0,0.0h,0.0h,0%,$0,0.0h,-240.0d,0,$0,$0,1.03_Accelerator Systems (AS),1.03.03_AS Superconducting Linac System (ScL),1.03.03.06_AS Superconducting Linac System Procurement and Fabrication,1.03.03.06.73_HPRF - Gaskets and Connectors - Procurement,AS_HPRF_CNX_6030_Prepare RFP - Gaskets and Connectors
298500,1.03,1.03.03,1.03.03.06,1.03.03.06.73,1.03.03.06.73,HPRF - Gaskets and Connectors - Procurement,AS_HPRF_CNX_6040,SLAC Legal review/approve RFP  - Gaskets and Connectors,5.0,0.0,0.0,0.0,11-07-23,11-13-23,AS_HPRF_CNX_6030: FS,AS_HPRF_CNX_6050: FS,0,0,0,0,0,0,0.0,0.0,0,11-07-23,11-13-23,0,0.0h,0.0h,0%,$0,0.0h,-240.0d,0,$0,$0,1.03_Accelerator Systems (AS),1.03.03_AS Superconducting Linac System (ScL),1.03.03.06_AS Superconducting Linac System Procurement and Fabrication,1.03.03.06.73_HPRF - Gaskets and Connectors - Procurement,AS_HPRF_CNX_6040_SLAC Legal review/approve RFP  - Gaskets and Connectors
298501,1.03,1.03.03,1.03.03.06,1.03.03.06.73,1.03.03.06.73,HPRF - Gaskets and Connectors - Procurement,AS_HPRF_CNX_6050,Release RFP - Gaskets and Connectors,2.0,0.0,0.0,0.0,11-14-23,11-15-23,AS_HPRF_CNX_6040: FS,AS_HPRF_CNX_6060: FS,0,0,0,0,0,0,0.0,0.0,0,11-14-23,11-15-23,0,0.0h,0.0h,0%,$0,0.0h,-240.0d,0,$0,$0,1.03_Accelerator Systems (AS),1.03.03_AS Superconducting Linac System (ScL),1.03.03.06_AS Superconducting Linac System Procurement and Fabrication,1.03.03.06.73_HPRF - Gaskets and Connectors - Procurement,AS_HPRF_CNX_6050_Release RFP - Gaskets and Connectors
298502,1.03,1.03.03,1.03.03.06,1.03.03.06.73,1.03.03.06.73,HPRF - Gaskets and Connectors - Procurement,AS_HPRF_CNX_6060,Vendor Proposal Effort - Gaskets and Connectors,10.0,0.0,0.0,0.0,11-16-23,12-01-23,AS_HPRF_CNX_6050: FS,AS_HPRF_CNX_6070: FS,0,0,0,0,0,0,0.0,0.0,0,11-16-23,12-01-23,0,0.0h,0.0h,0%,$0,0.0h,-240.0d,0,$0,$0,1.03_Accelerator Systems (AS),1.03.03_AS Superconducting Linac System (ScL),1.03.03.06_AS Superconducting Linac System Procurement and Fabrication,1.03.03.06.73_HPRF - Gaskets and Connectors - Procurement,AS_HPRF_CNX_6060_Vendor Proposal Effort - Gaskets and Connectors
298503,1.03,1.03.03,1.03.03.06,1.03.03.06.73,1.03.03.06.73,HPRF - Gaskets and Connectors - Procurement,AS_HPRF_CNX_6070,RCV: Vendor Proposal - Gaskets and Connectors,0.0,0.0,0.0,0.0,0,12-01-23,AS_HPRF_CNX_6060: FS,AS_HPRF_CNX_6080: FS,0,0,0,0,0,0,0.0,0.0,0,nn,12-01-23,0,0.0h,0.0h,0%,$0,0.0h,-240.0d,0,$0,$0,1.03_Accelerator Systems (AS),1.03.03_AS Superconducting Linac System (ScL),1.03.03.06_AS Superconducting Linac System Procurement and Fabrication,1.03.03.06.73_HPRF - Gaskets and Connectors - Procurement,AS_HPRF_CNX_6070_RCV: Vendor Proposal - Gaskets and Connectors
298504,1.03,1.03.03,1.03.03.06,1.03.03.06.73,1.03.03.06.73,HPRF - Gaskets and Connectors - Procurement,AS_HPRF_CNX_6080,Evaluations/Negotiations - Gaskets and Connectors,20.0,0.0,0.0,0.0,12-04-23,01-16-24,AS_HPRF_CNX_6070: FS,AS_HPRF_CNX_6090: FS,0,0,0,0,0,0,0.0,0.0,0,12-04-23,01-16-24,0,0.0h,0.0h,0%,$0,0.0h,-240.0d,0,$0,$0,1.03_Accelerator Systems (AS),1.03.03_AS Superconducting Linac System (ScL),1.03.03.06_AS Superconducting Linac System Procurement and Fabrication,1.03.03.06.73_HPRF - Gaskets and Connectors - Procurement,AS_HPRF_CNX_6080_Evaluations/Negotiations - Gaskets and Connectors
298505,1.03,1.03.03,1.03.03.06,1.03.03.06.73,1.03.03.06.73,HPRF - Gaskets and Connectors - Procurement,AS_HPRF_CNX_6090,Prepare Award Documents - Gaskets and Connectors,5.0,0.0,0.0,0.0,01-17-24,01-23-24,AS_HPRF_CNX_6080: FS,AS_HPRF_CNX_6100: FS,0,0,0,0,0,0,0.0,0.0,0,01-17-24,01-23-24,0,0.0h,0.0h,0%,$0,0.0h,-240.0d,0,$0,$0,1.03_Accelerator Systems (AS),1.03.03_AS Superconducting Linac System (ScL),1.03.03.06_AS Superconducting Linac System Procurement and Fabrication,1.03.03.06.73_HPRF - Gaskets and Connectors - Procurement,AS_HPRF_CNX_6090_Prepare Award Documents - Gaskets and Connectors
298506,1.03,1.03.03,1.03.03.06,1.03.03.06.73,1.03.03.06.73,HPRF - Gaskets and Connectors - Procurement,AS_HPRF_CNX_6100,(Foreign Only) Buy American ACT Review - Gaskets and Connectors,10.0,0.0,0.0,0.0,01-24-24,02-06-24,AS_HPRF_CNX_6090: FS,AS_HPRF_CNX_6110: FS,0,0,0,0,0,0,0.0,0.0,0,01-24-24,02-06-24,0,0.0h,0.0h,0%,$0,0.0h,-240.0d,0,$0,$0,1.03_Accelerator Systems (AS),1.03.03_AS Superconducting Linac System (ScL),1.03.03.06_AS Superconducting Linac System Procurement and Fabrication,1.03.03.06.73_HPRF - Gaskets and Connectors - Procurement,AS_HPRF_CNX_6100_(Foreign Only) Buy American ACT Review - Gaskets and Connectors
298507,1.03,1.03.03,1.03.03.06,1.03.03.06.73,1.03.03.06.73,HPRF - Gaskets and Connectors - Procurement,AS_HPRF_CNX_6110,SLAC legal review/approve Award docs - Gaskets and Connectors,5.0,0.0,0.0,0.0,02-07-24,02-13-24,AS_HPRF_CNX_6100: FS,AS_HPRF_CNX_6120: FS,0,0,0,0,0,0,0.0,0.0,0,02-07-24,02-13-24,0,0.0h,0.0h,0%,$0,0.0h,-240.0d,0,$0,$0,1.03_Accelerator Systems (AS),1.03.03_AS Superconducting Linac System (ScL),1.03.03.06_AS Superconducting Linac System Procurement and Fabrication,1.03.03.06.73_HPRF - Gaskets and Connectors - Procurement,AS_HPRF_CNX_6110_SLAC legal review/approve Award docs - Gaskets and Connectors
298508,1.03,1.03.03,1.03.03.06,1.03.03.06.73,1.03.03.06.73,HPRF - Gaskets and Connectors - Procurement,AS_HPRF_CNX_6130,Vendor Effort - Gaskets and Connectors,100.0,0.0,0.0,0.0,02-22-24,07-12-24,AS_HPRF_CNX_6120: FS,AS_HPRF_CNX_6140: FS,0,0,0,0,0,0,0.0,0.0,0,02-22-24,07-12-24,0,0.0h,0.0h,0%,$0,0.0h,-240.0d,0,$0,$0,1.03_Accelerator Systems (AS),1.03.03_AS Superconducting Linac System (ScL),1.03.03.06_AS Superconducting Linac System Procurement and Fabrication,1.03.03.06.73_HPRF - Gaskets and Connectors - Procurement,AS_HPRF_CNX_6130_Vendor Effort - Gaskets and Connectors
298509,1.03,1.03.03,1.03.03.06,1.03.03.06.73,1.03.03.06.73,HPRF - Gaskets and Connectors - Procurement,AS_HPRF_CNX_6150,COMP: Procurement - Gaskets and Connectors,0.0,0.0,0.0,0.0,0,07-15-24,AS_HPRF_CNX_6140: FS,AS_HPRF_CNX_6160: FS,0,0,0,0,0,0,0.0,0.0,0,nn,07-15-24,0,0.0h,0.0h,0%,$0,0.0h,-240.0d,0,$0,$0,1.03_Accelerator Systems (AS),1.03.03_AS Superconducting Linac System (ScL),1.03.03.06_AS Superconducting Linac System Procurement and Fabrication,1.03.03.06.73_HPRF - Gaskets and Connectors - Procurement,AS_HPRF_CNX_6150_COMP: Procurement - Gaskets and Connectors
298510,1.03,1.03.03,1.03.03.20,1.03.03.20.01,1.03.03.20.01,ScL - Accelerator Housing Installation Planning,AS_ScL_IRR_9110,R_IRR: Installation Readiness Review Short Down #1- Accelerator Housing Installation Planning,5.0,0.0,0.0,0.0,05-02-23,05-08-23,AS_ScL_IRR_9100: FS,AS_ScL_IRR_9120: FS,0,0,0,0,0,0,0.0,0.0,0,05-02-23,05-08-23,Review,0.0h,0.0h,0%,$0,0.0h,38.0d,0,$0,$0,1.03_Accelerator Systems (AS),1.03.03_AS Superconducting Linac System (ScL),1.03.03.20_AS Superconducting Linac System Installation,1.03.03.20.01_ScL - Accelerator Housing Installation Planning,AS_ScL_IRR_9110_R_IRR: Installation Readiness Review Short Down #1- Accelerator Housing Installation Planning
298511,1.03,1.03.03,1.03.03.20,1.03.03.20.01,1.03.03.20.01,ScL - Accelerator Housing Installation Planning,AS_ScL_IRR_9130,COMP: Installation Readiness Review Short Down #1 - Accelerator Housing Installation Planning,0.0,0.0,0.0,0.0,0,06-06-23,AS_ScL_IRR_9120: FS,AS_M4_DTS1_1020: FS,0,0,0,0,0,0,0.0,0.0,0,nn,06-06-23,0,0.0h,0.0h,0%,$0,0.0h,38.0d,0,$0,$0,1.03_Accelerator Systems (AS),1.03.03_AS Superconducting Linac System (ScL),1.03.03.20_AS Superconducting Linac System Installation,1.03.03.20.01_ScL - Accelerator Housing Installation Planning,AS_ScL_IRR_9130_COMP: Installation Readiness Review Short Down #1 - Accelerator Housing Installation Planning
298512,1.03,1.03.03,1.03.03.20,1.03.03.20.01,1.03.03.20.01,ScL - Accelerator Housing Installation Planning,AS_ScL_IRR_9210,R_IRR: Installation Readiness Review Short Down #2 - Accelerator Housing Installation Planning,5.0,0.0,0.0,0.0,04-30-24,05-06-24,AS_ScL_IRR_9200: FS,AS_ScL_IRR_9220: FS,0,0,0,0,0,0,0.0,0.0,0,04-30-24,05-06-24,Review,0.0h,0.0h,0%,$0,0.0h,82.0d,0,$0,$0,1.03_Accelerator Systems (AS),1.03.03_AS Superconducting Linac System (ScL),1.03.03.20_AS Superconducting Linac System Installation,1.03.03.20.01_ScL - Accelerator Housing Installation Planning,AS_ScL_IRR_9210_R_IRR: Installation Readiness Review Short Down #2 - Accelerator Housing Installation Planning
298513,1.03,1.03.03,1.03.03.20,1.03.03.20.01,1.03.03.20.01,ScL - Accelerator Housing Installation Planning,AS_ScL_IRR_9230,COMP: Installation Readiness Review Short Down #2 - Accelerator Housing Installation Planning,0.0,0.0,0.0,0.0,0,06-04-24,AS_ScL_IRR_9220: FS,AS_M4_DTS2_1020: FS,0,0,0,0,0,0,0.0,0.0,0,nn,06-04-24,0,0.0h,0.0h,0%,$0,0.0h,82.0d,0,$0,$0,1.03_Accelerator Systems (AS),1.03.03_AS Superconducting Linac System (ScL),1.03.03.20_AS Superconducting Linac System Installation,1.03.03.20.01_ScL - Accelerator Housing Installation Planning,AS_ScL_IRR_9230_COMP: Installation Readiness Review Short Down #2 - Accelerator Housing Installation Planning
298514,1.03,1.03.03,1.03.03.20,1.03.03.20.01,1.03.03.20.01,ScL - Accelerator Housing Installation Planning,AS_ScL_IRR_9310,R_IRR: Installation Readiness Review Long Down - Accelerator Housing Installation Planning,5.0,0.0,0.0,0.0,10-25-24,10-31-24,AS_ScL_IRR_9300: FS,"AS_ScL_IRR_9320: FS, AS_ScL_CM00_RIG_9010: FS",0,0,0,0,0,0,0.0,0.0,0,10-25-24,10-31-24,Review,0.0h,0.0h,0%,$0,0.0h,53.0d,0,$0,$0,1.03_Accelerator Systems (AS),1.03.03_AS Superconducting Linac System (ScL),1.03.03.20_AS Superconducting Linac System Installation,1.03.03.20.01_ScL - Accelerator Housing Installation Planning,AS_ScL_IRR_9310_R_IRR: Installation Readiness Review Long Down - Accelerator Housing Installation Planning
298515,1.03,1.03.03,1.03.03.20,1.03.03.20.01,1.03.03.20.01,ScL - Accelerator Housing Installation Planning,AS_ScL_IRR_9330,COMP: Installation Readiness Review Long Down - Accelerator Housing Installation Planning,0.0,0.0,0.0,0.0,0,01-13-25,AS_ScL_IRR_9320: FS,AS_M4_DTL1_1000: FS,0,0,0,0,0,0,0.0,0.0,0,nn,01-13-25,0,0.0h,0.0h,0%,$0,0.0h,53.0d,0,$0,$0,1.03_Accelerator Systems (AS),1.03.03_AS Superconducting Linac System (ScL),1.03.03.20_AS Superconducting Linac System Installation,1.03.03.20.01_ScL - Accelerator Housing Installation Planning,AS_ScL_IRR_9330_COMP: Installation Readiness Review Long Down - Accelerator Housing Installation Planning
298516,1.03,1.03.03,1.03.03.20,1.03.03.20.10,1.03.03.20.10,ScL - L3/L4 Transition Package (PP),AS_ScL_L34_9000,RQD: Infrastructure area available from 1.06,0.0,0.0,0.0,0.0,0,04-28-25,IF_LPI_C_1116: FS,AS_ScL_L34_9010: FS,0,0,0,0,0,0,0.0,0.0,0,nn,04-28-25,0,0.0h,0.0h,0%,$0,0.0h,1321.5d,0,$0,$0,1.03_Accelerator Systems (AS),1.03.03_AS Superconducting Linac System (ScL),1.03.03.20_AS Superconducting Linac System Installation,1.03.03.20.10_ScL - L3/L4 Transition Package (PP),AS_ScL_L34_9000_RQD: Infrastructure area available from 1.06
298517,1.03,1.03.03,1.03.03.20,1.03.03.20.10,1.03.03.20.10,ScL - L3/L4 Transition Package (PP),AS_ScL_L34_9140,RFI: Ready for Controls Installation - L3/L4 Transition,0.0,0.0,0.0,0.0,0,07-23-25,AS_ScL_L34_9130: FS,"AS_M4_3030: FS, CS_M4_1435: FS",0,0,0,0,0,0,0.0,0.0,0,nn,07-23-25,0,0.0h,0.0h,0%,$0,0.0h,1321.5d,0,$0,$0,1.03_Accelerator Systems (AS),1.03.03_AS Superconducting Linac System (ScL),1.03.03.20_AS Superconducting Linac System Installation,1.03.03.20.10_ScL - L3/L4 Transition Package (PP),AS_ScL_L34_9140_RFI: Ready for Controls Installation - L3/L4 Transition
298518,1.03,1.03.03,1.03.03.20,1.03.03.20.20,1.03.03.20.20,ScL - Cryomodules Installation,AS_ScL_CM_RQD_9010,RQD: Controls in Accelerator Housing area available from 1.05,0.0,0.0,0.0,0.0,0,09-29-23,AS_M4_3010: FS,"AS_ScL_CM36_9010: FS, CS_M4_1436: FS",0,0,0,0,0,0,0.0,0.0,0,nn,09-29-23,0,0.0h,0.0h,0%,$0,0.0h,1481.5d,0,$0,$0,1.03_Accelerator Systems (AS),1.03.03_AS Superconducting Linac System (ScL),1.03.03.20_AS Superconducting Linac System Installation,1.03.03.20.20_ScL - Cryomodules Installation,AS_ScL_CM_RQD_9010_RQD: Controls in Accelerator Housing area available from 1.05
298519,1.03,1.03.03,1.03.03.20,1.03.03.20.20,1.03.03.20.20,ScL - Cryomodules Installation,AS_ScL_CM00_SUP_040,Prepare RFP - CM Stand Install,10.0,0.0,0.0,0.0,08-02-24,08-15-24,AS_ScL_CM00_SUP_030: FS,AS_ScL_CM00_SUP_050: FS,0,0,0,0,0,0,0.0,0.0,0,08-02-24,08-15-24,0,0.0h,0.0h,0%,$0,0.0h,1190.5d,0,$0,$0,1.03_Accelerator Systems (AS),1.03.03_AS Superconducting Linac System (ScL),1.03.03.20_AS Superconducting Linac System Installation,1.03.03.20.20_ScL - Cryomodules Installation,AS_ScL_CM00_SUP_040_Prepare RFP - CM Stand Install
298520,1.03,1.03.03,1.03.03.20,1.03.03.20.20,1.03.03.20.20,ScL - Cryomodules Installation,AS_ScL_CM00_SUP_050,Release RFP - CM Stand Install,2.0,0.0,0.0,0.0,08-16-24,08-19-24,AS_ScL_CM00_SUP_040: FS,AS_ScL_CM00_SUP_060: FS,0,0,0,0,0,0,0.0,0.0,0,08-16-24,08-19-24,0,0.0h,0.0h,0%,$0,0.0h,1190.5d,0,$0,$0,1.03_Accelerator Systems (AS),1.03.03_AS Superconducting Linac System (ScL),1.03.03.20_AS Superconducting Linac System Installation,1.03.03.20.20_ScL - Cryomodules Installation,AS_ScL_CM00_SUP_050_Release RFP - CM Stand Install
298521,1.03,1.03.03,1.03.03.20,1.03.03.20.20,1.03.03.20.20,ScL - Cryomodules Installation,AS_ScL_CM00_SUP_060,Vendor Proposal Effort - CM Stand Install,10.0,0.0,0.0,0.0,08-20-24,09-03-24,AS_ScL_CM00_SUP_050: FS,AS_ScL_CM00_SUP_070: FS,0,0,0,0,0,0,0.0,0.0,0,08-20-24,09-03-24,0,0.0h,0.0h,0%,$0,0.0h,1190.5d,0,$0,$0,1.03_Accelerator Systems (AS),1.03.03_AS Superconducting Linac System (ScL),1.03.03.20_AS Superconducting Linac System Installation,1.03.03.20.20_ScL - Cryomodules Installation,AS_ScL_CM00_SUP_060_Vendor Proposal Effort - CM Stand Install
298522,1.03,1.03.03,1.03.03.20,1.03.03.20.20,1.03.03.20.20,ScL - Cryomodules Installation,AS_ScL_CM00_SUP_070,RCV: Vendor Proposal - CM Stand Install,0.0,0.0,0.0,0.0,0,09-03-24,AS_ScL_CM00_SUP_060: FS,AS_ScL_CM00_SUP_080: FS,0,0,0,0,0,0,0.0,0.0,0,nn,09-03-24,0,0.0h,0.0h,0%,$0,0.0h,1190.5d,0,$0,$0,1.03_Accelerator Systems (AS),1.03.03_AS Superconducting Linac System (ScL),1.03.03.20_AS Superconducting Linac System Installation,1.03.03.20.20_ScL - Cryomodules Installation,AS_ScL_CM00_SUP_070_RCV: Vendor Proposal - CM Stand Install
298523,1.03,1.03.03,1.03.03.20,1.03.03.20.20,1.03.03.20.20,ScL - Cryomodules Installation,AS_ScL_CM00_SUP_080,Evaluations/Negotiations - CM Stand Install,20.0,0.0,0.0,0.0,09-04-24,10-01-24,AS_ScL_CM00_SUP_070: FS,AS_ScL_CM00_SUP_090: FS,0,0,0,0,0,0,0.0,0.0,0,09-04-24,10-01-24,0,0.0h,0.0h,0%,$0,0.0h,1190.5d,0,$0,$0,1.03_Accelerator Systems (AS),1.03.03_AS Superconducting Linac System (ScL),1.03.03.20_AS Superconducting Linac System Installation,1.03.03.20.20_ScL - Cryomodules Installation,AS_ScL_CM00_SUP_080_Evaluations/Negotiations - CM Stand Install
298524,1.03,1.03.03,1.03.03.20,1.03.03.20.20,1.03.03.20.20,ScL - Cryomodules Installation,AS_ScL_CM00_RIG_9030,Prepare RFP - CM Rigging Vendor,10.0,0.0,0.0,0.0,11-25-24,12-10-24,AS_ScL_CM00_RIG_9020: FS,AS_ScL_CM00_RIG_9040: FS,0,0,0,0,0,0,0.0,0.0,0,11-25-24,12-10-24,0,0.0h,0.0h,0%,$0,0.0h,1130.5d,0,$0,$0,1.03_Accelerator Systems (AS),1.03.03_AS Superconducting Linac System (ScL),1.03.03.20_AS Superconducting Linac System Installation,1.03.03.20.20_ScL - Cryomodules Installation,AS_ScL_CM00_RIG_9030_Prepare RFP - CM Rigging Vendor
298525,1.03,1.03.03,1.03.03.20,1.03.03.20.20,1.03.03.20.20,ScL - Cryomodules Installation,AS_ScL_CM00_NDE_9030,Prepare RFP - CM Weld Inspection / Examination,10.0,0.0,0.0,0.0,11-25-24,12-10-24,AS_ScL_CM00_NDE_9020: FS,AS_ScL_CM00_NDE_9040: FS,0,0,0,0,0,0,0.0,0.0,0,11-25-24,12-10-24,0,0.0h,0.0h,0%,$0,0.0h,1195.5d,0,$0,$0,1.03_Accelerator Systems (AS),1.03.03_AS Superconducting Linac System (ScL),1.03.03.20_AS Superconducting Linac System Installation,1.03.03.20.20_ScL - Cryomodules Installation,AS_ScL_CM00_NDE_9030_Prepare RFP - CM Weld Inspection / Examination
298526,1.03,1.03.03,1.03.03.20,1.03.03.20.20,1.03.03.20.20,ScL - Cryomodules Installation,AS_ScL_CM00_RIG_9040,Release RFP - CM Rigging Vendor,2.0,0.0,0.0,0.0,12-11-24,12-12-24,AS_ScL_CM00_RIG_9030: FS,AS_ScL_CM00_RIG_9050: FS,0,0,0,0,0,0,0.0,0.0,0,12-11-24,12-12-24,0,0.0h,0.0h,0%,$0,0.0h,1130.5d,0,$0,$0,1.03_Accelerator Systems (AS),1.03.03_AS Superconducting Linac System (ScL),1.03.03.20_AS Superconducting Linac System Installation,1.03.03.20.20_ScL - Cryomodules Installation,AS_ScL_CM00_RIG_9040_Release RFP - CM Rigging Vendor
298527,1.03,1.03.03,1.03.03.20,1.03.03.20.20,1.03.03.20.20,ScL - Cryomodules Installation,AS_ScL_CM00_NDE_9040,Release RFP - CM Weld Inspection / Examination,2.0,0.0,0.0,0.0,12-11-24,12-12-24,AS_ScL_CM00_NDE_9030: FS,AS_ScL_CM00_NDE_9050: FS,0,0,0,0,0,0,0.0,0.0,0,12-11-24,12-12-24,0,0.0h,0.0h,0%,$0,0.0h,1195.5d,0,$0,$0,1.03_Accelerator Systems (AS),1.03.03_AS Superconducting Linac System (ScL),1.03.03.20_AS Superconducting Linac System Installation,1.03.03.20.20_ScL - Cryomodules Installation,AS_ScL_CM00_NDE_9040_Release RFP - CM Weld Inspection / Examination
298528,1.03,1.03.03,1.03.03.20,1.03.03.20.20,1.03.03.20.20,ScL - Cryomodules Installation,AS_ScL_CM00_RIG_9050,Vendor Proposal Effort - CM Rigging Vendor,10.0,0.0,0.0,0.0,12-13-24,01-09-25,AS_ScL_CM00_RIG_9040: FS,AS_ScL_CM00_RIG_9060: FS,0,0,0,0,0,0,0.0,0.0,0,12-13-24,01-09-25,0,0.0h,0.0h,0%,$0,0.0h,1130.5d,0,$0,$0,1.03_Accelerator Systems (AS),1.03.03_AS Superconducting Linac System (ScL),1.03.03.20_AS Superconducting Linac System Installation,1.03.03.20.20_ScL - Cryomodules Installation,AS_ScL_CM00_RIG_9050_Vendor Proposal Effort - CM Rigging Vendor
298529,1.03,1.03.03,1.03.03.20,1.03.03.20.20,1.03.03.20.20,ScL - Cryomodules Installation,AS_ScL_CM00_NDE_9050,Vendor Proposal Effort - CM Weld Inspection / Examination,10.0,0.0,0.0,0.0,12-13-24,01-09-25,AS_ScL_CM00_NDE_9040: FS,AS_ScL_CM00_NDE_9060: FS,0,0,0,0,0,0,0.0,0.0,0,12-13-24,01-09-25,0,0.0h,0.0h,0%,$0,0.0h,1195.5d,0,$0,$0,1.03_Accelerator Systems (AS),1.03.03_AS Superconducting Linac System (ScL),1.03.03.20_AS Superconducting Linac System Installation,1.03.03.20.20_ScL - Cryomodules Installation,AS_ScL_CM00_NDE_9050_Vendor Proposal Effort - CM Weld Inspection / Examination
298530,1.03,1.03.03,1.03.03.20,1.03.03.20.20,1.03.03.20.20,ScL - Cryomodules Installation,AS_ScL_CM00_RIG_9060,RCV: Vendor Proposal - CM Rigging Vendor,0.0,0.0,0.0,0.0,0,01-09-25,AS_ScL_CM00_RIG_9050: FS,AS_ScL_CM00_RIG_9070: FS,0,0,0,0,0,0,0.0,0.0,0,nn,01-09-25,0,0.0h,0.0h,0%,$0,0.0h,1130.5d,0,$0,$0,1.03_Accelerator Systems (AS),1.03.03_AS Superconducting Linac System (ScL),1.03.03.20_AS Superconducting Linac System Installation,1.03.03.20.20_ScL - Cryomodules Installation,AS_ScL_CM00_RIG_9060_RCV: Vendor Proposal - CM Rigging Vendor
298531,1.03,1.03.03,1.03.03.20,1.03.03.20.20,1.03.03.20.20,ScL - Cryomodules Installation,AS_ScL_CM00_NDE_9060,RCV: Vendor Proposal - CM Weld Inspection / Examination,0.0,0.0,0.0,0.0,0,01-09-25,AS_ScL_CM00_NDE_9050: FS,AS_ScL_CM00_NDE_9070: FS,0,0,0,0,0,0,0.0,0.0,0,nn,01-09-25,0,0.0h,0.0h,0%,$0,0.0h,1195.5d,0,$0,$0,1.03_Accelerator Systems (AS),1.03.03_AS Superconducting Linac System (ScL),1.03.03.20_AS Superconducting Linac System Installation,1.03.03.20.20_ScL - Cryomodules Installation,AS_ScL_CM00_NDE_9060_RCV: Vendor Proposal - CM Weld Inspection / Examination
298532,1.03,1.03.03,1.03.03.20,1.03.03.20.20,1.03.03.20.20,ScL - Cryomodules Installation,AS_ScL_CM00_RIG_9070,Evaluations/Negotiations - CM Rigging Vendor,20.0,0.0,0.0,0.0,01-10-25,02-07-25,AS_ScL_CM00_RIG_9060: FS,AS_ScL_CM00_RIG_9080: FS,0,0,0,0,0,0,0.0,0.0,0,01-10-25,02-07-25,0,0.0h,0.0h,0%,$0,0.0h,1130.5d,0,$0,$0,1.03_Accelerator Systems (AS),1.03.03_AS Superconducting Linac System (ScL),1.03.03.20_AS Superconducting Linac System Installation,1.03.03.20.20_ScL - Cryomodules Installation,AS_ScL_CM00_RIG_9070_Evaluations/Negotiations - CM Rigging Vendor
298533,1.03,1.03.03,1.03.03.20,1.03.03.20.20,1.03.03.20.20,ScL - Cryomodules Installation,AS_ScL_CM00_NDE_9070,Evaluations/Negotiations - CM Weld Inspection / Examination,20.0,0.0,0.0,0.0,01-10-25,02-07-25,AS_ScL_CM00_NDE_9060: FS,AS_ScL_CM00_NDE_9080: FS,0,0,0,0,0,0,0.0,0.0,0,01-10-25,02-07-25,0,0.0h,0.0h,0%,$0,0.0h,1195.5d,0,$0,$0,1.03_Accelerator Systems (AS),1.03.03_AS Superconducting Linac System (ScL),1.03.03.20_AS Superconducting Linac System Installation,1.03.03.20.20_ScL - Cryomodules Installation,AS_ScL_CM00_NDE_9070_Evaluations/Negotiations - CM Weld Inspection / Examination
298534,1.03,1.03.03,1.03.03.20,1.03.03.20.20,1.03.03.20.20,ScL - Cryomodules Installation,AS_ScL_CM00_NDE_9120,COMP: Installation - CM Weld Inspection / Examination,0.0,0.0,0.0,0.0,0,03-19-25,AS_ScL_CM00_NDE_9110: FS,AS_ScL_CM32_9010: FS,0,0,0,0,0,0,0.0,0.0,0,nn,03-19-25,0,0.0h,0.0h,0%,$0,0.0h,1195.5d,0,$0,$0,1.03_Accelerator Systems (AS),1.03.03_AS Superconducting Linac System (ScL),1.03.03.20_AS Superconducting Linac System Installation,1.03.03.20.20_ScL - Cryomodules Installation,AS_ScL_CM00_NDE_9120_COMP: Installation - CM Weld Inspection / Examination
298535,1.03,1.03.03,1.03.03.20,1.03.03.20.20,1.03.03.20.20,ScL - Cryomodules Installation,AS_ScL_CM_RQD_9000,RQD: Infrastructure Accelerator Housing area available from 1.06,0.0,0.0,0.0,0.0,0,04-28-25,IF_LPI_C_1116: FS,AS_ScL_CM36_9010: FS,0,0,0,0,0,0,0.0,0.0,0,nn,04-28-25,0,0.0h,0.0h,0%,$0,0.0h,1102.5d,0,$0,$0,1.03_Accelerator Systems (AS),1.03.03_AS Superconducting Linac System (ScL),1.03.03.20_AS Superconducting Linac System Installation,1.03.03.20.20_ScL - Cryomodules Installation,AS_ScL_CM_RQD_9000_RQD: Infrastructure Accelerator Housing area available from 1.06
298536,1.03,1.03.03,1.03.03.20,1.03.03.20.20,1.03.03.20.20,ScL - Cryomodules Installation,AS_ScL_CM00_RIG_9120,COMP: Installation - CM Rigging Vendor,0.0,0.0,0.0,0.0,0,04-29-25,AS_ScL_CM00_RIG_9110: FS,AS_ScL_CM36_9010: FS,0,0,0,0,0,0,0.0,0.0,0,nn,04-29-25,0,0.0h,0.0h,0%,$0,0.0h,1101.5d,0,$0,$0,1.03_Accelerator Systems (AS),1.03.03_AS Superconducting Linac System (ScL),1.03.03.20_AS Superconducting Linac System Installation,1.03.03.20.20_ScL - Cryomodules Installation,AS_ScL_CM00_RIG_9120_COMP: Installation - CM Rigging Vendor
298537,1.03,1.03.03,1.03.03.20,1.03.03.20.20,1.03.03.20.20,ScL - Cryomodules Installation,AS_ScL_CM_RQD_9300,NEED: Beamline Absorbers for Cryomodules CM 36 thru CM 59 Ready for Installation from 1.02,0.0,0.0,0.0,0.0,0,07-16-25,"CM_BLA_3400: FS, CM_M4_2580: FS","AS_ScL_CM36_9010: FS, AS_ScL_CM37_9010: FS",0,0,0,0,0,0,0.0,0.0,0,nn,07-16-25,0,0.0h,0.0h,0%,$0,0.0h,1047.5d,0,$0,$0,1.03_Accelerator Systems (AS),1.03.03_AS Superconducting Linac System (ScL),1.03.03.20_AS Superconducting Linac System Installation,1.03.03.20.20_ScL - Cryomodules Installation,AS_ScL_CM_RQD_9300_NEED: Beamline Absorbers for Cryomodules CM 36 thru CM 59 Ready for Installation from 1.02
298538,1.03,1.03.03,1.03.03.20,1.03.03.20.20,1.03.03.20.20,ScL - Cryomodules Installation,AS_ScL_CM_RQD_9100,NEED: CM Stands from 1.02,0.0,0.0,0.0,0.0,0,07-18-25,CM_Stands_3443: FS,AS_ScL_CM00_SUP_110: FS,0,0,0,0,0,0,0.0,0.0,0,nn,07-18-25,0,0.0h,0.0h,0%,$0,0.0h,1004.5d,0,$0,$0,1.03_Accelerator Systems (AS),1.03.03_AS Superconducting Linac System (ScL),1.03.03.20_AS Superconducting Linac System Installation,1.03.03.20.20_ScL - Cryomodules Installation,AS_ScL_CM_RQD_9100_NEED: CM Stands from 1.02
298539,1.03,1.03.03,1.03.03.20,1.03.03.20.20,1.03.03.20.20,ScL - Cryomodules Installation,AS_ScL_CM_RQD_9200,NEED: Interconnect Parts for Cryomodules CM 36 thru CM 59 Ready for Installation from 1.02,0.0,0.0,0.0,0.0,0,07-25-25,CM_ICP_2343: FS,"AS_ScL_CM36_9010: FS, AS_ScL_CM37_9010: FS",0,0,0,0,0,0,0.0,0.0,0,nn,07-25-25,0,0.0h,0.0h,0%,$0,0.0h,1040.5d,0,$0,$0,1.03_Accelerator Systems (AS),1.03.03_AS Superconducting Linac System (ScL),1.03.03.20_AS Superconducting Linac System Installation,1.03.03.20.20_ScL - Cryomodules Installation,AS_ScL_CM_RQD_9200_NEED: Interconnect Parts for Cryomodules CM 36 thru CM 59 Ready for Installation from 1.02
298540,1.03,1.03.03,1.03.03.20,1.03.03.20.20,1.03.03.20.20,ScL - Cryomodules Installation,AS_ScL_CM32_9013,RFI: Ready for Controls Installation - L3B Modification,0.0,0.0,0.0,0.0,0,08-18-25,AS_ScL_L3B_9010: FS,"AS_M4_3030: FS, CS_M4_1435: FS",0,0,0,0,0,0,0.0,0.0,0,nn,08-18-25,0,0.0h,0.0h,0%,$0,0.0h,1303.5d,0,$0,$0,1.03_Accelerator Systems (AS),1.03.03_AS Superconducting Linac System (ScL),1.03.03.20_AS Superconducting Linac System Installation,1.03.03.20.20_ScL - Cryomodules Installation,AS_ScL_CM32_9013_RFI: Ready for Controls Installation - L3B Modification
298541,1.03,1.03.03,1.03.03.20,1.03.03.20.20,1.03.03.20.20,ScL - Cryomodules Installation,AS_ScL_CM00_SUP_130,COMP: Installation - CM Stand,0.0,0.0,0.0,0.0,0,09-16-25,AS_ScL_CM00_SUP_120: FS,AS_ScL_CM36_9010: FS,0,0,0,0,0,0,0.0,0.0,0,nn,09-16-25,0,0.0h,0.0h,0%,$0,0.0h,1004.5d,0,$0,$0,1.03_Accelerator Systems (AS),1.03.03_AS Superconducting Linac System (ScL),1.03.03.20_AS Superconducting Linac System Installation,1.03.03.20.20_ScL - Cryomodules Installation,AS_ScL_CM00_SUP_130_COMP: Installation - CM Stand
298542,1.03,1.03.03,1.03.03.20,1.03.03.20.20,1.03.03.20.20,ScL - Cryomodules Installation,AS_ScL_L4A_9100,RFI: Ready for Controls Installation - L4A,0.0,0.0,0.0,0.0,0,10-10-25,AS_ScL_L4A_9010: FS,"AS_M4_3030: FS, CS_M4_1435: FS",0,0,0,0,0,0,0.0,0.0,0,nn,10-10-25,0,0.0h,0.0h,0%,$0,0.0h,1265.5d,0,$0,$0,1.03_Accelerator Systems (AS),1.03.03_AS Superconducting Linac System (ScL),1.03.03.20_AS Superconducting Linac System Installation,1.03.03.20.20_ScL - Cryomodules Installation,AS_ScL_L4A_9100_RFI: Ready for Controls Installation - L4A
298543,1.03,1.03.03,1.03.03.20,1.03.03.20.20,1.03.03.20.20,ScL - Cryomodules Installation,AS_ScL_CM_RQD_9110,NEED: Cryomodules CM 36 thru CM 59 from SLAC Storage from 1.02,0.0,0.0,0.0,0.0,0,12-03-25,"CM_RCV_3190: FS, CM_RCV_3290: FS, CM_RCV_3390: FS, CM_RCV_3490: FS, CM_RCV_3590: FS, CM_RCV_3690: FS, CM_RCV_3790: FS, CM_RCV_3890: FS, CM_RCV_3990: FS, CM_RCV_4090: FS, CM_RCV_4190: FS, CM_RCV_6190: FS, CM_RCV_6290: FS, CM_RCV_6390: FS, CM_RCV_6490: FS, CM_RCV_6590: FS, CM_RCV_6690: FS, CM_RCV_6790: FS, CM_RCV_6890: FS, CM_RCV_6990: FS, CM_RCV_7090: FS, CM_RCV_7190: FS, CM_RCV_7290: FS, CM_RCV_7390: FS",AS_ScL_CM36_9010: FS,0,0,0,0,0,0,0.0,0.0,0,nn,12-03-25,0,0.0h,0.0h,0%,$0,0.0h,950.5d,0,$0,$0,1.03_Accelerator Systems (AS),1.03.03_AS Superconducting Linac System (ScL),1.03.03.20_AS Superconducting Linac System Installation,1.03.03.20.20_ScL - Cryomodules Installation,AS_ScL_CM_RQD_9110_NEED: Cryomodules CM 36 thru CM 59 from SLAC Storage from 1.02
298544,1.03,1.03.03,1.03.03.20,1.03.03.20.20,1.03.03.20.20,ScL - Cryomodules Installation,AS_ScL_L4B_9100,RFI: Ready for Controls Installation - L4B,0.0,0.0,0.0,0.0,0,03-30-26,"AS_ScL_INS_9010: FS, AS_ScL_INS_9020: FS, AS_ScL_INS_9030: FS, AS_ScL_INS_9040: FS, AS_ScL_INS_9050: FS, AS_ScL_INS_9060: FS, AS_ScL_INS_9070: FS, AS_ScL_INS_9080: FS, AS_ScL_L4B_9010: FS","AS_M4_3030: FS, CS_M4_1435: FS",0,0,0,0,0,0,0.0,0.0,0,nn,03-30-26,0,0.0h,0.0h,0%,$0,0.0h,1158.5d,0,$0,$0,1.03_Accelerator Systems (AS),1.03.03_AS Superconducting Linac System (ScL),1.03.03.20_AS Superconducting Linac System Installation,1.03.03.20.20_ScL - Cryomodules Installation,AS_ScL_L4B_9100_RFI: Ready for Controls Installation - L4B
298545,1.03,1.03.03,1.03.03.20,1.03.03.20.21,1.03.03.20.21,ScL - L4 Scavaging Pump Package (PP),AS_ScL_L4_SPI_9020,RFI: Ready for Controls Installation - L4 Scavaging Pump,0.0,0.0,0.0,0.0,0,01-21-26,AS_ScL_L4_SPI_9010: FS,"AS_M4_3030: FS, CS_M4_1435: FS",0,0,0,0,0,0,0.0,0.0,0,nn,01-21-26,0,0.0h,0.0h,0%,$0,0.0h,1205.5d,0,$0,$0,1.03_Accelerator Systems (AS),1.03.03_AS Superconducting Linac System (ScL),1.03.03.20_AS Superconducting Linac System Installation,1.03.03.20.21_ScL - L4 Scavaging Pump Package (PP),AS_ScL_L4_SPI_9020_RFI: Ready for Controls Installation - L4 Scavaging Pump
298546,1.03,1.03.03,1.03.03.20,1.03.03.20.30,1.03.03.20.30,ScL - L3 Extension Removal and L4 EXT/DOG Installation,AS_ScL_EXT_9300,RFI: Ready for Controls Installation - L4 EXT/DOG Installation,0.0,0.0,0.0,0.0,0,11-10-26,AS_ScL_EXT_9180: FS,"AS_M4_3030: FS, CS_M4_1435: FS",0,0,0,0,0,0,0.0,0.0,0,nn,11-10-26,0,0.0h,0.0h,0%,$0,0.0h,1000.5d,0,$0,$0,1.03_Accelerator Systems (AS),1.03.03_AS Superconducting Linac System (ScL),1.03.03.20_AS Superconducting Linac System Installation,1.03.03.20.30_ScL - L3 Extension Removal and L4 EXT/DOG Installation,AS_ScL_EXT_9300_RFI: Ready for Controls Installation - L4 EXT/DOG Installation
298547,1.03,1.03.03,1.03.03.20,1.03.03.20.50,1.03.03.20.50,HPRF - Radiation Shielding Penetration Base Rigging Contract,AS_HPRF_CAP_9020,Prepare RFP - HPRF Radiation Penetration Base Rigging Contract,15.0,0.0,0.0,0.0,07-18-23,08-07-23,AS_HPRF_CAP_9010: FS,AS_HPRF_CAP_9030: FS,0,0,0,0,0,0,0.0,0.0,0,07-18-23,08-07-23,0,0.0h,0.0h,0%,$0,0.0h,-54.0d,0,$0,$0,1.03_Accelerator Systems (AS),1.03.03_AS Superconducting Linac System (ScL),1.03.03.20_AS Superconducting Linac System Installation,1.03.03.20.50_HPRF - Radiation Shielding Penetration Base Rigging Contract,AS_HPRF_CAP_9020_Prepare RFP - HPRF Radiation Penetration Base Rigging Contract
298548,1.03,1.03.03,1.03.03.20,1.03.03.20.50,1.03.03.20.50,HPRF - Radiation Shielding Penetration Base Rigging Contract,AS_HPRF_CAP_9030,Release RFP - HPRF Radiation Penetration Base Rigging Contract,5.0,0.0,0.0,0.0,08-08-23,08-14-23,AS_HPRF_CAP_9020: FS,AS_HPRF_CAP_9040: FS,0,0,0,0,0,0,0.0,0.0,0,08-08-23,08-14-23,0,0.0h,0.0h,0%,$0,0.0h,-54.0d,0,$0,$0,1.03_Accelerator Systems (AS),1.03.03_AS Superconducting Linac System (ScL),1.03.03.20_AS Superconducting Linac System Installation,1.03.03.20.50_HPRF - Radiation Shielding Penetration Base Rigging Contract,AS_HPRF_CAP_9030_Release RFP - HPRF Radiation Penetration Base Rigging Contract
298549,1.03,1.03.03,1.03.03.20,1.03.03.20.50,1.03.03.20.50,HPRF - Radiation Shielding Penetration Base Rigging Contract,AS_HPRF_CAP_9040,Vendor Proposal Effort - HPRF Radiation Penetration Base Rigging Contract,15.0,0.0,0.0,0.0,08-15-23,09-05-23,AS_HPRF_CAP_9030: FS,AS_HPRF_CAP_9050: FS,0,0,0,0,0,0,0.0,0.0,0,08-15-23,09-05-23,0,0.0h,0.0h,0%,$0,0.0h,-54.0d,0,$0,$0,1.03_Accelerator Systems (AS),1.03.03_AS Superconducting Linac System (ScL),1.03.03.20_AS Superconducting Linac System Installation,1.03.03.20.50_HPRF - Radiation Shielding Penetration Base Rigging Contract,AS_HPRF_CAP_9040_Vendor Proposal Effort - HPRF Radiation Penetration Base Rigging Contract
298550,1.03,1.03.03,1.03.03.20,1.03.03.20.50,1.03.03.20.50,HPRF - Radiation Shielding Penetration Base Rigging Contract,AS_HPRF_CAP_9050,RCV: Vendor Proposal - HPRF Radiation Penetration Base Rigging Contract,0.0,0.0,0.0,0.0,0,09-05-23,AS_HPRF_CAP_9040: FS,AS_HPRF_CAP_9060: FS,0,0,0,0,0,0,0.0,0.0,0,nn,09-05-23,0,0.0h,0.0h,0%,$0,0.0h,-54.0d,0,$0,$0,1.03_Accelerator Systems (AS),1.03.03_AS Superconducting Linac System (ScL),1.03.03.20_AS Superconducting Linac System Installation,1.03.03.20.50_HPRF - Radiation Shielding Penetration Base Rigging Contract,AS_HPRF_CAP_9050_RCV: Vendor Proposal - HPRF Radiation Penetration Base Rigging Contract
298551,1.03,1.03.03,1.03.03.20,1.03.03.20.50,1.03.03.20.50,HPRF - Radiation Shielding Penetration Base Rigging Contract,AS_HPRF_CAP_9070,Prepare Award Documents - HPRF Radiation Penetration Base Rigging Contract,5.0,0.0,0.0,0.0,10-25-23,10-31-23,AS_HPRF_CAP_9060: FS,AS_HPRF_CAP_9080: FS,0,0,0,0,0,0,0.0,0.0,0,10-25-23,10-31-23,0,0.0h,0.0h,0%,$0,0.0h,-54.0d,0,$0,$0,1.03_Accelerator Systems (AS),1.03.03_AS Superconducting Linac System (ScL),1.03.03.20_AS Superconducting Linac System Installation,1.03.03.20.50_HPRF - Radiation Shielding Penetration Base Rigging Contract,AS_HPRF_CAP_9070_Prepare Award Documents - HPRF Radiation Penetration Base Rigging Contract
298552,1.03,1.03.03,1.03.03.20,1.03.03.20.50,1.03.03.20.50,HPRF - Radiation Shielding Penetration Base Rigging Contract,AS_HPRF_CAP_9130,COMP: Installation - HPRF Radiation Penetration Base Rigging,0.0,0.0,0.0,0.0,0,09-25-24,AS_HPRF_CAP_9105: FS,AS_M4_DTS1_1030: FS,0,0,0,0,0,0,0.0,0.0,0,nn,09-25-24,0,0.0h,0.0h,0%,$0,0.0h,-240.0d,0,$0,$0,1.03_Accelerator Systems (AS),1.03.03_AS Superconducting Linac System (ScL),1.03.03.20_AS Superconducting Linac System Installation,1.03.03.20.50_HPRF - Radiation Shielding Penetration Base Rigging Contract,AS_HPRF_CAP_9130_COMP: Installation - HPRF Radiation Penetration Base Rigging
298553,1.03,1.03.03,1.03.03.20,1.03.03.20.60,1.03.03.20.60,HPRF - SSAs Installation,AS_HPRF_SSA_9030,Prepare RFP - Rebar Scan - SSAs Installation,10.0,0.0,0.0,0.0,01-29-25,02-11-25,AS_HPRF_SSA_9020: FS,AS_HPRF_SSA_9040: FS,0,0,0,0,0,0,0.0,0.0,0,01-29-25,02-11-25,0,0.0h,0.0h,0%,$0,0.0h,1162.5d,0,$0,$0,1.03_Accelerator Systems (AS),1.03.03_AS Superconducting Linac System (ScL),1.03.03.20_AS Superconducting Linac System Installation,1.03.03.20.60_HPRF - SSAs Installation,AS_HPRF_SSA_9030_Prepare RFP - Rebar Scan - SSAs Installation
298554,1.03,1.03.03,1.03.03.20,1.03.03.20.60,1.03.03.20.60,HPRF - SSAs Installation,AS_HPRF_SSA_9150,Prepare RFP - SSA  Anchoring - SSAs Installation,10.0,0.0,0.0,0.0,01-29-25,02-11-25,AS_HPRF_SSA_9140: FS,AS_HPRF_SSA_9160: FS,0,0,0,0,0,0,0.0,0.0,0,01-29-25,02-11-25,0,0.0h,0.0h,0%,$0,0.0h,1183.5d,0,$0,$0,1.03_Accelerator Systems (AS),1.03.03_AS Superconducting Linac System (ScL),1.03.03.20_AS Superconducting Linac System Installation,1.03.03.20.60_HPRF - SSAs Installation,AS_HPRF_SSA_9150_Prepare RFP - SSA  Anchoring - SSAs Installation
298555,1.03,1.03.03,1.03.03.20,1.03.03.20.60,1.03.03.20.60,HPRF - SSAs Installation,AS_HPRF_SSA_9040,Release RFP - Rebar Scan - SSAs Installation,2.0,0.0,0.0,0.0,02-12-25,02-13-25,AS_HPRF_SSA_9030: FS,AS_HPRF_SSA_9050: FS,0,0,0,0,0,0,0.0,0.0,0,02-12-25,02-13-25,0,0.0h,0.0h,0%,$0,0.0h,1162.5d,0,$0,$0,1.03_Accelerator Systems (AS),1.03.03_AS Superconducting Linac System (ScL),1.03.03.20_AS Superconducting Linac System Installation,1.03.03.20.60_HPRF - SSAs Installation,AS_HPRF_SSA_9040_Release RFP - Rebar Scan - SSAs Installation
298556,1.03,1.03.03,1.03.03.20,1.03.03.20.60,1.03.03.20.60,HPRF - SSAs Installation,AS_HPRF_SSA_9160,Release RFP - SSA  Anchoring - SSAs Installation,2.0,0.0,0.0,0.0,02-12-25,02-13-25,AS_HPRF_SSA_9150: FS,AS_HPRF_SSA_9170: FS,0,0,0,0,0,0,0.0,0.0,0,02-12-25,02-13-25,0,0.0h,0.0h,0%,$0,0.0h,1183.5d,0,$0,$0,1.03_Accelerator Systems (AS),1.03.03_AS Superconducting Linac System (ScL),1.03.03.20_AS Superconducting Linac System Installation,1.03.03.20.60_HPRF - SSAs Installation,AS_HPRF_SSA_9160_Release RFP - SSA  Anchoring - SSAs Installation
298557,1.03,1.03.03,1.03.03.20,1.03.03.20.60,1.03.03.20.60,HPRF - SSAs Installation,AS_HPRF_SSA_9050,Vendor Proposal Effort - Rebar Scan - SSAs Installation,10.0,0.0,0.0,0.0,02-14-25,02-28-25,AS_HPRF_SSA_9040: FS,AS_HPRF_SSA_9060: FS,0,0,0,0,0,0,0.0,0.0,0,02-14-25,02-28-25,0,0.0h,0.0h,0%,$0,0.0h,1162.5d,0,$0,$0,1.03_Accelerator Systems (AS),1.03.03_AS Superconducting Linac System (ScL),1.03.03.20_AS Superconducting Linac System Installation,1.03.03.20.60_HPRF - SSAs Installation,AS_HPRF_SSA_9050_Vendor Proposal Effort - Rebar Scan - SSAs Installation
298558,1.03,1.03.03,1.03.03.20,1.03.03.20.60,1.03.03.20.60,HPRF - SSAs Installation,AS_HPRF_SSA_9170,Vendor Proposal Effort - SSA  Anchoring - SSAs Installation,10.0,0.0,0.0,0.0,02-14-25,02-28-25,AS_HPRF_SSA_9160: FS,AS_HPRF_SSA_9180: FS,0,0,0,0,0,0,0.0,0.0,0,02-14-25,02-28-25,0,0.0h,0.0h,0%,$0,0.0h,1183.5d,0,$0,$0,1.03_Accelerator Systems (AS),1.03.03_AS Superconducting Linac System (ScL),1.03.03.20_AS Superconducting Linac System Installation,1.03.03.20.60_HPRF - SSAs Installation,AS_HPRF_SSA_9170_Vendor Proposal Effort - SSA  Anchoring - SSAs Installation
298559,1.03,1.03.03,1.03.03.20,1.03.03.20.60,1.03.03.20.60,HPRF - SSAs Installation,AS_HPRF_SSA_9060,RCV: Vendor Proposal - Rebar Scan - SSAs Installation,0.0,0.0,0.0,0.0,0,02-28-25,AS_HPRF_SSA_9050: FS,AS_HPRF_SSA_9070: FS,0,0,0,0,0,0,0.0,0.0,0,nn,02-28-25,0,0.0h,0.0h,0%,$0,0.0h,1162.5d,0,$0,$0,1.03_Accelerator Systems (AS),1.03.03_AS Superconducting Linac System (ScL),1.03.03.20_AS Superconducting Linac System Installation,1.03.03.20.60_HPRF - SSAs Installation,AS_HPRF_SSA_9060_RCV: Vendor Proposal - Rebar Scan - SSAs Installation
298560,1.03,1.03.03,1.03.03.20,1.03.03.20.60,1.03.03.20.60,HPRF - SSAs Installation,AS_HPRF_SSA_9180,RCV: Vendor Proposal - SSA  Anchoring - SSAs Installation,0.0,0.0,0.0,0.0,0,02-28-25,AS_HPRF_SSA_9170: FS,AS_HPRF_SSA_9190: FS,0,0,0,0,0,0,0.0,0.0,0,nn,02-28-25,0,0.0h,0.0h,0%,$0,0.0h,1183.5d,0,$0,$0,1.03_Accelerator Systems (AS),1.03.03_AS Superconducting Linac System (ScL),1.03.03.20_AS Superconducting Linac System Installation,1.03.03.20.60_HPRF - SSAs Installation,AS_HPRF_SSA_9180_RCV: Vendor Proposal - SSA  Anchoring - SSAs Installation
298561,1.03,1.03.03,1.03.03.20,1.03.03.20.60,1.03.03.20.60,HPRF - SSAs Installation,AS_HPRF_SSA_9070,Evaluations/Negotiations - Rebar Scan - SSAs Installation,20.0,0.0,0.0,0.0,03-03-25,03-28-25,AS_HPRF_SSA_9060: FS,AS_HPRF_SSA_9080: FS,0,0,0,0,0,0,0.0,0.0,0,03-03-25,03-28-25,0,0.0h,0.0h,0%,$0,0.0h,1162.5d,0,$0,$0,1.03_Accelerator Systems (AS),1.03.03_AS Superconducting Linac System (ScL),1.03.03.20_AS Superconducting Linac System Installation,1.03.03.20.60_HPRF - SSAs Installation,AS_HPRF_SSA_9070_Evaluations/Negotiations - Rebar Scan - SSAs Installation
298562,1.03,1.03.03,1.03.03.20,1.03.03.20.60,1.03.03.20.60,HPRF - SSAs Installation,AS_HPRF_SSA_9190,Evaluations/Negotiations - SSA  Anchoring - SSAs Installation,20.0,0.0,0.0,0.0,03-03-25,03-28-25,AS_HPRF_SSA_9180: FS,AS_HPRF_SSA_9200: FS,0,0,0,0,0,0,0.0,0.0,0,03-03-25,03-28-25,0,0.0h,0.0h,0%,$0,0.0h,1183.5d,0,$0,$0,1.03_Accelerator Systems (AS),1.03.03_AS Superconducting Linac System (ScL),1.03.03.20_AS Superconducting Linac System Installation,1.03.03.20.60_HPRF - SSAs Installation,AS_HPRF_SSA_9190_Evaluations/Negotiations - SSA  Anchoring - SSAs Installation
298563,1.03,1.03.03,1.03.03.20,1.03.03.20.60,1.03.03.20.60,HPRF - SSAs Installation,AS_HPRF_SSA_9080,Prepare Award Documents - Rebar Scan - SSAs Installation,5.0,0.0,0.0,0.0,03-31-25,04-04-25,AS_HPRF_SSA_9070: FS,AS_HPRF_SSA_9090: FS,0,0,0,0,0,0,0.0,0.0,0,03-31-25,04-04-25,0,0.0h,0.0h,0%,$0,0.0h,1162.5d,0,$0,$0,1.03_Accelerator Systems (AS),1.03.03_AS Superconducting Linac System (ScL),1.03.03.20_AS Superconducting Linac System Installation,1.03.03.20.60_HPRF - SSAs Installation,AS_HPRF_SSA_9080_Prepare Award Documents - Rebar Scan - SSAs Installation
298564,1.03,1.03.03,1.03.03.20,1.03.03.20.60,1.03.03.20.60,HPRF - SSAs Installation,AS_HPRF_SSA_9200,Prepare Award Documents - SSA  Anchoring - SSAs Installation,5.0,0.0,0.0,0.0,03-31-25,04-04-25,AS_HPRF_SSA_9190: FS,AS_HPRF_SSA_9210: FS,0,0,0,0,0,0,0.0,0.0,0,03-31-25,04-04-25,0,0.0h,0.0h,0%,$0,0.0h,1183.5d,0,$0,$0,1.03_Accelerator Systems (AS),1.03.03_AS Superconducting Linac System (ScL),1.03.03.20_AS Superconducting Linac System Installation,1.03.03.20.60_HPRF - SSAs Installation,AS_HPRF_SSA_9200_Prepare Award Documents - SSA  Anchoring - SSAs Installation
298565,1.03,1.03.03,1.03.03.20,1.03.03.20.60,1.03.03.20.60,HPRF - SSAs Installation,AS_HPRF_SSA_9100,Vendor Effort - Rebar Scan - SSAs Installation,20.0,0.0,0.0,0.0,04-08-25,05-05-25,AS_HPRF_SSA_9090: FS,AS_HPRF_SSA_9110: FS,0,0,0,0,0,0,0.0,0.0,0,04-08-25,05-05-25,0,0.0h,0.0h,0%,$0,0.0h,1162.5d,0,$0,$0,1.03_Accelerator Systems (AS),1.03.03_AS Superconducting Linac System (ScL),1.03.03.20_AS Superconducting Linac System Installation,1.03.03.20.60_HPRF - SSAs Installation,AS_HPRF_SSA_9100_Vendor Effort - Rebar Scan - SSAs Installation
298566,1.03,1.03.03,1.03.03.20,1.03.03.20.60,1.03.03.20.60,HPRF - SSAs Installation,AS_HPRF_SSA_9120,COMP: Rebar Scan - SSAs Installation,0.0,0.0,0.0,0.0,0,05-06-25,AS_HPRF_SSA_9110: FS,AS_HPRF_SSA_9220: FS,0,0,0,0,0,0,0.0,0.0,0,nn,05-06-25,0,0.0h,0.0h,0%,$0,0.0h,1162.5d,0,$0,$0,1.03_Accelerator Systems (AS),1.03.03_AS Superconducting Linac System (ScL),1.03.03.20_AS Superconducting Linac System Installation,1.03.03.20.60_HPRF - SSAs Installation,AS_HPRF_SSA_9120_COMP: Rebar Scan - SSAs Installation
298567,1.03,1.03.03,1.03.03.20,1.03.03.20.60,1.03.03.20.60,HPRF - SSAs Installation,AS_HPRF_SSA_9220,Vendor Effort - SSA  Anchoring - SSAs Installation,20.0,0.0,0.0,0.0,05-07-25,06-04-25,"AS_HPRF_SSA_9210: FS, AS_HPRF_SSA_9120: FS",AS_HPRF_SSA_9230: FS,0,0,0,0,0,0,0.0,0.0,0,05-07-25,06-04-25,0,0.0h,0.0h,0%,$0,0.0h,1162.5d,0,$0,$0,1.03_Accelerator Systems (AS),1.03.03_AS Superconducting Linac System (ScL),1.03.03.20_AS Superconducting Linac System Installation,1.03.03.20.60_HPRF - SSAs Installation,AS_HPRF_SSA_9220_Vendor Effort - SSA  Anchoring - SSAs Installation
298568,1.03,1.03.03,1.03.03.20,1.03.03.20.60,1.03.03.20.60,HPRF - SSAs Installation,AS_HPRF_SSA_9240,COMP: SSA  Anchoring - SSAs Installation,0.0,0.0,0.0,0.0,0,06-05-25,AS_HPRF_SSA_9230: FS,AS_HPRF_WGKG_9500: FS,0,0,0,0,0,0,0.0,0.0,0,nn,06-05-25,0,0.0h,0.0h,0%,$0,0.0h,1162.5d,0,$0,$0,1.03_Accelerator Systems (AS),1.03.03_AS Superconducting Linac System (ScL),1.03.03.20_AS Superconducting Linac System Installation,1.03.03.20.60_HPRF - SSAs Installation,AS_HPRF_SSA_9240_COMP: SSA  Anchoring - SSAs Installation
298569,1.03,1.03.03,1.03.03.20,1.03.03.20.67,1.03.03.20.67,HPRF - Frames and Structure Installation,AS_HPRF_ST_9070,COMP: Installation Contract - Frames and Structure,0.0,0.0,0.0,0.0,0,09-29-25,AS_HPRF_ST_9060: FS,AS_HPRF_WGTU_9200: FS,0,0,0,0,0,0,0.0,0.0,0,nn,09-29-25,0,0.0h,0.0h,0%,$0,0.0h,1083.0d,0,$0,$0,1.03_Accelerator Systems (AS),1.03.03_AS Superconducting Linac System (ScL),1.03.03.20_AS Superconducting Linac System Installation,1.03.03.20.67_HPRF - Frames and Structure Installation,AS_HPRF_ST_9070_COMP: Installation Contract - Frames and Structure
298570,1.03,1.03.03,1.03.03.20,1.03.03.20.70,1.03.03.20.70,HPRF - Waveguide Bundle Rigging Contract,AS_HPRF_CAP_9220,Prepare RFP - Waveguide Bundle Rigging Contract,15.0,0.0,0.0,0.0,02-23-24,03-14-24,AS_HPRF_CAP_9210: FS,AS_HPRF_CAP_9230: FS,0,0,0,0,0,0,0.0,0.0,0,02-23-24,03-14-24,0,0.0h,0.0h,0%,$0,0.0h,1315.5d,0,$0,$0,1.03_Accelerator Systems (AS),1.03.03_AS Superconducting Linac System (ScL),1.03.03.20_AS Superconducting Linac System Installation,1.03.03.20.70_HPRF - Waveguide Bundle Rigging Contract,AS_HPRF_CAP_9220_Prepare RFP - Waveguide Bundle Rigging Contract
298571,1.03,1.03.03,1.03.03.20,1.03.03.20.70,1.03.03.20.70,HPRF - Waveguide Bundle Rigging Contract,AS_HPRF_CAP_9230,Release RFP - Waveguide Bundle Rigging Contract,5.0,0.0,0.0,0.0,03-15-24,03-21-24,AS_HPRF_CAP_9220: FS,AS_HPRF_CAP_9240: FS,0,0,0,0,0,0,0.0,0.0,0,03-15-24,03-21-24,0,0.0h,0.0h,0%,$0,0.0h,1315.5d,0,$0,$0,1.03_Accelerator Systems (AS),1.03.03_AS Superconducting Linac System (ScL),1.03.03.20_AS Superconducting Linac System Installation,1.03.03.20.70_HPRF - Waveguide Bundle Rigging Contract,AS_HPRF_CAP_9230_Release RFP - Waveguide Bundle Rigging Contract
298572,1.03,1.03.03,1.03.03.20,1.03.03.20.70,1.03.03.20.70,HPRF - Waveguide Bundle Rigging Contract,AS_HPRF_CAP_9240,Vendor Proposal Effort - Waveguide Bundle Rigging Contract,15.0,0.0,0.0,0.0,03-22-24,04-11-24,AS_HPRF_CAP_9230: FS,AS_HPRF_CAP_9250: FS,0,0,0,0,0,0,0.0,0.0,0,03-22-24,04-11-24,0,0.0h,0.0h,0%,$0,0.0h,1315.5d,0,$0,$0,1.03_Accelerator Systems (AS),1.03.03_AS Superconducting Linac System (ScL),1.03.03.20_AS Superconducting Linac System Installation,1.03.03.20.70_HPRF - Waveguide Bundle Rigging Contract,AS_HPRF_CAP_9240_Vendor Proposal Effort - Waveguide Bundle Rigging Contract
298573,1.03,1.03.03,1.03.03.20,1.03.03.20.70,1.03.03.20.70,HPRF - Waveguide Bundle Rigging Contract,AS_HPRF_CAP_9250,RCV: Vendor Proposal - Waveguide Bundle Rigging Contract,0.0,0.0,0.0,0.0,0,04-11-24,AS_HPRF_CAP_9240: FS,AS_HPRF_CAP_9260: FS,0,0,0,0,0,0,0.0,0.0,0,nn,04-11-24,0,0.0h,0.0h,0%,$0,0.0h,1315.5d,0,$0,$0,1.03_Accelerator Systems (AS),1.03.03_AS Superconducting Linac System (ScL),1.03.03.20_AS Superconducting Linac System Installation,1.03.03.20.70_HPRF - Waveguide Bundle Rigging Contract,AS_HPRF_CAP_9250_RCV: Vendor Proposal - Waveguide Bundle Rigging Contract
298574,1.03,1.03.03,1.03.03.20,1.03.03.20.70,1.03.03.20.70,HPRF - Waveguide Bundle Rigging Contract,AS_HPRF_CAP_9295,Vendor Effort - Waveguide Bundle Rigging Contract - Long Down,87.0,0.0,0.0,0.0,04-01-25,08-01-25,"AS_HPRF_CAP_9280: FS, AS_M4_1010: FS",AS_HPRF_CAP_9300: FS,0,0,0,0,0,0,0.0,0.0,0,04-01-25,08-01-25,0,0.0h,0.0h,0%,$0,0.0h,1121.5d,0,$0,$0,1.03_Accelerator Systems (AS),1.03.03_AS Superconducting Linac System (ScL),1.03.03.20_AS Superconducting Linac System Installation,1.03.03.20.70_HPRF - Waveguide Bundle Rigging Contract,AS_HPRF_CAP_9295_Vendor Effort - Waveguide Bundle Rigging Contract - Long Down
298575,1.03,1.03.03,1.03.03.20,1.03.03.20.70,1.03.03.20.70,HPRF - Waveguide Bundle Rigging Contract,AS_HPRF_CAP_9310,COMP: Installation Waveguide Bundle Rigging,0.0,0.0,0.0,0.0,0,08-04-25,AS_HPRF_CAP_9300: FS,AS_HPRF_WGTU_9200: FS,0,0,0,0,0,0,0.0,0.0,0,nn,08-04-25,0,0.0h,0.0h,0%,$0,0.0h,1121.5d,0,$0,$0,1.03_Accelerator Systems (AS),1.03.03_AS Superconducting Linac System (ScL),1.03.03.20_AS Superconducting Linac System Installation,1.03.03.20.70_HPRF - Waveguide Bundle Rigging Contract,AS_HPRF_CAP_9310_COMP: Installation Waveguide Bundle Rigging
298576,1.03,1.03.03,1.03.03.20,1.03.03.20.74,1.03.03.20.74,HPRF - Waveguide Accelerator Housing Ceiling Installation (PP),AS_HPRF_WGTU_9000,RQD: Infrastructure area in Accelerator Housing available from 1.06,0.0,0.0,0.0,0.0,0,04-28-25,IF_LPI_C_1116: FS,AS_HPRF_WGTU_9100: FS,0,0,0,0,0,0,0.0,0.0,0,nn,04-28-25,0,0.0h,0.0h,0%,$0,0.0h,1189.5d,0,$0,$0,1.03_Accelerator Systems (AS),1.03.03_AS Superconducting Linac System (ScL),1.03.03.20_AS Superconducting Linac System Installation,1.03.03.20.74_HPRF - Waveguide Accelerator Housing Ceiling Installation (PP),AS_HPRF_WGTU_9000_RQD: Infrastructure area in Accelerator Housing available from 1.06
298577,1.03,1.03.03,1.03.03.20,1.03.03.20.76,1.03.03.20.76,HPRF - Waveguide Klystron Gallery Installation,AS_HPRF_RQD_9310,RQD: Infrastructure area in Klystron Gallery available from 1.06,0.0,0.0,0.0,0.0,0,04-28-25,IF_LPI_C_1116: FS,AS_HPRF_WGKG_9500: FS,0,0,0,0,0,0,0.0,0.0,0,nn,04-28-25,0,0.0h,0.0h,0%,$0,0.0h,1189.5d,0,$0,$0,1.03_Accelerator Systems (AS),1.03.03_AS Superconducting Linac System (ScL),1.03.03.20_AS Superconducting Linac System Installation,1.03.03.20.76_HPRF - Waveguide Klystron Gallery Installation,AS_HPRF_RQD_9310_RQD: Infrastructure area in Klystron Gallery available from 1.06
298578,1.03,1.03.03,1.03.03.20,1.03.03.20.76,1.03.03.20.76,HPRF - Waveguide Klystron Gallery Installation,AS_HPRF_RQD_9320,RQD: Controls in Klystron Gallery (SSAs and Cable Trays) area available from 1.05,0.0,0.0,0.0,0.0,0,07-27-26,"AS_HPRF_WGKG_9140: FS, CS_CPLT_IN_X102: FS","AS_HPRF_WGKG_9500: FS, CS_M4_1436: FS",0,0,0,0,0,0,0.0,0.0,0,nn,07-27-26,0,0.0h,0.0h,0%,$0,0.0h,883.5d,0,$0,$0,1.03_Accelerator Systems (AS),1.03.03_AS Superconducting Linac System (ScL),1.03.03.20_AS Superconducting Linac System Installation,1.03.03.20.76_HPRF - Waveguide Klystron Gallery Installation,AS_HPRF_RQD_9320_RQD: Controls in Klystron Gallery (SSAs and Cable Trays) area available from 1.05
298579,1.03,1.03.03,1.03.03.20,1.03.03.20.76,1.03.03.20.76,HPRF - Waveguide Klystron Gallery Installation,AS_HPRF_WGKG_9740,RFI: Ready for Controls Installation - Klystron Gallery Waveguide,0.0,0.0,0.0,0.0,0,05-12-27,AS_HPRF_WGKG_9730: FS,"AS_M4_3030: FS, CS_M4_1435: FS",0,0,0,0,0,0,0.0,0.0,0,nn,05-12-27,0,0.0h,0.0h,0%,$0,0.0h,883.5d,0,$0,$0,1.03_Accelerator Systems (AS),1.03.03_AS Superconducting Linac System (ScL),1.03.03.20_AS Superconducting Linac System Installation,1.03.03.20.76_HPRF - Waveguide Klystron Gallery Installation,AS_HPRF_WGKG_9740_RFI: Ready for Controls Installation - Klystron Gallery Waveguide
298580,1.03,1.03.04,1.03.04,1.03.04,1.03.04,AS Cryogenic Distribution System (CDS),AS_CDS_9000,COMP: CDS Ready for CD-2/3,0.0,0.0,0.0,0.0,0,07-13-22,"AS_CDS_1030: FS, AS_CDS_1070: FS, AS_CDS_1110: FS, AS_CDS_1150: FS, AS_CDS_1190: FS, AS_CDS_BT_5070: FS, AS_CDS_DB_5070: FS, AS_CDS_EC_5070: FS, AS_CDS_IB3_5070: FS, AS_CDS_PD_5089: FS, AS_CDS_TL_5070: FS",AS_M4_3000: FS,0,0,0,0,0,0,0.0,0.0,0,nn,07-13-22,0,0.0h,0.0h,0%,$0,0.0h,246.0d,0,$0,$0,1.03_Accelerator Systems (AS),1.03.04_AS Cryogenic Distribution System (CDS),,,AS_CDS_9000_COMP: CDS Ready for CD-2/3
298581,1.03,1.03.04,1.03.04,1.03.04,1.03.04,AS Cryogenic Distribution System (CDS),AS_CDS_9020,RFI: Ready for Controls Installation - CDS Tunnel,0.0,0.0,0.0,0.0,0,07-01-25,MS_FY_2025_Q4: FS,CS_M4_1435: FS,0,0,0,0,0,0,0.0,0.0,0,nn,07-01-25,0,0.0h,0.0h,0%,$0,0.0h,1336.5d,0,$0,$0,1.03_Accelerator Systems (AS),1.03.04_AS Cryogenic Distribution System (CDS),,,AS_CDS_9020_RFI: Ready for Controls Installation - CDS Tunnel
298582,1.03,1.03.04,1.03.04,1.03.04,1.03.04,AS Cryogenic Distribution System (CDS),AS_CDS_9040,RFI: Ready for Controls Installation - CDS B905,0.0,0.0,0.0,0.0,0,07-01-25,MS_FY_2025_Q4: FS,0,0,0,0,0,0,0,0.0,0.0,0,nn,07-01-25,0,0.0h,0.0h,0%,$0,0.0h,1436.5d,0,$0,$0,1.03_Accelerator Systems (AS),1.03.04_AS Cryogenic Distribution System (CDS),,,AS_CDS_9040_RFI: Ready for Controls Installation - CDS B905
298583,1.03,1.03.04,1.03.04,1.03.04,1.03.04,AS Cryogenic Distribution System (CDS),AS_CDS_9030,RFI: Ready for Controls Installation - Klystron Gallery,0.0,0.0,0.0,0.0,0,08-03-26,"MS_FY_2025_Q4: FS, AS_CDS_TL_9230: FS, AS_CDS_DB_9210: FS, AS_CDS_VL_9210: FS",CS_M4_1435: FS,0,0,0,0,0,0,0.0,0.0,0,nn,08-03-26,0,0.0h,0.0h,0%,$0,0.0h,1070.5d,0,$0,$0,1.03_Accelerator Systems (AS),1.03.04_AS Cryogenic Distribution System (CDS),,,AS_CDS_9030_RFI: Ready for Controls Installation - Klystron Gallery
298584,1.03,1.03.04,1.03.04,1.03.04,1.03.04,AS Cryogenic Distribution System (CDS),AS_CDS_9010,COMP: CDS Mechanical Installation Complete,0.0,0.0,0.0,0.0,0,02-05-27,"AS_CDS_BT_9070: FS, AS_CDS_DB_9210: FS, AS_CDS_EC3_9210: FS, AS_CDS_EC4_9210: FS, AS_CDS_IB_9210: FS, AS_CDS_SHLD_9120: FS, AS_CDS_TE_9210: FS, AS_CDS_TL_9230: FS, AS_CDS_VB_9210: FS, AS_CDS_VL_9210: FS",AS_M4_3040: FS,0,0,0,0,0,0,0.0,0.0,0,nn,02-05-27,0,0.0h,0.0h,0%,$0,0.0h,950.5d,0,$0,$0,1.03_Accelerator Systems (AS),1.03.04_AS Cryogenic Distribution System (CDS),,,AS_CDS_9010_COMP: CDS Mechanical Installation Complete
298585,1.03,1.03.04,1.03.04.05,1.03.04.05.01,1.03.04.05.01,CDS Overall Design - Preliminary Design (PD),AS_CDS_PD_5010,Prepare FRS - Overall Design CDS,54.0,0.0,0.0,0.0,0,0,MS_FY_2021_Q1: FS,"AS_CDS_PD_5020: FS, AS_CDS_IB3_5030: SS, AS_CDS_TL_5030: SS, AS_CDS_DB_5030: SS, AS_CDS_VL_5030: FS, AS_CDS_VB_5030: SS, AS_CDS_EC_5030: FS, AS_CDS_PD_5030: FF, AS_CDS_DB_5010: SS, AS_CDS_PD_5050: SS, AS_CDS_BT_5010: FS",0,0,0,0,0,0,0.0,0.0,0,11-16-20,02-16-21,0,0.0h,0.0h,100%,$0,0.0h,0,0,$0,$0,1.03_Accelerator Systems (AS),1.03.04_AS Cryogenic Distribution System (CDS),1.03.04.05_AS Cryogenic Distribution System Engineering and Design,1.03.04.05.01_CDS Overall Design - Preliminary Design (PD),AS_CDS_PD_5010_Prepare FRS - Overall Design CDS
298586,1.03,1.03.04,1.03.04.05,1.03.04.05.01,1.03.04.05.01,CDS Overall Design - Preliminary Design (PD),AS_CDS_PD_5089,COMP: Reference Design - Overall Design CDS,0.0,0.0,0.0,0.0,0,10-29-21,"AS_CDS_PD_5080: FS, AS_CDS_PD_5020: FS","AS_CDS_SU_5010: FS, AS_CDS_TU_5010: FS, AS_CDS_9000: FS, AS_CDS_VL_5020: FS, AS_CDS_IB3_5040: FS, AS_CDS_TL_5040: FS, AS_CDS_VB_5040: FS, AS_CDS_EC_5040: FS, AS_M4_3065: FS",0,0,0,0,0,0,0.0,0.0,0,nn,10-29-21,DM-A11-10%,0.0h,0.0h,0%,$0,0.0h,257.0d,0,$0,$0,1.03_Accelerator Systems (AS),1.03.04_AS Cryogenic Distribution System (CDS),1.03.04.05_AS Cryogenic Distribution System Engineering and Design,1.03.04.05.01_CDS Overall Design - Preliminary Design (PD),AS_CDS_PD_5089_COMP: Reference Design - Overall Design CDS
298587,1.03,1.03.04,1.03.04.05,1.03.04.05.02,1.03.04.05.02,CDS Preparation for CD-2/3,AS_CDS_1000,Prepare Technical Package for Request for Information to develop BOE - FNL - Distribution Box,10.0,0.0,0.0,0.0,0,0,MS_FY_2021_Q3: FS,"AS_CDS_1020: FS, AS_CDS_1040: FS, AS_CDS_1010: SS",0,0,0,0,0,0,0.0,0.0,0,04-02-21,04-15-21,0,0.0h,0.0h,100%,$0,0.0h,0,0,$0,$0,1.03_Accelerator Systems (AS),1.03.04_AS Cryogenic Distribution System (CDS),1.03.04.05_AS Cryogenic Distribution System Engineering and Design,1.03.04.05.02_CDS Preparation for CD-2/3,AS_CDS_1000_Prepare Technical Package for Request for Information to develop BOE - FNL - Distribution Box
298588,1.03,1.03.04,1.03.04.05,1.03.04.05.02,1.03.04.05.02,CDS Preparation for CD-2/3,AS_CDS_1020,Request For Information - Post and collect estimates  (Procurement action) - Distribution Box,10.0,0.0,0.0,0.0,0,0,"AS_CDS_1010: FS, AS_CDS_1000: FS",AS_CDS_1030: FF,0,0,0,0,0,0,0.0,0.0,0,06-16-21,06-29-21,0,0.0h,0.0h,100%,$0,0.0h,0,0,$0,$0,1.03_Accelerator Systems (AS),1.03.04_AS Cryogenic Distribution System (CDS),1.03.04.05_AS Cryogenic Distribution System Engineering and Design,1.03.04.05.02_CDS Preparation for CD-2/3,AS_CDS_1020_Request For Information - Post and collect estimates  (Procurement action) - Distribution Box
298589,1.03,1.03.04,1.03.04.05,1.03.04.05.02,1.03.04.05.02,CDS Preparation for CD-2/3,AS_CDS_1030,Review data and compile into BOE - Distribution Box,5.0,0.0,0.0,0.0,0,0,AS_CDS_1020: FF,AS_CDS_9000: FS,0,0,0,0,0,0,0.0,0.0,0,07-15-21,07-21-21,0,0.0h,0.0h,100%,$0,0.0h,0,0,$0,$0,1.03_Accelerator Systems (AS),1.03.04_AS Cryogenic Distribution System (CDS),1.03.04.05_AS Cryogenic Distribution System Engineering and Design,1.03.04.05.02_CDS Preparation for CD-2/3,AS_CDS_1030_Review data and compile into BOE - Distribution Box
298590,1.03,1.03.04,1.03.04.05,1.03.04.05.02,1.03.04.05.02,CDS Preparation for CD-2/3,AS_CDS_1040,Prepare Technical Package for Request For Information to develop BOE - FNL - Transfer Line,10.0,0.0,0.0,0.0,0,0,"AS_CDS_1000: FS, AS_CDS_PD_5070: FF","AS_CDS_1060: FS, AS_CDS_1050: FF, AS_CDS_1080: FS",0,0,0,0,0,0,0.0,0.0,0,09-01-21,09-15-21,0,0.0h,0.0h,100%,$0,0.0h,0,0,$0,$0,1.03_Accelerator Systems (AS),1.03.04_AS Cryogenic Distribution System (CDS),1.03.04.05_AS Cryogenic Distribution System Engineering and Design,1.03.04.05.02_CDS Preparation for CD-2/3,AS_CDS_1040_Prepare Technical Package for Request For Information to develop BOE - FNL - Transfer Line
298591,1.03,1.03.04,1.03.04.05,1.03.04.05.02,1.03.04.05.02,CDS Preparation for CD-2/3,AS_CDS_1060,Request For Information - Post and collect estimates  (Procurement action) - Transfer Line,11.0,0.0,0.0,0.0,10-01-21,10-15-21,"AS_CDS_1050: FS, AS_CDS_1040: FS",AS_CDS_1070: FS,0,0,0,0,0,0,0.0,0.0,0,10-01-21,10-15-21,0,0.0h,0.0h,0%,$0,0.0h,418.0d,0,$0,$0,1.03_Accelerator Systems (AS),1.03.04_AS Cryogenic Distribution System (CDS),1.03.04.05_AS Cryogenic Distribution System Engineering and Design,1.03.04.05.02_CDS Preparation for CD-2/3,AS_CDS_1060_Request For Information - Post and collect estimates  (Procurement action) - Transfer Line
298592,1.03,1.03.04,1.03.04.05,1.03.04.05.02,1.03.04.05.02,CDS Preparation for CD-2/3,AS_CDS_1080,Prepare Technical Package for Request For Information to develop BOE - FNL - End Caps,10.0,0.0,0.0,0.0,10-01-21,10-14-21,AS_CDS_1040: FS,"AS_CDS_1100: FS, AS_CDS_1090: SS, AS_CDS_1120: FS",0,0,0,0,0,0,0.0,0.0,0,10-01-21,10-14-21,0,0.0h,0.0h,0%,$0,0.0h,379.0d,0,$0,$0,1.03_Accelerator Systems (AS),1.03.04_AS Cryogenic Distribution System (CDS),1.03.04.05_AS Cryogenic Distribution System Engineering and Design,1.03.04.05.02_CDS Preparation for CD-2/3,AS_CDS_1080_Prepare Technical Package for Request For Information to develop BOE - FNL - End Caps
298593,1.03,1.03.04,1.03.04.05,1.03.04.05.02,1.03.04.05.02,CDS Preparation for CD-2/3,AS_CDS_1100,Request For Information - Post and collect estimates  (Procurement action) - End Caps,20.0,0.0,0.0,0.0,10-15-21,11-11-21,"AS_CDS_1090: FS, AS_CDS_1080: FS",AS_CDS_1110: FS,0,0,0,0,0,0,0.0,0.0,0,10-15-21,11-11-21,0,0.0h,0.0h,0%,$0,0.0h,399.0d,0,$0,$0,1.03_Accelerator Systems (AS),1.03.04_AS Cryogenic Distribution System (CDS),1.03.04.05_AS Cryogenic Distribution System Engineering and Design,1.03.04.05.02_CDS Preparation for CD-2/3,AS_CDS_1100_Request For Information - Post and collect estimates  (Procurement action) - End Caps
298594,1.03,1.03.04,1.03.04.05,1.03.04.05.02,1.03.04.05.02,CDS Preparation for CD-2/3,AS_CDS_1120,"Prepare Technical Package for Request For Information to develop BOE - FNL - Vacuum Box, Tee, and Vertical Transfer Line",10.0,0.0,0.0,0.0,10-15-21,10-28-21,AS_CDS_1080: FS,"AS_CDS_1140: FS, AS_CDS_1130: SS, AS_CDS_1160: FS",0,0,0,0,0,0,0.0,0.0,0,10-15-21,10-28-21,0,0.0h,0.0h,0%,$0,0.0h,379.0d,0,$0,$0,1.03_Accelerator Systems (AS),1.03.04_AS Cryogenic Distribution System (CDS),1.03.04.05_AS Cryogenic Distribution System Engineering and Design,1.03.04.05.02_CDS Preparation for CD-2/3,"AS_CDS_1120_Prepare Technical Package for Request For Information to develop BOE - FNL - Vacuum Box, Tee, and Vertical Transfer Line"
298595,1.03,1.03.04,1.03.04.05,1.03.04.05.02,1.03.04.05.02,CDS Preparation for CD-2/3,AS_CDS_1070,Review data and compile into BOE Transfer Line,5.0,0.0,0.0,0.0,10-18-21,10-22-21,AS_CDS_1060: FS,AS_CDS_9000: FS,0,0,0,0,0,0,0.0,0.0,0,10-18-21,10-22-21,0,0.0h,0.0h,0%,$0,0.0h,418.0d,0,$0,$0,1.03_Accelerator Systems (AS),1.03.04_AS Cryogenic Distribution System (CDS),1.03.04.05_AS Cryogenic Distribution System Engineering and Design,1.03.04.05.02_CDS Preparation for CD-2/3,AS_CDS_1070_Review data and compile into BOE Transfer Line
298596,1.03,1.03.04,1.03.04.05,1.03.04.05.02,1.03.04.05.02,CDS Preparation for CD-2/3,AS_CDS_1140,"Request For Information - Post and collect estimates  (Procurement action) - Vacuum Box, Tee, and Vertical Transfer Line",20.0,0.0,0.0,0.0,10-29-21,11-29-21,"AS_CDS_1130: FS, AS_CDS_1120: FS",AS_CDS_1150: FS,0,0,0,0,0,0,0.0,0.0,0,10-29-21,11-29-21,0,0.0h,0.0h,0%,$0,0.0h,389.0d,0,$0,$0,1.03_Accelerator Systems (AS),1.03.04_AS Cryogenic Distribution System (CDS),1.03.04.05_AS Cryogenic Distribution System Engineering and Design,1.03.04.05.02_CDS Preparation for CD-2/3,"AS_CDS_1140_Request For Information - Post and collect estimates  (Procurement action) - Vacuum Box, Tee, and Vertical Transfer Line"
298597,1.03,1.03.04,1.03.04.05,1.03.04.05.02,1.03.04.05.02,CDS Preparation for CD-2/3,AS_CDS_1160,Prepare Technical Package for Request For Information to develop BOE - FNL - Beam Tube,10.0,0.0,0.0,0.0,10-29-21,11-11-21,AS_CDS_1120: FS,"AS_CDS_1180: FS, AS_CDS_1170: SS",0,0,0,0,0,0,0.0,0.0,0,10-29-21,11-11-21,0,0.0h,0.0h,0%,$0,0.0h,379.0d,0,$0,$0,1.03_Accelerator Systems (AS),1.03.04_AS Cryogenic Distribution System (CDS),1.03.04.05_AS Cryogenic Distribution System Engineering and Design,1.03.04.05.02_CDS Preparation for CD-2/3,AS_CDS_1160_Prepare Technical Package for Request For Information to develop BOE - FNL - Beam Tube
298598,1.03,1.03.04,1.03.04.05,1.03.04.05.02,1.03.04.05.02,CDS Preparation for CD-2/3,AS_CDS_1110,Review data and compile into BOE - End Caps,5.0,0.0,0.0,0.0,11-12-21,11-18-21,AS_CDS_1100: FS,AS_CDS_9000: FS,0,0,0,0,0,0,0.0,0.0,0,11-12-21,11-18-21,0,0.0h,0.0h,0%,$0,0.0h,399.0d,0,$0,$0,1.03_Accelerator Systems (AS),1.03.04_AS Cryogenic Distribution System (CDS),1.03.04.05_AS Cryogenic Distribution System Engineering and Design,1.03.04.05.02_CDS Preparation for CD-2/3,AS_CDS_1110_Review data and compile into BOE - End Caps
298599,1.03,1.03.04,1.03.04.05,1.03.04.05.02,1.03.04.05.02,CDS Preparation for CD-2/3,AS_CDS_1180,Request For Information - Post and collect estimates  (Procurement action) - Beam Tube,20.0,0.0,0.0,0.0,11-12-21,12-13-21,"AS_CDS_1170: FS, AS_CDS_1160: FS",AS_CDS_1190: FS,0,0,0,0,0,0,0.0,0.0,0,11-12-21,12-13-21,0,0.0h,0.0h,0%,$0,0.0h,379.0d,0,$0,$0,1.03_Accelerator Systems (AS),1.03.04_AS Cryogenic Distribution System (CDS),1.03.04.05_AS Cryogenic Distribution System Engineering and Design,1.03.04.05.02_CDS Preparation for CD-2/3,AS_CDS_1180_Request For Information - Post and collect estimates  (Procurement action) - Beam Tube
298600,1.03,1.03.04,1.03.04.05,1.03.04.05.02,1.03.04.05.02,CDS Preparation for CD-2/3,AS_CDS_1150,"Review data and compile into BOE -Vacuum Box, Tee, and Vertical Transfer Line",5.0,0.0,0.0,0.0,11-30-21,12-06-21,AS_CDS_1140: FS,AS_CDS_9000: FS,0,0,0,0,0,0,0.0,0.0,0,11-30-21,12-06-21,0,0.0h,0.0h,0%,$0,0.0h,389.0d,0,$0,$0,1.03_Accelerator Systems (AS),1.03.04_AS Cryogenic Distribution System (CDS),1.03.04.05_AS Cryogenic Distribution System Engineering and Design,1.03.04.05.02_CDS Preparation for CD-2/3,"AS_CDS_1150_Review data and compile into BOE -Vacuum Box, Tee, and Vertical Transfer Line"
298601,1.03,1.03.04,1.03.04.05,1.03.04.05.02,1.03.04.05.02,CDS Preparation for CD-2/3,AS_CDS_1190,Review data and compile into BOE - Beam Tube,5.0,0.0,0.0,0.0,12-14-21,01-03-22,AS_CDS_1180: FS,AS_CDS_9000: FS,0,0,0,0,0,0,0.0,0.0,0,12-14-21,01-03-22,0,0.0h,0.0h,0%,$0,0.0h,379.0d,0,$0,$0,1.03_Accelerator Systems (AS),1.03.04_AS Cryogenic Distribution System (CDS),1.03.04.05_AS Cryogenic Distribution System Engineering and Design,1.03.04.05.02_CDS Preparation for CD-2/3,AS_CDS_1190_Review data and compile into BOE - Beam Tube
298602,1.03,1.03.04,1.03.04.05,1.03.04.05.10,1.03.04.05.10,Interface Box 3 - Design Package,AS_CDS_IB3_5070,COMP: Reference Design - Interface Box 3,0.0,0.0,0.0,0.0,0,02-10-22,AS_CDS_IB3_5060: FS,"AS_CDS_9000: FS, AS_CDS_IB_6010: FS, AS_M4_3065: FS",0,0,0,0,0,0,0.0,0.0,0,nn,02-10-22,DM-C06-30%,0.0h,0.0h,0%,$0,0.0h,352.0d,0,$0,$0,1.03_Accelerator Systems (AS),1.03.04_AS Cryogenic Distribution System (CDS),1.03.04.05_AS Cryogenic Distribution System Engineering and Design,1.03.04.05.10_Interface Box 3 - Design Package,AS_CDS_IB3_5070_COMP: Reference Design - Interface Box 3
298603,1.03,1.03.04,1.03.04.05,1.03.04.05.20,1.03.04.05.20,Transfer Line 3 - Design Package,AS_CDS_TL_5070,COMP: Reference Design - Transfer Line 3,0.0,0.0,0.0,0.0,0,01-27-22,AS_CDS_TL_5060: FS,"AS_CDS_TL_6000: FS, AS_CDS_9000: FS, AS_M4_3065: FS",0,0,0,0,0,0,0.0,0.0,0,nn,01-27-22,DM-C06-30%,0.0h,0.0h,0%,$0,0.0h,362.0d,0,$0,$0,1.03_Accelerator Systems (AS),1.03.04_AS Cryogenic Distribution System (CDS),1.03.04.05_AS Cryogenic Distribution System Engineering and Design,1.03.04.05.20_Transfer Line 3 - Design Package,AS_CDS_TL_5070_COMP: Reference Design - Transfer Line 3
298604,1.03,1.03.04,1.03.04.05,1.03.04.05.30,1.03.04.05.30,Distribution Box 3 - Design Package,AS_CDS_DB_5070,COMP: Reference Design - Distribution Box 3,0.0,0.0,0.0,0.0,0,0,AS_CDS_DB_5060: FS,"AS_CDS_DB_6010: FS, AS_CDS_9000: FS, AS_M4_3065: FS",0,0,0,0,0,0,0.0,0.0,0,nn,06-29-21,DM-C06-30%,0.0h,0.0h,100%,$0,0.0h,0,0,$0,$0,1.03_Accelerator Systems (AS),1.03.04_AS Cryogenic Distribution System (CDS),1.03.04.05_AS Cryogenic Distribution System Engineering and Design,1.03.04.05.30_Distribution Box 3 - Design Package,AS_CDS_DB_5070_COMP: Reference Design - Distribution Box 3
298605,1.03,1.03.04,1.03.04.05,1.03.04.05.40,1.03.04.05.40,Vertical Line 3 and Tee - Design Package,AS_CDS_VL_5070,COMP: Reference Design - Vertical Line 3 and Tee,0.0,0.0,0.0,0.0,0,03-28-22,AS_CDS_VL_5060: FS,"AS_CDS_VL_6010: FS, AS_M4_3065: FS",0,0,0,0,0,0,0.0,0.0,0,nn,03-28-22,DM-C06-30%,0.0h,0.0h,0%,$0,0.0h,1253.5d,0,$0,$0,1.03_Accelerator Systems (AS),1.03.04_AS Cryogenic Distribution System (CDS),1.03.04.05_AS Cryogenic Distribution System Engineering and Design,1.03.04.05.40_Vertical Line 3 and Tee - Design Package,AS_CDS_VL_5070_COMP: Reference Design - Vertical Line 3 and Tee
298606,1.03,1.03.04,1.03.04.05,1.03.04.05.50,1.03.04.05.50,Vacuum Box 2 - Design Package,AS_CDS_VB_5070,COMP: Reference Design - Vacuum Box 2,0.0,0.0,0.0,0.0,0,04-11-22,AS_CDS_VB_5060: FS,"AS_CDS_VB_6010: FS, AS_M4_3065: FS",0,0,0,0,0,0,0.0,0.0,0,nn,04-11-22,DM-C06-30%,0.0h,0.0h,0%,$0,0.0h,1404.5d,0,$0,$0,1.03_Accelerator Systems (AS),1.03.04_AS Cryogenic Distribution System (CDS),1.03.04.05_AS Cryogenic Distribution System Engineering and Design,1.03.04.05.50_Vacuum Box 2 - Design Package,AS_CDS_VB_5070_COMP: Reference Design - Vacuum Box 2
298607,1.03,1.03.04,1.03.04.05,1.03.04.05.60,1.03.04.05.60,End Caps (includes EC3 & Downstream One) - Design Package,AS_CDS_EC_5070,COMP: Reference Design - End Caps,0.0,0.0,0.0,0.0,0,02-10-22,AS_CDS_EC_5060: FS,"AS_CDS_EC_6010: FS, AS_CDS_9000: FS, AS_CDS_TU_5010: FS, AS_M4_3065: FS",0,0,0,0,0,0,0.0,0.0,0,nn,02-10-22,DM-C06-30%,0.0h,0.0h,0%,$0,0.0h,352.0d,0,$0,$0,1.03_Accelerator Systems (AS),1.03.04_AS Cryogenic Distribution System (CDS),1.03.04.05_AS Cryogenic Distribution System Engineering and Design,1.03.04.05.60_End Caps (includes EC3 & Downstream One) - Design Package,AS_CDS_EC_5070_COMP: Reference Design - End Caps
298608,1.03,1.03.04,1.03.04.05,1.03.04.05.70,1.03.04.05.70,Beam Tubes (ECs/Tee/VB) - Design Package,AS_CDS_BT_5070,COMP: Reference Design - Beam Tubes (ECs/Tee/VB),0.0,0.0,0.0,0.0,0,07-13-22,AS_CDS_BT_5060: FS,"AS_CDS_BT_6010: FS, AS_CDS_9000: FS, AS_CDS_TU_5010: FS, AS_M4_3065: FS",0,0,0,0,0,0,0.0,0.0,0,nn,07-13-22,0,0.0h,0.0h,0%,$0,0.0h,246.0d,0,$0,$0,1.03_Accelerator Systems (AS),1.03.04_AS Cryogenic Distribution System (CDS),1.03.04.05_AS Cryogenic Distribution System Engineering and Design,1.03.04.05.70_Beam Tubes (ECs/Tee/VB) - Design Package,AS_CDS_BT_5070_COMP: Reference Design - Beam Tubes (ECs/Tee/VB)
298609,1.03,1.03.04,1.03.04.05,1.03.04.05.91,1.03.04.05.91,Surface Components - Design Installation Package,AS_CDS_SU_5025,COMP: Installation Plan Preliminary Design - Surface Components Installation,0.0,0.0,0.0,0.0,0,06-16-23,AS_CDS_SU_5020: FS,AS_CDS_SU_5030: FS,0,0,0,0,0,0,0.0,0.0,0,nn,06-16-23,0,0.0h,0.0h,0%,$0,0.0h,1364.5d,0,$0,$0,1.03_Accelerator Systems (AS),1.03.04_AS Cryogenic Distribution System (CDS),1.03.04.05_AS Cryogenic Distribution System Engineering and Design,1.03.04.05.91_Surface Components - Design Installation Package,AS_CDS_SU_5025_COMP: Installation Plan Preliminary Design - Surface Components Installation
298610,1.03,1.03.04,1.03.04.05,1.03.04.05.91,1.03.04.05.91,Surface Components - Design Installation Package,AS_CDS_SU_5070,COMP: Installation Plan Design Final - Surface Components Installation,0.0,0.0,0.0,0.0,0,11-09-23,AS_CDS_SU_5060: FS,AS_CDS_IB_9100: FS,0,0,0,0,0,0,0.0,0.0,0,nn,11-09-23,0,0.0h,0.0h,0%,$0,0.0h,1364.5d,0,$0,$0,1.03_Accelerator Systems (AS),1.03.04_AS Cryogenic Distribution System (CDS),1.03.04.05_AS Cryogenic Distribution System Engineering and Design,1.03.04.05.91_Surface Components - Design Installation Package,AS_CDS_SU_5070_COMP: Installation Plan Design Final - Surface Components Installation
298611,1.03,1.03.04,1.03.04.05,1.03.04.05.92,1.03.04.05.92,Tunnel Components - Design Installation Package,AS_CDS_TU_5025,COMP: Installation Plan Design Preliminary - Tunnel Components Installation,0.0,0.0,0.0,0.0,0,09-06-23,AS_CDS_TU_5020: FS,AS_CDS_TU_5030: FS,0,0,0,0,0,0,0.0,0.0,0,nn,09-06-23,0,0.0h,0.0h,0%,$0,0.0h,1547.5d,0,$0,$0,1.03_Accelerator Systems (AS),1.03.04_AS Cryogenic Distribution System (CDS),1.03.04.05_AS Cryogenic Distribution System Engineering and Design,1.03.04.05.92_Tunnel Components - Design Installation Package,AS_CDS_TU_5025_COMP: Installation Plan Design Preliminary - Tunnel Components Installation
298612,1.03,1.03.04,1.03.04.05,1.03.04.05.92,1.03.04.05.92,Tunnel Components - Design Installation Package,AS_CDS_TU_5070,COMP: Installation Plan Design Final - Tunnel Components Installation,0.0,0.0,0.0,0.0,0,05-01-24,AS_CDS_TU_5060: FS,"AS_CDS_EC3_9100: FS, AS_CDS_EC4_9100: FS",0,0,0,0,0,0,0.0,0.0,0,nn,05-01-24,0,0.0h,0.0h,0%,$0,0.0h,1494.5d,0,$0,$0,1.03_Accelerator Systems (AS),1.03.04_AS Cryogenic Distribution System (CDS),1.03.04.05_AS Cryogenic Distribution System Engineering and Design,1.03.04.05.92_Tunnel Components - Design Installation Package,AS_CDS_TU_5070_COMP: Installation Plan Design Final - Tunnel Components Installation
298613,1.03,1.03.04,1.03.04.06,1.03.04.06.10,1.03.04.06.10,Interface Box 3 - Procurement & Fab,AS_CDS_IB_6040,SLAC legal review/approve RFP - Interface Box 3,5.0,0.0,0.0,0.0,06-09-22,06-15-22,AS_CDS_IB_6030: FS,AS_CDS_IB_6050: FS,0,0,0,0,0,0,0.0,0.0,0,06-09-22,06-15-22,0,0.0h,0.0h,0%,$0,0.0h,1195.5d,0,$0,$0,1.03_Accelerator Systems (AS),1.03.04_AS Cryogenic Distribution System (CDS),1.03.04.06_AS Cryogenic Distribution System Procurement and Fabrication,1.03.04.06.10_Interface Box 3 - Procurement & Fab,AS_CDS_IB_6040_SLAC legal review/approve RFP - Interface Box 3
298614,1.03,1.03.04,1.03.04.06,1.03.04.06.10,1.03.04.06.10,Interface Box 3 - Procurement & Fab,AS_CDS_IB_6050,Release RFP - Interface Box 3,5.0,0.0,0.0,0.0,06-16-22,06-22-22,AS_CDS_IB_6040: FS,AS_CDS_IB_6060: FS,0,0,0,0,0,0,0.0,0.0,0,06-16-22,06-22-22,0,0.0h,0.0h,0%,$0,0.0h,1195.5d,0,$0,$0,1.03_Accelerator Systems (AS),1.03.04_AS Cryogenic Distribution System (CDS),1.03.04.06_AS Cryogenic Distribution System Procurement and Fabrication,1.03.04.06.10_Interface Box 3 - Procurement & Fab,AS_CDS_IB_6050_Release RFP - Interface Box 3
298615,1.03,1.03.04,1.03.04.06,1.03.04.06.10,1.03.04.06.10,Interface Box 3 - Procurement & Fab,AS_CDS_IB_6060,Vendor Proposal Effort - Interface Box 3,35.0,0.0,0.0,0.0,06-23-22,08-11-22,AS_CDS_IB_6050: FS,AS_CDS_IB_6070: FS,0,0,0,0,0,0,0.0,0.0,0,06-23-22,08-11-22,0,0.0h,0.0h,0%,$0,0.0h,1195.5d,0,$0,$0,1.03_Accelerator Systems (AS),1.03.04_AS Cryogenic Distribution System (CDS),1.03.04.06_AS Cryogenic Distribution System Procurement and Fabrication,1.03.04.06.10_Interface Box 3 - Procurement & Fab,AS_CDS_IB_6060_Vendor Proposal Effort - Interface Box 3
298616,1.03,1.03.04,1.03.04.06,1.03.04.06.10,1.03.04.06.10,Interface Box 3 - Procurement & Fab,AS_CDS_IB_6070,RCV: Vendor Proposal - Interface Box 3,0.0,0.0,0.0,0.0,0,08-11-22,AS_CDS_IB_6060: FS,AS_CDS_IB_6080: FS,0,0,0,0,0,0,0.0,0.0,0,nn,08-11-22,0,0.0h,0.0h,0%,$0,0.0h,1195.5d,0,$0,$0,1.03_Accelerator Systems (AS),1.03.04_AS Cryogenic Distribution System (CDS),1.03.04.06_AS Cryogenic Distribution System Procurement and Fabrication,1.03.04.06.10_Interface Box 3 - Procurement & Fab,AS_CDS_IB_6070_RCV: Vendor Proposal - Interface Box 3
298617,1.03,1.03.04,1.03.04.06,1.03.04.06.10,1.03.04.06.10,Interface Box 3 - Procurement & Fab,AS_CDS_IB_6090,Prepare Award Documents - Interface Box 3,5.0,0.0,0.0,0.0,10-31-22,11-04-22,AS_CDS_IB_6080: FS,AS_CDS_IB_6100: FS,0,0,0,0,0,0,0.0,0.0,0,10-31-22,11-04-22,0,0.0h,0.0h,0%,$0,0.0h,1195.5d,0,$0,$0,1.03_Accelerator Systems (AS),1.03.04_AS Cryogenic Distribution System (CDS),1.03.04.06_AS Cryogenic Distribution System Procurement and Fabrication,1.03.04.06.10_Interface Box 3 - Procurement & Fab,AS_CDS_IB_6090_Prepare Award Documents - Interface Box 3
298618,1.03,1.03.04,1.03.04.06,1.03.04.06.10,1.03.04.06.10,Interface Box 3 - Procurement & Fab,AS_CDS_IB_6100,(Foreign Only) Buy American ACT Review - Interface Box 3,10.0,0.0,0.0,0.0,11-07-22,11-18-22,AS_CDS_IB_6090: FS,AS_CDS_IB_6110: FS,0,0,0,0,0,0,0.0,0.0,0,11-07-22,11-18-22,0,0.0h,0.0h,0%,$0,0.0h,1195.5d,0,$0,$0,1.03_Accelerator Systems (AS),1.03.04_AS Cryogenic Distribution System (CDS),1.03.04.06_AS Cryogenic Distribution System Procurement and Fabrication,1.03.04.06.10_Interface Box 3 - Procurement & Fab,AS_CDS_IB_6100_(Foreign Only) Buy American ACT Review - Interface Box 3
298619,1.03,1.03.04,1.03.04.06,1.03.04.06.10,1.03.04.06.10,Interface Box 3 - Procurement & Fab,AS_CDS_IB_6110,SLAC legal review/approve Award docs - Interface Box 3,5.0,0.0,0.0,0.0,11-21-22,11-29-22,AS_CDS_IB_6100: FS,AS_CDS_IB_6120: FS,0,0,0,0,0,0,0.0,0.0,0,11-21-22,11-29-22,0,0.0h,0.0h,0%,$0,0.0h,1195.5d,0,$0,$0,1.03_Accelerator Systems (AS),1.03.04_AS Cryogenic Distribution System (CDS),1.03.04.06_AS Cryogenic Distribution System Procurement and Fabrication,1.03.04.06.10_Interface Box 3 - Procurement & Fab,AS_CDS_IB_6110_SLAC legal review/approve Award docs - Interface Box 3
298620,1.03,1.03.04,1.03.04.06,1.03.04.06.10,1.03.04.06.10,Interface Box 3 - Procurement & Fab,AS_CDS_IB_6130,Contractor Effort: Preliminary Design based on SLAC Reference Design - Interface Box 3,60.0,0.0,0.0,0.0,12-01-22,03-10-23,AS_CDS_IB_6120: FS,"AS_CDS_IB_6150: FS, AS_CDS_IB_6140: SS",0,0,0,0,0,0,0.0,0.0,0,12-01-22,03-10-23,0,0.0h,0.0h,0%,$0,0.0h,1195.5d,0,$0,$0,1.03_Accelerator Systems (AS),1.03.04_AS Cryogenic Distribution System (CDS),1.03.04.06_AS Cryogenic Distribution System Procurement and Fabrication,1.03.04.06.10_Interface Box 3 - Procurement & Fab,AS_CDS_IB_6130_Contractor Effort: Preliminary Design based on SLAC Reference Design - Interface Box 3
298621,1.03,1.03.04,1.03.04.06,1.03.04.06.10,1.03.04.06.10,Interface Box 3 - Procurement & Fab,AS_CDS_IB_6160,Contractor Effort: Update Preliminary Design and Develop Final Design - Interface Box 3,100.0,0.0,0.0,0.0,03-15-23,08-03-23,AS_CDS_IB_6150: FS,AS_CDS_IB_6170: FS,0,0,0,0,0,0,0.0,0.0,0,03-15-23,08-03-23,0,0.0h,0.0h,0%,$0,0.0h,1195.5d,0,$0,$0,1.03_Accelerator Systems (AS),1.03.04_AS Cryogenic Distribution System (CDS),1.03.04.06_AS Cryogenic Distribution System Procurement and Fabrication,1.03.04.06.10_Interface Box 3 - Procurement & Fab,AS_CDS_IB_6160_Contractor Effort: Update Preliminary Design and Develop Final Design - Interface Box 3
298622,1.03,1.03.04,1.03.04.06,1.03.04.06.10,1.03.04.06.10,Interface Box 3 - Procurement & Fab,AS_CDS_IB_6173,Design Closeout - Interface Box 3,10.0,0.0,0.0,0.0,08-08-23,08-21-23,AS_CDS_IB_6170: FS,AS_CDS_IB_6175: FS,0,0,0,0,0,0,0.0,0.0,0,08-08-23,08-21-23,DM-C14-10%,0.0h,0.0h,0%,$0,0.0h,1195.5d,0,$0,$0,1.03_Accelerator Systems (AS),1.03.04_AS Cryogenic Distribution System (CDS),1.03.04.06_AS Cryogenic Distribution System Procurement and Fabrication,1.03.04.06.10_Interface Box 3 - Procurement & Fab,AS_CDS_IB_6173_Design Closeout - Interface Box 3
298623,1.03,1.03.04,1.03.04.06,1.03.04.06.10,1.03.04.06.10,Interface Box 3 - Procurement & Fab,AS_CDS_IB_6190,Contractor Effort: Complete Shop Drawings and Fabricate - Interface Box 3,180.0,0.0,0.0,0.0,10-04-23,07-03-24,"AS_CDS_IB_6170: FS, AS_CDS_IB_6180: FS",AS_CDS_IB_6210: FS,0,0,0,0,0,0,0.0,0.0,0,10-04-23,07-03-24,0,0.0h,0.0h,0%,$0,0.0h,1168.5d,0,$0,$0,1.03_Accelerator Systems (AS),1.03.04_AS Cryogenic Distribution System (CDS),1.03.04.06_AS Cryogenic Distribution System Procurement and Fabrication,1.03.04.06.10_Interface Box 3 - Procurement & Fab,AS_CDS_IB_6190_Contractor Effort: Complete Shop Drawings and Fabricate - Interface Box 3
298624,1.03,1.03.04,1.03.04.06,1.03.04.06.10,1.03.04.06.10,Interface Box 3 - Procurement & Fab,AS_CDS_IB_6240,COMP: Procurement - Interface Box 3,0.0,0.0,0.0,0.0,0,09-04-24,"AS_CDS_IB_6230: FS, AS_CDS_IB_6200: FS","AS_CDS_IB_9100: FS, AS_CDS_DB_9100: FS",0,0,0,0,0,0,0.0,0.0,0,nn,09-04-24,0,0.0h,0.0h,0%,$0,0.0h,1168.5d,0,$0,$0,1.03_Accelerator Systems (AS),1.03.04_AS Cryogenic Distribution System (CDS),1.03.04.06_AS Cryogenic Distribution System Procurement and Fabrication,1.03.04.06.10_Interface Box 3 - Procurement & Fab,AS_CDS_IB_6240_COMP: Procurement - Interface Box 3
298625,1.03,1.03.04,1.03.04.06,1.03.04.06.20,1.03.04.06.20,Transfer Line 3 - Procurement & Fab,AS_CDS_TL_6030,SLAC legal review/approve RFP - Transfer Line 3,5.0,0.0,0.0,0.0,08-11-22,08-17-22,AS_CDS_TL_6020: FS,AS_CDS_TL_6040: FS,0,0,0,0,0,0,0.0,0.0,0,08-11-22,08-17-22,0,0.0h,0.0h,0%,$0,0.0h,1298.5d,0,$0,$0,1.03_Accelerator Systems (AS),1.03.04_AS Cryogenic Distribution System (CDS),1.03.04.06_AS Cryogenic Distribution System Procurement and Fabrication,1.03.04.06.20_Transfer Line 3 - Procurement & Fab,AS_CDS_TL_6030_SLAC legal review/approve RFP - Transfer Line 3
298626,1.03,1.03.04,1.03.04.06,1.03.04.06.20,1.03.04.06.20,Transfer Line 3 - Procurement & Fab,AS_CDS_TL_6040,Release RFP - Transfer Line 3,5.0,0.0,0.0,0.0,08-18-22,08-24-22,AS_CDS_TL_6030: FS,AS_CDS_TL_6050: FS,0,0,0,0,0,0,0.0,0.0,0,08-18-22,08-24-22,0,0.0h,0.0h,0%,$0,0.0h,1298.5d,0,$0,$0,1.03_Accelerator Systems (AS),1.03.04_AS Cryogenic Distribution System (CDS),1.03.04.06_AS Cryogenic Distribution System Procurement and Fabrication,1.03.04.06.20_Transfer Line 3 - Procurement & Fab,AS_CDS_TL_6040_Release RFP - Transfer Line 3
298627,1.03,1.03.04,1.03.04.06,1.03.04.06.20,1.03.04.06.20,Transfer Line 3 - Procurement & Fab,AS_CDS_TL_6050,Vendor Proposal Effort - Transfer Line 3,35.0,0.0,0.0,0.0,08-25-22,10-13-22,AS_CDS_TL_6040: FS,AS_CDS_TL_6060: FS,0,0,0,0,0,0,0.0,0.0,0,08-25-22,10-13-22,0,0.0h,0.0h,0%,$0,0.0h,1298.5d,0,$0,$0,1.03_Accelerator Systems (AS),1.03.04_AS Cryogenic Distribution System (CDS),1.03.04.06_AS Cryogenic Distribution System Procurement and Fabrication,1.03.04.06.20_Transfer Line 3 - Procurement & Fab,AS_CDS_TL_6050_Vendor Proposal Effort - Transfer Line 3
298628,1.03,1.03.04,1.03.04.06,1.03.04.06.20,1.03.04.06.20,Transfer Line 3 - Procurement & Fab,AS_CDS_TL_6060,RCV: Vendor Proposal - Transfer Line 3,0.0,0.0,0.0,0.0,0,10-13-22,AS_CDS_TL_6050: FS,AS_CDS_TL_6070: FS,0,0,0,0,0,0,0.0,0.0,0,nn,10-13-22,0,0.0h,0.0h,0%,$0,0.0h,1298.5d,0,$0,$0,1.03_Accelerator Systems (AS),1.03.04_AS Cryogenic Distribution System (CDS),1.03.04.06_AS Cryogenic Distribution System Procurement and Fabrication,1.03.04.06.20_Transfer Line 3 - Procurement & Fab,AS_CDS_TL_6060_RCV: Vendor Proposal - Transfer Line 3
298629,1.03,1.03.04,1.03.04.06,1.03.04.06.20,1.03.04.06.20,Transfer Line 3 - Procurement & Fab,AS_CDS_TL_6080,Prepare Award Documents - Transfer Line 3,5.0,0.0,0.0,0.0,01-18-23,01-24-23,AS_CDS_TL_6070: FS,AS_CDS_TL_6090: FS,0,0,0,0,0,0,0.0,0.0,0,01-18-23,01-24-23,0,0.0h,0.0h,0%,$0,0.0h,1298.5d,0,$0,$0,1.03_Accelerator Systems (AS),1.03.04_AS Cryogenic Distribution System (CDS),1.03.04.06_AS Cryogenic Distribution System Procurement and Fabrication,1.03.04.06.20_Transfer Line 3 - Procurement & Fab,AS_CDS_TL_6080_Prepare Award Documents - Transfer Line 3
298630,1.03,1.03.04,1.03.04.06,1.03.04.06.20,1.03.04.06.20,Transfer Line 3 - Procurement & Fab,AS_CDS_TL_6090,(Foreign Only) Buy American ACT Review - Transfer Line 3,10.0,0.0,0.0,0.0,01-25-23,02-07-23,AS_CDS_TL_6080: FS,AS_CDS_TL_6100: FS,0,0,0,0,0,0,0.0,0.0,0,01-25-23,02-07-23,0,0.0h,0.0h,0%,$0,0.0h,1298.5d,0,$0,$0,1.03_Accelerator Systems (AS),1.03.04_AS Cryogenic Distribution System (CDS),1.03.04.06_AS Cryogenic Distribution System Procurement and Fabrication,1.03.04.06.20_Transfer Line 3 - Procurement & Fab,AS_CDS_TL_6090_(Foreign Only) Buy American ACT Review - Transfer Line 3
298631,1.03,1.03.04,1.03.04.06,1.03.04.06.20,1.03.04.06.20,Transfer Line 3 - Procurement & Fab,AS_CDS_TL_6100,SLAC legal review/approve Award docs - Transfer Line 3,5.0,0.0,0.0,0.0,02-08-23,02-14-23,AS_CDS_TL_6090: FS,AS_CDS_TL_6110: FS,0,0,0,0,0,0,0.0,0.0,0,02-08-23,02-14-23,0,0.0h,0.0h,0%,$0,0.0h,1298.5d,0,$0,$0,1.03_Accelerator Systems (AS),1.03.04_AS Cryogenic Distribution System (CDS),1.03.04.06_AS Cryogenic Distribution System Procurement and Fabrication,1.03.04.06.20_Transfer Line 3 - Procurement & Fab,AS_CDS_TL_6100_SLAC legal review/approve Award docs - Transfer Line 3
298632,1.03,1.03.04,1.03.04.06,1.03.04.06.20,1.03.04.06.20,Transfer Line 3 - Procurement & Fab,AS_CDS_TL_6120,Contractor Effort:  Preliminary Design based on SLAC Reference Design - Transfer Line 3,70.0,0.0,0.0,0.0,02-16-23,05-25-23,AS_CDS_TL_6110: FS,"AS_CDS_TL_6130: SS, AS_CDS_TL_6140: FS",0,0,0,0,0,0,0.0,0.0,0,02-16-23,05-25-23,0,0.0h,0.0h,0%,$0,0.0h,1298.5d,0,$0,$0,1.03_Accelerator Systems (AS),1.03.04_AS Cryogenic Distribution System (CDS),1.03.04.06_AS Cryogenic Distribution System Procurement and Fabrication,1.03.04.06.20_Transfer Line 3 - Procurement & Fab,AS_CDS_TL_6120_Contractor Effort:  Preliminary Design based on SLAC Reference Design - Transfer Line 3
298633,1.03,1.03.04,1.03.04.06,1.03.04.06.20,1.03.04.06.20,Transfer Line 3 - Procurement & Fab,AS_CDS_TL_6150,Contractor Effort: Update Preliminary Design and Develop Final Design - Transfer Line 3,70.0,0.0,0.0,0.0,05-31-23,09-07-23,AS_CDS_TL_6140: FS,AS_CDS_TL_6160: FS,0,0,0,0,0,0,0.0,0.0,0,05-31-23,09-07-23,0,0.0h,0.0h,0%,$0,0.0h,1298.5d,0,$0,$0,1.03_Accelerator Systems (AS),1.03.04_AS Cryogenic Distribution System (CDS),1.03.04.06_AS Cryogenic Distribution System Procurement and Fabrication,1.03.04.06.20_Transfer Line 3 - Procurement & Fab,AS_CDS_TL_6150_Contractor Effort: Update Preliminary Design and Develop Final Design - Transfer Line 3
298634,1.03,1.03.04,1.03.04.06,1.03.04.06.20,1.03.04.06.20,Transfer Line 3 - Procurement & Fab,AS_CDS_TL_6163,Design Closeout - Transfer Line 3,10.0,0.0,0.0,0.0,09-12-23,09-25-23,AS_CDS_TL_6160: FS,AS_CDS_TL_6165: FS,0,0,0,0,0,0,0.0,0.0,0,09-12-23,09-25-23,DM-C14-10%,0.0h,0.0h,0%,$0,0.0h,1298.5d,0,$0,$0,1.03_Accelerator Systems (AS),1.03.04_AS Cryogenic Distribution System (CDS),1.03.04.06_AS Cryogenic Distribution System Procurement and Fabrication,1.03.04.06.20_Transfer Line 3 - Procurement & Fab,AS_CDS_TL_6163_Design Closeout - Transfer Line 3
298635,1.03,1.03.04,1.03.04.06,1.03.04.06.20,1.03.04.06.20,Transfer Line 3 - Procurement & Fab,AS_CDS_TL_6180,Contractor Effort: Complete Shop Drawings and Fabricate - Transfer Line 3,220.0,0.0,0.0,0.0,10-04-23,08-29-24,"AS_CDS_TL_6160: FS, AS_CDS_TL_6170: FS",AS_CDS_TL_6200: FS,0,0,0,0,0,0,0.0,0.0,0,10-04-23,08-29-24,0,0.0h,0.0h,0%,$0,0.0h,1295.5d,0,$0,$0,1.03_Accelerator Systems (AS),1.03.04_AS Cryogenic Distribution System (CDS),1.03.04.06_AS Cryogenic Distribution System Procurement and Fabrication,1.03.04.06.20_Transfer Line 3 - Procurement & Fab,AS_CDS_TL_6180_Contractor Effort: Complete Shop Drawings and Fabricate - Transfer Line 3
298636,1.03,1.03.04,1.03.04.06,1.03.04.06.20,1.03.04.06.20,Transfer Line 3 - Procurement & Fab,AS_CDS_TL_6230,COMP: Procurement Transfer Line 3,0.0,0.0,0.0,0.0,0,11-27-24,"AS_CDS_TL_6220: FS, AS_CDS_TL_6190: FS",AS_CDS_TL_9010: FS,0,0,0,0,0,0,0.0,0.0,0,nn,11-27-24,0,0.0h,0.0h,0%,$0,0.0h,1295.5d,0,$0,$0,1.03_Accelerator Systems (AS),1.03.04_AS Cryogenic Distribution System (CDS),1.03.04.06_AS Cryogenic Distribution System Procurement and Fabrication,1.03.04.06.20_Transfer Line 3 - Procurement & Fab,AS_CDS_TL_6230_COMP: Procurement Transfer Line 3
298637,1.03,1.03.04,1.03.04.06,1.03.04.06.30,1.03.04.06.30,Distribution Box 3 - Procurement & Fab,AS_CDS_DB_6040,SLAC legal review/approve RFP - Distribution Box 3,5.0,0.0,0.0,0.0,0,0,AS_CDS_DB_6030: FS,AS_CDS_DB_6050: FS,0,0,0,0,0,0,0.0,0.0,0,10-07-21,10-13-21,0,0.0h,0.0h,100%,$0,0.0h,0,0,$0,$0,1.03_Accelerator Systems (AS),1.03.04_AS Cryogenic Distribution System (CDS),1.03.04.06_AS Cryogenic Distribution System Procurement and Fabrication,1.03.04.06.30_Distribution Box 3 - Procurement & Fab,AS_CDS_DB_6040_SLAC legal review/approve RFP - Distribution Box 3
298638,1.03,1.03.04,1.03.04.06,1.03.04.06.30,1.03.04.06.30,Distribution Box 3 - Procurement & Fab,AS_CDS_DB_6050,Release RFP - Distribution Box 3,5.0,0.0,0.0,0.0,0,0,AS_CDS_DB_6040: FS,AS_CDS_DB_6060: FS,0,0,0,0,0,0,0.0,0.0,0,10-14-21,10-20-21,0,0.0h,0.0h,100%,$0,0.0h,0,0,$0,$0,1.03_Accelerator Systems (AS),1.03.04_AS Cryogenic Distribution System (CDS),1.03.04.06_AS Cryogenic Distribution System Procurement and Fabrication,1.03.04.06.30_Distribution Box 3 - Procurement & Fab,AS_CDS_DB_6050_Release RFP - Distribution Box 3
298639,1.03,1.03.04,1.03.04.06,1.03.04.06.30,1.03.04.06.30,Distribution Box 3 - Procurement & Fab,AS_CDS_DB_6060,Vendor Proposal Effort - Distribution Box 3,10.0,0.0,0.0,0.0,10-01-21,10-14-21,AS_CDS_DB_6050: FS,AS_CDS_DB_6070: FS,0,0,0,0,0,0,0.0,0.0,0,10-01-21,10-14-21,0,0.0h,0.0h,0%,$0,0.0h,1581.5d,0,$0,$0,1.03_Accelerator Systems (AS),1.03.04_AS Cryogenic Distribution System (CDS),1.03.04.06_AS Cryogenic Distribution System Procurement and Fabrication,1.03.04.06.30_Distribution Box 3 - Procurement & Fab,AS_CDS_DB_6060_Vendor Proposal Effort - Distribution Box 3
298640,1.03,1.03.04,1.03.04.06,1.03.04.06.30,1.03.04.06.30,Distribution Box 3 - Procurement & Fab,AS_CDS_DB_6070,RCV: Vendor Proposal - Distribution Box 3,0.0,0.0,0.0,0.0,0,10-14-21,AS_CDS_DB_6060: FS,AS_CDS_DB_6080: FS,0,0,0,0,0,0,0.0,0.0,0,nn,10-14-21,0,0.0h,0.0h,0%,$0,0.0h,1581.5d,0,$0,$0,1.03_Accelerator Systems (AS),1.03.04_AS Cryogenic Distribution System (CDS),1.03.04.06_AS Cryogenic Distribution System Procurement and Fabrication,1.03.04.06.30_Distribution Box 3 - Procurement & Fab,AS_CDS_DB_6070_RCV: Vendor Proposal - Distribution Box 3
298641,1.03,1.03.04,1.03.04.06,1.03.04.06.30,1.03.04.06.30,Distribution Box 3 - Procurement & Fab,AS_CDS_DB_6090,Prepare Award Documents - Distribution Box 3,1.0,0.0,0.0,0.0,10-29-21,10-29-21,AS_CDS_DB_6080: FS,AS_CDS_DB_6100: FS,0,0,0,0,0,0,0.0,0.0,0,10-29-21,10-29-21,0,0.0h,0.0h,0%,$0,0.0h,1581.5d,0,$0,$0,1.03_Accelerator Systems (AS),1.03.04_AS Cryogenic Distribution System (CDS),1.03.04.06_AS Cryogenic Distribution System Procurement and Fabrication,1.03.04.06.30_Distribution Box 3 - Procurement & Fab,AS_CDS_DB_6090_Prepare Award Documents - Distribution Box 3
298642,1.03,1.03.04,1.03.04.06,1.03.04.06.30,1.03.04.06.30,Distribution Box 3 - Procurement & Fab,AS_CDS_DB_6100,(Foreign Only) Buy American ACT Review - Distribution Box 3,0.0,0.0,0.0,0.0,11-01-21,11-01-21,AS_CDS_DB_6090: FS,AS_CDS_DB_6110: FS,0,0,0,0,0,0,0.0,0.0,0,11-01-21,11-01-21,0,0.0h,0.0h,0%,$0,0.0h,1581.5d,0,$0,$0,1.03_Accelerator Systems (AS),1.03.04_AS Cryogenic Distribution System (CDS),1.03.04.06_AS Cryogenic Distribution System Procurement and Fabrication,1.03.04.06.30_Distribution Box 3 - Procurement & Fab,AS_CDS_DB_6100_(Foreign Only) Buy American ACT Review - Distribution Box 3
298643,1.03,1.03.04,1.03.04.06,1.03.04.06.30,1.03.04.06.30,Distribution Box 3 - Procurement & Fab,AS_CDS_DB_6110,SLAC legal review/approve Award docs - Distribution Box 3,5.0,0.0,0.0,0.0,11-01-21,11-05-21,AS_CDS_DB_6100: FS,AS_CDS_DB_6120: FS,0,0,0,0,0,0,0.0,0.0,0,11-01-21,11-05-21,0,0.0h,0.0h,0%,$0,0.0h,1581.5d,0,$0,$0,1.03_Accelerator Systems (AS),1.03.04_AS Cryogenic Distribution System (CDS),1.03.04.06_AS Cryogenic Distribution System Procurement and Fabrication,1.03.04.06.30_Distribution Box 3 - Procurement & Fab,AS_CDS_DB_6110_SLAC legal review/approve Award docs - Distribution Box 3
298644,1.03,1.03.04,1.03.04.06,1.03.04.06.30,1.03.04.06.30,Distribution Box 3 - Procurement & Fab,AS_CDS_DB_6130,Contractor Effort:  Preliminary Design based on SLAC Reference Design -  Distribution Box 3,70.0,0.0,0.0,0.0,11-09-21,03-04-22,AS_CDS_DB_6120: FS,"AS_CDS_DB_6140: SS, AS_CDS_DB_6150: FS",0,0,0,0,0,0,0.0,0.0,0,11-09-21,03-04-22,0,0.0h,0.0h,0%,$0,0.0h,1581.5d,0,$0,$0,1.03_Accelerator Systems (AS),1.03.04_AS Cryogenic Distribution System (CDS),1.03.04.06_AS Cryogenic Distribution System Procurement and Fabrication,1.03.04.06.30_Distribution Box 3 - Procurement & Fab,AS_CDS_DB_6130_Contractor Effort:  Preliminary Design based on SLAC Reference Design -  Distribution Box 3
298645,1.03,1.03.04,1.03.04.06,1.03.04.06.30,1.03.04.06.30,Distribution Box 3 - Procurement & Fab,AS_CDS_DB_6160,Contractor Effort: Update Preliminary Design and Develop Final Design -  Distribution Box 3,70.0,0.0,0.0,0.0,03-09-22,06-15-22,AS_CDS_DB_6150: FS,AS_CDS_DB_6170: FS,0,0,0,0,0,0,0.0,0.0,0,03-09-22,06-15-22,0,0.0h,0.0h,0%,$0,0.0h,1581.5d,0,$0,$0,1.03_Accelerator Systems (AS),1.03.04_AS Cryogenic Distribution System (CDS),1.03.04.06_AS Cryogenic Distribution System Procurement and Fabrication,1.03.04.06.30_Distribution Box 3 - Procurement & Fab,AS_CDS_DB_6160_Contractor Effort: Update Preliminary Design and Develop Final Design -  Distribution Box 3
298646,1.03,1.03.04,1.03.04.06,1.03.04.06.30,1.03.04.06.30,Distribution Box 3 - Procurement & Fab,AS_CDS_DB_6173,Design Closeout - Distribution Box 3,10.0,0.0,0.0,0.0,06-20-22,07-01-22,AS_CDS_DB_6170: FS,AS_CDS_DB_6175: FS,0,0,0,0,0,0,0.0,0.0,0,06-20-22,07-01-22,DM-C14-10%,0.0h,0.0h,0%,$0,0.0h,1581.5d,0,$0,$0,1.03_Accelerator Systems (AS),1.03.04_AS Cryogenic Distribution System (CDS),1.03.04.06_AS Cryogenic Distribution System Procurement and Fabrication,1.03.04.06.30_Distribution Box 3 - Procurement & Fab,AS_CDS_DB_6173_Design Closeout - Distribution Box 3
298647,1.03,1.03.04,1.03.04.06,1.03.04.06.30,1.03.04.06.30,Distribution Box 3 - Procurement & Fab,AS_CDS_DB_6190,Contractor Effort: Complete Shop Drawings and Fabricate  -  Distribution Box 3,310.0,0.0,0.0,0.0,10-03-23,01-21-25,"AS_CDS_DB_6170: FS, AS_CDS_DB_6180: FS",AS_CDS_DB_6210: FS,0,0,0,0,0,0,0.0,0.0,0,10-03-23,01-21-25,0,0.0h,0.0h,0%,$0,0.0h,1276.5d,0,$0,$0,1.03_Accelerator Systems (AS),1.03.04_AS Cryogenic Distribution System (CDS),1.03.04.06_AS Cryogenic Distribution System Procurement and Fabrication,1.03.04.06.30_Distribution Box 3 - Procurement & Fab,AS_CDS_DB_6190_Contractor Effort: Complete Shop Drawings and Fabricate  -  Distribution Box 3
298648,1.03,1.03.04,1.03.04.06,1.03.04.06.30,1.03.04.06.30,Distribution Box 3 - Procurement & Fab,AS_CDS_DB_6215,RQD:  Klystron Gallery prepared to receive Distribution Box - From 1.06,0.0,0.0,0.0,0.0,0,01-23-25,"AS_CDS_DB_6210: FS, IF_LPI_SDT1_1140: FS",AS_CDS_DB_6220: FS,0,0,0,0,0,0,0.0,0.0,0,nn,01-23-25,0,0.0h,0.0h,0%,$0,0.0h,1276.5d,0,$0,$0,1.03_Accelerator Systems (AS),1.03.04_AS Cryogenic Distribution System (CDS),1.03.04.06_AS Cryogenic Distribution System Procurement and Fabrication,1.03.04.06.30_Distribution Box 3 - Procurement & Fab,AS_CDS_DB_6215_RQD:  Klystron Gallery prepared to receive Distribution Box - From 1.06
298649,1.03,1.03.04,1.03.04.06,1.03.04.06.30,1.03.04.06.30,Distribution Box 3 - Procurement & Fab,AS_CDS_DB_6240,COMP: Procurement - Distribution Box 3,0.0,0.0,0.0,0.0,0,02-07-25,"AS_CDS_DB_6230: FS, AS_CDS_DB_6200: FS",AS_CDS_DB_9010: FS,0,0,0,0,0,0,0.0,0.0,0,nn,02-07-25,0,0.0h,0.0h,0%,$0,0.0h,1276.5d,0,$0,$0,1.03_Accelerator Systems (AS),1.03.04_AS Cryogenic Distribution System (CDS),1.03.04.06_AS Cryogenic Distribution System Procurement and Fabrication,1.03.04.06.30_Distribution Box 3 - Procurement & Fab,AS_CDS_DB_6240_COMP: Procurement - Distribution Box 3
298650,1.03,1.03.04,1.03.04.06,1.03.04.06.40,1.03.04.06.40,Vertical Line 3 and Tee - Procurement & Fab,AS_CDS_VL_6040,SLAC legal review/approve RFP - Vertical Line 3 and Tee,5.0,0.0,0.0,0.0,07-22-22,07-28-22,AS_CDS_VL_6030: FS,AS_CDS_VL_6050: FS,0,0,0,0,0,0,0.0,0.0,0,07-22-22,07-28-22,0,0.0h,0.0h,0%,$0,0.0h,1253.5d,0,$0,$0,1.03_Accelerator Systems (AS),1.03.04_AS Cryogenic Distribution System (CDS),1.03.04.06_AS Cryogenic Distribution System Procurement and Fabrication,1.03.04.06.40_Vertical Line 3 and Tee - Procurement & Fab,AS_CDS_VL_6040_SLAC legal review/approve RFP - Vertical Line 3 and Tee
298651,1.03,1.03.04,1.03.04.06,1.03.04.06.40,1.03.04.06.40,Vertical Line 3 and Tee - Procurement & Fab,AS_CDS_VL_6050,Release RFP - Vertical Line 3 and Tee,5.0,0.0,0.0,0.0,07-29-22,08-04-22,AS_CDS_VL_6040: FS,AS_CDS_VL_6060: FS,0,0,0,0,0,0,0.0,0.0,0,07-29-22,08-04-22,0,0.0h,0.0h,0%,$0,0.0h,1253.5d,0,$0,$0,1.03_Accelerator Systems (AS),1.03.04_AS Cryogenic Distribution System (CDS),1.03.04.06_AS Cryogenic Distribution System Procurement and Fabrication,1.03.04.06.40_Vertical Line 3 and Tee - Procurement & Fab,AS_CDS_VL_6050_Release RFP - Vertical Line 3 and Tee
298652,1.03,1.03.04,1.03.04.06,1.03.04.06.40,1.03.04.06.40,Vertical Line 3 and Tee - Procurement & Fab,AS_CDS_VL_6060,Vendor Proposal Effort - Vertical Line 3 and Tee,35.0,0.0,0.0,0.0,08-05-22,09-23-22,AS_CDS_VL_6050: FS,AS_CDS_VL_6070: FS,0,0,0,0,0,0,0.0,0.0,0,08-05-22,09-23-22,0,0.0h,0.0h,0%,$0,0.0h,1253.5d,0,$0,$0,1.03_Accelerator Systems (AS),1.03.04_AS Cryogenic Distribution System (CDS),1.03.04.06_AS Cryogenic Distribution System Procurement and Fabrication,1.03.04.06.40_Vertical Line 3 and Tee - Procurement & Fab,AS_CDS_VL_6060_Vendor Proposal Effort - Vertical Line 3 and Tee
298653,1.03,1.03.04,1.03.04.06,1.03.04.06.40,1.03.04.06.40,Vertical Line 3 and Tee - Procurement & Fab,AS_CDS_VL_6070,RCV: Vendor Proposal - Vertical Line 3 and Tee,0.0,0.0,0.0,0.0,0,09-23-22,AS_CDS_VL_6060: FS,AS_CDS_VL_6080: FS,0,0,0,0,0,0,0.0,0.0,0,nn,09-23-22,0,0.0h,0.0h,0%,$0,0.0h,1253.5d,0,$0,$0,1.03_Accelerator Systems (AS),1.03.04_AS Cryogenic Distribution System (CDS),1.03.04.06_AS Cryogenic Distribution System Procurement and Fabrication,1.03.04.06.40_Vertical Line 3 and Tee - Procurement & Fab,AS_CDS_VL_6070_RCV: Vendor Proposal - Vertical Line 3 and Tee
298654,1.03,1.03.04,1.03.04.06,1.03.04.06.40,1.03.04.06.40,Vertical Line 3 and Tee - Procurement & Fab,AS_CDS_VL_6090,Prepare Award Documents - Vertical Line 3 and Tee,5.0,0.0,0.0,0.0,12-14-22,01-03-23,AS_CDS_VL_6080: FS,AS_CDS_VL_6100: FS,0,0,0,0,0,0,0.0,0.0,0,12-14-22,01-03-23,0,0.0h,0.0h,0%,$0,0.0h,1253.5d,0,$0,$0,1.03_Accelerator Systems (AS),1.03.04_AS Cryogenic Distribution System (CDS),1.03.04.06_AS Cryogenic Distribution System Procurement and Fabrication,1.03.04.06.40_Vertical Line 3 and Tee - Procurement & Fab,AS_CDS_VL_6090_Prepare Award Documents - Vertical Line 3 and Tee
298655,1.03,1.03.04,1.03.04.06,1.03.04.06.40,1.03.04.06.40,Vertical Line 3 and Tee - Procurement & Fab,AS_CDS_VL_6100,(Foreign Only) Buy American ACT Review - Vertical Line 3 and Tee,10.0,0.0,0.0,0.0,01-04-23,01-18-23,AS_CDS_VL_6090: FS,AS_CDS_VL_6110: FS,0,0,0,0,0,0,0.0,0.0,0,01-04-23,01-18-23,0,0.0h,0.0h,0%,$0,0.0h,1253.5d,0,$0,$0,1.03_Accelerator Systems (AS),1.03.04_AS Cryogenic Distribution System (CDS),1.03.04.06_AS Cryogenic Distribution System Procurement and Fabrication,1.03.04.06.40_Vertical Line 3 and Tee - Procurement & Fab,AS_CDS_VL_6100_(Foreign Only) Buy American ACT Review - Vertical Line 3 and Tee
298656,1.03,1.03.04,1.03.04.06,1.03.04.06.40,1.03.04.06.40,Vertical Line 3 and Tee - Procurement & Fab,AS_CDS_VL_6110,SLAC legal review/approve Award docs - Vertical Line 3 and Tee,5.0,0.0,0.0,0.0,01-19-23,01-25-23,AS_CDS_VL_6100: FS,AS_CDS_VL_6120: FS,0,0,0,0,0,0,0.0,0.0,0,01-19-23,01-25-23,0,0.0h,0.0h,0%,$0,0.0h,1253.5d,0,$0,$0,1.03_Accelerator Systems (AS),1.03.04_AS Cryogenic Distribution System (CDS),1.03.04.06_AS Cryogenic Distribution System Procurement and Fabrication,1.03.04.06.40_Vertical Line 3 and Tee - Procurement & Fab,AS_CDS_VL_6110_SLAC legal review/approve Award docs - Vertical Line 3 and Tee
298657,1.03,1.03.04,1.03.04.06,1.03.04.06.40,1.03.04.06.40,Vertical Line 3 and Tee - Procurement & Fab,AS_CDS_VL_6130,Contractor Effort:  Preliminary Design based on SLAC Reference Design - Vertical Line 3 and Tee,70.0,0.0,0.0,0.0,02-02-23,05-11-23,AS_CDS_VL_6120: FS,"AS_CDS_VL_6140: SS, AS_CDS_VL_6150: FS",0,0,0,0,0,0,0.0,0.0,0,02-02-23,05-11-23,0,0.0h,0.0h,0%,$0,0.0h,1253.5d,0,$0,$0,1.03_Accelerator Systems (AS),1.03.04_AS Cryogenic Distribution System (CDS),1.03.04.06_AS Cryogenic Distribution System Procurement and Fabrication,1.03.04.06.40_Vertical Line 3 and Tee - Procurement & Fab,AS_CDS_VL_6130_Contractor Effort:  Preliminary Design based on SLAC Reference Design - Vertical Line 3 and Tee
298658,1.03,1.03.04,1.03.04.06,1.03.04.06.40,1.03.04.06.40,Vertical Line 3 and Tee - Procurement & Fab,AS_CDS_VL_6160,Contractor Effort: Update Preliminary Design and Develop Final Design - Vertical Line 3 and Tee,70.0,0.0,0.0,0.0,05-16-23,08-23-23,AS_CDS_VL_6150: FS,AS_CDS_VL_6170: FS,0,0,0,0,0,0,0.0,0.0,0,05-16-23,08-23-23,0,0.0h,0.0h,0%,$0,0.0h,1253.5d,0,$0,$0,1.03_Accelerator Systems (AS),1.03.04_AS Cryogenic Distribution System (CDS),1.03.04.06_AS Cryogenic Distribution System Procurement and Fabrication,1.03.04.06.40_Vertical Line 3 and Tee - Procurement & Fab,AS_CDS_VL_6160_Contractor Effort: Update Preliminary Design and Develop Final Design - Vertical Line 3 and Tee
298659,1.03,1.03.04,1.03.04.06,1.03.04.06.40,1.03.04.06.40,Vertical Line 3 and Tee - Procurement & Fab,AS_CDS_VL_6173,Design Closeout - Vertical Line 3 and Tee,10.0,0.0,0.0,0.0,08-28-23,09-11-23,AS_CDS_VL_6170: FS,AS_CDS_VL_6175: FS,0,0,0,0,0,0,0.0,0.0,0,08-28-23,09-11-23,DM-C14-10%,0.0h,0.0h,0%,$0,0.0h,1253.5d,0,$0,$0,1.03_Accelerator Systems (AS),1.03.04_AS Cryogenic Distribution System (CDS),1.03.04.06_AS Cryogenic Distribution System Procurement and Fabrication,1.03.04.06.40_Vertical Line 3 and Tee - Procurement & Fab,AS_CDS_VL_6173_Design Closeout - Vertical Line 3 and Tee
298660,1.03,1.03.04,1.03.04.06,1.03.04.06.40,1.03.04.06.40,Vertical Line 3 and Tee - Procurement & Fab,AS_CDS_VL_6190,Contractor Effort: Complete Shop Drawings and Fabricate - Vertical Line 3 and Tee,180.0,0.0,0.0,0.0,10-04-23,07-03-24,"AS_CDS_VL_6170: FS, AS_CDS_VL_6180: FS",AS_CDS_VL_6210: FS,0,0,0,0,0,0,0.0,0.0,0,10-04-23,07-03-24,0,0.0h,0.0h,0%,$0,0.0h,1240.5d,0,$0,$0,1.03_Accelerator Systems (AS),1.03.04_AS Cryogenic Distribution System (CDS),1.03.04.06_AS Cryogenic Distribution System Procurement and Fabrication,1.03.04.06.40_Vertical Line 3 and Tee - Procurement & Fab,AS_CDS_VL_6190_Contractor Effort: Complete Shop Drawings and Fabricate - Vertical Line 3 and Tee
298661,1.03,1.03.04,1.03.04.06,1.03.04.06.40,1.03.04.06.40,Vertical Line 3 and Tee - Procurement & Fab,AS_CDS_VL_6240,COMP: Procurement - Vertical Line 3 and Tee,0.0,0.0,0.0,0.0,0,10-02-24,"AS_CDS_VL_6230: FS, AS_CDS_VL_6200: FS","AS_CDS_VL_9010: FS, AS_CDS_VL_9100: FS, AS_CDS_TE_9100: FS, AS_CDS_TE_9010: FS",0,0,0,0,0,0,0.0,0.0,0,nn,10-02-24,0,0.0h,0.0h,0%,$0,0.0h,1240.5d,0,$0,$0,1.03_Accelerator Systems (AS),1.03.04_AS Cryogenic Distribution System (CDS),1.03.04.06_AS Cryogenic Distribution System Procurement and Fabrication,1.03.04.06.40_Vertical Line 3 and Tee - Procurement & Fab,AS_CDS_VL_6240_COMP: Procurement - Vertical Line 3 and Tee
298662,1.03,1.03.04,1.03.04.06,1.03.04.06.50,1.03.04.06.50,Vacuum Box 2 - Procurement & Fab,AS_CDS_VB_6040,Release RFP - Vacuum Box 2,5.0,0.0,0.0,0.0,06-09-22,06-15-22,AS_CDS_VB_6030: FS,AS_CDS_VB_6050: FS,0,0,0,0,0,0,0.0,0.0,0,06-09-22,06-15-22,0,0.0h,0.0h,0%,$0,0.0h,1404.5d,0,$0,$0,1.03_Accelerator Systems (AS),1.03.04_AS Cryogenic Distribution System (CDS),1.03.04.06_AS Cryogenic Distribution System Procurement and Fabrication,1.03.04.06.50_Vacuum Box 2 - Procurement & Fab,AS_CDS_VB_6040_Release RFP - Vacuum Box 2
298663,1.03,1.03.04,1.03.04.06,1.03.04.06.50,1.03.04.06.50,Vacuum Box 2 - Procurement & Fab,AS_CDS_VB_6050,Vendor Proposal Effort - Vacuum Box 2,15.0,0.0,0.0,0.0,06-16-22,07-07-22,AS_CDS_VB_6040: FS,AS_CDS_VB_6060: FS,0,0,0,0,0,0,0.0,0.0,0,06-16-22,07-07-22,0,0.0h,0.0h,0%,$0,0.0h,1404.5d,0,$0,$0,1.03_Accelerator Systems (AS),1.03.04_AS Cryogenic Distribution System (CDS),1.03.04.06_AS Cryogenic Distribution System Procurement and Fabrication,1.03.04.06.50_Vacuum Box 2 - Procurement & Fab,AS_CDS_VB_6050_Vendor Proposal Effort - Vacuum Box 2
298664,1.03,1.03.04,1.03.04.06,1.03.04.06.50,1.03.04.06.50,Vacuum Box 2 - Procurement & Fab,AS_CDS_VB_6060,RCV: Vendor Proposal - Vacuum Box 2,0.0,0.0,0.0,0.0,0,07-07-22,AS_CDS_VB_6050: FS,AS_CDS_VB_6070: FS,0,0,0,0,0,0,0.0,0.0,0,nn,07-07-22,0,0.0h,0.0h,0%,$0,0.0h,1404.5d,0,$0,$0,1.03_Accelerator Systems (AS),1.03.04_AS Cryogenic Distribution System (CDS),1.03.04.06_AS Cryogenic Distribution System Procurement and Fabrication,1.03.04.06.50_Vacuum Box 2 - Procurement & Fab,AS_CDS_VB_6060_RCV: Vendor Proposal - Vacuum Box 2
298665,1.03,1.03.04,1.03.04.06,1.03.04.06.50,1.03.04.06.50,Vacuum Box 2 - Procurement & Fab,AS_CDS_VB_6080,Prepare Award Documents - Vacuum Box 2,5.0,0.0,0.0,0.0,08-26-22,09-01-22,AS_CDS_VB_6070: FS,AS_CDS_VB_6090: FS,0,0,0,0,0,0,0.0,0.0,0,08-26-22,09-01-22,0,0.0h,0.0h,0%,$0,0.0h,1404.5d,0,$0,$0,1.03_Accelerator Systems (AS),1.03.04_AS Cryogenic Distribution System (CDS),1.03.04.06_AS Cryogenic Distribution System Procurement and Fabrication,1.03.04.06.50_Vacuum Box 2 - Procurement & Fab,AS_CDS_VB_6080_Prepare Award Documents - Vacuum Box 2
298666,1.03,1.03.04,1.03.04.06,1.03.04.06.50,1.03.04.06.50,Vacuum Box 2 - Procurement & Fab,AS_CDS_VB_6100,Contractor Effort:  Preliminary Design based on SLAC Reference Design - Vacuum Box 2,70.0,0.0,0.0,0.0,09-06-22,12-14-22,AS_CDS_VB_6090: FS,"AS_CDS_VB_6110: SS, AS_CDS_VB_6120: FS",0,0,0,0,0,0,0.0,0.0,0,09-06-22,12-14-22,0,0.0h,0.0h,0%,$0,0.0h,1404.5d,0,$0,$0,1.03_Accelerator Systems (AS),1.03.04_AS Cryogenic Distribution System (CDS),1.03.04.06_AS Cryogenic Distribution System Procurement and Fabrication,1.03.04.06.50_Vacuum Box 2 - Procurement & Fab,AS_CDS_VB_6100_Contractor Effort:  Preliminary Design based on SLAC Reference Design - Vacuum Box 2
298667,1.03,1.03.04,1.03.04.06,1.03.04.06.50,1.03.04.06.50,Vacuum Box 2 - Procurement & Fab,AS_CDS_VB_6130,Contractor Effort: Update Preliminary Design and Develop Final Design - Vacuum Box 2,70.0,0.0,0.0,0.0,01-02-23,04-11-23,AS_CDS_VB_6120: FS,AS_CDS_VB_6140: FS,0,0,0,0,0,0,0.0,0.0,0,01-02-23,04-11-23,0,0.0h,0.0h,0%,$0,0.0h,1404.5d,0,$0,$0,1.03_Accelerator Systems (AS),1.03.04_AS Cryogenic Distribution System (CDS),1.03.04.06_AS Cryogenic Distribution System Procurement and Fabrication,1.03.04.06.50_Vacuum Box 2 - Procurement & Fab,AS_CDS_VB_6130_Contractor Effort: Update Preliminary Design and Develop Final Design - Vacuum Box 2
298668,1.03,1.03.04,1.03.04.06,1.03.04.06.50,1.03.04.06.50,Vacuum Box 2 - Procurement & Fab,AS_CDS_VB_6143,Design Closeout - Vacuum Box 2,10.0,0.0,0.0,0.0,04-14-23,04-27-23,AS_CDS_VB_6140: FS,AS_CDS_VB_6145: FS,0,0,0,0,0,0,0.0,0.0,0,04-14-23,04-27-23,DM-C14-10%,0.0h,0.0h,0%,$0,0.0h,1404.5d,0,$0,$0,1.03_Accelerator Systems (AS),1.03.04_AS Cryogenic Distribution System (CDS),1.03.04.06_AS Cryogenic Distribution System Procurement and Fabrication,1.03.04.06.50_Vacuum Box 2 - Procurement & Fab,AS_CDS_VB_6143_Design Closeout - Vacuum Box 2
298669,1.03,1.03.04,1.03.04.06,1.03.04.06.50,1.03.04.06.50,Vacuum Box 2 - Procurement & Fab,AS_CDS_VB_6160,Contractor Effort: Complete Shop Drawings and Fabricate - Vacuum Box 2,205.0,0.0,0.0,0.0,10-04-23,08-08-24,"AS_CDS_VB_6140: FS, AS_CDS_VB_6150: FS",AS_CDS_VB_6180: FS,0,0,0,0,0,0,0.0,0.0,0,10-04-23,08-08-24,0,0.0h,0.0h,0%,$0,0.0h,1297.5d,0,$0,$0,1.03_Accelerator Systems (AS),1.03.04_AS Cryogenic Distribution System (CDS),1.03.04.06_AS Cryogenic Distribution System Procurement and Fabrication,1.03.04.06.50_Vacuum Box 2 - Procurement & Fab,AS_CDS_VB_6160_Contractor Effort: Complete Shop Drawings and Fabricate - Vacuum Box 2
298670,1.03,1.03.04,1.03.04.06,1.03.04.06.50,1.03.04.06.50,Vacuum Box 2 - Procurement & Fab,AS_CDS_VB_6210,COMP: Procurement - Vacuum Box 2,0.0,0.0,0.0,0.0,0,11-06-24,"AS_CDS_VB_6200: FS, AS_CDS_VB_6170: FS","AS_CDS_VB_9010: FS, AS_CDS_VB_9100: FS, AS_CDS_BT_9040: FS",0,0,0,0,0,0,0.0,0.0,0,nn,11-06-24,0,0.0h,0.0h,0%,$0,0.0h,1297.5d,0,$0,$0,1.03_Accelerator Systems (AS),1.03.04_AS Cryogenic Distribution System (CDS),1.03.04.06_AS Cryogenic Distribution System Procurement and Fabrication,1.03.04.06.50_Vacuum Box 2 - Procurement & Fab,AS_CDS_VB_6210_COMP: Procurement - Vacuum Box 2
298671,1.03,1.03.04,1.03.04.06,1.03.04.06.60,1.03.04.06.60,End Caps (includes EC3 & Downstream One) - Procurement & Fab,AS_CDS_EC_6040,Release RFP - End Caps,5.0,0.0,0.0,0.0,06-08-22,06-14-22,AS_CDS_EC_6030: FS,AS_CDS_EC_6050: FS,0,0,0,0,0,0,0.0,0.0,0,06-08-22,06-14-22,0,0.0h,0.0h,0%,$0,0.0h,1303.5d,0,$0,$0,1.03_Accelerator Systems (AS),1.03.04_AS Cryogenic Distribution System (CDS),1.03.04.06_AS Cryogenic Distribution System Procurement and Fabrication,1.03.04.06.60_End Caps (includes EC3 & Downstream One) - Procurement & Fab,AS_CDS_EC_6040_Release RFP - End Caps
298672,1.03,1.03.04,1.03.04.06,1.03.04.06.60,1.03.04.06.60,End Caps (includes EC3 & Downstream One) - Procurement & Fab,AS_CDS_EC_6050,Vendor Proposal Effort - End Caps,45.0,0.0,0.0,0.0,06-15-22,08-17-22,AS_CDS_EC_6040: FS,AS_CDS_EC_6060: FS,0,0,0,0,0,0,0.0,0.0,0,06-15-22,08-17-22,0,0.0h,0.0h,0%,$0,0.0h,1303.5d,0,$0,$0,1.03_Accelerator Systems (AS),1.03.04_AS Cryogenic Distribution System (CDS),1.03.04.06_AS Cryogenic Distribution System Procurement and Fabrication,1.03.04.06.60_End Caps (includes EC3 & Downstream One) - Procurement & Fab,AS_CDS_EC_6050_Vendor Proposal Effort - End Caps
298673,1.03,1.03.04,1.03.04.06,1.03.04.06.60,1.03.04.06.60,End Caps (includes EC3 & Downstream One) - Procurement & Fab,AS_CDS_EC_6060,RCV: Vendor Proposal - End Caps,0.0,0.0,0.0,0.0,0,08-17-22,AS_CDS_EC_6050: FS,AS_CDS_EC_6070: FS,0,0,0,0,0,0,0.0,0.0,0,nn,08-17-22,0,0.0h,0.0h,0%,$0,0.0h,1303.5d,0,$0,$0,1.03_Accelerator Systems (AS),1.03.04_AS Cryogenic Distribution System (CDS),1.03.04.06_AS Cryogenic Distribution System Procurement and Fabrication,1.03.04.06.60_End Caps (includes EC3 & Downstream One) - Procurement & Fab,AS_CDS_EC_6060_RCV: Vendor Proposal - End Caps
298674,1.03,1.03.04,1.03.04.06,1.03.04.06.60,1.03.04.06.60,End Caps (includes EC3 & Downstream One) - Procurement & Fab,AS_CDS_EC_6080,Prepare Award Documents - End Caps,5.0,0.0,0.0,0.0,11-04-22,11-10-22,AS_CDS_EC_6070: FS,AS_CDS_EC_6090: FS,0,0,0,0,0,0,0.0,0.0,0,11-04-22,11-10-22,0,0.0h,0.0h,0%,$0,0.0h,1303.5d,0,$0,$0,1.03_Accelerator Systems (AS),1.03.04_AS Cryogenic Distribution System (CDS),1.03.04.06_AS Cryogenic Distribution System Procurement and Fabrication,1.03.04.06.60_End Caps (includes EC3 & Downstream One) - Procurement & Fab,AS_CDS_EC_6080_Prepare Award Documents - End Caps
298675,1.03,1.03.04,1.03.04.06,1.03.04.06.60,1.03.04.06.60,End Caps (includes EC3 & Downstream One) - Procurement & Fab,AS_CDS_EC_6100,Contractor Effort:  Preliminary Design based on SLAC Reference Design - End Caps,70.0,0.0,0.0,0.0,11-14-22,03-09-23,AS_CDS_EC_6090: FS,"AS_CDS_EC_6110: SS, AS_CDS_EC_6120: FS",0,0,0,0,0,0,0.0,0.0,0,11-14-22,03-09-23,0,0.0h,0.0h,0%,$0,0.0h,1303.5d,0,$0,$0,1.03_Accelerator Systems (AS),1.03.04_AS Cryogenic Distribution System (CDS),1.03.04.06_AS Cryogenic Distribution System Procurement and Fabrication,1.03.04.06.60_End Caps (includes EC3 & Downstream One) - Procurement & Fab,AS_CDS_EC_6100_Contractor Effort:  Preliminary Design based on SLAC Reference Design - End Caps
298676,1.03,1.03.04,1.03.04.06,1.03.04.06.60,1.03.04.06.60,End Caps (includes EC3 & Downstream One) - Procurement & Fab,AS_CDS_EC_6130,Contractor Effort: Update Preliminary Design and Develop Final Design - End Caps,70.0,0.0,0.0,0.0,03-14-23,06-20-23,AS_CDS_EC_6120: FS,AS_CDS_EC_6140: FS,0,0,0,0,0,0,0.0,0.0,0,03-14-23,06-20-23,0,0.0h,0.0h,0%,$0,0.0h,1303.5d,0,$0,$0,1.03_Accelerator Systems (AS),1.03.04_AS Cryogenic Distribution System (CDS),1.03.04.06_AS Cryogenic Distribution System Procurement and Fabrication,1.03.04.06.60_End Caps (includes EC3 & Downstream One) - Procurement & Fab,AS_CDS_EC_6130_Contractor Effort: Update Preliminary Design and Develop Final Design - End Caps
298677,1.03,1.03.04,1.03.04.06,1.03.04.06.60,1.03.04.06.60,End Caps (includes EC3 & Downstream One) - Procurement & Fab,AS_CDS_EC_6143,Design Closeout - End Caps,10.0,0.0,0.0,0.0,06-23-23,07-07-23,AS_CDS_EC_6140: FS,AS_CDS_EC_6145: FS,0,0,0,0,0,0,0.0,0.0,0,06-23-23,07-07-23,DM-C14-10%,0.0h,0.0h,0%,$0,0.0h,1303.5d,0,$0,$0,1.03_Accelerator Systems (AS),1.03.04_AS Cryogenic Distribution System (CDS),1.03.04.06_AS Cryogenic Distribution System Procurement and Fabrication,1.03.04.06.60_End Caps (includes EC3 & Downstream One) - Procurement & Fab,AS_CDS_EC_6143_Design Closeout - End Caps
298678,1.03,1.03.04,1.03.04.06,1.03.04.06.60,1.03.04.06.60,End Caps (includes EC3 & Downstream One) - Procurement & Fab,AS_CDS_EC_6160,Contractor Effort: Complete Shop Drawings and Fabricate - End Caps,180.0,0.0,0.0,0.0,10-04-23,07-03-24,AS_CDS_EC_6150: FS,AS_CDS_EC_6180: FS,0,0,0,0,0,0,0.0,0.0,0,10-04-23,07-03-24,0,0.0h,0.0h,0%,$0,0.0h,1245.5d,0,$0,$0,1.03_Accelerator Systems (AS),1.03.04_AS Cryogenic Distribution System (CDS),1.03.04.06_AS Cryogenic Distribution System Procurement and Fabrication,1.03.04.06.60_End Caps (includes EC3 & Downstream One) - Procurement & Fab,AS_CDS_EC_6160_Contractor Effort: Complete Shop Drawings and Fabricate - End Caps
298679,1.03,1.03.04,1.03.04.06,1.03.04.06.60,1.03.04.06.60,End Caps (includes EC3 & Downstream One) - Procurement & Fab,AS_CDS_EC_6210,COMP: Procurement - End Caps,0.0,0.0,0.0,0.0,0,10-02-24,"AS_CDS_EC_6200: FS, AS_CDS_EC_6170: FS","AS_CDS_EC3_9010: FS, AS_CDS_EC4_9010: FS, AS_CDS_EC4_9100: FS, AS_CDS_EC3_9100: FS",0,0,0,0,0,0,0.0,0.0,0,nn,10-02-24,0,0.0h,0.0h,0%,$0,0.0h,1245.5d,0,$0,$0,1.03_Accelerator Systems (AS),1.03.04_AS Cryogenic Distribution System (CDS),1.03.04.06_AS Cryogenic Distribution System Procurement and Fabrication,1.03.04.06.60_End Caps (includes EC3 & Downstream One) - Procurement & Fab,AS_CDS_EC_6210_COMP: Procurement - End Caps
298680,1.03,1.03.04,1.03.04.06,1.03.04.06.71,1.03.04.06.71,Beam Tubes (ECs/Tee/VB) - Procurement & Fab,AS_CDS_BT_6040,Release RFP - Beam Tubes (ECs/Tee/VB),5.0,0.0,0.0,0.0,09-12-22,09-16-22,AS_CDS_BT_6030: FS,AS_CDS_BT_6050: FS,0,0,0,0,0,0,0.0,0.0,0,09-12-22,09-16-22,0,0.0h,0.0h,0%,$0,0.0h,1420.5d,0,$0,$0,1.03_Accelerator Systems (AS),1.03.04_AS Cryogenic Distribution System (CDS),1.03.04.06_AS Cryogenic Distribution System Procurement and Fabrication,1.03.04.06.71_Beam Tubes (ECs/Tee/VB) - Procurement & Fab,AS_CDS_BT_6040_Release RFP - Beam Tubes (ECs/Tee/VB)
298681,1.03,1.03.04,1.03.04.06,1.03.04.06.71,1.03.04.06.71,Beam Tubes (ECs/Tee/VB) - Procurement & Fab,AS_CDS_BT_6050,Vendor Proposal Effort - Beam Tubes (ECs/Tee/VB),15.0,0.0,0.0,0.0,09-19-22,10-07-22,AS_CDS_BT_6040: FS,AS_CDS_BT_6060: FS,0,0,0,0,0,0,0.0,0.0,0,09-19-22,10-07-22,0,0.0h,0.0h,0%,$0,0.0h,1420.5d,0,$0,$0,1.03_Accelerator Systems (AS),1.03.04_AS Cryogenic Distribution System (CDS),1.03.04.06_AS Cryogenic Distribution System Procurement and Fabrication,1.03.04.06.71_Beam Tubes (ECs/Tee/VB) - Procurement & Fab,AS_CDS_BT_6050_Vendor Proposal Effort - Beam Tubes (ECs/Tee/VB)
298682,1.03,1.03.04,1.03.04.06,1.03.04.06.71,1.03.04.06.71,Beam Tubes (ECs/Tee/VB) - Procurement & Fab,AS_CDS_BT_6060,RCV: Vendor Proposal - Beam Tubes (ECs/Tee/VB),0.0,0.0,0.0,0.0,0,10-07-22,AS_CDS_BT_6050: FS,AS_CDS_BT_6070: FS,0,0,0,0,0,0,0.0,0.0,0,nn,10-07-22,0,0.0h,0.0h,0%,$0,0.0h,1420.5d,0,$0,$0,1.03_Accelerator Systems (AS),1.03.04_AS Cryogenic Distribution System (CDS),1.03.04.06_AS Cryogenic Distribution System Procurement and Fabrication,1.03.04.06.71_Beam Tubes (ECs/Tee/VB) - Procurement & Fab,AS_CDS_BT_6060_RCV: Vendor Proposal - Beam Tubes (ECs/Tee/VB)
298683,1.03,1.03.04,1.03.04.06,1.03.04.06.71,1.03.04.06.71,Beam Tubes (ECs/Tee/VB) - Procurement & Fab,AS_CDS_BT_6080,Prepare Award Documents - Beam Tubes (ECs/Tee/VB),5.0,0.0,0.0,0.0,11-30-22,12-06-22,AS_CDS_BT_6070: FS,AS_CDS_BT_6090: FS,0,0,0,0,0,0,0.0,0.0,0,11-30-22,12-06-22,0,0.0h,0.0h,0%,$0,0.0h,1420.5d,0,$0,$0,1.03_Accelerator Systems (AS),1.03.04_AS Cryogenic Distribution System (CDS),1.03.04.06_AS Cryogenic Distribution System Procurement and Fabrication,1.03.04.06.71_Beam Tubes (ECs/Tee/VB) - Procurement & Fab,AS_CDS_BT_6080_Prepare Award Documents - Beam Tubes (ECs/Tee/VB)
298684,1.03,1.03.04,1.03.04.06,1.03.04.06.71,1.03.04.06.71,Beam Tubes (ECs/Tee/VB) - Procurement & Fab,AS_CDS_BT_6100,Contractor Effort:  Preliminary Design based on SLAC Reference Design - Beam Tubes (ECs/Tee/VB),70.0,0.0,0.0,0.0,12-08-22,03-31-23,AS_CDS_BT_6090: FS,"AS_CDS_BT_6110: SS, AS_CDS_BT_6120: FS",0,0,0,0,0,0,0.0,0.0,0,12-08-22,03-31-23,0,0.0h,0.0h,0%,$0,0.0h,1420.5d,0,$0,$0,1.03_Accelerator Systems (AS),1.03.04_AS Cryogenic Distribution System (CDS),1.03.04.06_AS Cryogenic Distribution System Procurement and Fabrication,1.03.04.06.71_Beam Tubes (ECs/Tee/VB) - Procurement & Fab,AS_CDS_BT_6100_Contractor Effort:  Preliminary Design based on SLAC Reference Design - Beam Tubes (ECs/Tee/VB)
298685,1.03,1.03.04,1.03.04.06,1.03.04.06.71,1.03.04.06.71,Beam Tubes (ECs/Tee/VB) - Procurement & Fab,AS_CDS_BT_6130,Contractor Effort: Update Preliminary Design and Develop Final Design - Beam Tubes (ECs/Tee/VB),70.0,0.0,0.0,0.0,04-05-23,07-13-23,AS_CDS_BT_6120: FS,AS_CDS_BT_6140: FS,0,0,0,0,0,0,0.0,0.0,0,04-05-23,07-13-23,0,0.0h,0.0h,0%,$0,0.0h,1420.5d,0,$0,$0,1.03_Accelerator Systems (AS),1.03.04_AS Cryogenic Distribution System (CDS),1.03.04.06_AS Cryogenic Distribution System Procurement and Fabrication,1.03.04.06.71_Beam Tubes (ECs/Tee/VB) - Procurement & Fab,AS_CDS_BT_6130_Contractor Effort: Update Preliminary Design and Develop Final Design - Beam Tubes (ECs/Tee/VB)
298686,1.03,1.03.04,1.03.04.06,1.03.04.06.71,1.03.04.06.71,Beam Tubes (ECs/Tee/VB) - Procurement & Fab,AS_CDS_BT_6150,AWARD: Fabrication - Beam Tubes (ECs/Tee/VB),2.0,0.0,0.0,0.0,07-18-23,07-19-23,AS_CDS_BT_6140: FS,AS_CDS_BT_6160: FS,0,0,0,0,0,0,0.0,0.0,0,07-18-23,07-19-23,AWARD > $500K,0.0h,0.0h,0%,$0,0.0h,1420.5d,0,$0,$0,1.03_Accelerator Systems (AS),1.03.04_AS Cryogenic Distribution System (CDS),1.03.04.06_AS Cryogenic Distribution System Procurement and Fabrication,1.03.04.06.71_Beam Tubes (ECs/Tee/VB) - Procurement & Fab,AS_CDS_BT_6150_AWARD: Fabrication - Beam Tubes (ECs/Tee/VB)
298687,1.03,1.03.04,1.03.04.06,1.03.04.06.71,1.03.04.06.71,Beam Tubes (ECs/Tee/VB) - Procurement & Fab,AS_CDS_BT_6160,Contractor Effort: Update Final Design and Fabricate - Beam Tubes (ECs/Tee/VB),180.0,0.0,0.0,0.0,07-20-23,04-18-24,"AS_CDS_BT_6140: FS, AS_CDS_BT_6150: FS",AS_CDS_BT_6180: FS,0,0,0,0,0,0,0.0,0.0,0,07-20-23,04-18-24,0,0.0h,0.0h,0%,$0,0.0h,1420.5d,0,$0,$0,1.03_Accelerator Systems (AS),1.03.04_AS Cryogenic Distribution System (CDS),1.03.04.06_AS Cryogenic Distribution System Procurement and Fabrication,1.03.04.06.71_Beam Tubes (ECs/Tee/VB) - Procurement & Fab,AS_CDS_BT_6160_Contractor Effort: Update Final Design and Fabricate - Beam Tubes (ECs/Tee/VB)
298688,1.03,1.03.04,1.03.04.06,1.03.04.06.71,1.03.04.06.71,Beam Tubes (ECs/Tee/VB) - Procurement & Fab,AS_CDS_BT_6210,COMP: Procurement - Beam Tubes (ECs/Tee/VB),0.0,0.0,0.0,0.0,0,05-07-24,"AS_CDS_BT_6200: FS, AS_CDS_BT_6170: FS","AS_CDS_BT_9010: FS, AS_CDS_BC_6010: FS",0,0,0,0,0,0,0.0,0.0,0,nn,05-07-24,0,0.0h,0.0h,0%,$0,0.0h,1420.5d,0,$0,$0,1.03_Accelerator Systems (AS),1.03.04_AS Cryogenic Distribution System (CDS),1.03.04.06_AS Cryogenic Distribution System Procurement and Fabrication,1.03.04.06.71_Beam Tubes (ECs/Tee/VB) - Procurement & Fab,AS_CDS_BT_6210_COMP: Procurement - Beam Tubes (ECs/Tee/VB)
298689,1.03,1.03.04,1.03.04.06,1.03.04.06.72,1.03.04.06.72,Beam Tubes Copper Plating and PF Cleaning - Procurement & Fab,AS_CDS_BC_6010,Prepare Requisition (Specs/SOW/ETC) - BT Copper Plating and PF Cleaning,5.0,0.0,0.0,0.0,05-08-24,05-14-24,AS_CDS_BT_6210: FS,AS_CDS_BC_6020: FS,0,0,0,0,0,0,0.0,0.0,0,05-08-24,05-14-24,0,0.0h,0.0h,0%,$0,0.0h,1420.5d,0,$0,$0,1.03_Accelerator Systems (AS),1.03.04_AS Cryogenic Distribution System (CDS),1.03.04.06_AS Cryogenic Distribution System Procurement and Fabrication,1.03.04.06.72_Beam Tubes Copper Plating and PF Cleaning - Procurement & Fab,AS_CDS_BC_6010_Prepare Requisition (Specs/SOW/ETC) - BT Copper Plating and PF Cleaning
298690,1.03,1.03.04,1.03.04.06,1.03.04.06.72,1.03.04.06.72,Beam Tubes Copper Plating and PF Cleaning - Procurement & Fab,AS_CDS_BC_6030,Procurement Process - BT Copper Plating and PF Cleaning,5.0,0.0,0.0,0.0,05-16-24,05-22-24,AS_CDS_BC_6020: FS,AS_CDS_BC_6040: FS,0,0,0,0,0,0,0.0,0.0,0,05-16-24,05-22-24,0,0.0h,0.0h,0%,$0,0.0h,1420.5d,0,$0,$0,1.03_Accelerator Systems (AS),1.03.04_AS Cryogenic Distribution System (CDS),1.03.04.06_AS Cryogenic Distribution System Procurement and Fabrication,1.03.04.06.72_Beam Tubes Copper Plating and PF Cleaning - Procurement & Fab,AS_CDS_BC_6030_Procurement Process - BT Copper Plating and PF Cleaning
298691,1.03,1.03.04,1.03.04.06,1.03.04.06.72,1.03.04.06.72,Beam Tubes Copper Plating and PF Cleaning - Procurement & Fab,AS_CDS_BC_6050,Vendor Effort - BT Copper Plating and PF Cleaning,5.0,0.0,0.0,0.0,05-24-24,05-31-24,AS_CDS_BC_6040: FS,AS_CDS_BC_6060: FS,0,0,0,0,0,0,0.0,0.0,0,05-24-24,05-31-24,0,0.0h,0.0h,0%,$0,0.0h,1420.5d,0,$0,$0,1.03_Accelerator Systems (AS),1.03.04_AS Cryogenic Distribution System (CDS),1.03.04.06_AS Cryogenic Distribution System Procurement and Fabrication,1.03.04.06.72_Beam Tubes Copper Plating and PF Cleaning - Procurement & Fab,AS_CDS_BC_6050_Vendor Effort - BT Copper Plating and PF Cleaning
298692,1.03,1.03.04,1.03.04.06,1.03.04.06.72,1.03.04.06.72,Beam Tubes Copper Plating and PF Cleaning - Procurement & Fab,AS_CDS_BC_6080,COMP: BT Copper Plating and PF Cleaning,0.0,0.0,0.0,0.0,0,07-30-24,AS_CDS_BC_6070: FF,AS_CDS_BT_9010: FS,0,0,0,0,0,0,0.0,0.0,0,nn,07-30-24,0,0.0h,0.0h,0%,$0,0.0h,1420.5d,0,$0,$0,1.03_Accelerator Systems (AS),1.03.04_AS Cryogenic Distribution System (CDS),1.03.04.06_AS Cryogenic Distribution System Procurement and Fabrication,1.03.04.06.72_Beam Tubes Copper Plating and PF Cleaning - Procurement & Fab,AS_CDS_BC_6080_COMP: BT Copper Plating and PF Cleaning
298693,1.03,1.03.04,1.03.04.20,1.03.04.20.10,1.03.04.20.10,Interface Box 3 - Installation Support,AS_CDS_IB_9100,Prepare Requisition (Specs/SOW/ETC) - Installation Support - Interface Box 3,45.0,0.0,0.0,0.0,09-05-24,11-06-24,"AS_CDS_IB_6240: FS, AS_CDS_SU_5070: FS",AS_CDS_IB_9110: FS,0,0,0,0,0,0,0.0,0.0,0,09-05-24,11-06-24,0,0.0h,0.0h,0%,$0,0.0h,1168.5d,0,$0,$0,1.03_Accelerator Systems (AS),1.03.04_AS Cryogenic Distribution System (CDS),1.03.04.20_AS Cryogenic Distribution System Installation,1.03.04.20.10_Interface Box 3 - Installation Support,AS_CDS_IB_9100_Prepare Requisition (Specs/SOW/ETC) - Installation Support - Interface Box 3
298694,1.03,1.03.04,1.03.04.20,1.03.04.20.10,1.03.04.20.10,Interface Box 3 - Installation Support,AS_CDS_IB_9120,"Prepare RFP (ASP,PRR, TPRR,etc.) - Installation Support - Interface Box 3",35.0,0.0,0.0,0.0,11-08-24,01-13-25,AS_CDS_IB_9110: FS,AS_CDS_IB_9140: FS,0,0,0,0,0,0,0.0,0.0,0,11-08-24,01-13-25,0,0.0h,0.0h,0%,$0,0.0h,1168.5d,0,$0,$0,1.03_Accelerator Systems (AS),1.03.04_AS Cryogenic Distribution System (CDS),1.03.04.20_AS Cryogenic Distribution System Installation,1.03.04.20.10_Interface Box 3 - Installation Support,"AS_CDS_IB_9120_Prepare RFP (ASP,PRR, TPRR,etc.) - Installation Support - Interface Box 3"
298695,1.03,1.03.04,1.03.04.20,1.03.04.20.10,1.03.04.20.10,Interface Box 3 - Installation Support,AS_CDS_IB_9140,Vendor Proposal Effort - Installation Support - Interface Box 3,35.0,0.0,0.0,0.0,01-14-25,03-05-25,AS_CDS_IB_9120: FS,AS_CDS_IB_9130: FS,0,0,0,0,0,0,0.0,0.0,0,01-14-25,03-05-25,0,0.0h,0.0h,0%,$0,0.0h,1168.5d,0,$0,$0,1.03_Accelerator Systems (AS),1.03.04_AS Cryogenic Distribution System (CDS),1.03.04.20_AS Cryogenic Distribution System Installation,1.03.04.20.10_Interface Box 3 - Installation Support,AS_CDS_IB_9140_Vendor Proposal Effort - Installation Support - Interface Box 3
298696,1.03,1.03.04,1.03.04.20,1.03.04.20.10,1.03.04.20.10,Interface Box 3 - Installation Support,AS_CDS_IB_9130,Release RFP - Installation Support - Interface Box 3,5.0,0.0,0.0,0.0,03-06-25,03-12-25,AS_CDS_IB_9140: FS,AS_CDS_IB_9150: FS,0,0,0,0,0,0,0.0,0.0,0,03-06-25,03-12-25,0,0.0h,0.0h,0%,$0,0.0h,1168.5d,0,$0,$0,1.03_Accelerator Systems (AS),1.03.04_AS Cryogenic Distribution System (CDS),1.03.04.20_AS Cryogenic Distribution System Installation,1.03.04.20.10_Interface Box 3 - Installation Support,AS_CDS_IB_9130_Release RFP - Installation Support - Interface Box 3
298697,1.03,1.03.04,1.03.04.20,1.03.04.20.10,1.03.04.20.10,Interface Box 3 - Installation Support,AS_CDS_IB_9150,RCV: Vendor Proposal - Installation Support - Interface Box 3,0.0,0.0,0.0,0.0,0,03-12-25,AS_CDS_IB_9130: FS,AS_CDS_IB_9160: FS,0,0,0,0,0,0,0.0,0.0,0,nn,03-12-25,0,0.0h,0.0h,0%,$0,0.0h,1168.5d,0,$0,$0,1.03_Accelerator Systems (AS),1.03.04_AS Cryogenic Distribution System (CDS),1.03.04.20_AS Cryogenic Distribution System Installation,1.03.04.20.10_Interface Box 3 - Installation Support,AS_CDS_IB_9150_RCV: Vendor Proposal - Installation Support - Interface Box 3
298698,1.03,1.03.04,1.03.04.20,1.03.04.20.10,1.03.04.20.10,Interface Box 3 - Installation Support,AS_CDS_IB_9160,Evaluations/Negotiations - Installation Support - Interface Box 3,55.0,0.0,0.0,0.0,03-13-25,05-29-25,AS_CDS_IB_9150: FS,AS_CDS_IB_9170: FS,0,0,0,0,0,0,0.0,0.0,0,03-13-25,05-29-25,0,0.0h,0.0h,0%,$0,0.0h,1168.5d,0,$0,$0,1.03_Accelerator Systems (AS),1.03.04_AS Cryogenic Distribution System (CDS),1.03.04.20_AS Cryogenic Distribution System Installation,1.03.04.20.10_Interface Box 3 - Installation Support,AS_CDS_IB_9160_Evaluations/Negotiations - Installation Support - Interface Box 3
298699,1.03,1.03.04,1.03.04.20,1.03.04.20.10,1.03.04.20.10,Interface Box 3 - Installation Support,AS_CDS_IB_9170,Prepare Award Documents - Installation Support - Interface Box 3,5.0,0.0,0.0,0.0,05-30-25,06-05-25,AS_CDS_IB_9160: FS,AS_CDS_IB_9180: FS,0,0,0,0,0,0,0.0,0.0,0,05-30-25,06-05-25,0,0.0h,0.0h,0%,$0,0.0h,1168.5d,0,$0,$0,1.03_Accelerator Systems (AS),1.03.04_AS Cryogenic Distribution System (CDS),1.03.04.20_AS Cryogenic Distribution System Installation,1.03.04.20.10_Interface Box 3 - Installation Support,AS_CDS_IB_9170_Prepare Award Documents - Installation Support - Interface Box 3
298700,1.03,1.03.04,1.03.04.20,1.03.04.20.10,1.03.04.20.10,Interface Box 3 - Installation Support,AS_CDS_IB_9190,Vendor Effort - Installation Support - Interface Box 3,180.0,0.0,0.0,0.0,06-13-25,03-13-26,AS_CDS_IB_9180: FS,AS_CDS_IB_9200: FS,0,0,0,0,0,0,0.0,0.0,0,06-13-25,03-13-26,0,0.0h,0.0h,0%,$0,0.0h,1168.5d,0,$0,$0,1.03_Accelerator Systems (AS),1.03.04_AS Cryogenic Distribution System (CDS),1.03.04.20_AS Cryogenic Distribution System Installation,1.03.04.20.10_Interface Box 3 - Installation Support,AS_CDS_IB_9190_Vendor Effort - Installation Support - Interface Box 3
298701,1.03,1.03.04,1.03.04.20,1.03.04.20.10,1.03.04.20.10,Interface Box 3 - Installation Support,AS_CDS_IB_9210,COMP: Installation Support - Interface Box 3,0.0,0.0,0.0,0.0,0,03-16-26,"AS_CDS_IB_9200: FS, AS_CDS_IB_9060: FS","AS_CDS_9010: FS, AS_CDS_IB_9220: FS",0,0,0,0,0,0,0.0,0.0,0,nn,03-16-26,0,0.0h,0.0h,0%,$0,0.0h,1168.5d,0,$0,$0,1.03_Accelerator Systems (AS),1.03.04_AS Cryogenic Distribution System (CDS),1.03.04.20_AS Cryogenic Distribution System Installation,1.03.04.20.10_Interface Box 3 - Installation Support,AS_CDS_IB_9210_COMP: Installation Support - Interface Box 3
298702,1.03,1.03.04,1.03.04.20,1.03.04.20.10,1.03.04.20.10,Interface Box 3 - Installation Support,AS_CDS_IB_9220,RFI: Ready for Controls Installation - Interface Box 3,0.0,0.0,0.0,0.0,0,03-16-26,AS_CDS_IB_9210: FS,CS_M4_1435: FS,0,0,0,0,0,0,0.0,0.0,0,nn,03-16-26,0,0.0h,0.0h,0%,$0,0.0h,1168.5d,0,$0,$0,1.03_Accelerator Systems (AS),1.03.04_AS Cryogenic Distribution System (CDS),1.03.04.20_AS Cryogenic Distribution System Installation,1.03.04.20.10_Interface Box 3 - Installation Support,AS_CDS_IB_9220_RFI: Ready for Controls Installation - Interface Box 3
298703,1.03,1.03.04,1.03.04.20,1.03.04.20.20,1.03.04.20.20,Transfer Line 3 - Installation Support,AS_CDS_TL_9100,Prepare Requisition (Specs/SOW/ETC) - Installation Support - Transfer Line 3,45.0,0.0,0.0,0.0,04-02-24,06-04-24,MS_FY_2024_Q3: FS,AS_CDS_TL_9110: FS,0,0,0,0,0,0,0.0,0.0,0,04-02-24,06-04-24,0,0.0h,0.0h,0%,$0,0.0h,1247.5d,0,$0,$0,1.03_Accelerator Systems (AS),1.03.04_AS Cryogenic Distribution System (CDS),1.03.04.20_AS Cryogenic Distribution System Installation,1.03.04.20.20_Transfer Line 3 - Installation Support,AS_CDS_TL_9100_Prepare Requisition (Specs/SOW/ETC) - Installation Support - Transfer Line 3
298704,1.03,1.03.04,1.03.04.20,1.03.04.20.20,1.03.04.20.20,Transfer Line 3 - Installation Support,AS_CDS_TL_9120,"Prepare RFP (ASP,PRR, TPRR,etc.) - Installation Support - Transfer Line 3",35.0,0.0,0.0,0.0,06-06-24,07-25-24,AS_CDS_TL_9110: FS,AS_CDS_TL_9130: FS,0,0,0,0,0,0,0.0,0.0,0,06-06-24,07-25-24,0,0.0h,0.0h,0%,$0,0.0h,1247.5d,0,$0,$0,1.03_Accelerator Systems (AS),1.03.04_AS Cryogenic Distribution System (CDS),1.03.04.20_AS Cryogenic Distribution System Installation,1.03.04.20.20_Transfer Line 3 - Installation Support,"AS_CDS_TL_9120_Prepare RFP (ASP,PRR, TPRR,etc.) - Installation Support - Transfer Line 3"
298705,1.03,1.03.04,1.03.04.20,1.03.04.20.20,1.03.04.20.20,Transfer Line 3 - Installation Support,AS_CDS_TL_9130,SLAC legal review/approve RFP  Installation Support - Transfer Line 3,5.0,0.0,0.0,0.0,07-26-24,08-01-24,AS_CDS_TL_9120: FS,AS_CDS_TL_9140: FS,0,0,0,0,0,0,0.0,0.0,0,07-26-24,08-01-24,0,0.0h,0.0h,0%,$0,0.0h,1247.5d,0,$0,$0,1.03_Accelerator Systems (AS),1.03.04_AS Cryogenic Distribution System (CDS),1.03.04.20_AS Cryogenic Distribution System Installation,1.03.04.20.20_Transfer Line 3 - Installation Support,AS_CDS_TL_9130_SLAC legal review/approve RFP  Installation Support - Transfer Line 3
298706,1.03,1.03.04,1.03.04.20,1.03.04.20.20,1.03.04.20.20,Transfer Line 3 - Installation Support,AS_CDS_TL_9140,Release RFP - Installation Support - Transfer Line 3,5.0,0.0,0.0,0.0,08-02-24,08-08-24,AS_CDS_TL_9130: FS,AS_CDS_TL_9150: FS,0,0,0,0,0,0,0.0,0.0,0,08-02-24,08-08-24,0,0.0h,0.0h,0%,$0,0.0h,1247.5d,0,$0,$0,1.03_Accelerator Systems (AS),1.03.04_AS Cryogenic Distribution System (CDS),1.03.04.20_AS Cryogenic Distribution System Installation,1.03.04.20.20_Transfer Line 3 - Installation Support,AS_CDS_TL_9140_Release RFP - Installation Support - Transfer Line 3
298707,1.03,1.03.04,1.03.04.20,1.03.04.20.20,1.03.04.20.20,Transfer Line 3 - Installation Support,AS_CDS_TL_9150,Vendor Proposal Effort - Installation Support - Transfer Line 3,35.0,0.0,0.0,0.0,08-09-24,09-27-24,AS_CDS_TL_9140: FS,AS_CDS_TL_9160: FS,0,0,0,0,0,0,0.0,0.0,0,08-09-24,09-27-24,0,0.0h,0.0h,0%,$0,0.0h,1247.5d,0,$0,$0,1.03_Accelerator Systems (AS),1.03.04_AS Cryogenic Distribution System (CDS),1.03.04.20_AS Cryogenic Distribution System Installation,1.03.04.20.20_Transfer Line 3 - Installation Support,AS_CDS_TL_9150_Vendor Proposal Effort - Installation Support - Transfer Line 3
298708,1.03,1.03.04,1.03.04.20,1.03.04.20.20,1.03.04.20.20,Transfer Line 3 - Installation Support,AS_CDS_TL_9160,RCV: Vendor Proposal -Installation Support - Transfer Line 3,0.0,0.0,0.0,0.0,0,09-27-24,AS_CDS_TL_9150: FS,AS_CDS_TL_9170: FS,0,0,0,0,0,0,0.0,0.0,0,nn,09-27-24,0,0.0h,0.0h,0%,$0,0.0h,1247.5d,0,$0,$0,1.03_Accelerator Systems (AS),1.03.04_AS Cryogenic Distribution System (CDS),1.03.04.20_AS Cryogenic Distribution System Installation,1.03.04.20.20_Transfer Line 3 - Installation Support,AS_CDS_TL_9160_RCV: Vendor Proposal -Installation Support - Transfer Line 3
298709,1.03,1.03.04,1.03.04.20,1.03.04.20.20,1.03.04.20.20,Transfer Line 3 - Installation Support,AS_CDS_TL_9170,Evaluations/Negotiations -Installation Support - Transfer Line 3,55.0,0.0,0.0,0.0,09-30-24,12-17-24,AS_CDS_TL_9160: FS,AS_CDS_TL_9180: FS,0,0,0,0,0,0,0.0,0.0,0,09-30-24,12-17-24,0,0.0h,0.0h,0%,$0,0.0h,1247.5d,0,$0,$0,1.03_Accelerator Systems (AS),1.03.04_AS Cryogenic Distribution System (CDS),1.03.04.20_AS Cryogenic Distribution System Installation,1.03.04.20.20_Transfer Line 3 - Installation Support,AS_CDS_TL_9170_Evaluations/Negotiations -Installation Support - Transfer Line 3
298710,1.03,1.03.04,1.03.04.20,1.03.04.20.20,1.03.04.20.20,Transfer Line 3 - Installation Support,AS_CDS_TL_9180,Prepare Award Documents - Installation Support - Transfer Line 3,5.0,0.0,0.0,0.0,12-18-24,01-07-25,AS_CDS_TL_9170: FS,AS_CDS_TL_9190: FS,0,0,0,0,0,0,0.0,0.0,0,12-18-24,01-07-25,0,0.0h,0.0h,0%,$0,0.0h,1247.5d,0,$0,$0,1.03_Accelerator Systems (AS),1.03.04_AS Cryogenic Distribution System (CDS),1.03.04.20_AS Cryogenic Distribution System Installation,1.03.04.20.20_Transfer Line 3 - Installation Support,AS_CDS_TL_9180_Prepare Award Documents - Installation Support - Transfer Line 3
298711,1.03,1.03.04,1.03.04.20,1.03.04.20.20,1.03.04.20.20,Transfer Line 3 - Installation Support,AS_CDS_TL_9190,SLAC legal review/approve Award docs  Installation Support - Transfer Line 3,5.0,0.0,0.0,0.0,01-08-25,01-14-25,AS_CDS_TL_9180: FS,AS_CDS_TL_9200: FS,0,0,0,0,0,0,0.0,0.0,0,01-08-25,01-14-25,0,0.0h,0.0h,0%,$0,0.0h,1247.5d,0,$0,$0,1.03_Accelerator Systems (AS),1.03.04_AS Cryogenic Distribution System (CDS),1.03.04.20_AS Cryogenic Distribution System Installation,1.03.04.20.20_Transfer Line 3 - Installation Support,AS_CDS_TL_9190_SLAC legal review/approve Award docs  Installation Support - Transfer Line 3
298712,1.03,1.03.04,1.03.04.20,1.03.04.20.20,1.03.04.20.20,Transfer Line 3 - Installation Support,AS_CDS_TL_9210,Vendor Effort - Installation Support - Transfer Line 3,200.0,0.0,0.0,0.0,01-23-25,11-04-25,AS_CDS_TL_9200: FS,AS_CDS_TL_9220: FS,0,0,0,0,0,0,0.0,0.0,0,01-23-25,11-04-25,0,0.0h,0.0h,0%,$0,0.0h,1247.5d,0,$0,$0,1.03_Accelerator Systems (AS),1.03.04_AS Cryogenic Distribution System (CDS),1.03.04.20_AS Cryogenic Distribution System Installation,1.03.04.20.20_Transfer Line 3 - Installation Support,AS_CDS_TL_9210_Vendor Effort - Installation Support - Transfer Line 3
298713,1.03,1.03.04,1.03.04.20,1.03.04.20.20,1.03.04.20.20,Transfer Line 3 - Installation Support,AS_CDS_TL_9230,COMP: Installation Support - Transfer Line 3,0.0,0.0,0.0,0.0,0,11-05-25,"AS_CDS_TL_9220: FS, AS_CDS_TL_9070: FS","AS_CDS_9010: FS, AS_CDS_9030: FS, AS_CDS_TL_9240: FS",0,0,0,0,0,0,0.0,0.0,0,nn,11-05-25,0,0.0h,0.0h,0%,$0,0.0h,1247.5d,0,$0,$0,1.03_Accelerator Systems (AS),1.03.04_AS Cryogenic Distribution System (CDS),1.03.04.20_AS Cryogenic Distribution System Installation,1.03.04.20.20_Transfer Line 3 - Installation Support,AS_CDS_TL_9230_COMP: Installation Support - Transfer Line 3
298714,1.03,1.03.04,1.03.04.20,1.03.04.20.20,1.03.04.20.20,Transfer Line 3 - Installation Support,AS_CDS_TL_9240,RFI: Ready for Controls Installation - Transfer Line 3,0.0,0.0,0.0,0.0,0,11-05-25,AS_CDS_TL_9230: FS,0,0,0,0,0,0,0,0.0,0.0,0,nn,11-05-25,0,0.0h,0.0h,0%,$0,0.0h,1347.5d,0,$0,$0,1.03_Accelerator Systems (AS),1.03.04_AS Cryogenic Distribution System (CDS),1.03.04.20_AS Cryogenic Distribution System Installation,1.03.04.20.20_Transfer Line 3 - Installation Support,AS_CDS_TL_9240_RFI: Ready for Controls Installation - Transfer Line 3
298715,1.03,1.03.04,1.03.04.20,1.03.04.20.30,1.03.04.20.30,Distribution Box 3 - Installation Support,AS_CDS_DB_9100,Prepare Requisition (Specs/SOW/ETC) - Installation Support - Distribution Box 3,15.0,0.0,0.0,0.0,09-05-24,09-25-24,"AS_CDS_IB_6240: FS, MS_FY_2024_Q3: FS",AS_CDS_DB_9110: FS,0,0,0,0,0,0,0.0,0.0,0,09-05-24,09-25-24,0,0.0h,0.0h,0%,$0,0.0h,1230.5d,0,$0,$0,1.03_Accelerator Systems (AS),1.03.04_AS Cryogenic Distribution System (CDS),1.03.04.20_AS Cryogenic Distribution System Installation,1.03.04.20.30_Distribution Box 3 - Installation Support,AS_CDS_DB_9100_Prepare Requisition (Specs/SOW/ETC) - Installation Support - Distribution Box 3
298716,1.03,1.03.04,1.03.04.20,1.03.04.20.30,1.03.04.20.30,Distribution Box 3 - Installation Support,AS_CDS_DB_9120,Prepare RFP - Installation Support - Distribution Box 3,10.0,0.0,0.0,0.0,09-27-24,10-10-24,AS_CDS_DB_9110: FS,AS_CDS_DB_9130: FS,0,0,0,0,0,0,0.0,0.0,0,09-27-24,10-10-24,0,0.0h,0.0h,0%,$0,0.0h,1230.5d,0,$0,$0,1.03_Accelerator Systems (AS),1.03.04_AS Cryogenic Distribution System (CDS),1.03.04.20_AS Cryogenic Distribution System Installation,1.03.04.20.30_Distribution Box 3 - Installation Support,AS_CDS_DB_9120_Prepare RFP - Installation Support - Distribution Box 3
298717,1.03,1.03.04,1.03.04.20,1.03.04.20.30,1.03.04.20.30,Distribution Box 3 - Installation Support,AS_CDS_DB_9130,Release RFP - Installation Support - Distribution Box 3,2.0,0.0,0.0,0.0,10-11-24,10-14-24,AS_CDS_DB_9120: FS,AS_CDS_DB_9140: FS,0,0,0,0,0,0,0.0,0.0,0,10-11-24,10-14-24,0,0.0h,0.0h,0%,$0,0.0h,1230.5d,0,$0,$0,1.03_Accelerator Systems (AS),1.03.04_AS Cryogenic Distribution System (CDS),1.03.04.20_AS Cryogenic Distribution System Installation,1.03.04.20.30_Distribution Box 3 - Installation Support,AS_CDS_DB_9130_Release RFP - Installation Support - Distribution Box 3
298718,1.03,1.03.04,1.03.04.20,1.03.04.20.30,1.03.04.20.30,Distribution Box 3 - Installation Support,AS_CDS_DB_9140,Vendor Proposal Effort - Installation Support - Distribution Box 3,10.0,0.0,0.0,0.0,10-15-24,10-28-24,AS_CDS_DB_9130: FS,AS_CDS_DB_9150: FS,0,0,0,0,0,0,0.0,0.0,0,10-15-24,10-28-24,0,0.0h,0.0h,0%,$0,0.0h,1230.5d,0,$0,$0,1.03_Accelerator Systems (AS),1.03.04_AS Cryogenic Distribution System (CDS),1.03.04.20_AS Cryogenic Distribution System Installation,1.03.04.20.30_Distribution Box 3 - Installation Support,AS_CDS_DB_9140_Vendor Proposal Effort - Installation Support - Distribution Box 3
298719,1.03,1.03.04,1.03.04.20,1.03.04.20.30,1.03.04.20.30,Distribution Box 3 - Installation Support,AS_CDS_DB_9150,RCV: Vendor Proposal -Installation Support - Distribution Box 3,0.0,0.0,0.0,0.0,0,10-28-24,AS_CDS_DB_9140: FS,AS_CDS_DB_9160: FS,0,0,0,0,0,0,0.0,0.0,0,nn,10-28-24,0,0.0h,0.0h,0%,$0,0.0h,1230.5d,0,$0,$0,1.03_Accelerator Systems (AS),1.03.04_AS Cryogenic Distribution System (CDS),1.03.04.20_AS Cryogenic Distribution System Installation,1.03.04.20.30_Distribution Box 3 - Installation Support,AS_CDS_DB_9150_RCV: Vendor Proposal -Installation Support - Distribution Box 3
298720,1.03,1.03.04,1.03.04.20,1.03.04.20.30,1.03.04.20.30,Distribution Box 3 - Installation Support,AS_CDS_DB_9160,Evaluations/Negotiations - Installation Support - Distribution Box 3,20.0,0.0,0.0,0.0,10-29-24,11-25-24,AS_CDS_DB_9150: FS,AS_CDS_DB_9170: FS,0,0,0,0,0,0,0.0,0.0,0,10-29-24,11-25-24,0,0.0h,0.0h,0%,$0,0.0h,1230.5d,0,$0,$0,1.03_Accelerator Systems (AS),1.03.04_AS Cryogenic Distribution System (CDS),1.03.04.20_AS Cryogenic Distribution System Installation,1.03.04.20.30_Distribution Box 3 - Installation Support,AS_CDS_DB_9160_Evaluations/Negotiations - Installation Support - Distribution Box 3
298721,1.03,1.03.04,1.03.04.20,1.03.04.20.30,1.03.04.20.30,Distribution Box 3 - Installation Support,AS_CDS_DB_9170,Prepare Award Documents -Installation Support - Distribution Box 3,5.0,0.0,0.0,0.0,11-26-24,12-04-24,AS_CDS_DB_9160: FS,AS_CDS_DB_9180: FS,0,0,0,0,0,0,0.0,0.0,0,11-26-24,12-04-24,0,0.0h,0.0h,0%,$0,0.0h,1230.5d,0,$0,$0,1.03_Accelerator Systems (AS),1.03.04_AS Cryogenic Distribution System (CDS),1.03.04.20_AS Cryogenic Distribution System Installation,1.03.04.20.30_Distribution Box 3 - Installation Support,AS_CDS_DB_9170_Prepare Award Documents -Installation Support - Distribution Box 3
298722,1.03,1.03.04,1.03.04.20,1.03.04.20.30,1.03.04.20.30,Distribution Box 3 - Installation Support,AS_CDS_DB_9190,Vendor Effort - Installation Support - Distribution Box 3,240.0,0.0,0.0,0.0,12-06-24,12-01-25,AS_CDS_DB_9180: FS,AS_CDS_DB_9200: FS,0,0,0,0,0,0,0.0,0.0,0,12-06-24,12-01-25,0,0.0h,0.0h,0%,$0,0.0h,1230.5d,0,$0,$0,1.03_Accelerator Systems (AS),1.03.04_AS Cryogenic Distribution System (CDS),1.03.04.20_AS Cryogenic Distribution System Installation,1.03.04.20.30_Distribution Box 3 - Installation Support,AS_CDS_DB_9190_Vendor Effort - Installation Support - Distribution Box 3
298723,1.03,1.03.04,1.03.04.20,1.03.04.20.30,1.03.04.20.30,Distribution Box 3 - Installation Support,AS_CDS_DB_9210,COMP: Installation Support - Distribution Box 3,0.0,0.0,0.0,0.0,0,12-02-25,"AS_CDS_DB_9200: FS, AS_CDS_DB_9070: FS","AS_CDS_9010: FS, AS_CDS_9030: FS, AS_CDS_DB_9220: FS",0,0,0,0,0,0,0.0,0.0,0,nn,12-02-25,0,0.0h,0.0h,0%,$0,0.0h,1230.5d,0,$0,$0,1.03_Accelerator Systems (AS),1.03.04_AS Cryogenic Distribution System (CDS),1.03.04.20_AS Cryogenic Distribution System Installation,1.03.04.20.30_Distribution Box 3 - Installation Support,AS_CDS_DB_9210_COMP: Installation Support - Distribution Box 3
298724,1.03,1.03.04,1.03.04.20,1.03.04.20.30,1.03.04.20.30,Distribution Box 3 - Installation Support,AS_CDS_DB_9220,RFI: Ready for Controls Installation - Distribution Box 3,0.0,0.0,0.0,0.0,0,12-02-25,AS_CDS_DB_9210: FS,0,0,0,0,0,0,0,0.0,0.0,0,nn,12-02-25,0,0.0h,0.0h,0%,$0,0.0h,1330.5d,0,$0,$0,1.03_Accelerator Systems (AS),1.03.04_AS Cryogenic Distribution System (CDS),1.03.04.20_AS Cryogenic Distribution System Installation,1.03.04.20.30_Distribution Box 3 - Installation Support,AS_CDS_DB_9220_RFI: Ready for Controls Installation - Distribution Box 3
298725,1.03,1.03.04,1.03.04.20,1.03.04.20.40,1.03.04.20.40,Vertical Line 3 - Installation Support,AS_CDS_VL_9100,Prepare Requisition (Specs/SOW/ETC) - Installation Support - Vertical Line 3,15.0,0.0,0.0,0.0,10-03-24,10-23-24,AS_CDS_VL_6240: FS,AS_CDS_VL_9110: FS,0,0,0,0,0,0,0.0,0.0,0,10-03-24,10-23-24,0,0.0h,0.0h,0%,$0,0.0h,1390.5d,0,$0,$0,1.03_Accelerator Systems (AS),1.03.04_AS Cryogenic Distribution System (CDS),1.03.04.20_AS Cryogenic Distribution System Installation,1.03.04.20.40_Vertical Line 3 - Installation Support,AS_CDS_VL_9100_Prepare Requisition (Specs/SOW/ETC) - Installation Support - Vertical Line 3
298726,1.03,1.03.04,1.03.04.20,1.03.04.20.40,1.03.04.20.40,Vertical Line 3 - Installation Support,AS_CDS_VL_9120,Prepare RFP - Installation Support - Vertical Line 3,10.0,0.0,0.0,0.0,10-25-24,11-07-24,AS_CDS_VL_9110: FS,AS_CDS_VL_9130: FS,0,0,0,0,0,0,0.0,0.0,0,10-25-24,11-07-24,0,0.0h,0.0h,0%,$0,0.0h,1390.5d,0,$0,$0,1.03_Accelerator Systems (AS),1.03.04_AS Cryogenic Distribution System (CDS),1.03.04.20_AS Cryogenic Distribution System Installation,1.03.04.20.40_Vertical Line 3 - Installation Support,AS_CDS_VL_9120_Prepare RFP - Installation Support - Vertical Line 3
298727,1.03,1.03.04,1.03.04.20,1.03.04.20.40,1.03.04.20.40,Vertical Line 3 - Installation Support,AS_CDS_VL_9130,Release RFP - Installation Support - Vertical Line 3,2.0,0.0,0.0,0.0,11-08-24,11-11-24,AS_CDS_VL_9120: FS,AS_CDS_VL_9140: FS,0,0,0,0,0,0,0.0,0.0,0,11-08-24,11-11-24,0,0.0h,0.0h,0%,$0,0.0h,1390.5d,0,$0,$0,1.03_Accelerator Systems (AS),1.03.04_AS Cryogenic Distribution System (CDS),1.03.04.20_AS Cryogenic Distribution System Installation,1.03.04.20.40_Vertical Line 3 - Installation Support,AS_CDS_VL_9130_Release RFP - Installation Support - Vertical Line 3
298728,1.03,1.03.04,1.03.04.20,1.03.04.20.40,1.03.04.20.40,Vertical Line 3 - Installation Support,AS_CDS_VL_9140,Vendor Proposal Effort - Installation Support - Vertical Line 3,10.0,0.0,0.0,0.0,11-12-24,11-25-24,AS_CDS_VL_9130: FS,AS_CDS_VL_9150: FS,0,0,0,0,0,0,0.0,0.0,0,11-12-24,11-25-24,0,0.0h,0.0h,0%,$0,0.0h,1390.5d,0,$0,$0,1.03_Accelerator Systems (AS),1.03.04_AS Cryogenic Distribution System (CDS),1.03.04.20_AS Cryogenic Distribution System Installation,1.03.04.20.40_Vertical Line 3 - Installation Support,AS_CDS_VL_9140_Vendor Proposal Effort - Installation Support - Vertical Line 3
298729,1.03,1.03.04,1.03.04.20,1.03.04.20.40,1.03.04.20.40,Vertical Line 3 - Installation Support,AS_CDS_VL_9150,RCV: Vendor Proposal - Installation Support - Vertical Line 3,0.0,0.0,0.0,0.0,0,11-25-24,AS_CDS_VL_9140: FS,AS_CDS_VL_9160: FS,0,0,0,0,0,0,0.0,0.0,0,nn,11-25-24,0,0.0h,0.0h,0%,$0,0.0h,1390.5d,0,$0,$0,1.03_Accelerator Systems (AS),1.03.04_AS Cryogenic Distribution System (CDS),1.03.04.20_AS Cryogenic Distribution System Installation,1.03.04.20.40_Vertical Line 3 - Installation Support,AS_CDS_VL_9150_RCV: Vendor Proposal - Installation Support - Vertical Line 3
298730,1.03,1.03.04,1.03.04.20,1.03.04.20.40,1.03.04.20.40,Vertical Line 3 - Installation Support,AS_CDS_VL_9160,Evaluations/Negotiations -Installation Support - Vertical Line 3,20.0,0.0,0.0,0.0,11-26-24,01-08-25,AS_CDS_VL_9150: FS,AS_CDS_VL_9170: FS,0,0,0,0,0,0,0.0,0.0,0,11-26-24,01-08-25,0,0.0h,0.0h,0%,$0,0.0h,1390.5d,0,$0,$0,1.03_Accelerator Systems (AS),1.03.04_AS Cryogenic Distribution System (CDS),1.03.04.20_AS Cryogenic Distribution System Installation,1.03.04.20.40_Vertical Line 3 - Installation Support,AS_CDS_VL_9160_Evaluations/Negotiations -Installation Support - Vertical Line 3
298731,1.03,1.03.04,1.03.04.20,1.03.04.20.40,1.03.04.20.40,Vertical Line 3 - Installation Support,AS_CDS_VL_9170,Prepare Award Documents - Installation Support - Vertical Line 3,5.0,0.0,0.0,0.0,01-09-25,01-15-25,AS_CDS_VL_9160: FS,AS_CDS_VL_9180: FS,0,0,0,0,0,0,0.0,0.0,0,01-09-25,01-15-25,0,0.0h,0.0h,0%,$0,0.0h,1390.5d,0,$0,$0,1.03_Accelerator Systems (AS),1.03.04_AS Cryogenic Distribution System (CDS),1.03.04.20_AS Cryogenic Distribution System Installation,1.03.04.20.40_Vertical Line 3 - Installation Support,AS_CDS_VL_9170_Prepare Award Documents - Installation Support - Vertical Line 3
298732,1.03,1.03.04,1.03.04.20,1.03.04.20.40,1.03.04.20.40,Vertical Line 3 - Installation Support,AS_CDS_VL_9190,Vendor Effort - Installation Support - Vertical Line 3,60.0,0.0,0.0,0.0,01-17-25,04-14-25,AS_CDS_VL_9180: FS,AS_CDS_VL_9200: FS,0,0,0,0,0,0,0.0,0.0,0,01-17-25,04-14-25,0,0.0h,0.0h,0%,$0,0.0h,1390.5d,0,$0,$0,1.03_Accelerator Systems (AS),1.03.04_AS Cryogenic Distribution System (CDS),1.03.04.20_AS Cryogenic Distribution System Installation,1.03.04.20.40_Vertical Line 3 - Installation Support,AS_CDS_VL_9190_Vendor Effort - Installation Support - Vertical Line 3
298733,1.03,1.03.04,1.03.04.20,1.03.04.20.40,1.03.04.20.40,Vertical Line 3 - Installation Support,AS_CDS_VL_9210,COMP: Installation Support - Vertical Line 3,0.0,0.0,0.0,0.0,0,08-03-26,"AS_CDS_VL_9200: FS, AS_CDS_VL_9070: FS","AS_CDS_9010: FS, AS_CDS_9030: FS, AS_CDS_VL_9220: FS",0,0,0,0,0,0,0.0,0.0,0,nn,08-03-26,0,0.0h,0.0h,0%,$0,0.0h,1070.5d,0,$0,$0,1.03_Accelerator Systems (AS),1.03.04_AS Cryogenic Distribution System (CDS),1.03.04.20_AS Cryogenic Distribution System Installation,1.03.04.20.40_Vertical Line 3 - Installation Support,AS_CDS_VL_9210_COMP: Installation Support - Vertical Line 3
298734,1.03,1.03.04,1.03.04.20,1.03.04.20.40,1.03.04.20.40,Vertical Line 3 - Installation Support,AS_CDS_VL_9220,RFI: Ready for Controls Installation - Vertical Line 3,0.0,0.0,0.0,0.0,0,08-03-26,AS_CDS_VL_9210: FS,0,0,0,0,0,0,0,0.0,0.0,0,nn,08-03-26,0,0.0h,0.0h,0%,$0,0.0h,1170.5d,0,$0,$0,1.03_Accelerator Systems (AS),1.03.04_AS Cryogenic Distribution System (CDS),1.03.04.20_AS Cryogenic Distribution System Installation,1.03.04.20.40_Vertical Line 3 - Installation Support,AS_CDS_VL_9220_RFI: Ready for Controls Installation - Vertical Line 3
298735,1.03,1.03.04,1.03.04.20,1.03.04.20.41,1.03.04.20.41,Vertical Transfer Line Radiation Shielding Block,AS_CDS_SHLD_9000,Prepare Requisition (Specs/SOW/ETC) - VTL Shielding Block Procure and Install,15.0,0.0,0.0,0.0,08-28-23,09-18-23,AS_CDS_VL_6170: FS,AS_CDS_SHLD_9010: FS,0,0,0,0,0,0,0.0,0.0,0,08-28-23,09-18-23,0,0.0h,0.0h,0%,$0,0.0h,1529.5d,0,$0,$0,1.03_Accelerator Systems (AS),1.03.04_AS Cryogenic Distribution System (CDS),1.03.04.20_AS Cryogenic Distribution System Installation,1.03.04.20.41_Vertical Transfer Line Radiation Shielding Block,AS_CDS_SHLD_9000_Prepare Requisition (Specs/SOW/ETC) - VTL Shielding Block Procure and Install
298736,1.03,1.03.04,1.03.04.20,1.03.04.20.41,1.03.04.20.41,Vertical Transfer Line Radiation Shielding Block,AS_CDS_SHLD_9020,Prepare RFP - VTL Shielding Block Procure and Install,10.0,0.0,0.0,0.0,09-20-23,10-03-23,AS_CDS_SHLD_9010: FS,AS_CDS_SHLD_9030: FS,0,0,0,0,0,0,0.0,0.0,0,09-20-23,10-03-23,0,0.0h,0.0h,0%,$0,0.0h,1529.5d,0,$0,$0,1.03_Accelerator Systems (AS),1.03.04_AS Cryogenic Distribution System (CDS),1.03.04.20_AS Cryogenic Distribution System Installation,1.03.04.20.41_Vertical Transfer Line Radiation Shielding Block,AS_CDS_SHLD_9020_Prepare RFP - VTL Shielding Block Procure and Install
298737,1.03,1.03.04,1.03.04.20,1.03.04.20.41,1.03.04.20.41,Vertical Transfer Line Radiation Shielding Block,AS_CDS_SHLD_9030,Release RFP - VTL Shielding Block Procure and Install,2.0,0.0,0.0,0.0,10-04-23,10-05-23,AS_CDS_SHLD_9020: FS,AS_CDS_SHLD_9040: FS,0,0,0,0,0,0,0.0,0.0,0,10-04-23,10-05-23,0,0.0h,0.0h,0%,$0,0.0h,1529.5d,0,$0,$0,1.03_Accelerator Systems (AS),1.03.04_AS Cryogenic Distribution System (CDS),1.03.04.20_AS Cryogenic Distribution System Installation,1.03.04.20.41_Vertical Transfer Line Radiation Shielding Block,AS_CDS_SHLD_9030_Release RFP - VTL Shielding Block Procure and Install
298738,1.03,1.03.04,1.03.04.20,1.03.04.20.41,1.03.04.20.41,Vertical Transfer Line Radiation Shielding Block,AS_CDS_SHLD_9040,Vendor Proposal Effort - VTL Shielding Block Procure and Install,10.0,0.0,0.0,0.0,10-06-23,10-19-23,AS_CDS_SHLD_9030: FS,AS_CDS_SHLD_9050: FS,0,0,0,0,0,0,0.0,0.0,0,10-06-23,10-19-23,0,0.0h,0.0h,0%,$0,0.0h,1529.5d,0,$0,$0,1.03_Accelerator Systems (AS),1.03.04_AS Cryogenic Distribution System (CDS),1.03.04.20_AS Cryogenic Distribution System Installation,1.03.04.20.41_Vertical Transfer Line Radiation Shielding Block,AS_CDS_SHLD_9040_Vendor Proposal Effort - VTL Shielding Block Procure and Install
298739,1.03,1.03.04,1.03.04.20,1.03.04.20.41,1.03.04.20.41,Vertical Transfer Line Radiation Shielding Block,AS_CDS_SHLD_9050,RCV: Vendor Proposal - VTL Shielding Block Procure and Install,0.0,0.0,0.0,0.0,0,10-19-23,AS_CDS_SHLD_9040: FS,AS_CDS_SHLD_9060: FS,0,0,0,0,0,0,0.0,0.0,0,nn,10-19-23,0,0.0h,0.0h,0%,$0,0.0h,1529.5d,0,$0,$0,1.03_Accelerator Systems (AS),1.03.04_AS Cryogenic Distribution System (CDS),1.03.04.20_AS Cryogenic Distribution System Installation,1.03.04.20.41_Vertical Transfer Line Radiation Shielding Block,AS_CDS_SHLD_9050_RCV: Vendor Proposal - VTL Shielding Block Procure and Install
298740,1.03,1.03.04,1.03.04.20,1.03.04.20.41,1.03.04.20.41,Vertical Transfer Line Radiation Shielding Block,AS_CDS_SHLD_9060,Evaluations/Negotiations - VTL Shielding Block Procure and Install,20.0,0.0,0.0,0.0,10-20-23,11-16-23,AS_CDS_SHLD_9050: FS,AS_CDS_SHLD_9070: FS,0,0,0,0,0,0,0.0,0.0,0,10-20-23,11-16-23,0,0.0h,0.0h,0%,$0,0.0h,1529.5d,0,$0,$0,1.03_Accelerator Systems (AS),1.03.04_AS Cryogenic Distribution System (CDS),1.03.04.20_AS Cryogenic Distribution System Installation,1.03.04.20.41_Vertical Transfer Line Radiation Shielding Block,AS_CDS_SHLD_9060_Evaluations/Negotiations - VTL Shielding Block Procure and Install
298741,1.03,1.03.04,1.03.04.20,1.03.04.20.41,1.03.04.20.41,Vertical Transfer Line Radiation Shielding Block,AS_CDS_SHLD_9070,Prepare Award Documents - VTL Shielding Block Procure and Install,5.0,0.0,0.0,0.0,11-17-23,11-27-23,AS_CDS_SHLD_9060: FS,AS_CDS_SHLD_9080: FS,0,0,0,0,0,0,0.0,0.0,0,11-17-23,11-27-23,0,0.0h,0.0h,0%,$0,0.0h,1529.5d,0,$0,$0,1.03_Accelerator Systems (AS),1.03.04_AS Cryogenic Distribution System (CDS),1.03.04.20_AS Cryogenic Distribution System Installation,1.03.04.20.41_Vertical Transfer Line Radiation Shielding Block,AS_CDS_SHLD_9070_Prepare Award Documents - VTL Shielding Block Procure and Install
298742,1.03,1.03.04,1.03.04.20,1.03.04.20.41,1.03.04.20.41,Vertical Transfer Line Radiation Shielding Block,AS_CDS_SHLD_9090,Vendor Effort - VTL Shielding Block Supplied,60.0,0.0,0.0,0.0,11-29-23,03-08-24,AS_CDS_SHLD_9080: FS,AS_CDS_SHLD_9100: FS,0,0,0,0,0,0,0.0,0.0,0,11-29-23,03-08-24,0,0.0h,0.0h,0%,$0,0.0h,1529.5d,0,$0,$0,1.03_Accelerator Systems (AS),1.03.04_AS Cryogenic Distribution System (CDS),1.03.04.20_AS Cryogenic Distribution System Installation,1.03.04.20.41_Vertical Transfer Line Radiation Shielding Block,AS_CDS_SHLD_9090_Vendor Effort - VTL Shielding Block Supplied
298743,1.03,1.03.04,1.03.04.20,1.03.04.20.41,1.03.04.20.41,Vertical Transfer Line Radiation Shielding Block,AS_CDS_SHLD_9120,COMP: VTL Shielding Block Procure and Install,0.0,0.0,0.0,0.0,0,09-26-24,AS_CDS_SHLD_9110: FS,AS_CDS_9010: FS,0,0,0,0,0,0,0.0,0.0,0,nn,09-26-24,0,0.0h,0.0h,0%,$0,0.0h,1519.5d,0,$0,$0,1.03_Accelerator Systems (AS),1.03.04_AS Cryogenic Distribution System (CDS),1.03.04.20_AS Cryogenic Distribution System Installation,1.03.04.20.41_Vertical Transfer Line Radiation Shielding Block,AS_CDS_SHLD_9120_COMP: VTL Shielding Block Procure and Install
298744,1.03,1.03.04,1.03.04.20,1.03.04.20.42,1.03.04.20.42,Tee - Installation Support,AS_CDS_TE_9100,Prepare Requisition (Specs/SOW/ETC) - Installation Support - Tee,15.0,0.0,0.0,0.0,10-03-24,10-23-24,AS_CDS_VL_6240: FS,AS_CDS_TE_9110: FS,0,0,0,0,0,0,0.0,0.0,0,10-03-24,10-23-24,0,0.0h,0.0h,0%,$0,0.0h,1330.5d,0,$0,$0,1.03_Accelerator Systems (AS),1.03.04_AS Cryogenic Distribution System (CDS),1.03.04.20_AS Cryogenic Distribution System Installation,1.03.04.20.42_Tee - Installation Support,AS_CDS_TE_9100_Prepare Requisition (Specs/SOW/ETC) - Installation Support - Tee
298745,1.03,1.03.04,1.03.04.20,1.03.04.20.42,1.03.04.20.42,Tee - Installation Support,AS_CDS_TE_9120,Prepare RFP - Installation Support - Tee,10.0,0.0,0.0,0.0,10-25-24,11-07-24,AS_CDS_TE_9110: FS,AS_CDS_TE_9130: FS,0,0,0,0,0,0,0.0,0.0,0,10-25-24,11-07-24,0,0.0h,0.0h,0%,$0,0.0h,1330.5d,0,$0,$0,1.03_Accelerator Systems (AS),1.03.04_AS Cryogenic Distribution System (CDS),1.03.04.20_AS Cryogenic Distribution System Installation,1.03.04.20.42_Tee - Installation Support,AS_CDS_TE_9120_Prepare RFP - Installation Support - Tee
298746,1.03,1.03.04,1.03.04.20,1.03.04.20.42,1.03.04.20.42,Tee - Installation Support,AS_CDS_TE_9130,Release RFP - Installation Support - Tee,2.0,0.0,0.0,0.0,11-08-24,11-11-24,AS_CDS_TE_9120: FS,AS_CDS_TE_9140: FS,0,0,0,0,0,0,0.0,0.0,0,11-08-24,11-11-24,0,0.0h,0.0h,0%,$0,0.0h,1330.5d,0,$0,$0,1.03_Accelerator Systems (AS),1.03.04_AS Cryogenic Distribution System (CDS),1.03.04.20_AS Cryogenic Distribution System Installation,1.03.04.20.42_Tee - Installation Support,AS_CDS_TE_9130_Release RFP - Installation Support - Tee
298747,1.03,1.03.04,1.03.04.20,1.03.04.20.42,1.03.04.20.42,Tee - Installation Support,AS_CDS_TE_9140,Vendor Proposal Effort - Installation Support - Tee,10.0,0.0,0.0,0.0,11-12-24,11-25-24,AS_CDS_TE_9130: FS,AS_CDS_TE_9150: FS,0,0,0,0,0,0,0.0,0.0,0,11-12-24,11-25-24,0,0.0h,0.0h,0%,$0,0.0h,1330.5d,0,$0,$0,1.03_Accelerator Systems (AS),1.03.04_AS Cryogenic Distribution System (CDS),1.03.04.20_AS Cryogenic Distribution System Installation,1.03.04.20.42_Tee - Installation Support,AS_CDS_TE_9140_Vendor Proposal Effort - Installation Support - Tee
298748,1.03,1.03.04,1.03.04.20,1.03.04.20.42,1.03.04.20.42,Tee - Installation Support,AS_CDS_TE_9150,RCV: Vendor Proposal - Installation Support - Tee,0.0,0.0,0.0,0.0,0,11-25-24,AS_CDS_TE_9140: FS,AS_CDS_TE_9160: FS,0,0,0,0,0,0,0.0,0.0,0,nn,11-25-24,0,0.0h,0.0h,0%,$0,0.0h,1330.5d,0,$0,$0,1.03_Accelerator Systems (AS),1.03.04_AS Cryogenic Distribution System (CDS),1.03.04.20_AS Cryogenic Distribution System Installation,1.03.04.20.42_Tee - Installation Support,AS_CDS_TE_9150_RCV: Vendor Proposal - Installation Support - Tee
298749,1.03,1.03.04,1.03.04.20,1.03.04.20.42,1.03.04.20.42,Tee - Installation Support,AS_CDS_TE_9160,Evaluations/Negotiations - Installation Support - Tee,20.0,0.0,0.0,0.0,11-26-24,01-08-25,AS_CDS_TE_9150: FS,AS_CDS_TE_9170: FS,0,0,0,0,0,0,0.0,0.0,0,11-26-24,01-08-25,0,0.0h,0.0h,0%,$0,0.0h,1330.5d,0,$0,$0,1.03_Accelerator Systems (AS),1.03.04_AS Cryogenic Distribution System (CDS),1.03.04.20_AS Cryogenic Distribution System Installation,1.03.04.20.42_Tee - Installation Support,AS_CDS_TE_9160_Evaluations/Negotiations - Installation Support - Tee
298750,1.03,1.03.04,1.03.04.20,1.03.04.20.42,1.03.04.20.42,Tee - Installation Support,AS_CDS_TE_9170,Prepare Award Documents - Installation Support - Tee,5.0,0.0,0.0,0.0,01-09-25,01-15-25,AS_CDS_TE_9160: FS,AS_CDS_TE_9180: FS,0,0,0,0,0,0,0.0,0.0,0,01-09-25,01-15-25,0,0.0h,0.0h,0%,$0,0.0h,1330.5d,0,$0,$0,1.03_Accelerator Systems (AS),1.03.04_AS Cryogenic Distribution System (CDS),1.03.04.20_AS Cryogenic Distribution System Installation,1.03.04.20.42_Tee - Installation Support,AS_CDS_TE_9170_Prepare Award Documents - Installation Support - Tee
298751,1.03,1.03.04,1.03.04.20,1.03.04.20.42,1.03.04.20.42,Tee - Installation Support,AS_CDS_TE_9190,Vendor Effort - Installation Support - Tee,120.0,0.0,0.0,0.0,02-12-26,08-03-26,"AS_CDS_TE_9180: FS, AS_ScL_CM37_9010: FS",AS_CDS_TE_9200: FS,0,0,0,0,0,0,0.0,0.0,0,02-12-26,08-03-26,0,0.0h,0.0h,0%,$0,0.0h,1069.5d,0,$0,$0,1.03_Accelerator Systems (AS),1.03.04_AS Cryogenic Distribution System (CDS),1.03.04.20_AS Cryogenic Distribution System Installation,1.03.04.20.42_Tee - Installation Support,AS_CDS_TE_9190_Vendor Effort - Installation Support - Tee
298752,1.03,1.03.04,1.03.04.20,1.03.04.20.42,1.03.04.20.42,Tee - Installation Support,AS_CDS_TE_9210,COMP: Installation Support - Tee,0.0,0.0,0.0,0.0,0,08-04-26,"AS_CDS_TE_9200: FS, AS_CDS_TE_9070: FS","AS_CDS_9010: FS, AS_CDS_TE_9220: FS",0,0,0,0,0,0,0.0,0.0,0,nn,08-04-26,0,0.0h,0.0h,0%,$0,0.0h,1069.5d,0,$0,$0,1.03_Accelerator Systems (AS),1.03.04_AS Cryogenic Distribution System (CDS),1.03.04.20_AS Cryogenic Distribution System Installation,1.03.04.20.42_Tee - Installation Support,AS_CDS_TE_9210_COMP: Installation Support - Tee
298753,1.03,1.03.04,1.03.04.20,1.03.04.20.42,1.03.04.20.42,Tee - Installation Support,AS_CDS_TE_9220,RFI: Ready for Controls Installation - Tee,0.0,0.0,0.0,0.0,0,08-04-26,AS_CDS_TE_9210: FS,0,0,0,0,0,0,0,0.0,0.0,0,nn,08-04-26,0,0.0h,0.0h,0%,$0,0.0h,1169.5d,0,$0,$0,1.03_Accelerator Systems (AS),1.03.04_AS Cryogenic Distribution System (CDS),1.03.04.20_AS Cryogenic Distribution System Installation,1.03.04.20.42_Tee - Installation Support,AS_CDS_TE_9220_RFI: Ready for Controls Installation - Tee
298754,1.03,1.03.04,1.03.04.20,1.03.04.20.50,1.03.04.20.50,Vacuum Box 2 - Installation Support,AS_CDS_VB_9100,Prepare Requisition (Specs/SOW/ETC) - Installation Support - Vacuum Box 2,15.0,0.0,0.0,0.0,11-07-24,11-27-24,AS_CDS_VB_6210: FS,AS_CDS_VB_9110: FS,0,0,0,0,0,0,0.0,0.0,0,11-07-24,11-27-24,0,0.0h,0.0h,0%,$0,0.0h,1385.5d,0,$0,$0,1.03_Accelerator Systems (AS),1.03.04_AS Cryogenic Distribution System (CDS),1.03.04.20_AS Cryogenic Distribution System Installation,1.03.04.20.50_Vacuum Box 2 - Installation Support,AS_CDS_VB_9100_Prepare Requisition (Specs/SOW/ETC) - Installation Support - Vacuum Box 2
298755,1.03,1.03.04,1.03.04.20,1.03.04.20.50,1.03.04.20.50,Vacuum Box 2 - Installation Support,AS_CDS_VB_9120,Prepare RFP - Installation Support - Vacuum Box 2,10.0,0.0,0.0,0.0,12-03-24,12-16-24,AS_CDS_VB_9110: FS,AS_CDS_VB_9130: FS,0,0,0,0,0,0,0.0,0.0,0,12-03-24,12-16-24,0,0.0h,0.0h,0%,$0,0.0h,1385.5d,0,$0,$0,1.03_Accelerator Systems (AS),1.03.04_AS Cryogenic Distribution System (CDS),1.03.04.20_AS Cryogenic Distribution System Installation,1.03.04.20.50_Vacuum Box 2 - Installation Support,AS_CDS_VB_9120_Prepare RFP - Installation Support - Vacuum Box 2
298756,1.03,1.03.04,1.03.04.20,1.03.04.20.50,1.03.04.20.50,Vacuum Box 2 - Installation Support,AS_CDS_VB_9130,Release RFP - Installation Support - Vacuum Box 2,2.0,0.0,0.0,0.0,12-17-24,12-18-24,AS_CDS_VB_9120: FS,AS_CDS_VB_9140: FS,0,0,0,0,0,0,0.0,0.0,0,12-17-24,12-18-24,0,0.0h,0.0h,0%,$0,0.0h,1385.5d,0,$0,$0,1.03_Accelerator Systems (AS),1.03.04_AS Cryogenic Distribution System (CDS),1.03.04.20_AS Cryogenic Distribution System Installation,1.03.04.20.50_Vacuum Box 2 - Installation Support,AS_CDS_VB_9130_Release RFP - Installation Support - Vacuum Box 2
298757,1.03,1.03.04,1.03.04.20,1.03.04.20.50,1.03.04.20.50,Vacuum Box 2 - Installation Support,AS_CDS_VB_9140,Vendor Proposal Effort - Installation Support - Vacuum Box 2,10.0,0.0,0.0,0.0,12-19-24,01-15-25,AS_CDS_VB_9130: FS,AS_CDS_VB_9150: FS,0,0,0,0,0,0,0.0,0.0,0,12-19-24,01-15-25,0,0.0h,0.0h,0%,$0,0.0h,1385.5d,0,$0,$0,1.03_Accelerator Systems (AS),1.03.04_AS Cryogenic Distribution System (CDS),1.03.04.20_AS Cryogenic Distribution System Installation,1.03.04.20.50_Vacuum Box 2 - Installation Support,AS_CDS_VB_9140_Vendor Proposal Effort - Installation Support - Vacuum Box 2
298758,1.03,1.03.04,1.03.04.20,1.03.04.20.50,1.03.04.20.50,Vacuum Box 2 - Installation Support,AS_CDS_VB_9150,RCV: Vendor Proposal - Installation Support - Vacuum Box 2,0.0,0.0,0.0,0.0,0,01-15-25,AS_CDS_VB_9140: FS,AS_CDS_VB_9160: FS,0,0,0,0,0,0,0.0,0.0,0,nn,01-15-25,0,0.0h,0.0h,0%,$0,0.0h,1385.5d,0,$0,$0,1.03_Accelerator Systems (AS),1.03.04_AS Cryogenic Distribution System (CDS),1.03.04.20_AS Cryogenic Distribution System Installation,1.03.04.20.50_Vacuum Box 2 - Installation Support,AS_CDS_VB_9150_RCV: Vendor Proposal - Installation Support - Vacuum Box 2
298759,1.03,1.03.04,1.03.04.20,1.03.04.20.50,1.03.04.20.50,Vacuum Box 2 - Installation Support,AS_CDS_VB_9160,Evaluations/Negotiations - Installation Support - Vacuum Box 2,20.0,0.0,0.0,0.0,01-16-25,02-13-25,AS_CDS_VB_9150: FS,AS_CDS_VB_9170: FS,0,0,0,0,0,0,0.0,0.0,0,01-16-25,02-13-25,0,0.0h,0.0h,0%,$0,0.0h,1385.5d,0,$0,$0,1.03_Accelerator Systems (AS),1.03.04_AS Cryogenic Distribution System (CDS),1.03.04.20_AS Cryogenic Distribution System Installation,1.03.04.20.50_Vacuum Box 2 - Installation Support,AS_CDS_VB_9160_Evaluations/Negotiations - Installation Support - Vacuum Box 2
298760,1.03,1.03.04,1.03.04.20,1.03.04.20.50,1.03.04.20.50,Vacuum Box 2 - Installation Support,AS_CDS_VB_9170,Prepare Award Documents - Installation Support - Vacuum Box 2,5.0,0.0,0.0,0.0,02-14-25,02-21-25,AS_CDS_VB_9160: FS,AS_CDS_VB_9180: FS,0,0,0,0,0,0,0.0,0.0,0,02-14-25,02-21-25,0,0.0h,0.0h,0%,$0,0.0h,1385.5d,0,$0,$0,1.03_Accelerator Systems (AS),1.03.04_AS Cryogenic Distribution System (CDS),1.03.04.20_AS Cryogenic Distribution System Installation,1.03.04.20.50_Vacuum Box 2 - Installation Support,AS_CDS_VB_9170_Prepare Award Documents - Installation Support - Vacuum Box 2
298761,1.03,1.03.04,1.03.04.20,1.03.04.20.50,1.03.04.20.50,Vacuum Box 2 - Installation Support,AS_CDS_VB_9190,Vendor Effort - Installation Support - Vacuum Box 2,40.0,0.0,0.0,0.0,06-10-26,08-05-26,"AS_CDS_VB_9180: FS, AS_ScL_CM48_9010: FS",AS_CDS_VB_9200: FS,0,0,0,0,0,0,0.0,0.0,0,06-10-26,08-05-26,0,0.0h,0.0h,0%,$0,0.0h,1067.5d,0,$0,$0,1.03_Accelerator Systems (AS),1.03.04_AS Cryogenic Distribution System (CDS),1.03.04.20_AS Cryogenic Distribution System Installation,1.03.04.20.50_Vacuum Box 2 - Installation Support,AS_CDS_VB_9190_Vendor Effort - Installation Support - Vacuum Box 2
298762,1.03,1.03.04,1.03.04.20,1.03.04.20.50,1.03.04.20.50,Vacuum Box 2 - Installation Support,AS_CDS_VB_9210,COMP: Installation Support - Vacuum Box 2,0.0,0.0,0.0,0.0,0,09-02-26,"AS_CDS_VB_9200: FS, AS_CDS_VB_9070: FS","AS_CDS_9010: FS, AS_CDS_VB_9220: FS",0,0,0,0,0,0,0.0,0.0,0,nn,09-02-26,0,0.0h,0.0h,0%,$0,0.0h,1048.5d,0,$0,$0,1.03_Accelerator Systems (AS),1.03.04_AS Cryogenic Distribution System (CDS),1.03.04.20_AS Cryogenic Distribution System Installation,1.03.04.20.50_Vacuum Box 2 - Installation Support,AS_CDS_VB_9210_COMP: Installation Support - Vacuum Box 2
298763,1.03,1.03.04,1.03.04.20,1.03.04.20.50,1.03.04.20.50,Vacuum Box 2 - Installation Support,AS_CDS_VB_9220,RFI: Ready for Controls Installation - Vacuum Box 2,0.0,0.0,0.0,0.0,0,09-02-26,AS_CDS_VB_9210: FS,0,0,0,0,0,0,0,0.0,0.0,0,nn,09-02-26,0,0.0h,0.0h,0%,$0,0.0h,1148.5d,0,$0,$0,1.03_Accelerator Systems (AS),1.03.04_AS Cryogenic Distribution System (CDS),1.03.04.20_AS Cryogenic Distribution System Installation,1.03.04.20.50_Vacuum Box 2 - Installation Support,AS_CDS_VB_9220_RFI: Ready for Controls Installation - Vacuum Box 2
298764,1.03,1.03.04,1.03.04.20,1.03.04.20.60,1.03.04.20.60,End Cap 3 Upstream - Installation Support,AS_CDS_EC3_9100,Prepare Requisition (Specs/SOW/ETC) - Installation Support - End Cap 3 Upstream,15.0,0.0,0.0,0.0,10-03-24,10-23-24,"AS_CDS_EC_6210: FS, AS_CDS_TU_5070: FS",AS_CDS_EC3_9110: FS,0,0,0,0,0,0,0.0,0.0,0,10-03-24,10-23-24,0,0.0h,0.0h,0%,$0,0.0h,1387.5d,0,$0,$0,1.03_Accelerator Systems (AS),1.03.04_AS Cryogenic Distribution System (CDS),1.03.04.20_AS Cryogenic Distribution System Installation,1.03.04.20.60_End Cap 3 Upstream - Installation Support,AS_CDS_EC3_9100_Prepare Requisition (Specs/SOW/ETC) - Installation Support - End Cap 3 Upstream
298765,1.03,1.03.04,1.03.04.20,1.03.04.20.60,1.03.04.20.60,End Cap 3 Upstream - Installation Support,AS_CDS_EC3_9120,Prepare RFP - Installation Support - End Cap 3 Upstream,10.0,0.0,0.0,0.0,10-25-24,11-07-24,AS_CDS_EC3_9110: FS,AS_CDS_EC3_9130: FS,0,0,0,0,0,0,0.0,0.0,0,10-25-24,11-07-24,0,0.0h,0.0h,0%,$0,0.0h,1387.5d,0,$0,$0,1.03_Accelerator Systems (AS),1.03.04_AS Cryogenic Distribution System (CDS),1.03.04.20_AS Cryogenic Distribution System Installation,1.03.04.20.60_End Cap 3 Upstream - Installation Support,AS_CDS_EC3_9120_Prepare RFP - Installation Support - End Cap 3 Upstream
298766,1.03,1.03.04,1.03.04.20,1.03.04.20.60,1.03.04.20.60,End Cap 3 Upstream - Installation Support,AS_CDS_EC3_9130,Release RFP - Installation Support - End Cap 3 Upstream,5.0,0.0,0.0,0.0,11-08-24,11-14-24,AS_CDS_EC3_9120: FS,AS_CDS_EC3_9140: FS,0,0,0,0,0,0,0.0,0.0,0,11-08-24,11-14-24,0,0.0h,0.0h,0%,$0,0.0h,1387.5d,0,$0,$0,1.03_Accelerator Systems (AS),1.03.04_AS Cryogenic Distribution System (CDS),1.03.04.20_AS Cryogenic Distribution System Installation,1.03.04.20.60_End Cap 3 Upstream - Installation Support,AS_CDS_EC3_9130_Release RFP - Installation Support - End Cap 3 Upstream
298767,1.03,1.03.04,1.03.04.20,1.03.04.20.60,1.03.04.20.60,End Cap 3 Upstream - Installation Support,AS_CDS_EC3_9140,Vendor Proposal Effort - Installation Support - End Cap 3 Upstream,10.0,0.0,0.0,0.0,11-15-24,12-02-24,AS_CDS_EC3_9130: FS,AS_CDS_EC3_9150: FS,0,0,0,0,0,0,0.0,0.0,0,11-15-24,12-02-24,0,0.0h,0.0h,0%,$0,0.0h,1387.5d,0,$0,$0,1.03_Accelerator Systems (AS),1.03.04_AS Cryogenic Distribution System (CDS),1.03.04.20_AS Cryogenic Distribution System Installation,1.03.04.20.60_End Cap 3 Upstream - Installation Support,AS_CDS_EC3_9140_Vendor Proposal Effort - Installation Support - End Cap 3 Upstream
298768,1.03,1.03.04,1.03.04.20,1.03.04.20.60,1.03.04.20.60,End Cap 3 Upstream - Installation Support,AS_CDS_EC3_9150,RCV: Vendor Proposal - Installation Support - End Cap 3 Upstream,0.0,0.0,0.0,0.0,0,12-02-24,AS_CDS_EC3_9140: FS,AS_CDS_EC3_9160: FS,0,0,0,0,0,0,0.0,0.0,0,nn,12-02-24,0,0.0h,0.0h,0%,$0,0.0h,1387.5d,0,$0,$0,1.03_Accelerator Systems (AS),1.03.04_AS Cryogenic Distribution System (CDS),1.03.04.20_AS Cryogenic Distribution System Installation,1.03.04.20.60_End Cap 3 Upstream - Installation Support,AS_CDS_EC3_9150_RCV: Vendor Proposal - Installation Support - End Cap 3 Upstream
298769,1.03,1.03.04,1.03.04.20,1.03.04.20.60,1.03.04.20.60,End Cap 3 Upstream - Installation Support,AS_CDS_EC3_9160,Evaluations/Negotiations - Installation Support - End Cap 3 Upstream,20.0,0.0,0.0,0.0,12-03-24,01-13-25,AS_CDS_EC3_9150: FS,AS_CDS_EC3_9170: FS,0,0,0,0,0,0,0.0,0.0,0,12-03-24,01-13-25,0,0.0h,0.0h,0%,$0,0.0h,1387.5d,0,$0,$0,1.03_Accelerator Systems (AS),1.03.04_AS Cryogenic Distribution System (CDS),1.03.04.20_AS Cryogenic Distribution System Installation,1.03.04.20.60_End Cap 3 Upstream - Installation Support,AS_CDS_EC3_9160_Evaluations/Negotiations - Installation Support - End Cap 3 Upstream
298770,1.03,1.03.04,1.03.04.20,1.03.04.20.60,1.03.04.20.60,End Cap 3 Upstream - Installation Support,AS_CDS_EC3_9170,Prepare Award Documents - Installation Support - End Cap 3 Upstream,5.0,0.0,0.0,0.0,01-14-25,01-21-25,AS_CDS_EC3_9160: FS,AS_CDS_EC3_9180: FS,0,0,0,0,0,0,0.0,0.0,0,01-14-25,01-21-25,0,0.0h,0.0h,0%,$0,0.0h,1387.5d,0,$0,$0,1.03_Accelerator Systems (AS),1.03.04_AS Cryogenic Distribution System (CDS),1.03.04.20_AS Cryogenic Distribution System Installation,1.03.04.20.60_End Cap 3 Upstream - Installation Support,AS_CDS_EC3_9170_Prepare Award Documents - Installation Support - End Cap 3 Upstream
298771,1.03,1.03.04,1.03.04.20,1.03.04.20.60,1.03.04.20.60,End Cap 3 Upstream - Installation Support,AS_CDS_EC3_9190,Vendor Effort - Installation Support - End Cap 3 Upstream,60.0,0.0,0.0,0.0,04-01-25,06-24-25,"AS_CDS_EC3_9180: FS, AS_M4_1010: FS",AS_CDS_EC3_9200: FS,0,0,0,0,0,0,0.0,0.0,0,04-01-25,06-24-25,0,0.0h,0.0h,0%,$0,0.0h,1340.5d,0,$0,$0,1.03_Accelerator Systems (AS),1.03.04_AS Cryogenic Distribution System (CDS),1.03.04.20_AS Cryogenic Distribution System Installation,1.03.04.20.60_End Cap 3 Upstream - Installation Support,AS_CDS_EC3_9190_Vendor Effort - Installation Support - End Cap 3 Upstream
298772,1.03,1.03.04,1.03.04.20,1.03.04.20.60,1.03.04.20.60,End Cap 3 Upstream - Installation Support,AS_CDS_EC3_9210,COMP: Installation Support - End Cap 3 Upstream,0.0,0.0,0.0,0.0,0,08-06-25,"AS_CDS_EC3_9200: FS, AS_CDS_EC3_9070: FS","AS_CDS_9010: FS, AS_CDS_EC3_9220: FS",0,0,0,0,0,0,0.0,0.0,0,nn,08-06-25,0,0.0h,0.0h,0%,$0,0.0h,1311.5d,0,$0,$0,1.03_Accelerator Systems (AS),1.03.04_AS Cryogenic Distribution System (CDS),1.03.04.20_AS Cryogenic Distribution System Installation,1.03.04.20.60_End Cap 3 Upstream - Installation Support,AS_CDS_EC3_9210_COMP: Installation Support - End Cap 3 Upstream
298773,1.03,1.03.04,1.03.04.20,1.03.04.20.60,1.03.04.20.60,End Cap 3 Upstream - Installation Support,AS_CDS_EC3_9220,RFI: Ready for Controls Installation - End Cap 3 Upstream,0.0,0.0,0.0,0.0,0,08-06-25,AS_CDS_EC3_9210: FS,0,0,0,0,0,0,0,0.0,0.0,0,nn,08-06-25,0,0.0h,0.0h,0%,$0,0.0h,1411.5d,0,$0,$0,1.03_Accelerator Systems (AS),1.03.04_AS Cryogenic Distribution System (CDS),1.03.04.20_AS Cryogenic Distribution System Installation,1.03.04.20.60_End Cap 3 Upstream - Installation Support,AS_CDS_EC3_9220_RFI: Ready for Controls Installation - End Cap 3 Upstream
298774,1.03,1.03.04,1.03.04.20,1.03.04.20.61,1.03.04.20.61,End Cap Downstream - Installation Support,AS_CDS_EC4_9100,Prepare Requisition (Specs/SOW/ETC) - Installation Support - End Cap Downstream,15.0,0.0,0.0,0.0,10-03-24,10-23-24,"AS_CDS_EC_6210: FS, AS_CDS_TU_5070: FS",AS_CDS_EC4_9110: FS,0,0,0,0,0,0,0.0,0.0,0,10-03-24,10-23-24,0,0.0h,0.0h,0%,$0,0.0h,1390.5d,0,$0,$0,1.03_Accelerator Systems (AS),1.03.04_AS Cryogenic Distribution System (CDS),1.03.04.20_AS Cryogenic Distribution System Installation,1.03.04.20.61_End Cap Downstream - Installation Support,AS_CDS_EC4_9100_Prepare Requisition (Specs/SOW/ETC) - Installation Support - End Cap Downstream
298775,1.03,1.03.04,1.03.04.20,1.03.04.20.61,1.03.04.20.61,End Cap Downstream - Installation Support,AS_CDS_EC4_9120,Prepare RFP - Installation Support - End Cap Downstream,10.0,0.0,0.0,0.0,10-25-24,11-07-24,AS_CDS_EC4_9110: FS,AS_CDS_EC4_9130: FS,0,0,0,0,0,0,0.0,0.0,0,10-25-24,11-07-24,0,0.0h,0.0h,0%,$0,0.0h,1390.5d,0,$0,$0,1.03_Accelerator Systems (AS),1.03.04_AS Cryogenic Distribution System (CDS),1.03.04.20_AS Cryogenic Distribution System Installation,1.03.04.20.61_End Cap Downstream - Installation Support,AS_CDS_EC4_9120_Prepare RFP - Installation Support - End Cap Downstream
298776,1.03,1.03.04,1.03.04.20,1.03.04.20.61,1.03.04.20.61,End Cap Downstream - Installation Support,AS_CDS_EC4_9130,Release RFP - Installation Support - End Cap Downstream,2.0,0.0,0.0,0.0,11-08-24,11-11-24,AS_CDS_EC4_9120: FS,AS_CDS_EC4_9140: FS,0,0,0,0,0,0,0.0,0.0,0,11-08-24,11-11-24,0,0.0h,0.0h,0%,$0,0.0h,1390.5d,0,$0,$0,1.03_Accelerator Systems (AS),1.03.04_AS Cryogenic Distribution System (CDS),1.03.04.20_AS Cryogenic Distribution System Installation,1.03.04.20.61_End Cap Downstream - Installation Support,AS_CDS_EC4_9130_Release RFP - Installation Support - End Cap Downstream
298777,1.03,1.03.04,1.03.04.20,1.03.04.20.61,1.03.04.20.61,End Cap Downstream - Installation Support,AS_CDS_EC4_9140,Vendor Proposal Effort - Installation Support - End Cap Downstream,10.0,0.0,0.0,0.0,11-12-24,11-25-24,AS_CDS_EC4_9130: FS,AS_CDS_EC4_9150: FS,0,0,0,0,0,0,0.0,0.0,0,11-12-24,11-25-24,0,0.0h,0.0h,0%,$0,0.0h,1390.5d,0,$0,$0,1.03_Accelerator Systems (AS),1.03.04_AS Cryogenic Distribution System (CDS),1.03.04.20_AS Cryogenic Distribution System Installation,1.03.04.20.61_End Cap Downstream - Installation Support,AS_CDS_EC4_9140_Vendor Proposal Effort - Installation Support - End Cap Downstream
298778,1.03,1.03.04,1.03.04.20,1.03.04.20.61,1.03.04.20.61,End Cap Downstream - Installation Support,AS_CDS_EC4_9150,RCV: Vendor Proposal - Installation Support - End Cap Downstream,0.0,0.0,0.0,0.0,0,11-25-24,AS_CDS_EC4_9140: FS,AS_CDS_EC4_9160: FS,0,0,0,0,0,0,0.0,0.0,0,nn,11-25-24,0,0.0h,0.0h,0%,$0,0.0h,1390.5d,0,$0,$0,1.03_Accelerator Systems (AS),1.03.04_AS Cryogenic Distribution System (CDS),1.03.04.20_AS Cryogenic Distribution System Installation,1.03.04.20.61_End Cap Downstream - Installation Support,AS_CDS_EC4_9150_RCV: Vendor Proposal - Installation Support - End Cap Downstream
298779,1.03,1.03.04,1.03.04.20,1.03.04.20.61,1.03.04.20.61,End Cap Downstream - Installation Support,AS_CDS_EC4_9160,Evaluations/Negotiations - Installation Support - End Cap Downstream,20.0,0.0,0.0,0.0,11-26-24,01-08-25,AS_CDS_EC4_9150: FS,AS_CDS_EC4_9170: FS,0,0,0,0,0,0,0.0,0.0,0,11-26-24,01-08-25,0,0.0h,0.0h,0%,$0,0.0h,1390.5d,0,$0,$0,1.03_Accelerator Systems (AS),1.03.04_AS Cryogenic Distribution System (CDS),1.03.04.20_AS Cryogenic Distribution System Installation,1.03.04.20.61_End Cap Downstream - Installation Support,AS_CDS_EC4_9160_Evaluations/Negotiations - Installation Support - End Cap Downstream
298780,1.03,1.03.04,1.03.04.20,1.03.04.20.61,1.03.04.20.61,End Cap Downstream - Installation Support,AS_CDS_EC4_9170,Prepare Award Documents - Installation Support - End Cap Downstream,5.0,0.0,0.0,0.0,01-09-25,01-15-25,AS_CDS_EC4_9160: FS,AS_CDS_EC4_9180: FS,0,0,0,0,0,0,0.0,0.0,0,01-09-25,01-15-25,0,0.0h,0.0h,0%,$0,0.0h,1390.5d,0,$0,$0,1.03_Accelerator Systems (AS),1.03.04_AS Cryogenic Distribution System (CDS),1.03.04.20_AS Cryogenic Distribution System Installation,1.03.04.20.61_End Cap Downstream - Installation Support,AS_CDS_EC4_9170_Prepare Award Documents - Installation Support - End Cap Downstream
298781,1.03,1.03.04,1.03.04.20,1.03.04.20.61,1.03.04.20.61,End Cap Downstream - Installation Support,AS_CDS_EC4_9190,Vendor Effort - Installation Support - End Cap Downstream,60.0,0.0,0.0,0.0,01-17-25,04-14-25,AS_CDS_EC4_9180: FS,AS_CDS_EC4_9200: FS,0,0,0,0,0,0,0.0,0.0,0,01-17-25,04-14-25,0,0.0h,0.0h,0%,$0,0.0h,1390.5d,0,$0,$0,1.03_Accelerator Systems (AS),1.03.04_AS Cryogenic Distribution System (CDS),1.03.04.20_AS Cryogenic Distribution System Installation,1.03.04.20.61_End Cap Downstream - Installation Support,AS_CDS_EC4_9190_Vendor Effort - Installation Support - End Cap Downstream
298782,1.03,1.03.04,1.03.04.20,1.03.04.20.61,1.03.04.20.61,End Cap Downstream - Installation Support,AS_CDS_EC4_9210,COMP: Installation Support - End Cap Downstream,0.0,0.0,0.0,0.0,0,11-24-26,"AS_CDS_EC4_9200: FS, AS_CDS_EC4_9070: FS","AS_CDS_9010: FS, AS_CDS_EC4_9220: FS",0,0,0,0,0,0,0.0,0.0,0,nn,11-24-26,0,0.0h,0.0h,0%,$0,0.0h,990.5d,0,$0,$0,1.03_Accelerator Systems (AS),1.03.04_AS Cryogenic Distribution System (CDS),1.03.04.20_AS Cryogenic Distribution System Installation,1.03.04.20.61_End Cap Downstream - Installation Support,AS_CDS_EC4_9210_COMP: Installation Support - End Cap Downstream
298783,1.03,1.03.04,1.03.04.20,1.03.04.20.61,1.03.04.20.61,End Cap Downstream - Installation Support,AS_CDS_EC4_9220,RFI: Ready for Controls Installation - End Cap Downstream,0.0,0.0,0.0,0.0,0,11-24-26,AS_CDS_EC4_9210: FS,0,0,0,0,0,0,0,0.0,0.0,0,nn,11-24-26,0,0.0h,0.0h,0%,$0,0.0h,1090.5d,0,$0,$0,1.03_Accelerator Systems (AS),1.03.04_AS Cryogenic Distribution System (CDS),1.03.04.20_AS Cryogenic Distribution System Installation,1.03.04.20.61_End Cap Downstream - Installation Support,AS_CDS_EC4_9220_RFI: Ready for Controls Installation - End Cap Downstream
298784,1.03,1.03.05,1.03.05,1.03.05,1.03.05,AS Beam Transfer Line (BTL),AS_BTL_9000,COMP: BTL Ready for CD-2/3,0.0,0.0,0.0,0.0,0,10-18-22,"AS_DMP_DE_1070: FS, AS_BTL_DE_1060: FS",AS_M4_3000: FS,0,0,0,0,0,0,0.0,0.0,0,nn,10-18-22,0,0.0h,0.0h,0%,$0,0.0h,178.0d,0,$0,$0,1.03_Accelerator Systems (AS),1.03.05_AS Beam Transfer Line (BTL),,,AS_BTL_9000_COMP: BTL Ready for CD-2/3
298785,1.03,1.03.05,1.03.05.05,1.03.05.05.01,1.03.05.05.01,Dogleg and Spreader Area Design,AS_SPD_DE_1000,START: Design - BTL - SPD,0.0,0.0,0.0,0.0,0,0,MS_FY_2021_Q2: FS,AS_SPD_DE_1010: FS,0,0,0,0,0,0,0.0,0.0,0,nn,11-09-20,0,0.0h,0.0h,100%,$0,0.0h,0,0,$0,$0,1.03_Accelerator Systems (AS),1.03.05_AS Beam Transfer Line (BTL),1.03.05.05_AS Beam Transfer Line Engineering and Design,1.03.05.05.01_Dogleg and Spreader Area Design,AS_SPD_DE_1000_START: Design - BTL - SPD
298786,1.03,1.03.05,1.03.05.05,1.03.05.05.01,1.03.05.05.01,Dogleg and Spreader Area Design,AS_DOG_DE_1000,START: Design - BTL - DOG,0.0,0.0,0.0,0.0,0,0,MS_FY_2021_Q2: FS,"AS_DOG_DE_1010: FS, AS_DOG_DE_1020: FS, AS_SPD_DE_1020: FS",0,0,0,0,0,0,0.0,0.0,0,nn,01-04-21,0,0.0h,0.0h,100%,$0,0.0h,0,0,$0,$0,1.03_Accelerator Systems (AS),1.03.05_AS Beam Transfer Line (BTL),1.03.05.05_AS Beam Transfer Line Engineering and Design,1.03.05.05.01_Dogleg and Spreader Area Design,AS_DOG_DE_1000_START: Design - BTL - DOG
298787,1.03,1.03.05,1.03.05.05,1.03.05.05.01,1.03.05.05.01,Dogleg and Spreader Area Design,AS_SPD_DE_1029,COMP: High rep rate kicker tests - BTL - SPD,0.0,0.0,0.0,0.0,0,10-01-21,0,AS_SPD_DE_1030: FS,0,0,0,0,0,0,0.0,0.0,0,nn,10-01-21,0,0.0h,0.0h,0%,$0,0.0h,348.0d,0,$0,$0,1.03_Accelerator Systems (AS),1.03.05_AS Beam Transfer Line (BTL),1.03.05.05_AS Beam Transfer Line Engineering and Design,1.03.05.05.01_Dogleg and Spreader Area Design,AS_SPD_DE_1029_COMP: High rep rate kicker tests - BTL - SPD
298788,1.03,1.03.05,1.03.05.05,1.03.05.05.01,1.03.05.05.01,Dogleg and Spreader Area Design,AS_BTL_DE_1200,COMP: BTL Mechanical Design - FY22 Commencement,0.0,0.0,0.0,0.0,0,01-25-22,AS_RAS_DE_2130: FS,"AS_DOG_DE_1025: FS, AS_SPD_DE_1025: FS, AS_SPD_DE_1030: FS, AS_BSY_DE_1030: FS",0,0,0,0,0,0,0.0,0.0,0,nn,01-25-22,0,0.0h,0.0h,0%,$0,0.0h,230.0d,0,$0,$0,1.03_Accelerator Systems (AS),1.03.05_AS Beam Transfer Line (BTL),1.03.05.05_AS Beam Transfer Line Engineering and Design,1.03.05.05.01_Dogleg and Spreader Area Design,AS_BTL_DE_1200_COMP: BTL Mechanical Design - FY22 Commencement
298789,1.03,1.03.05,1.03.05.05,1.03.05.05.01,1.03.05.05.01,Dogleg and Spreader Area Design,AS_BTL_DE_1030,COMP: Preliminary Design - BTL - DOG & SPD,0.0,0.0,0.0,0.0,0,04-27-22,AS_BTL_DE_1020: FS,"AS_DOG_DE_1040: FS, AS_SPD_DE_1050: FS",0,0,0,0,0,0,0.0,0.0,0,nn,04-27-22,0,0.0h,0.0h,0%,$0,0.0h,230.0d,0,$0,$0,1.03_Accelerator Systems (AS),1.03.05_AS Beam Transfer Line (BTL),1.03.05.05_AS Beam Transfer Line Engineering and Design,1.03.05.05.01_Dogleg and Spreader Area Design,AS_BTL_DE_1030_COMP: Preliminary Design - BTL - DOG & SPD
298790,1.03,1.03.05,1.03.05.05,1.03.05.05.01,1.03.05.05.01,Dogleg and Spreader Area Design,AS_BTL_DE_1060,COMP: Design - BTL - DOG & SPD,0.0,0.0,0.0,0.0,0,08-04-22,AS_BTL_DE_1050: FS,"AS_SPD_MANF_1000: FS, AS_SPD_MANF_1200: FS, AS_SPD_MANF_1400: FS, AS_SPD_MANF_1600: FS, AS_SPD_MANF_1800: FS, AS_SPD_MANF_2200: FS, AS_SPD_MANF_2800: FS, AS_SPD_MANF_2600: FS, AS_SPD_MANF_3200: FS, AS_SPD_DE_1130: FS, AS_DOG_DE_1080: FS, AS_DOG_MANF_1000: FS, AS_DOG_MANF_1400: FS, AS_DOG_MANF_1600: FS, AS_DOG_MANF_1200: FS, AS_DOG_MANF_2000: FS, AS_DOG_MANF_2200: FS, AS_DOG_MANF_2400: FS, AS_SPD_MANF_3000: FS, AS_SPD_MANF_2000: FS, AS_SPD_MANF_2400: FS, AS_SPD_MANF_3400: FS, AS_SPD_MANF_3600: FS, AS_SPD_MANF_3800: FS, AS_SPD_MANF_4000: FS, AS_SPD_MANF_4200: FS, AS_BTL_9000: FS",0,0,0,0,0,0,0.0,0.0,0,nn,08-04-22,DM-A11-10%,0.0h,0.0h,0%,$0,0.0h,230.0d,0,$0,$0,1.03_Accelerator Systems (AS),1.03.05_AS Beam Transfer Line (BTL),1.03.05.05_AS Beam Transfer Line Engineering and Design,1.03.05.05.01_Dogleg and Spreader Area Design,AS_BTL_DE_1060_COMP: Design - BTL - DOG & SPD
298791,1.03,1.03.05,1.03.05.05,1.03.05.05.01,1.03.05.05.01,Dogleg and Spreader Area Design,AS_DOG_DE_1080,COMP: Design - BTL - DOG,0.0,0.0,0.0,0.0,0,08-04-22,AS_BTL_DE_1060: FS,AS_BTL_MANF_1000: FS,0,0,0,0,0,0,0.0,0.0,0,nn,08-04-22,0,0.0h,0.0h,0%,$0,0.0h,297.0d,0,$0,$0,1.03_Accelerator Systems (AS),1.03.05_AS Beam Transfer Line (BTL),1.03.05.05_AS Beam Transfer Line Engineering and Design,1.03.05.05.01_Dogleg and Spreader Area Design,AS_DOG_DE_1080_COMP: Design - BTL - DOG
298792,1.03,1.03.05,1.03.05.05,1.03.05.05.01,1.03.05.05.01,Dogleg and Spreader Area Design,AS_SPD_DE_1130,COMP: Design  - BTL - SPD,0.0,0.0,0.0,0.0,0,08-04-22,AS_BTL_DE_1060: FS,"AS_BTL_MANF_1000: FS, AS_BTL_MANF_2000: FS",0,0,0,0,0,0,0.0,0.0,0,nn,08-04-22,0,0.0h,0.0h,0%,$0,0.0h,297.0d,0,$0,$0,1.03_Accelerator Systems (AS),1.03.05_AS Beam Transfer Line (BTL),1.03.05.05_AS Beam Transfer Line Engineering and Design,1.03.05.05.01_Dogleg and Spreader Area Design,AS_SPD_DE_1130_COMP: Design  - BTL - SPD
298793,1.03,1.03.05,1.03.05.05,1.03.05.05.02,1.03.05.05.02,BSY and EBD Area Design,AS_BSY_DE_1000,START: Design - BTL - BSY,0.0,0.0,0.0,0.0,0,0,MS_FY_2021_Q2: FS,AS_BSY_DE_1010: FS,0,0,0,0,0,0,0.0,0.0,0,nn,11-20-20,0,0.0h,0.0h,100%,$0,0.0h,0,0,$0,$0,1.03_Accelerator Systems (AS),1.03.05_AS Beam Transfer Line (BTL),1.03.05.05_AS Beam Transfer Line Engineering and Design,1.03.05.05.02_BSY and EBD Area Design,AS_BSY_DE_1000_START: Design - BTL - BSY
298794,1.03,1.03.05,1.03.05.05,1.03.05.05.02,1.03.05.05.02,BSY and EBD Area Design,AS_EBD_DE_1000,START: Design - BTL - EBD,0.0,0.0,0.0,0.0,0,0,MS_FY_2021_Q2: FS,AS_RAS_DE_1000: FS,0,0,0,0,0,0,0.0,0.0,0,nn,05-03-21,0,0.0h,0.0h,100%,$0,0.0h,0,0,$0,$0,1.03_Accelerator Systems (AS),1.03.05_AS Beam Transfer Line (BTL),1.03.05.05_AS Beam Transfer Line Engineering and Design,1.03.05.05.02_BSY and EBD Area Design,AS_EBD_DE_1000_START: Design - BTL - EBD
298795,1.03,1.03.05,1.03.05.05,1.03.05.05.02,1.03.05.05.02,BSY and EBD Area Design,AS_RAS_DE_2030,COMP: Conceptual Design Review - Rastering Systems - BTL - BSY & EBD,0.0,0.0,0.0,0.0,0,0,AS_RAS_DE_2020: FS,"AS_RAS_DE_1010: FS, AS_EBD_DE_1010: FS, AS_EBD_DE_1100: FS, AS_RAS_DE_1020: FS",0,0,0,0,0,0,0.0,0.0,0,nn,10-01-21,0,0.0h,0.0h,100%,$0,0.0h,0,0,$0,$0,1.03_Accelerator Systems (AS),1.03.05_AS Beam Transfer Line (BTL),1.03.05.05_AS Beam Transfer Line Engineering and Design,1.03.05.05.02_BSY and EBD Area Design,AS_RAS_DE_2030_COMP: Conceptual Design Review - Rastering Systems - BTL - BSY & EBD
298796,1.03,1.03.05,1.03.05.05,1.03.05.05.02,1.03.05.05.02,BSY and EBD Area Design,AS_RAS_DE_2130,COMP: Preliminary Design - Rastering Systems - BTL - BSY & EBD,0.0,0.0,0.0,0.0,0,01-25-22,AS_RAS_DE_2120: FS,"AS_DMP_DE_1000: FS, AS_BSY_MANF_1000: FS, AS_EBD_MANF_1020: FS, AS_BTL_DE_1200: FS",0,0,0,0,0,0,0.0,0.0,0,nn,01-25-22,0,0.0h,0.0h,0%,$0,0.0h,141.0d,0,$0,$0,1.03_Accelerator Systems (AS),1.03.05_AS Beam Transfer Line (BTL),1.03.05.05_AS Beam Transfer Line Engineering and Design,1.03.05.05.02_BSY and EBD Area Design,AS_RAS_DE_2130_COMP: Preliminary Design - Rastering Systems - BTL - BSY & EBD
298797,1.03,1.03.05,1.03.05.05,1.03.05.05.02,1.03.05.05.02,BSY and EBD Area Design,AS_DMP_DE_1030,COMP: Preliminary Design -  BTL - BSY & EBD,0.0,0.0,0.0,0.0,0,03-24-22,AS_DMP_DE_1020: FS,"AS_EBD_DE_1120: FS, AS_BSY_DE_1070: FS",0,0,0,0,0,0,0.0,0.0,0,nn,03-24-22,0,0.0h,0.0h,0%,$0,0.0h,245.0d,0,$0,$0,1.03_Accelerator Systems (AS),1.03.05_AS Beam Transfer Line (BTL),1.03.05.05_AS Beam Transfer Line Engineering and Design,1.03.05.05.02_BSY and EBD Area Design,AS_DMP_DE_1030_COMP: Preliminary Design -  BTL - BSY & EBD
298798,1.03,1.03.05,1.03.05.05,1.03.05.05.02,1.03.05.05.02,BSY and EBD Area Design,AS_RAS_DE_2230,COMP: Design - Rastering Systems - BTL -  BSY & EBD,0.0,0.0,0.0,0.0,0,09-26-22,AS_RAS_DE_2220: FS,AS_DMP_DE_1040: FS,0,0,0,0,0,0,0.0,0.0,0,nn,09-26-22,DM-A11-10%,0.0h,0.0h,0%,$0,0.0h,141.0d,0,$0,$0,1.03_Accelerator Systems (AS),1.03.05_AS Beam Transfer Line (BTL),1.03.05.05_AS Beam Transfer Line Engineering and Design,1.03.05.05.02_BSY and EBD Area Design,AS_RAS_DE_2230_COMP: Design - Rastering Systems - BTL -  BSY & EBD
298799,1.03,1.03.05,1.03.05.05,1.03.05.05.02,1.03.05.05.02,BSY and EBD Area Design,AS_BSY_DE_1080,COMP: Design - BTL - BSY,0.0,0.0,0.0,0.0,0,10-18-22,AS_DMP_DE_1070: FS,"AS_BTL_MANF_1000: FS, AS_BTL_MANF_2100: FS",0,0,0,0,0,0,0.0,0.0,0,nn,10-18-22,0,0.0h,0.0h,0%,$0,0.0h,141.0d,0,$0,$0,1.03_Accelerator Systems (AS),1.03.05_AS Beam Transfer Line (BTL),1.03.05.05_AS Beam Transfer Line Engineering and Design,1.03.05.05.02_BSY and EBD Area Design,AS_BSY_DE_1080_COMP: Design - BTL - BSY
298800,1.03,1.03.05,1.03.05.05,1.03.05.05.02,1.03.05.05.02,BSY and EBD Area Design,AS_EBD_DE_1140,COMP: Design - BTL - EBD,0.0,0.0,0.0,0.0,0,10-18-22,AS_DMP_DE_1070: FS,"AS_EBD_MANF_1400: FS, AS_BTL_MANF_2100: FS",0,0,0,0,0,0,0.0,0.0,0,nn,10-18-22,0,0.0h,0.0h,0%,$0,0.0h,141.0d,0,$0,$0,1.03_Accelerator Systems (AS),1.03.05_AS Beam Transfer Line (BTL),1.03.05.05_AS Beam Transfer Line Engineering and Design,1.03.05.05.02_BSY and EBD Area Design,AS_EBD_DE_1140_COMP: Design - BTL - EBD
298801,1.03,1.03.05,1.03.05.05,1.03.05.05.02,1.03.05.05.02,BSY and EBD Area Design,AS_DMP_DE_1070,COMP: Design - BTL - BSY & EBD,0.0,0.0,0.0,0.0,0,10-18-22,AS_DMP_DE_1060: FS,"AS_BSY_DE_1080: FS, AS_EBD_DE_1140: FS, AS_BSY_MANF_5010: FS, AS_BSY_MANF_4010: FS, AS_BSY_MANF_1400: FS, AS_BSY_MANF_1600: FS, AS_BSY_MANF_1800: FS, AS_BSY_MANF_2000: FS, AS_BSY_MANF_1200: FS, AS_EBD_MANF_4010: FS, AS_EBD_MANF_1600: FS, AS_EBD_MANF_1800: FS, AS_EBD_MANF_2000: FS, AS_EBD_MANF_2200: FS, AS_EBD_MANF_1400: FS, AS_BTL_9000: FS",0,0,0,0,0,0,0.0,0.0,0,nn,10-18-22,DM-A11-10%,0.0h,0.0h,0%,$0,0.0h,141.0d,0,$0,$0,1.03_Accelerator Systems (AS),1.03.05_AS Beam Transfer Line (BTL),1.03.05.05_AS Beam Transfer Line Engineering and Design,1.03.05.05.02_BSY and EBD Area Design,AS_DMP_DE_1070_COMP: Design - BTL - BSY & EBD
298802,1.03,1.03.05,1.03.05.06,1.03.05.06,1.03.05.06,AS Beam Transfer Line Procurement and Fabrication,AS_BTL_MANF_1010,Store Procured items in Inventory - BTL,222.0,0.0,0.0,0.0,09-05-23,08-02-24,"AS_DOG_MANF_1080: FF, AS_DOG_MANF_1470: FF, AS_DOG_MANF_1670: FF, AS_DOG_MANF_2080: FF, AS_DOG_MANF_2270: FF, AS_DOG_MANF_2460: FF, AS_SPD_MANF_3060: FF, AS_SPD_MANF_2070: FF, AS_SPD_MANF_3470: FF, AS_SPD_MANF_3660: FF, AS_SPD_MANF_3860: FF, AS_SPD_MANF_4070: FF, AS_SPD_MANF_4260: FF, AS_SPD_MANF_1080: FF, AS_SPD_MANF_1480: FF, AS_SPD_MANF_1680: FF, AS_SPD_MANF_1860: FF, AS_SPD_MANF_2280: FF, AS_SPD_MANF_2860: FF, AS_SPD_MANF_3270: FF, AS_BSY_MANF_1470: FF, AS_BSY_MANF_1670: FF, AS_BSY_MANF_1870: FF, AS_BSY_MANF_2060: FF, AS_BSY_MANF_6020: FF, AS_EBD_MANF_1670: FF, AS_EBD_MANF_1870: FF, AS_EBD_MANF_2260: FF, AS_EBD_MANF_2070: FF, AS_EBD_MANF_1470: FF, AS_BSY_MANF_1070: FF, AS_BSY_MANF_1260: FF, AS_BSY_MANF_5010: FS, AS_BSY_MANF_5000: FF, AS_BSY_MANF_4010: FS, AS_BSY_MANF_4000: FF, AS_EBD_MANF_4000: FF, AS_EBD_MANF_4010: FS, AS_EBD_MANF_1160: FF",AS_M4_DTL1_1010: FS,0,0,0,0,0,0,0.0,0.0,0,09-05-23,08-02-24,0,0.0h,0.0h,0%,$0,0.0h,400.0d,0,$0,$0,1.03_Accelerator Systems (AS),1.03.05_AS Beam Transfer Line (BTL),1.03.05.06_AS Beam Transfer Line Procurement and Fabrication,,AS_BTL_MANF_1010_Store Procured items in Inventory - BTL
298803,1.03,1.03.05,1.03.05.06,1.03.05.06,1.03.05.06,AS Beam Transfer Line Procurement and Fabrication,AS_BTL_MANF_1000,START: Procurements - BTL,0.0,0.0,0.0,0.0,0,09-29-23,"AS_DOG_DE_1080: FS, AS_SPD_DE_1130: FS, AS_BSY_DE_1080: FS, AS_M4_3010: FS","AS_BSY_MANF_5000: FS, AS_BSY_MANF_4000: FS, AS_EBD_MANF_4000: FS, AS_DOG_MANF_1010: FS, AS_DOG_MANF_1410: FS, AS_DOG_MANF_1610: FS, AS_DOG_MANF_1210: FS, AS_DOG_MANF_2010: FS, AS_DOG_MANF_2210: FS, AS_DOG_MANF_2410: FS, AS_SPD_MANF_3010: FS, AS_SPD_MANF_2010: FS, AS_SPD_MANF_2410: FS, AS_SPD_MANF_3410: FS, AS_SPD_MANF_3610: FS, AS_SPD_MANF_3810: FS, AS_SPD_MANF_4010: FS, AS_SPD_MANF_4210: FS, AS_SPD_MANF_1010: FS, AS_SPD_MANF_1210: FS, AS_SPD_MANF_1410: FS, AS_SPD_MANF_1610: FS, AS_SPD_MANF_1810: FS, AS_SPD_MANF_2210: FS, AS_SPD_MANF_2810: FS, AS_SPD_MANF_2610: FS, AS_SPD_MANF_3210: FS, AS_BSY_MANF_1410: FS, AS_BSY_MANF_1610: FS, AS_BSY_MANF_1810: FS, AS_BSY_MANF_2010: FS, AS_BSY_MANF_1210: FS, AS_EBD_MANF_1620: FS, AS_EBD_MANF_1810: FS, AS_EBD_MANF_2010: FS, AS_EBD_MANF_2210: FS, AS_EBD_MANF_1410: FS, AS_BSY_MANF_1010: FS, AS_EBD_MANF_1610: FS, AS_EBD_MANF_1130: FS",0,0,0,0,0,0,0.0,0.0,0,nn,09-29-23,0,0.0h,0.0h,0%,$0,0.0h,14.0d,0,$0,$0,1.03_Accelerator Systems (AS),1.03.05_AS Beam Transfer Line (BTL),1.03.05.06_AS Beam Transfer Line Procurement and Fabrication,,AS_BTL_MANF_1000_START: Procurements - BTL
298804,1.03,1.03.05,1.03.05.06,1.03.05.06.01,1.03.05.06.01,Dogleg and Spreader Area - Procurement & Fab,AS_SPD_MANF_1800,Prepare Requisition (Specs/SOW/ETC) - Kicker Magnet Stands - BTL - SPD,20.0,0.0,0.0,0.0,10-04-22,10-31-22,"AS_BTL_DE_1060: FS, MS_FY_2023_Q1: FS",AS_SPD_MANF_1810: FS,0,0,0,0,0,0,0.0,0.0,0,10-04-22,10-31-22,0,0.0h,0.0h,0%,$0,0.0h,352.0d,0,$0,$0,1.03_Accelerator Systems (AS),1.03.05_AS Beam Transfer Line (BTL),1.03.05.06_AS Beam Transfer Line Procurement and Fabrication,1.03.05.06.01_Dogleg and Spreader Area - Procurement & Fab,AS_SPD_MANF_1800_Prepare Requisition (Specs/SOW/ETC) - Kicker Magnet Stands - BTL - SPD
298805,1.03,1.03.05,1.03.05.06,1.03.05.06.01,1.03.05.06.01,Dogleg and Spreader Area - Procurement & Fab,AS_SPD_MANF_1020,Procurement Process - 0.787K35 Kicker Magnet - BTL - SPD,20.0,0.0,0.0,0.0,10-03-23,10-30-23,AS_SPD_MANF_1010: FS,AS_SPD_MANF_1030: FS,0,0,0,0,0,0,0.0,0.0,0,10-03-23,10-30-23,0,0.0h,0.0h,0%,$0,0.0h,24.0d,0,$0,$0,1.03_Accelerator Systems (AS),1.03.05_AS Beam Transfer Line (BTL),1.03.05.06_AS Beam Transfer Line Procurement and Fabrication,1.03.05.06.01_Dogleg and Spreader Area - Procurement & Fab,AS_SPD_MANF_1020_Procurement Process - 0.787K35 Kicker Magnet - BTL - SPD
298806,1.03,1.03.05,1.03.05.06,1.03.05.06.01,1.03.05.06.01,Dogleg and Spreader Area - Procurement & Fab,AS_SPD_MANF_1220,Procurement Process - 0.787K35 Drift Tube - BTL - SPD,20.0,0.0,0.0,0.0,10-03-23,10-30-23,AS_SPD_MANF_1210: FS,AS_SPD_MANF_1230: FS,0,0,0,0,0,0,0.0,0.0,0,10-03-23,10-30-23,0,0.0h,0.0h,0%,$0,0.0h,14.0d,0,$0,$0,1.03_Accelerator Systems (AS),1.03.05_AS Beam Transfer Line (BTL),1.03.05.06_AS Beam Transfer Line Procurement and Fabrication,1.03.05.06.01_Dogleg and Spreader Area - Procurement & Fab,AS_SPD_MANF_1220_Procurement Process - 0.787K35 Drift Tube - BTL - SPD
298807,1.03,1.03.05,1.03.05.06,1.03.05.06.01,1.03.05.06.01,Dogleg and Spreader Area - Procurement & Fab,AS_SPD_MANF_1420,Procurement Process - 1.378K35 Kicker Magnet -BTL - SPD,20.0,0.0,0.0,0.0,10-03-23,10-30-23,AS_SPD_MANF_1410: FS,AS_SPD_MANF_1430: FS,0,0,0,0,0,0,0.0,0.0,0,10-03-23,10-30-23,0,0.0h,0.0h,0%,$0,0.0h,410.0d,0,$0,$0,1.03_Accelerator Systems (AS),1.03.05_AS Beam Transfer Line (BTL),1.03.05.06_AS Beam Transfer Line Procurement and Fabrication,1.03.05.06.01_Dogleg and Spreader Area - Procurement & Fab,AS_SPD_MANF_1420_Procurement Process - 1.378K35 Kicker Magnet -BTL - SPD
298808,1.03,1.03.05,1.03.05.06,1.03.05.06.01,1.03.05.06.01,Dogleg and Spreader Area - Procurement & Fab,AS_SPD_MANF_1620,Procurement Process - 1.378K35 Drift Tube -BTL - SPD,20.0,0.0,0.0,0.0,10-03-23,10-30-23,AS_SPD_MANF_1610: FS,AS_SPD_MANF_1630: FS,0,0,0,0,0,0,0.0,0.0,0,10-03-23,10-30-23,0,0.0h,0.0h,0%,$0,0.0h,400.0d,0,$0,$0,1.03_Accelerator Systems (AS),1.03.05_AS Beam Transfer Line (BTL),1.03.05.06_AS Beam Transfer Line Procurement and Fabrication,1.03.05.06.01_Dogleg and Spreader Area - Procurement & Fab,AS_SPD_MANF_1620_Procurement Process - 1.378K35 Drift Tube -BTL - SPD
298809,1.03,1.03.05,1.03.05.06,1.03.05.06.01,1.03.05.06.01,Dogleg and Spreader Area - Procurement & Fab,AS_SPD_MANF_1820,Procurement Process - Kicker Magnet Stands - BTL - SPD,10.0,0.0,0.0,0.0,10-03-23,10-16-23,AS_SPD_MANF_1810: FS,AS_SPD_MANF_1830: FS,0,0,0,0,0,0,0.0,0.0,0,10-03-23,10-16-23,0,0.0h,0.0h,0%,$0,0.0h,130.0d,0,$0,$0,1.03_Accelerator Systems (AS),1.03.05_AS Beam Transfer Line (BTL),1.03.05.06_AS Beam Transfer Line Procurement and Fabrication,1.03.05.06.01_Dogleg and Spreader Area - Procurement & Fab,AS_SPD_MANF_1820_Procurement Process - Kicker Magnet Stands - BTL - SPD
298810,1.03,1.03.05,1.03.05.06,1.03.05.06.01,1.03.05.06.01,Dogleg and Spreader Area - Procurement & Fab,AS_SPD_MANF_2220,Procurement Process - 1.38S3.00 Sextupoles - BTL - SPD,20.0,0.0,0.0,0.0,10-03-23,10-30-23,AS_SPD_MANF_2210: FS,AS_SPD_MANF_2230: FS,0,0,0,0,0,0,0.0,0.0,0,10-03-23,10-30-23,0,0.0h,0.0h,0%,$0,0.0h,25.0d,0,$0,$0,1.03_Accelerator Systems (AS),1.03.05_AS Beam Transfer Line (BTL),1.03.05.06_AS Beam Transfer Line Procurement and Fabrication,1.03.05.06.01_Dogleg and Spreader Area - Procurement & Fab,AS_SPD_MANF_2220_Procurement Process - 1.38S3.00 Sextupoles - BTL - SPD
298811,1.03,1.03.05,1.03.05.06,1.03.05.06.01,1.03.05.06.01,Dogleg and Spreader Area - Procurement & Fab,AS_SPD_MANF_2820,Procurement Process - 1.38S3.00 Magnet Stand - BTL - SPD,17.0,0.0,0.0,0.0,10-03-23,10-25-23,AS_SPD_MANF_2810: FS,AS_SPD_MANF_2830: FS,0,0,0,0,0,0,0.0,0.0,0,10-03-23,10-25-23,0,0.0h,0.0h,0%,$0,0.0h,133.0d,0,$0,$0,1.03_Accelerator Systems (AS),1.03.05_AS Beam Transfer Line (BTL),1.03.05.06_AS Beam Transfer Line Procurement and Fabrication,1.03.05.06.01_Dogleg and Spreader Area - Procurement & Fab,AS_SPD_MANF_2820_Procurement Process - 1.38S3.00 Magnet Stand - BTL - SPD
298812,1.03,1.03.05,1.03.05.06,1.03.05.06.01,1.03.05.06.01,Dogleg and Spreader Area - Procurement & Fab,AS_SPD_MANF_2620,Procurement Process - 1.38S3.00 Magnet Stage - BTL - SPD,17.0,0.0,0.0,0.0,10-03-23,10-25-23,AS_SPD_MANF_2610: FS,AS_SPD_MANF_2630: FS,0,0,0,0,0,0,0.0,0.0,0,10-03-23,10-25-23,0,0.0h,0.0h,0%,$0,0.0h,118.0d,0,$0,$0,1.03_Accelerator Systems (AS),1.03.05_AS Beam Transfer Line (BTL),1.03.05.06_AS Beam Transfer Line Procurement and Fabrication,1.03.05.06.01_Dogleg and Spreader Area - Procurement & Fab,AS_SPD_MANF_2620_Procurement Process - 1.38S3.00 Magnet Stage - BTL - SPD
298813,1.03,1.03.05,1.03.05.06,1.03.05.06.01,1.03.05.06.01,Dogleg and Spreader Area - Procurement & Fab,AS_SPD_MANF_3220,Procurement Process - ACMs - BTL - SPD,10.0,0.0,0.0,0.0,10-03-23,10-16-23,AS_SPD_MANF_3210: FS,AS_SPD_MANF_3230: FS,0,0,0,0,0,0,0.0,0.0,0,10-03-23,10-16-23,0,0.0h,0.0h,0%,$0,0.0h,95.0d,0,$0,$0,1.03_Accelerator Systems (AS),1.03.05_AS Beam Transfer Line (BTL),1.03.05.06_AS Beam Transfer Line Procurement and Fabrication,1.03.05.06.01_Dogleg and Spreader Area - Procurement & Fab,AS_SPD_MANF_3220_Procurement Process - ACMs - BTL - SPD
298814,1.03,1.03.05,1.03.05.06,1.03.05.06.01,1.03.05.06.01,Dogleg and Spreader Area - Procurement & Fab,AS_DOG_MANF_1020,Procurement Process - 1.38S3.00 Sextupoles - BTL - DOG,20.0,0.0,0.0,0.0,10-03-23,10-30-23,AS_DOG_MANF_1010: FS,AS_DOG_MANF_1030: FS,0,0,0,0,0,0,0.0,0.0,0,10-03-23,10-30-23,0,0.0h,0.0h,0%,$0,0.0h,410.0d,0,$0,$0,1.03_Accelerator Systems (AS),1.03.05_AS Beam Transfer Line (BTL),1.03.05.06_AS Beam Transfer Line Procurement and Fabrication,1.03.05.06.01_Dogleg and Spreader Area - Procurement & Fab,AS_DOG_MANF_1020_Procurement Process - 1.38S3.00 Sextupoles - BTL - DOG
298815,1.03,1.03.05,1.03.05.06,1.03.05.06.01,1.03.05.06.01,Dogleg and Spreader Area - Procurement & Fab,AS_DOG_MANF_1420,Procurement Process - Magnet Stands - BTL - DOG,20.0,0.0,0.0,0.0,10-03-23,10-30-23,AS_DOG_MANF_1410: FS,AS_DOG_MANF_1430: FS,0,0,0,0,0,0,0.0,0.0,0,10-03-23,10-30-23,0,0.0h,0.0h,0%,$0,0.0h,129.0d,0,$0,$0,1.03_Accelerator Systems (AS),1.03.05_AS Beam Transfer Line (BTL),1.03.05.06_AS Beam Transfer Line Procurement and Fabrication,1.03.05.06.01_Dogleg and Spreader Area - Procurement & Fab,AS_DOG_MANF_1420_Procurement Process - Magnet Stands - BTL - DOG
298816,1.03,1.03.05,1.03.05.06,1.03.05.06.01,1.03.05.06.01,Dogleg and Spreader Area - Procurement & Fab,AS_DOG_MANF_1620,Procurement Process - Magnet Stage - BTL - DOG,20.0,0.0,0.0,0.0,10-03-23,10-30-23,AS_DOG_MANF_1610: FS,AS_DOG_MANF_1630: FS,0,0,0,0,0,0,0.0,0.0,0,10-03-23,10-30-23,0,0.0h,0.0h,0%,$0,0.0h,480.0d,0,$0,$0,1.03_Accelerator Systems (AS),1.03.05_AS Beam Transfer Line (BTL),1.03.05.06_AS Beam Transfer Line Procurement and Fabrication,1.03.05.06.01_Dogleg and Spreader Area - Procurement & Fab,AS_DOG_MANF_1620_Procurement Process - Magnet Stage - BTL - DOG
298817,1.03,1.03.05,1.03.05.06,1.03.05.06.01,1.03.05.06.01,Dogleg and Spreader Area - Procurement & Fab,AS_DOG_MANF_1220,Procurement Process - Sextupole Drift Pipes - BTL - DOG,20.0,0.0,0.0,0.0,10-03-23,10-30-23,AS_DOG_MANF_1210: FS,AS_DOG_MANF_1230: FS,0,0,0,0,0,0,0.0,0.0,0,10-03-23,10-30-23,0,0.0h,0.0h,0%,$0,0.0h,435.0d,0,$0,$0,1.03_Accelerator Systems (AS),1.03.05_AS Beam Transfer Line (BTL),1.03.05.06_AS Beam Transfer Line Procurement and Fabrication,1.03.05.06.01_Dogleg and Spreader Area - Procurement & Fab,AS_DOG_MANF_1220_Procurement Process - Sextupole Drift Pipes - BTL - DOG
298818,1.03,1.03.05,1.03.05.06,1.03.05.06.01,1.03.05.06.01,Dogleg and Spreader Area - Procurement & Fab,AS_DOG_MANF_2020,Procurement Process - Drift Tubes - BTL - DOG,20.0,0.0,0.0,0.0,10-03-23,10-30-23,AS_DOG_MANF_2010: FS,AS_DOG_MANF_2030: FS,0,0,0,0,0,0,0.0,0.0,0,10-03-23,10-30-23,0,0.0h,0.0h,0%,$0,0.0h,480.0d,0,$0,$0,1.03_Accelerator Systems (AS),1.03.05_AS Beam Transfer Line (BTL),1.03.05.06_AS Beam Transfer Line Procurement and Fabrication,1.03.05.06.01_Dogleg and Spreader Area - Procurement & Fab,AS_DOG_MANF_2020_Procurement Process - Drift Tubes - BTL - DOG
298819,1.03,1.03.05,1.03.05.06,1.03.05.06.01,1.03.05.06.01,Dogleg and Spreader Area - Procurement & Fab,AS_DOG_MANF_2220,Procurement Process - Misc Vacuum Hardware - BTL - DOG,10.0,0.0,0.0,0.0,10-03-23,10-16-23,AS_DOG_MANF_2210: FS,AS_DOG_MANF_2230: FS,0,0,0,0,0,0,0.0,0.0,0,10-03-23,10-16-23,0,0.0h,0.0h,0%,$0,0.0h,510.0d,0,$0,$0,1.03_Accelerator Systems (AS),1.03.05_AS Beam Transfer Line (BTL),1.03.05.06_AS Beam Transfer Line Procurement and Fabrication,1.03.05.06.01_Dogleg and Spreader Area - Procurement & Fab,AS_DOG_MANF_2220_Procurement Process - Misc Vacuum Hardware - BTL - DOG
298820,1.03,1.03.05,1.03.05.06,1.03.05.06.01,1.03.05.06.01,Dogleg and Spreader Area - Procurement & Fab,AS_DOG_MANF_2420,Procurement Process - Misc Mech Hardware - BTL - DOG,10.0,0.0,0.0,0.0,10-03-23,10-16-23,AS_DOG_MANF_2410: FS,AS_DOG_MANF_2430: FS,0,0,0,0,0,0,0.0,0.0,0,10-03-23,10-16-23,0,0.0h,0.0h,0%,$0,0.0h,169.0d,0,$0,$0,1.03_Accelerator Systems (AS),1.03.05_AS Beam Transfer Line (BTL),1.03.05.06_AS Beam Transfer Line Procurement and Fabrication,1.03.05.06.01_Dogleg and Spreader Area - Procurement & Fab,AS_DOG_MANF_2420_Procurement Process - Misc Mech Hardware - BTL - DOG
298821,1.03,1.03.05,1.03.05.06,1.03.05.06.01,1.03.05.06.01,Dogleg and Spreader Area - Procurement & Fab,AS_SPD_MANF_3420,Procurement Process - ACM Interface Drift Tubes - BTL - SPD,20.0,0.0,0.0,0.0,10-03-23,10-30-23,AS_SPD_MANF_3410: FS,AS_SPD_MANF_3430: FS,0,0,0,0,0,0,0.0,0.0,0,10-03-23,10-30-23,0,0.0h,0.0h,0%,$0,0.0h,145.0d,0,$0,$0,1.03_Accelerator Systems (AS),1.03.05_AS Beam Transfer Line (BTL),1.03.05.06_AS Beam Transfer Line Procurement and Fabrication,1.03.05.06.01_Dogleg and Spreader Area - Procurement & Fab,AS_SPD_MANF_3420_Procurement Process - ACM Interface Drift Tubes - BTL - SPD
298822,1.03,1.03.05,1.03.05.06,1.03.05.06.01,1.03.05.06.01,Dogleg and Spreader Area - Procurement & Fab,AS_SPD_MANF_3620,Procurement Process - ACM Stand and Supports - BTL - SPD,20.0,0.0,0.0,0.0,10-03-23,10-30-23,AS_SPD_MANF_3610: FS,AS_SPD_MANF_3630: FS,0,0,0,0,0,0,0.0,0.0,0,10-03-23,10-30-23,0,0.0h,0.0h,0%,$0,0.0h,120.0d,0,$0,$0,1.03_Accelerator Systems (AS),1.03.05_AS Beam Transfer Line (BTL),1.03.05.06_AS Beam Transfer Line Procurement and Fabrication,1.03.05.06.01_Dogleg and Spreader Area - Procurement & Fab,AS_SPD_MANF_3620_Procurement Process - ACM Stand and Supports - BTL - SPD
298823,1.03,1.03.05,1.03.05.06,1.03.05.06.01,1.03.05.06.01,Dogleg and Spreader Area - Procurement & Fab,AS_SPD_MANF_3820,Procurement Process - ACM Shielding - BTL - SPD,20.0,0.0,0.0,0.0,10-03-23,10-30-23,AS_SPD_MANF_3810: FS,AS_SPD_MANF_3830: FS,0,0,0,0,0,0,0.0,0.0,0,10-03-23,10-30-23,0,0.0h,0.0h,0%,$0,0.0h,135.0d,0,$0,$0,1.03_Accelerator Systems (AS),1.03.05_AS Beam Transfer Line (BTL),1.03.05.06_AS Beam Transfer Line Procurement and Fabrication,1.03.05.06.01_Dogleg and Spreader Area - Procurement & Fab,AS_SPD_MANF_3820_Procurement Process - ACM Shielding - BTL - SPD
298824,1.03,1.03.05,1.03.05.06,1.03.05.06.01,1.03.05.06.01,Dogleg and Spreader Area - Procurement & Fab,AS_SPD_MANF_3020,Procurement Process - Interface Vacuum Drift Tubes & Bellows - BTL - SPD,20.0,0.0,0.0,0.0,10-03-23,10-30-23,AS_SPD_MANF_3010: FS,AS_SPD_MANF_3030: FS,0,0,0,0,0,0,0.0,0.0,0,10-03-23,10-30-23,0,0.0h,0.0h,0%,$0,0.0h,155.0d,0,$0,$0,1.03_Accelerator Systems (AS),1.03.05_AS Beam Transfer Line (BTL),1.03.05.06_AS Beam Transfer Line Procurement and Fabrication,1.03.05.06.01_Dogleg and Spreader Area - Procurement & Fab,AS_SPD_MANF_3020_Procurement Process - Interface Vacuum Drift Tubes & Bellows - BTL - SPD
298825,1.03,1.03.05,1.03.05.06,1.03.05.06.01,1.03.05.06.01,Dogleg and Spreader Area - Procurement & Fab,AS_SPD_MANF_2020,Procurement Process - Kicker Load Water Hoses - BTL - SPD,20.0,0.0,0.0,0.0,10-03-23,10-30-23,AS_SPD_MANF_2010: FS,AS_SPD_MANF_2030: FS,0,0,0,0,0,0,0.0,0.0,0,10-03-23,10-30-23,0,0.0h,0.0h,0%,$0,0.0h,154.0d,0,$0,$0,1.03_Accelerator Systems (AS),1.03.05_AS Beam Transfer Line (BTL),1.03.05.06_AS Beam Transfer Line Procurement and Fabrication,1.03.05.06.01_Dogleg and Spreader Area - Procurement & Fab,AS_SPD_MANF_2020_Procurement Process - Kicker Load Water Hoses - BTL - SPD
298826,1.03,1.03.05,1.03.05.06,1.03.05.06.01,1.03.05.06.01,Dogleg and Spreader Area - Procurement & Fab,AS_SPD_MANF_2420,Procurement Process - Sextupole Drift Pipes - BTL - SPD,20.0,0.0,0.0,0.0,10-03-23,10-30-23,AS_SPD_MANF_2410: FS,AS_SPD_MANF_2430: FS,0,0,0,0,0,0,0.0,0.0,0,10-03-23,10-30-23,0,0.0h,0.0h,0%,$0,0.0h,65.0d,0,$0,$0,1.03_Accelerator Systems (AS),1.03.05_AS Beam Transfer Line (BTL),1.03.05.06_AS Beam Transfer Line Procurement and Fabrication,1.03.05.06.01_Dogleg and Spreader Area - Procurement & Fab,AS_SPD_MANF_2420_Procurement Process - Sextupole Drift Pipes - BTL - SPD
298827,1.03,1.03.05,1.03.05.06,1.03.05.06.01,1.03.05.06.01,Dogleg and Spreader Area - Procurement & Fab,AS_SPD_MANF_4020,Procurement Process - Misc Vacuum Hardware - BTL - SPD,10.0,0.0,0.0,0.0,10-03-23,10-16-23,AS_SPD_MANF_4010: FS,AS_SPD_MANF_4030: FS,0,0,0,0,0,0,0.0,0.0,0,10-03-23,10-16-23,0,0.0h,0.0h,0%,$0,0.0h,155.0d,0,$0,$0,1.03_Accelerator Systems (AS),1.03.05_AS Beam Transfer Line (BTL),1.03.05.06_AS Beam Transfer Line Procurement and Fabrication,1.03.05.06.01_Dogleg and Spreader Area - Procurement & Fab,AS_SPD_MANF_4020_Procurement Process - Misc Vacuum Hardware - BTL - SPD
298828,1.03,1.03.05,1.03.05.06,1.03.05.06.01,1.03.05.06.01,Dogleg and Spreader Area - Procurement & Fab,AS_SPD_MANF_4220,Procurement Process - Misc Mech Hardware - BTL - SPD,10.0,0.0,0.0,0.0,10-03-23,10-16-23,AS_SPD_MANF_4210: FS,AS_SPD_MANF_4230: FS,0,0,0,0,0,0,0.0,0.0,0,10-03-23,10-16-23,0,0.0h,0.0h,0%,$0,0.0h,124.0d,0,$0,$0,1.03_Accelerator Systems (AS),1.03.05_AS Beam Transfer Line (BTL),1.03.05.06_AS Beam Transfer Line Procurement and Fabrication,1.03.05.06.01_Dogleg and Spreader Area - Procurement & Fab,AS_SPD_MANF_4220_Procurement Process - Misc Mech Hardware - BTL - SPD
298829,1.03,1.03.05,1.03.05.06,1.03.05.06.01,1.03.05.06.01,Dogleg and Spreader Area - Procurement & Fab,AS_SPD_MANF_1840,Vendor Effort - Kicker Magnet Stands - BTL - SPD,60.0,0.0,0.0,0.0,10-18-23,01-29-24,AS_SPD_MANF_1830: FS,AS_SPD_MANF_1850: FS,0,0,0,0,0,0,0.0,0.0,0,10-18-23,01-29-24,0,0.0h,0.0h,0%,$0,0.0h,130.0d,0,$0,$0,1.03_Accelerator Systems (AS),1.03.05_AS Beam Transfer Line (BTL),1.03.05.06_AS Beam Transfer Line Procurement and Fabrication,1.03.05.06.01_Dogleg and Spreader Area - Procurement & Fab,AS_SPD_MANF_1840_Vendor Effort - Kicker Magnet Stands - BTL - SPD
298830,1.03,1.03.05,1.03.05.06,1.03.05.06.01,1.03.05.06.01,Dogleg and Spreader Area - Procurement & Fab,AS_SPD_MANF_3240,Vendor Effort - ACMs - BTL - SPD,100.0,0.0,0.0,0.0,10-18-23,03-26-24,AS_SPD_MANF_3230: FS,AS_SPD_MANF_3250: FS,0,0,0,0,0,0,0.0,0.0,0,10-18-23,03-26-24,0,0.0h,0.0h,0%,$0,0.0h,95.0d,0,$0,$0,1.03_Accelerator Systems (AS),1.03.05_AS Beam Transfer Line (BTL),1.03.05.06_AS Beam Transfer Line Procurement and Fabrication,1.03.05.06.01_Dogleg and Spreader Area - Procurement & Fab,AS_SPD_MANF_3240_Vendor Effort - ACMs - BTL - SPD
298831,1.03,1.03.05,1.03.05.06,1.03.05.06.01,1.03.05.06.01,Dogleg and Spreader Area - Procurement & Fab,AS_DOG_MANF_2240,Vendor Effort - Misc Vacuum Hardware - BTL - DOG,40.0,0.0,0.0,0.0,10-18-23,12-14-23,AS_DOG_MANF_2230: FS,AS_DOG_MANF_2250: FS,0,0,0,0,0,0,0.0,0.0,0,10-18-23,12-14-23,0,0.0h,0.0h,0%,$0,0.0h,510.0d,0,$0,$0,1.03_Accelerator Systems (AS),1.03.05_AS Beam Transfer Line (BTL),1.03.05.06_AS Beam Transfer Line Procurement and Fabrication,1.03.05.06.01_Dogleg and Spreader Area - Procurement & Fab,AS_DOG_MANF_2240_Vendor Effort - Misc Vacuum Hardware - BTL - DOG
298832,1.03,1.03.05,1.03.05.06,1.03.05.06.01,1.03.05.06.01,Dogleg and Spreader Area - Procurement & Fab,AS_DOG_MANF_2440,Vendor Effort - Misc Mech Hardware - BTL - DOG,40.0,0.0,0.0,0.0,10-18-23,12-14-23,AS_DOG_MANF_2430: FS,AS_DOG_MANF_2450: FS,0,0,0,0,0,0,0.0,0.0,0,10-18-23,12-14-23,0,0.0h,0.0h,0%,$0,0.0h,169.0d,0,$0,$0,1.03_Accelerator Systems (AS),1.03.05_AS Beam Transfer Line (BTL),1.03.05.06_AS Beam Transfer Line Procurement and Fabrication,1.03.05.06.01_Dogleg and Spreader Area - Procurement & Fab,AS_DOG_MANF_2440_Vendor Effort - Misc Mech Hardware - BTL - DOG
298833,1.03,1.03.05,1.03.05.06,1.03.05.06.01,1.03.05.06.01,Dogleg and Spreader Area - Procurement & Fab,AS_SPD_MANF_4040,Vendor Effort - Misc Vacuum Hardware - BTL - SPD,40.0,0.0,0.0,0.0,10-18-23,12-14-23,AS_SPD_MANF_4030: FS,AS_SPD_MANF_4050: FS,0,0,0,0,0,0,0.0,0.0,0,10-18-23,12-14-23,0,0.0h,0.0h,0%,$0,0.0h,155.0d,0,$0,$0,1.03_Accelerator Systems (AS),1.03.05_AS Beam Transfer Line (BTL),1.03.05.06_AS Beam Transfer Line Procurement and Fabrication,1.03.05.06.01_Dogleg and Spreader Area - Procurement & Fab,AS_SPD_MANF_4040_Vendor Effort - Misc Vacuum Hardware - BTL - SPD
298834,1.03,1.03.05,1.03.05.06,1.03.05.06.01,1.03.05.06.01,Dogleg and Spreader Area - Procurement & Fab,AS_SPD_MANF_4240,Vendor Effort - Misc Mech Hardware - BTL - SPD,40.0,0.0,0.0,0.0,10-18-23,12-14-23,AS_SPD_MANF_4230: FS,AS_SPD_MANF_4250: FS,0,0,0,0,0,0,0.0,0.0,0,10-18-23,12-14-23,0,0.0h,0.0h,0%,$0,0.0h,124.0d,0,$0,$0,1.03_Accelerator Systems (AS),1.03.05_AS Beam Transfer Line (BTL),1.03.05.06_AS Beam Transfer Line Procurement and Fabrication,1.03.05.06.01_Dogleg and Spreader Area - Procurement & Fab,AS_SPD_MANF_4240_Vendor Effort - Misc Mech Hardware - BTL - SPD
298835,1.03,1.03.05,1.03.05.06,1.03.05.06.01,1.03.05.06.01,Dogleg and Spreader Area - Procurement & Fab,AS_SPD_MANF_2840,Vendor Effort - 1.38S3.00 Magnet Stand - BTL - SPD,50.0,0.0,0.0,0.0,10-27-23,01-24-24,AS_SPD_MANF_2830: FS,AS_SPD_MANF_2850: FS,0,0,0,0,0,0,0.0,0.0,0,10-27-23,01-24-24,0,0.0h,0.0h,0%,$0,0.0h,133.0d,0,$0,$0,1.03_Accelerator Systems (AS),1.03.05_AS Beam Transfer Line (BTL),1.03.05.06_AS Beam Transfer Line Procurement and Fabrication,1.03.05.06.01_Dogleg and Spreader Area - Procurement & Fab,AS_SPD_MANF_2840_Vendor Effort - 1.38S3.00 Magnet Stand - BTL - SPD
298836,1.03,1.03.05,1.03.05.06,1.03.05.06.01,1.03.05.06.01,Dogleg and Spreader Area - Procurement & Fab,AS_SPD_MANF_2640,Vendor Effort - 1.38S3.00 Magnet Stage - BTL - SPD,50.0,0.0,0.0,0.0,10-27-23,01-24-24,AS_SPD_MANF_2630: FS,AS_SPD_MANF_2650: FS,0,0,0,0,0,0,0.0,0.0,0,10-27-23,01-24-24,0,0.0h,0.0h,0%,$0,0.0h,118.0d,0,$0,$0,1.03_Accelerator Systems (AS),1.03.05_AS Beam Transfer Line (BTL),1.03.05.06_AS Beam Transfer Line Procurement and Fabrication,1.03.05.06.01_Dogleg and Spreader Area - Procurement & Fab,AS_SPD_MANF_2640_Vendor Effort - 1.38S3.00 Magnet Stage - BTL - SPD
298837,1.03,1.03.05,1.03.05.06,1.03.05.06.01,1.03.05.06.01,Dogleg and Spreader Area - Procurement & Fab,AS_SPD_MANF_1040,Vendor Effort - 0.787K35 Kicker Magnet - BTL - SPD,120.0,0.0,0.0,0.0,11-01-23,05-07-24,AS_SPD_MANF_1030: FS,"AS_SPD_MANF_1060: FS, AS_SPD_MANF_1050: FS",0,0,0,0,0,0,0.0,0.0,0,11-01-23,05-07-24,0,0.0h,0.0h,0%,$0,0.0h,24.0d,0,$0,$0,1.03_Accelerator Systems (AS),1.03.05_AS Beam Transfer Line (BTL),1.03.05.06_AS Beam Transfer Line Procurement and Fabrication,1.03.05.06.01_Dogleg and Spreader Area - Procurement & Fab,AS_SPD_MANF_1040_Vendor Effort - 0.787K35 Kicker Magnet - BTL - SPD
298838,1.03,1.03.05,1.03.05.06,1.03.05.06.01,1.03.05.06.01,Dogleg and Spreader Area - Procurement & Fab,AS_SPD_MANF_1240,Vendor Effort - 0.787K35 Drift Tube - BTL - SPD,90.0,0.0,0.0,0.0,11-01-23,03-26-24,AS_SPD_MANF_1230: FS,"AS_SPD_MANF_1260: FS, AS_SPD_MANF_1250: FS",0,0,0,0,0,0,0.0,0.0,0,11-01-23,03-26-24,0,0.0h,0.0h,0%,$0,0.0h,14.0d,0,$0,$0,1.03_Accelerator Systems (AS),1.03.05_AS Beam Transfer Line (BTL),1.03.05.06_AS Beam Transfer Line Procurement and Fabrication,1.03.05.06.01_Dogleg and Spreader Area - Procurement & Fab,AS_SPD_MANF_1240_Vendor Effort - 0.787K35 Drift Tube - BTL - SPD
298839,1.03,1.03.05,1.03.05.06,1.03.05.06.01,1.03.05.06.01,Dogleg and Spreader Area - Procurement & Fab,AS_SPD_MANF_1440,Vendor Effort  - 1.378K35 Kicker Magnet - BTL - SPD,120.0,0.0,0.0,0.0,11-01-23,05-07-24,AS_SPD_MANF_1430: FS,"AS_SPD_MANF_1460: FS, AS_SPD_MANF_1450: FS",0,0,0,0,0,0,0.0,0.0,0,11-01-23,05-07-24,0,0.0h,0.0h,0%,$0,0.0h,410.0d,0,$0,$0,1.03_Accelerator Systems (AS),1.03.05_AS Beam Transfer Line (BTL),1.03.05.06_AS Beam Transfer Line Procurement and Fabrication,1.03.05.06.01_Dogleg and Spreader Area - Procurement & Fab,AS_SPD_MANF_1440_Vendor Effort  - 1.378K35 Kicker Magnet - BTL - SPD
298840,1.03,1.03.05,1.03.05.06,1.03.05.06.01,1.03.05.06.01,Dogleg and Spreader Area - Procurement & Fab,AS_SPD_MANF_1640,Vendor Effort - 1.378K35 Drift Tube - BTL - SPD,90.0,0.0,0.0,0.0,11-01-23,03-26-24,AS_SPD_MANF_1630: FS,"AS_SPD_MANF_1660: FS, AS_SPD_MANF_1650: FS",0,0,0,0,0,0,0.0,0.0,0,11-01-23,03-26-24,0,0.0h,0.0h,0%,$0,0.0h,400.0d,0,$0,$0,1.03_Accelerator Systems (AS),1.03.05_AS Beam Transfer Line (BTL),1.03.05.06_AS Beam Transfer Line Procurement and Fabrication,1.03.05.06.01_Dogleg and Spreader Area - Procurement & Fab,AS_SPD_MANF_1640_Vendor Effort - 1.378K35 Drift Tube - BTL - SPD
298841,1.03,1.03.05,1.03.05.06,1.03.05.06.01,1.03.05.06.01,Dogleg and Spreader Area - Procurement & Fab,AS_SPD_MANF_2240,Vendor Effort -1.38S3.00 Sextupoles - BTL - SPD,130.0,0.0,0.0,0.0,11-01-23,05-21-24,AS_SPD_MANF_2230: FS,"AS_SPD_MANF_2260: FS, AS_SPD_MANF_2250: FS",0,0,0,0,0,0,0.0,0.0,0,11-01-23,05-21-24,0,0.0h,0.0h,0%,$0,0.0h,25.0d,0,$0,$0,1.03_Accelerator Systems (AS),1.03.05_AS Beam Transfer Line (BTL),1.03.05.06_AS Beam Transfer Line Procurement and Fabrication,1.03.05.06.01_Dogleg and Spreader Area - Procurement & Fab,AS_SPD_MANF_2240_Vendor Effort -1.38S3.00 Sextupoles - BTL - SPD
298842,1.03,1.03.05,1.03.05.06,1.03.05.06.01,1.03.05.06.01,Dogleg and Spreader Area - Procurement & Fab,AS_DOG_MANF_1040,Vendor Effort - 1.38S3.00 Sextupoles - BTL - DOG,130.0,0.0,0.0,0.0,11-01-23,05-21-24,AS_DOG_MANF_1030: FS,"AS_DOG_MANF_1060: FS, AS_DOG_MANF_1050: FS",0,0,0,0,0,0,0.0,0.0,0,11-01-23,05-21-24,0,0.0h,0.0h,0%,$0,0.0h,410.0d,0,$0,$0,1.03_Accelerator Systems (AS),1.03.05_AS Beam Transfer Line (BTL),1.03.05.06_AS Beam Transfer Line Procurement and Fabrication,1.03.05.06.01_Dogleg and Spreader Area - Procurement & Fab,AS_DOG_MANF_1040_Vendor Effort - 1.38S3.00 Sextupoles - BTL - DOG
298843,1.03,1.03.05,1.03.05.06,1.03.05.06.01,1.03.05.06.01,Dogleg and Spreader Area - Procurement & Fab,AS_DOG_MANF_1440,Vendor Effort - Magnet Stands - BTL - DOG,60.0,0.0,0.0,0.0,11-01-23,02-12-24,AS_DOG_MANF_1430: FS,"AS_DOG_MANF_1460: FS, AS_DOG_MANF_1450: FS",0,0,0,0,0,0,0.0,0.0,0,11-01-23,02-12-24,0,0.0h,0.0h,0%,$0,0.0h,129.0d,0,$0,$0,1.03_Accelerator Systems (AS),1.03.05_AS Beam Transfer Line (BTL),1.03.05.06_AS Beam Transfer Line Procurement and Fabrication,1.03.05.06.01_Dogleg and Spreader Area - Procurement & Fab,AS_DOG_MANF_1440_Vendor Effort - Magnet Stands - BTL - DOG
298844,1.03,1.03.05,1.03.05.06,1.03.05.06.01,1.03.05.06.01,Dogleg and Spreader Area - Procurement & Fab,AS_DOG_MANF_1640,Vendor Effort - Magnet Stage - BTL - DOG,60.0,0.0,0.0,0.0,11-01-23,02-12-24,AS_DOG_MANF_1630: FS,"AS_DOG_MANF_1660: FS, AS_DOG_MANF_1650: FS",0,0,0,0,0,0,0.0,0.0,0,11-01-23,02-12-24,0,0.0h,0.0h,0%,$0,0.0h,480.0d,0,$0,$0,1.03_Accelerator Systems (AS),1.03.05_AS Beam Transfer Line (BTL),1.03.05.06_AS Beam Transfer Line Procurement and Fabrication,1.03.05.06.01_Dogleg and Spreader Area - Procurement & Fab,AS_DOG_MANF_1640_Vendor Effort - Magnet Stage - BTL - DOG
298845,1.03,1.03.05,1.03.05.06,1.03.05.06.01,1.03.05.06.01,Dogleg and Spreader Area - Procurement & Fab,AS_DOG_MANF_1240,Vendor Effort - Sextupole Drift Pipes - BTL - DOG,90.0,0.0,0.0,0.0,11-01-23,03-26-24,AS_DOG_MANF_1230: FS,"AS_DOG_MANF_1260: FS, AS_DOG_MANF_1250: FS",0,0,0,0,0,0,0.0,0.0,0,11-01-23,03-26-24,0,0.0h,0.0h,0%,$0,0.0h,435.0d,0,$0,$0,1.03_Accelerator Systems (AS),1.03.05_AS Beam Transfer Line (BTL),1.03.05.06_AS Beam Transfer Line Procurement and Fabrication,1.03.05.06.01_Dogleg and Spreader Area - Procurement & Fab,AS_DOG_MANF_1240_Vendor Effort - Sextupole Drift Pipes - BTL - DOG
298846,1.03,1.03.05,1.03.05.06,1.03.05.06.01,1.03.05.06.01,Dogleg and Spreader Area - Procurement & Fab,AS_DOG_MANF_2040,Vendor Effort - Drift Tubes - BTL - DOG,70.0,0.0,0.0,0.0,11-01-23,02-27-24,AS_DOG_MANF_2030: FS,"AS_DOG_MANF_2060: FS, AS_DOG_MANF_2050: FS",0,0,0,0,0,0,0.0,0.0,0,11-01-23,02-27-24,0,0.0h,0.0h,0%,$0,0.0h,480.0d,0,$0,$0,1.03_Accelerator Systems (AS),1.03.05_AS Beam Transfer Line (BTL),1.03.05.06_AS Beam Transfer Line Procurement and Fabrication,1.03.05.06.01_Dogleg and Spreader Area - Procurement & Fab,AS_DOG_MANF_2040_Vendor Effort - Drift Tubes - BTL - DOG
298847,1.03,1.03.05,1.03.05.06,1.03.05.06.01,1.03.05.06.01,Dogleg and Spreader Area - Procurement & Fab,AS_SPD_MANF_3440,Vendor Effort - ACM Interface Drift Tubes - BTL - SPD,50.0,0.0,0.0,0.0,11-01-23,01-29-24,AS_SPD_MANF_3430: FS,AS_SPD_MANF_3450: FS,0,0,0,0,0,0,0.0,0.0,0,11-01-23,01-29-24,0,0.0h,0.0h,0%,$0,0.0h,145.0d,0,$0,$0,1.03_Accelerator Systems (AS),1.03.05_AS Beam Transfer Line (BTL),1.03.05.06_AS Beam Transfer Line Procurement and Fabrication,1.03.05.06.01_Dogleg and Spreader Area - Procurement & Fab,AS_SPD_MANF_3440_Vendor Effort - ACM Interface Drift Tubes - BTL - SPD
298848,1.03,1.03.05,1.03.05.06,1.03.05.06.01,1.03.05.06.01,Dogleg and Spreader Area - Procurement & Fab,AS_SPD_MANF_3640,Vendor Effort - ACM Stand and Supports - BTL - SPD,60.0,0.0,0.0,0.0,11-01-23,02-12-24,AS_SPD_MANF_3630: FS,AS_SPD_MANF_3650: FS,0,0,0,0,0,0,0.0,0.0,0,11-01-23,02-12-24,0,0.0h,0.0h,0%,$0,0.0h,120.0d,0,$0,$0,1.03_Accelerator Systems (AS),1.03.05_AS Beam Transfer Line (BTL),1.03.05.06_AS Beam Transfer Line Procurement and Fabrication,1.03.05.06.01_Dogleg and Spreader Area - Procurement & Fab,AS_SPD_MANF_3640_Vendor Effort - ACM Stand and Supports - BTL - SPD
298849,1.03,1.03.05,1.03.05.06,1.03.05.06.01,1.03.05.06.01,Dogleg and Spreader Area - Procurement & Fab,AS_SPD_MANF_3840,Vendor Effort - ACM Shielding - BTL - SPD,60.0,0.0,0.0,0.0,11-01-23,02-12-24,AS_SPD_MANF_3830: FS,AS_SPD_MANF_3850: FS,0,0,0,0,0,0,0.0,0.0,0,11-01-23,02-12-24,0,0.0h,0.0h,0%,$0,0.0h,135.0d,0,$0,$0,1.03_Accelerator Systems (AS),1.03.05_AS Beam Transfer Line (BTL),1.03.05.06_AS Beam Transfer Line Procurement and Fabrication,1.03.05.06.01_Dogleg and Spreader Area - Procurement & Fab,AS_SPD_MANF_3840_Vendor Effort - ACM Shielding - BTL - SPD
298850,1.03,1.03.05,1.03.05.06,1.03.05.06.01,1.03.05.06.01,Dogleg and Spreader Area - Procurement & Fab,AS_SPD_MANF_3040,Vendor Effort - Interface Vacuum Drift Tubes & Bellows - BTL - SPD,50.0,0.0,0.0,0.0,11-01-23,01-29-24,AS_SPD_MANF_3030: FS,AS_SPD_MANF_3050: FS,0,0,0,0,0,0,0.0,0.0,0,11-01-23,01-29-24,0,0.0h,0.0h,0%,$0,0.0h,155.0d,0,$0,$0,1.03_Accelerator Systems (AS),1.03.05_AS Beam Transfer Line (BTL),1.03.05.06_AS Beam Transfer Line Procurement and Fabrication,1.03.05.06.01_Dogleg and Spreader Area - Procurement & Fab,AS_SPD_MANF_3040_Vendor Effort - Interface Vacuum Drift Tubes & Bellows - BTL - SPD
298851,1.03,1.03.05,1.03.05.06,1.03.05.06.01,1.03.05.06.01,Dogleg and Spreader Area - Procurement & Fab,AS_SPD_MANF_2040,Vendor Effort - Kicker Load Water Hoses - BTL - SPD,30.0,0.0,0.0,0.0,11-01-23,12-14-23,AS_SPD_MANF_2030: FS,AS_SPD_MANF_2050: FS,0,0,0,0,0,0,0.0,0.0,0,11-01-23,12-14-23,0,0.0h,0.0h,0%,$0,0.0h,154.0d,0,$0,$0,1.03_Accelerator Systems (AS),1.03.05_AS Beam Transfer Line (BTL),1.03.05.06_AS Beam Transfer Line Procurement and Fabrication,1.03.05.06.01_Dogleg and Spreader Area - Procurement & Fab,AS_SPD_MANF_2040_Vendor Effort - Kicker Load Water Hoses - BTL - SPD
298852,1.03,1.03.05,1.03.05.06,1.03.05.06.01,1.03.05.06.01,Dogleg and Spreader Area - Procurement & Fab,AS_SPD_MANF_2440,Vendor Effort - Sextupole Drift Pipes - BTL - SPD,90.0,0.0,0.0,0.0,11-01-23,03-26-24,AS_SPD_MANF_2430: FS,"AS_SPD_MANF_2460: FS, AS_SPD_MANF_2450: FS",0,0,0,0,0,0,0.0,0.0,0,11-01-23,03-26-24,0,0.0h,0.0h,0%,$0,0.0h,65.0d,0,$0,$0,1.03_Accelerator Systems (AS),1.03.05_AS Beam Transfer Line (BTL),1.03.05.06_AS Beam Transfer Line Procurement and Fabrication,1.03.05.06.01_Dogleg and Spreader Area - Procurement & Fab,AS_SPD_MANF_2440_Vendor Effort - Sextupole Drift Pipes - BTL - SPD
298853,1.03,1.03.05,1.03.05.06,1.03.05.06.01,1.03.05.06.01,Dogleg and Spreader Area - Procurement & Fab,AS_DOG_MANF_2460,COMP: Misc Mech Hardware - BTL - DOG,0.0,0.0,0.0,0.0,0,12-15-23,AS_DOG_MANF_2450: FS,"AS_BTL_MANF_1010: FF, AS_DOG_MANF_1070: FS, AS_DOG_INST_1080: FS",0,0,0,0,0,0,0.0,0.0,0,nn,12-15-23,0,0.0h,0.0h,0%,$0,0.0h,169.0d,0,$0,$0,1.03_Accelerator Systems (AS),1.03.05_AS Beam Transfer Line (BTL),1.03.05.06_AS Beam Transfer Line Procurement and Fabrication,1.03.05.06.01_Dogleg and Spreader Area - Procurement & Fab,AS_DOG_MANF_2460_COMP: Misc Mech Hardware - BTL - DOG
298854,1.03,1.03.05,1.03.05.06,1.03.05.06.01,1.03.05.06.01,Dogleg and Spreader Area - Procurement & Fab,AS_SPD_MANF_4260,COMP: Misc Mech Hardware - BTL - SPD,0.0,0.0,0.0,0.0,0,12-15-23,AS_SPD_MANF_4250: FS,"AS_BTL_MANF_1010: FF, AS_SPD_INST_1030: FS, AS_SPD_INST_1040: FS, AS_SPD_INST_1060: FS, AS_SPD_INST_1070: FS, AS_SPD_MANF_1070: FS, AS_SPD_MANF_1470: FS",0,0,0,0,0,0,0.0,0.0,0,nn,12-15-23,0,0.0h,0.0h,0%,$0,0.0h,124.0d,0,$0,$0,1.03_Accelerator Systems (AS),1.03.05_AS Beam Transfer Line (BTL),1.03.05.06_AS Beam Transfer Line Procurement and Fabrication,1.03.05.06.01_Dogleg and Spreader Area - Procurement & Fab,AS_SPD_MANF_4260_COMP: Misc Mech Hardware - BTL - SPD
298855,1.03,1.03.05,1.03.05.06,1.03.05.06.01,1.03.05.06.01,Dogleg and Spreader Area - Procurement & Fab,AS_SPD_MANF_2860,COMP: Procurement - 1.38S3.00 Magnet Stand - BTL - SPD,0.0,0.0,0.0,0.0,0,01-25-24,AS_SPD_MANF_2850: FS,"AS_BTL_MANF_1010: FF, AS_SPD_INST_1020: FS",0,0,0,0,0,0,0.0,0.0,0,nn,01-25-24,0,0.0h,0.0h,0%,$0,0.0h,133.0d,0,$0,$0,1.03_Accelerator Systems (AS),1.03.05_AS Beam Transfer Line (BTL),1.03.05.06_AS Beam Transfer Line Procurement and Fabrication,1.03.05.06.01_Dogleg and Spreader Area - Procurement & Fab,AS_SPD_MANF_2860_COMP: Procurement - 1.38S3.00 Magnet Stand - BTL - SPD
298856,1.03,1.03.05,1.03.05.06,1.03.05.06.01,1.03.05.06.01,Dogleg and Spreader Area - Procurement & Fab,AS_SPD_MANF_2660,COMP: Procurement - 1.38S3.00 Magnet Stage - BTL - SPD,0.0,0.0,0.0,0.0,0,01-25-24,AS_SPD_MANF_2650: FS,AS_SPD_MANF_2270: FS,0,0,0,0,0,0,0.0,0.0,0,nn,01-25-24,0,0.0h,0.0h,0%,$0,0.0h,118.0d,0,$0,$0,1.03_Accelerator Systems (AS),1.03.05_AS Beam Transfer Line (BTL),1.03.05.06_AS Beam Transfer Line Procurement and Fabrication,1.03.05.06.01_Dogleg and Spreader Area - Procurement & Fab,AS_SPD_MANF_2660_COMP: Procurement - 1.38S3.00 Magnet Stage - BTL - SPD
298857,1.03,1.03.05,1.03.05.06,1.03.05.06.01,1.03.05.06.01,Dogleg and Spreader Area - Procurement & Fab,AS_SPD_MANF_1860,COMP: Procurement - Kicker Magnet Stands - BTL - SPD,0.0,0.0,0.0,0.0,0,01-30-24,AS_SPD_MANF_1850: FS,"AS_BTL_MANF_1010: FF, AS_SPD_INST_1020: FS",0,0,0,0,0,0,0.0,0.0,0,nn,01-30-24,0,0.0h,0.0h,0%,$0,0.0h,130.0d,0,$0,$0,1.03_Accelerator Systems (AS),1.03.05_AS Beam Transfer Line (BTL),1.03.05.06_AS Beam Transfer Line Procurement and Fabrication,1.03.05.06.01_Dogleg and Spreader Area - Procurement & Fab,AS_SPD_MANF_1860_COMP: Procurement - Kicker Magnet Stands - BTL - SPD
298858,1.03,1.03.05,1.03.05.06,1.03.05.06.01,1.03.05.06.01,Dogleg and Spreader Area - Procurement & Fab,AS_DOG_MANF_2270,COMP: Misc Vacuum Hardware - BTL - DOG,0.0,0.0,0.0,0.0,0,01-30-24,"AS_DOG_MANF_2250: FS, AS_DOG_MANF_2260: FS","AS_BTL_MANF_1010: FF, AS_DOG_MANF_2070: FS, AS_DOG_INST_1090: FS",0,0,0,0,0,0,0.0,0.0,0,nn,01-30-24,0,0.0h,0.0h,0%,$0,0.0h,510.0d,0,$0,$0,1.03_Accelerator Systems (AS),1.03.05_AS Beam Transfer Line (BTL),1.03.05.06_AS Beam Transfer Line Procurement and Fabrication,1.03.05.06.01_Dogleg and Spreader Area - Procurement & Fab,AS_DOG_MANF_2270_COMP: Misc Vacuum Hardware - BTL - DOG
298859,1.03,1.03.05,1.03.05.06,1.03.05.06.01,1.03.05.06.01,Dogleg and Spreader Area - Procurement & Fab,AS_SPD_MANF_3060,COMP: Interface Vacuum Drift Tubes & Bellows - BTL - SPD,0.0,0.0,0.0,0.0,0,01-30-24,AS_SPD_MANF_3050: FS,"AS_BTL_MANF_1010: FF, AS_SPD_INST_1090: FS",0,0,0,0,0,0,0.0,0.0,0,nn,01-30-24,0,0.0h,0.0h,0%,$0,0.0h,155.0d,0,$0,$0,1.03_Accelerator Systems (AS),1.03.05_AS Beam Transfer Line (BTL),1.03.05.06_AS Beam Transfer Line Procurement and Fabrication,1.03.05.06.01_Dogleg and Spreader Area - Procurement & Fab,AS_SPD_MANF_3060_COMP: Interface Vacuum Drift Tubes & Bellows - BTL - SPD
298860,1.03,1.03.05,1.03.05.06,1.03.05.06.01,1.03.05.06.01,Dogleg and Spreader Area - Procurement & Fab,AS_SPD_MANF_2070,COMP: Kicker Load Water Hoses - BTL - SPD,0.0,0.0,0.0,0.0,0,01-30-24,AS_SPD_MANF_2060: FS,"AS_BTL_MANF_1010: FF, AS_SPD_INST_1050: FS",0,0,0,0,0,0,0.0,0.0,0,nn,01-30-24,0,0.0h,0.0h,0%,$0,0.0h,154.0d,0,$0,$0,1.03_Accelerator Systems (AS),1.03.05_AS Beam Transfer Line (BTL),1.03.05.06_AS Beam Transfer Line Procurement and Fabrication,1.03.05.06.01_Dogleg and Spreader Area - Procurement & Fab,AS_SPD_MANF_2070_COMP: Kicker Load Water Hoses - BTL - SPD
298861,1.03,1.03.05,1.03.05.06,1.03.05.06.01,1.03.05.06.01,Dogleg and Spreader Area - Procurement & Fab,AS_SPD_MANF_4070,COMP: Misc Vacuum Hardware - BTL - SPD,0.0,0.0,0.0,0.0,0,01-30-24,AS_SPD_MANF_4060: FS,"AS_BTL_MANF_1010: FF, AS_SPD_INST_1090: FS",0,0,0,0,0,0,0.0,0.0,0,nn,01-30-24,0,0.0h,0.0h,0%,$0,0.0h,155.0d,0,$0,$0,1.03_Accelerator Systems (AS),1.03.05_AS Beam Transfer Line (BTL),1.03.05.06_AS Beam Transfer Line Procurement and Fabrication,1.03.05.06.01_Dogleg and Spreader Area - Procurement & Fab,AS_SPD_MANF_4070_COMP: Misc Vacuum Hardware - BTL - SPD
298862,1.03,1.03.05,1.03.05.06,1.03.05.06.01,1.03.05.06.01,Dogleg and Spreader Area - Procurement & Fab,AS_SPD_MANF_3470,COMP: ACM Interface Drift Tubes - BTL - SPD,0.0,0.0,0.0,0.0,0,02-13-24,AS_SPD_MANF_3460: FS,"AS_BTL_MANF_1010: FF, AS_SPD_INST_1090: FS",0,0,0,0,0,0,0.0,0.0,0,nn,02-13-24,0,0.0h,0.0h,0%,$0,0.0h,145.0d,0,$0,$0,1.03_Accelerator Systems (AS),1.03.05_AS Beam Transfer Line (BTL),1.03.05.06_AS Beam Transfer Line Procurement and Fabrication,1.03.05.06.01_Dogleg and Spreader Area - Procurement & Fab,AS_SPD_MANF_3470_COMP: ACM Interface Drift Tubes - BTL - SPD
298863,1.03,1.03.05,1.03.05.06,1.03.05.06.01,1.03.05.06.01,Dogleg and Spreader Area - Procurement & Fab,AS_SPD_MANF_3660,COMP: ACM Stand and Supports - BTL - SPD,0.0,0.0,0.0,0.0,0,02-13-24,AS_SPD_MANF_3650: FS,"AS_BTL_MANF_1010: FF, AS_SPD_INST_1020: FS, AS_SPD_INST_1070: FS",0,0,0,0,0,0,0.0,0.0,0,nn,02-13-24,0,0.0h,0.0h,0%,$0,0.0h,120.0d,0,$0,$0,1.03_Accelerator Systems (AS),1.03.05_AS Beam Transfer Line (BTL),1.03.05.06_AS Beam Transfer Line Procurement and Fabrication,1.03.05.06.01_Dogleg and Spreader Area - Procurement & Fab,AS_SPD_MANF_3660_COMP: ACM Stand and Supports - BTL - SPD
298864,1.03,1.03.05,1.03.05.06,1.03.05.06.01,1.03.05.06.01,Dogleg and Spreader Area - Procurement & Fab,AS_SPD_MANF_3860,COMP: ACM Shielding - BTL - SPD,0.0,0.0,0.0,0.0,0,02-13-24,AS_SPD_MANF_3850: FS,"AS_BTL_MANF_1010: FF, AS_SPD_INST_1070: FS",0,0,0,0,0,0,0.0,0.0,0,nn,02-13-24,0,0.0h,0.0h,0%,$0,0.0h,135.0d,0,$0,$0,1.03_Accelerator Systems (AS),1.03.05_AS Beam Transfer Line (BTL),1.03.05.06_AS Beam Transfer Line Procurement and Fabrication,1.03.05.06.01_Dogleg and Spreader Area - Procurement & Fab,AS_SPD_MANF_3860_COMP: ACM Shielding - BTL - SPD
298865,1.03,1.03.05,1.03.05.06,1.03.05.06.01,1.03.05.06.01,Dogleg and Spreader Area - Procurement & Fab,AS_DOG_MANF_1470,COMP: Magnet Stands - BTL - DOG,0.0,0.0,0.0,0.0,0,02-28-24,AS_DOG_MANF_1460: FS,"AS_BTL_MANF_1010: FF, AS_DOG_INST_1080: FS",0,0,0,0,0,0,0.0,0.0,0,nn,02-28-24,0,0.0h,0.0h,0%,$0,0.0h,129.0d,0,$0,$0,1.03_Accelerator Systems (AS),1.03.05_AS Beam Transfer Line (BTL),1.03.05.06_AS Beam Transfer Line Procurement and Fabrication,1.03.05.06.01_Dogleg and Spreader Area - Procurement & Fab,AS_DOG_MANF_1470_COMP: Magnet Stands - BTL - DOG
298866,1.03,1.03.05,1.03.05.06,1.03.05.06.01,1.03.05.06.01,Dogleg and Spreader Area - Procurement & Fab,AS_DOG_MANF_1670,COMP: Magnet Stage - BTL - DOG,0.0,0.0,0.0,0.0,0,02-28-24,AS_DOG_MANF_1660: FS,"AS_BTL_MANF_1010: FF, AS_DOG_MANF_1070: FS",0,0,0,0,0,0,0.0,0.0,0,nn,02-28-24,0,0.0h,0.0h,0%,$0,0.0h,480.0d,0,$0,$0,1.03_Accelerator Systems (AS),1.03.05_AS Beam Transfer Line (BTL),1.03.05.06_AS Beam Transfer Line Procurement and Fabrication,1.03.05.06.01_Dogleg and Spreader Area - Procurement & Fab,AS_DOG_MANF_1670_COMP: Magnet Stage - BTL - DOG
298867,1.03,1.03.05,1.03.05.06,1.03.05.06.01,1.03.05.06.01,Dogleg and Spreader Area - Procurement & Fab,AS_SPD_MANF_3270,COMP: Procurement - ACMs - Beam Transfer Line - BTL - SPD,0.0,0.0,0.0,0.0,0,04-10-24,AS_SPD_MANF_3260: FS,"AS_BTL_MANF_1010: FF, AS_SPD_INST_1070: FS",0,0,0,0,0,0,0.0,0.0,0,nn,04-10-24,0,0.0h,0.0h,0%,$0,0.0h,95.0d,0,$0,$0,1.03_Accelerator Systems (AS),1.03.05_AS Beam Transfer Line (BTL),1.03.05.06_AS Beam Transfer Line Procurement and Fabrication,1.03.05.06.01_Dogleg and Spreader Area - Procurement & Fab,AS_SPD_MANF_3270_COMP: Procurement - ACMs - Beam Transfer Line - BTL - SPD
298868,1.03,1.03.05,1.03.05.06,1.03.05.06.01,1.03.05.06.01,Dogleg and Spreader Area - Procurement & Fab,AS_DOG_MANF_2080,COMP: Drift Tubes - BTL - DOG,0.0,0.0,0.0,0.0,0,04-10-24,AS_DOG_MANF_2070: FS,"AS_BTL_MANF_1010: FF, AS_DOG_INST_1090: FS",0,0,0,0,0,0,0.0,0.0,0,nn,04-10-24,0,0.0h,0.0h,0%,$0,0.0h,480.0d,0,$0,$0,1.03_Accelerator Systems (AS),1.03.05_AS Beam Transfer Line (BTL),1.03.05.06_AS Beam Transfer Line Procurement and Fabrication,1.03.05.06.01_Dogleg and Spreader Area - Procurement & Fab,AS_DOG_MANF_2080_COMP: Drift Tubes - BTL - DOG
298869,1.03,1.03.05,1.03.05.06,1.03.05.06.01,1.03.05.06.01,Dogleg and Spreader Area - Procurement & Fab,AS_SPD_MANF_2470,COMP: Sextupole Drift Pipes - BTL - SPD,0.0,0.0,0.0,0.0,0,04-10-24,AS_SPD_MANF_2460: FS,AS_SPD_MANF_2270: FS,0,0,0,0,0,0,0.0,0.0,0,nn,04-10-24,0,0.0h,0.0h,0%,$0,0.0h,65.0d,0,$0,$0,1.03_Accelerator Systems (AS),1.03.05_AS Beam Transfer Line (BTL),1.03.05.06_AS Beam Transfer Line Procurement and Fabrication,1.03.05.06.01_Dogleg and Spreader Area - Procurement & Fab,AS_SPD_MANF_2470_COMP: Sextupole Drift Pipes - BTL - SPD
298870,1.03,1.03.05,1.03.05.06,1.03.05.06.01,1.03.05.06.01,Dogleg and Spreader Area - Procurement & Fab,AS_DOG_MANF_1280,COMP: Sextupole Drift Pipes - BTL - DOG,0.0,0.0,0.0,0.0,0,05-01-24,AS_DOG_MANF_1270: FS,AS_DOG_MANF_1070: FS,0,0,0,0,0,0,0.0,0.0,0,nn,05-01-24,0,0.0h,0.0h,0%,$0,0.0h,435.0d,0,$0,$0,1.03_Accelerator Systems (AS),1.03.05_AS Beam Transfer Line (BTL),1.03.05.06_AS Beam Transfer Line Procurement and Fabrication,1.03.05.06.01_Dogleg and Spreader Area - Procurement & Fab,AS_DOG_MANF_1280_COMP: Sextupole Drift Pipes - BTL - DOG
298871,1.03,1.03.05,1.03.05.06,1.03.05.06.01,1.03.05.06.01,Dogleg and Spreader Area - Procurement & Fab,AS_SPD_MANF_1280,COMP: 0.787K35 Drift Tube Procurement - BTL - SPD,0.0,0.0,0.0,0.0,0,06-06-24,AS_SPD_MANF_1270: FS,AS_SPD_MANF_1070: FS,0,0,0,0,0,0,0.0,0.0,0,nn,06-06-24,0,0.0h,0.0h,0%,$0,0.0h,14.0d,0,$0,$0,1.03_Accelerator Systems (AS),1.03.05_AS Beam Transfer Line (BTL),1.03.05.06_AS Beam Transfer Line Procurement and Fabrication,1.03.05.06.01_Dogleg and Spreader Area - Procurement & Fab,AS_SPD_MANF_1280_COMP: 0.787K35 Drift Tube Procurement - BTL - SPD
298872,1.03,1.03.05,1.03.05.06,1.03.05.06.01,1.03.05.06.01,Dogleg and Spreader Area - Procurement & Fab,AS_SPD_MANF_1680,COMP: Procurement - 1.378K35 Drift Tube - BTL - SPD,0.0,0.0,0.0,0.0,0,06-06-24,AS_SPD_MANF_1670: FS,"AS_BTL_MANF_1010: FF, AS_SPD_MANF_1470: FS",0,0,0,0,0,0,0.0,0.0,0,nn,06-06-24,0,0.0h,0.0h,0%,$0,0.0h,400.0d,0,$0,$0,1.03_Accelerator Systems (AS),1.03.05_AS Beam Transfer Line (BTL),1.03.05.06_AS Beam Transfer Line Procurement and Fabrication,1.03.05.06.01_Dogleg and Spreader Area - Procurement & Fab,AS_SPD_MANF_1680_COMP: Procurement - 1.378K35 Drift Tube - BTL - SPD
298873,1.03,1.03.05,1.03.05.06,1.03.05.06.01,1.03.05.06.01,Dogleg and Spreader Area - Procurement & Fab,AS_SPD_MANF_2280,COMP: Procurement - 1.38S3.00 Sextupoles - BTL - SPD,0.0,0.0,0.0,0.0,0,07-19-24,AS_SPD_MANF_2270: FS,"AS_BTL_MANF_1010: FF, AS_SPD_INST_1060: FS",0,0,0,0,0,0,0.0,0.0,0,nn,07-19-24,0,0.0h,0.0h,0%,$0,0.0h,25.0d,0,$0,$0,1.03_Accelerator Systems (AS),1.03.05_AS Beam Transfer Line (BTL),1.03.05.06_AS Beam Transfer Line Procurement and Fabrication,1.03.05.06.01_Dogleg and Spreader Area - Procurement & Fab,AS_SPD_MANF_2280_COMP: Procurement - 1.38S3.00 Sextupoles - BTL - SPD
298874,1.03,1.03.05,1.03.05.06,1.03.05.06.01,1.03.05.06.01,Dogleg and Spreader Area - Procurement & Fab,AS_DOG_MANF_1080,COMP:1.38S3.00 Sextupoles - BTL - DOG,0.0,0.0,0.0,0.0,0,07-19-24,AS_DOG_MANF_1070: FS,"AS_BTL_MANF_1010: FF, AS_DOG_INST_1070: FS",0,0,0,0,0,0,0.0,0.0,0,nn,07-19-24,0,0.0h,0.0h,0%,$0,0.0h,410.0d,0,$0,$0,1.03_Accelerator Systems (AS),1.03.05_AS Beam Transfer Line (BTL),1.03.05.06_AS Beam Transfer Line Procurement and Fabrication,1.03.05.06.01_Dogleg and Spreader Area - Procurement & Fab,AS_DOG_MANF_1080_COMP:1.38S3.00 Sextupoles - BTL - DOG
298875,1.03,1.03.05,1.03.05.06,1.03.05.06.01,1.03.05.06.01,Dogleg and Spreader Area - Procurement & Fab,AS_SPD_MANF_1080,COMP: 0.787K35 Kicker Magnet Procurement - BTL - SPD,0.0,0.0,0.0,0.0,0,08-02-24,AS_SPD_MANF_1070: FS,"AS_BTL_MANF_1010: FF, AS_SPD_INST_1030: FS",0,0,0,0,0,0,0.0,0.0,0,nn,08-02-24,0,0.0h,0.0h,0%,$0,0.0h,14.0d,0,$0,$0,1.03_Accelerator Systems (AS),1.03.05_AS Beam Transfer Line (BTL),1.03.05.06_AS Beam Transfer Line Procurement and Fabrication,1.03.05.06.01_Dogleg and Spreader Area - Procurement & Fab,AS_SPD_MANF_1080_COMP: 0.787K35 Kicker Magnet Procurement - BTL - SPD
298876,1.03,1.03.05,1.03.05.06,1.03.05.06.01,1.03.05.06.01,Dogleg and Spreader Area - Procurement & Fab,AS_SPD_MANF_1480,COMP: Procurement 1.378K35 Kicker Magnet - BTL - SPD,0.0,0.0,0.0,0.0,0,08-02-24,AS_SPD_MANF_1470: FS,AS_BTL_MANF_1010: FF,0,0,0,0,0,0,0.0,0.0,0,nn,08-02-24,0,0.0h,0.0h,0%,$0,0.0h,400.0d,0,$0,$0,1.03_Accelerator Systems (AS),1.03.05_AS Beam Transfer Line (BTL),1.03.05.06_AS Beam Transfer Line Procurement and Fabrication,1.03.05.06.01_Dogleg and Spreader Area - Procurement & Fab,AS_SPD_MANF_1480_COMP: Procurement 1.378K35 Kicker Magnet - BTL - SPD
298877,1.03,1.03.05,1.03.05.06,1.03.05.06.02,1.03.05.06.02,BSY and EBD Area - Procurement & Fab,AS_EBD_MANF_1020,Prepare RFP - Rastering Magnet - BTL - RAS,10.0,0.0,0.0,0.0,01-26-22,02-08-22,"AS_EBD_MANF_1010: FS, AS_RAS_DE_2130: FS",AS_EBD_MANF_1030: FS,0,0,0,0,0,0,0.0,0.0,0,01-26-22,02-08-22,0,0.0h,0.0h,0%,$0,0.0h,141.0d,0,$0,$0,1.03_Accelerator Systems (AS),1.03.05_AS Beam Transfer Line (BTL),1.03.05.06_AS Beam Transfer Line Procurement and Fabrication,1.03.05.06.02_BSY and EBD Area - Procurement & Fab,AS_EBD_MANF_1020_Prepare RFP - Rastering Magnet - BTL - RAS
298878,1.03,1.03.05,1.03.05.06,1.03.05.06.02,1.03.05.06.02,BSY and EBD Area - Procurement & Fab,AS_EBD_MANF_1030,Release RFP - Rastering Magnet - BTL - RAS,2.0,0.0,0.0,0.0,02-09-22,02-10-22,AS_EBD_MANF_1020: FS,AS_EBD_MANF_1040: FS,0,0,0,0,0,0,0.0,0.0,0,02-09-22,02-10-22,0,0.0h,0.0h,0%,$0,0.0h,141.0d,0,$0,$0,1.03_Accelerator Systems (AS),1.03.05_AS Beam Transfer Line (BTL),1.03.05.06_AS Beam Transfer Line Procurement and Fabrication,1.03.05.06.02_BSY and EBD Area - Procurement & Fab,AS_EBD_MANF_1030_Release RFP - Rastering Magnet - BTL - RAS
298879,1.03,1.03.05,1.03.05.06,1.03.05.06.02,1.03.05.06.02,BSY and EBD Area - Procurement & Fab,AS_EBD_MANF_1040,Vendor Proposal Effort - Rastering Magnet - BTL - RAS,10.0,0.0,0.0,0.0,02-11-22,02-25-22,AS_EBD_MANF_1030: FS,AS_EBD_MANF_1050: FS,0,0,0,0,0,0,0.0,0.0,0,02-11-22,02-25-22,0,0.0h,0.0h,0%,$0,0.0h,141.0d,0,$0,$0,1.03_Accelerator Systems (AS),1.03.05_AS Beam Transfer Line (BTL),1.03.05.06_AS Beam Transfer Line Procurement and Fabrication,1.03.05.06.02_BSY and EBD Area - Procurement & Fab,AS_EBD_MANF_1040_Vendor Proposal Effort - Rastering Magnet - BTL - RAS
298880,1.03,1.03.05,1.03.05.06,1.03.05.06.02,1.03.05.06.02,BSY and EBD Area - Procurement & Fab,AS_EBD_MANF_1050,RCV: Vendor Proposal - Rastering Magnet - BTL - RAS,0.0,0.0,0.0,0.0,0,02-25-22,AS_EBD_MANF_1040: FS,AS_EBD_MANF_1060: FS,0,0,0,0,0,0,0.0,0.0,0,nn,02-25-22,0,0.0h,0.0h,0%,$0,0.0h,141.0d,0,$0,$0,1.03_Accelerator Systems (AS),1.03.05_AS Beam Transfer Line (BTL),1.03.05.06_AS Beam Transfer Line Procurement and Fabrication,1.03.05.06.02_BSY and EBD Area - Procurement & Fab,AS_EBD_MANF_1050_RCV: Vendor Proposal - Rastering Magnet - BTL - RAS
298881,1.03,1.03.05,1.03.05.06,1.03.05.06.02,1.03.05.06.02,BSY and EBD Area - Procurement & Fab,AS_EBD_MANF_1060,Evaluations/Negotiations - Rastering Magnet - BTL - RAS,15.0,0.0,0.0,0.0,02-28-22,03-18-22,AS_EBD_MANF_1050: FS,AS_EBD_MANF_1070: FS,0,0,0,0,0,0,0.0,0.0,0,02-28-22,03-18-22,0,0.0h,0.0h,0%,$0,0.0h,141.0d,0,$0,$0,1.03_Accelerator Systems (AS),1.03.05_AS Beam Transfer Line (BTL),1.03.05.06_AS Beam Transfer Line Procurement and Fabrication,1.03.05.06.02_BSY and EBD Area - Procurement & Fab,AS_EBD_MANF_1060_Evaluations/Negotiations - Rastering Magnet - BTL - RAS
298882,1.03,1.03.05,1.03.05.06,1.03.05.06.02,1.03.05.06.02,BSY and EBD Area - Procurement & Fab,AS_EBD_MANF_1070,Prepare Award Documents - Rastering Magnet - BTL - RAS,5.0,0.0,0.0,0.0,03-21-22,03-25-22,AS_EBD_MANF_1060: FS,AS_EBD_MANF_1080: FS,0,0,0,0,0,0,0.0,0.0,0,03-21-22,03-25-22,0,0.0h,0.0h,0%,$0,0.0h,141.0d,0,$0,$0,1.03_Accelerator Systems (AS),1.03.05_AS Beam Transfer Line (BTL),1.03.05.06_AS Beam Transfer Line Procurement and Fabrication,1.03.05.06.02_BSY and EBD Area - Procurement & Fab,AS_EBD_MANF_1070_Prepare Award Documents - Rastering Magnet - BTL - RAS
298883,1.03,1.03.05,1.03.05.06,1.03.05.06.02,1.03.05.06.02,BSY and EBD Area - Procurement & Fab,AS_EBD_MANF_1090,Vendor Effort - Rastering Magnet Design - BTL - RAS,40.0,0.0,0.0,0.0,03-29-22,05-23-22,AS_EBD_MANF_1080: FS,AS_EBD_MANF_1100: FS,0,0,0,0,0,0,0.0,0.0,0,03-29-22,05-23-22,0,0.0h,0.0h,0%,$0,0.0h,141.0d,0,$0,$0,1.03_Accelerator Systems (AS),1.03.05_AS Beam Transfer Line (BTL),1.03.05.06_AS Beam Transfer Line Procurement and Fabrication,1.03.05.06.02_BSY and EBD Area - Procurement & Fab,AS_EBD_MANF_1090_Vendor Effort - Rastering Magnet Design - BTL - RAS
298884,1.03,1.03.05,1.03.05.06,1.03.05.06.02,1.03.05.06.02,BSY and EBD Area - Procurement & Fab,AS_EBD_MANF_1110,SLAC Approval of vendor design - rastering magnets - BTL - RAS,10.0,0.0,0.0,0.0,05-25-22,06-08-22,AS_EBD_MANF_1100: FS,"AS_EBD_MANF_1120: FS, AS_EBD_MANF_1130: FS",0,0,0,0,0,0,0.0,0.0,0,05-25-22,06-08-22,0,0.0h,0.0h,0%,$0,0.0h,141.0d,0,$0,$0,1.03_Accelerator Systems (AS),1.03.05_AS Beam Transfer Line (BTL),1.03.05.06_AS Beam Transfer Line Procurement and Fabrication,1.03.05.06.02_BSY and EBD Area - Procurement & Fab,AS_EBD_MANF_1110_SLAC Approval of vendor design - rastering magnets - BTL - RAS
298885,1.03,1.03.05,1.03.05.06,1.03.05.06.02,1.03.05.06.02,BSY and EBD Area - Procurement & Fab,AS_EBD_MANF_1120,Drawing Release - Rastering magnets - BTL - RAS,10.0,0.0,0.0,0.0,06-09-22,06-22-22,AS_EBD_MANF_1110: FS,"AS_BSY_DE_1070: FS, AS_EBD_DE_1120: FS, AS_RAS_DE_1030: FS",0,0,0,0,0,0,0.0,0.0,0,06-09-22,06-22-22,0,0.0h,0.0h,0%,$0,0.0h,141.0d,0,$0,$0,1.03_Accelerator Systems (AS),1.03.05_AS Beam Transfer Line (BTL),1.03.05.06_AS Beam Transfer Line Procurement and Fabrication,1.03.05.06.02_BSY and EBD Area - Procurement & Fab,AS_EBD_MANF_1120_Drawing Release - Rastering magnets - BTL - RAS
298886,1.03,1.03.05,1.03.05.06,1.03.05.06.02,1.03.05.06.02,BSY and EBD Area - Procurement & Fab,AS_EBD_MANF_1420,Procurement Process - Class 5 Magnet - BTL - EBD,10.0,0.0,0.0,0.0,10-03-23,10-16-23,AS_EBD_MANF_1410: FS,AS_EBD_MANF_1430: FS,0,0,0,0,0,0,0.0,0.0,0,10-03-23,10-16-23,0,0.0h,0.0h,0%,$0,0.0h,124.0d,0,$0,$0,1.03_Accelerator Systems (AS),1.03.05_AS Beam Transfer Line (BTL),1.03.05.06_AS Beam Transfer Line Procurement and Fabrication,1.03.05.06.02_BSY and EBD Area - Procurement & Fab,AS_EBD_MANF_1420_Procurement Process - Class 5 Magnet - BTL - EBD
298887,1.03,1.03.05,1.03.05.06,1.03.05.06.02,1.03.05.06.02,BSY and EBD Area - Procurement & Fab,AS_BSY_MANF_1420,Procurement Process - Magnet Stands - BTL - BSY,10.0,0.0,0.0,0.0,10-03-23,10-16-23,AS_BSY_MANF_1410: FS,AS_BSY_MANF_1430: FS,0,0,0,0,0,0,0.0,0.0,0,10-03-23,10-16-23,0,0.0h,0.0h,0%,$0,0.0h,145.0d,0,$0,$0,1.03_Accelerator Systems (AS),1.03.05_AS Beam Transfer Line (BTL),1.03.05.06_AS Beam Transfer Line Procurement and Fabrication,1.03.05.06.02_BSY and EBD Area - Procurement & Fab,AS_BSY_MANF_1420_Procurement Process - Magnet Stands - BTL - BSY
298888,1.03,1.03.05,1.03.05.06,1.03.05.06.02,1.03.05.06.02,BSY and EBD Area - Procurement & Fab,AS_BSY_MANF_1620,Procurement Process - Interface Vacuum Drift Tubes & Bellows- BTL - BSY,10.0,0.0,0.0,0.0,10-03-23,10-16-23,AS_BSY_MANF_1610: FS,AS_BSY_MANF_1630: FS,0,0,0,0,0,0,0.0,0.0,0,10-03-23,10-16-23,0,0.0h,0.0h,0%,$0,0.0h,135.0d,0,$0,$0,1.03_Accelerator Systems (AS),1.03.05_AS Beam Transfer Line (BTL),1.03.05.06_AS Beam Transfer Line Procurement and Fabrication,1.03.05.06.02_BSY and EBD Area - Procurement & Fab,AS_BSY_MANF_1620_Procurement Process - Interface Vacuum Drift Tubes & Bellows- BTL - BSY
298889,1.03,1.03.05,1.03.05.06,1.03.05.06.02,1.03.05.06.02,BSY and EBD Area - Procurement & Fab,AS_BSY_MANF_1820,Procurement Process - Misc Vacuum Hardware - BTL - BSY,10.0,0.0,0.0,0.0,10-03-23,10-16-23,AS_BSY_MANF_1810: FS,AS_BSY_MANF_1830: FS,0,0,0,0,0,0,0.0,0.0,0,10-03-23,10-16-23,0,0.0h,0.0h,0%,$0,0.0h,170.0d,0,$0,$0,1.03_Accelerator Systems (AS),1.03.05_AS Beam Transfer Line (BTL),1.03.05.06_AS Beam Transfer Line Procurement and Fabrication,1.03.05.06.02_BSY and EBD Area - Procurement & Fab,AS_BSY_MANF_1820_Procurement Process - Misc Vacuum Hardware - BTL - BSY
298890,1.03,1.03.05,1.03.05.06,1.03.05.06.02,1.03.05.06.02,BSY and EBD Area - Procurement & Fab,AS_BSY_MANF_2020,Procurement Process - Misc Mech Hardware - BTL - BSY,10.0,0.0,0.0,0.0,10-03-23,10-16-23,AS_BSY_MANF_2010: FS,AS_BSY_MANF_2030: FS,0,0,0,0,0,0,0.0,0.0,0,10-03-23,10-16-23,0,0.0h,0.0h,0%,$0,0.0h,160.0d,0,$0,$0,1.03_Accelerator Systems (AS),1.03.05_AS Beam Transfer Line (BTL),1.03.05.06_AS Beam Transfer Line Procurement and Fabrication,1.03.05.06.02_BSY and EBD Area - Procurement & Fab,AS_BSY_MANF_2020_Procurement Process - Misc Mech Hardware - BTL - BSY
298891,1.03,1.03.05,1.03.05.06,1.03.05.06.02,1.03.05.06.02,BSY and EBD Area - Procurement & Fab,AS_EBD_MANF_1620,Procurement Process - Magnet Stands  - BTL - EBD,10.0,0.0,0.0,0.0,10-03-23,10-16-23,"AS_EBD_MANF_1610: FS, AS_BTL_MANF_1000: FS",AS_EBD_MANF_1630: FS,0,0,0,0,0,0,0.0,0.0,0,10-03-23,10-16-23,0,0.0h,0.0h,0%,$0,0.0h,124.0d,0,$0,$0,1.03_Accelerator Systems (AS),1.03.05_AS Beam Transfer Line (BTL),1.03.05.06_AS Beam Transfer Line Procurement and Fabrication,1.03.05.06.02_BSY and EBD Area - Procurement & Fab,AS_EBD_MANF_1620_Procurement Process - Magnet Stands  - BTL - EBD
298892,1.03,1.03.05,1.03.05.06,1.03.05.06.02,1.03.05.06.02,BSY and EBD Area - Procurement & Fab,AS_EBD_MANF_1820,Procurement Process - Interface Vacuum Drift Tubes & Bellows - BTL - EBD,10.0,0.0,0.0,0.0,10-03-23,10-16-23,AS_EBD_MANF_1810: FS,AS_EBD_MANF_1830: FS,0,0,0,0,0,0,0.0,0.0,0,10-03-23,10-16-23,0,0.0h,0.0h,0%,$0,0.0h,129.0d,0,$0,$0,1.03_Accelerator Systems (AS),1.03.05_AS Beam Transfer Line (BTL),1.03.05.06_AS Beam Transfer Line Procurement and Fabrication,1.03.05.06.02_BSY and EBD Area - Procurement & Fab,AS_EBD_MANF_1820_Procurement Process - Interface Vacuum Drift Tubes & Bellows - BTL - EBD
298893,1.03,1.03.05,1.03.05.06,1.03.05.06.02,1.03.05.06.02,BSY and EBD Area - Procurement & Fab,AS_EBD_MANF_2020,Procurement Process - Misc Vacuum Hardware - BTL - EBD,10.0,0.0,0.0,0.0,10-03-23,10-16-23,AS_EBD_MANF_2010: FS,AS_EBD_MANF_2030: FS,0,0,0,0,0,0,0.0,0.0,0,10-03-23,10-16-23,0,0.0h,0.0h,0%,$0,0.0h,159.0d,0,$0,$0,1.03_Accelerator Systems (AS),1.03.05_AS Beam Transfer Line (BTL),1.03.05.06_AS Beam Transfer Line Procurement and Fabrication,1.03.05.06.02_BSY and EBD Area - Procurement & Fab,AS_EBD_MANF_2020_Procurement Process - Misc Vacuum Hardware - BTL - EBD
298894,1.03,1.03.05,1.03.05.06,1.03.05.06.02,1.03.05.06.02,BSY and EBD Area - Procurement & Fab,AS_EBD_MANF_2220,Procurement Process - Misc Mech Hardware - BTL - EBD,10.0,0.0,0.0,0.0,10-03-23,10-16-23,AS_EBD_MANF_2210: FS,AS_EBD_MANF_2230: FS,0,0,0,0,0,0,0.0,0.0,0,10-03-23,10-16-23,0,0.0h,0.0h,0%,$0,0.0h,169.0d,0,$0,$0,1.03_Accelerator Systems (AS),1.03.05_AS Beam Transfer Line (BTL),1.03.05.06_AS Beam Transfer Line Procurement and Fabrication,1.03.05.06.02_BSY and EBD Area - Procurement & Fab,AS_EBD_MANF_2220_Procurement Process - Misc Mech Hardware - BTL - EBD
298895,1.03,1.03.05,1.03.05.06,1.03.05.06.02,1.03.05.06.02,BSY and EBD Area - Procurement & Fab,AS_BSY_MANF_1020,Procurement Process - Rastering Magnets - BTL - BSY,20.0,0.0,0.0,0.0,10-03-23,10-30-23,AS_BSY_MANF_1010: FS,AS_BSY_MANF_1030: FS,0,0,0,0,0,0,0.0,0.0,0,10-03-23,10-30-23,0,0.0h,0.0h,0%,$0,0.0h,440.0d,0,$0,$0,1.03_Accelerator Systems (AS),1.03.05_AS Beam Transfer Line (BTL),1.03.05.06_AS Beam Transfer Line Procurement and Fabrication,1.03.05.06.02_BSY and EBD Area - Procurement & Fab,AS_BSY_MANF_1020_Procurement Process - Rastering Magnets - BTL - BSY
298896,1.03,1.03.05,1.03.05.06,1.03.05.06.02,1.03.05.06.02,BSY and EBD Area - Procurement & Fab,AS_BSY_MANF_1220,Procurement Process - Mtls for testing Rastering Magnets - BTL - BSY,20.0,0.0,0.0,0.0,10-03-23,10-30-23,AS_BSY_MANF_1210: FS,AS_BSY_MANF_1230: FS,0,0,0,0,0,0,0.0,0.0,0,10-03-23,10-30-23,0,0.0h,0.0h,0%,$0,0.0h,460.0d,0,$0,$0,1.03_Accelerator Systems (AS),1.03.05_AS Beam Transfer Line (BTL),1.03.05.06_AS Beam Transfer Line Procurement and Fabrication,1.03.05.06.02_BSY and EBD Area - Procurement & Fab,AS_BSY_MANF_1220_Procurement Process - Mtls for testing Rastering Magnets - BTL - BSY
298897,1.03,1.03.05,1.03.05.06,1.03.05.06.02,1.03.05.06.02,BSY and EBD Area - Procurement & Fab,AS_EBD_MANF_1140,Vendor Effort - Rastering Magnet - BTL - RAS,130.0,0.0,0.0,0.0,10-03-23,04-22-24,AS_EBD_MANF_1130: FS,AS_EBD_MANF_1150: FS,0,0,0,0,0,0,0.0,0.0,0,10-03-23,04-22-24,0,0.0h,0.0h,0%,$0,0.0h,90.0d,0,$0,$0,1.03_Accelerator Systems (AS),1.03.05_AS Beam Transfer Line (BTL),1.03.05.06_AS Beam Transfer Line Procurement and Fabrication,1.03.05.06.02_BSY and EBD Area - Procurement & Fab,AS_EBD_MANF_1140_Vendor Effort - Rastering Magnet - BTL - RAS
298898,1.03,1.03.05,1.03.05.06,1.03.05.06.02,1.03.05.06.02,BSY and EBD Area - Procurement & Fab,AS_EBD_MANF_1440,Vendor Effort - Class 5 Magnet - BTL - EBD,70.0,0.0,0.0,0.0,10-18-23,02-12-24,AS_EBD_MANF_1430: FS,AS_EBD_MANF_1450: FS,0,0,0,0,0,0,0.0,0.0,0,10-18-23,02-12-24,0,0.0h,0.0h,0%,$0,0.0h,124.0d,0,$0,$0,1.03_Accelerator Systems (AS),1.03.05_AS Beam Transfer Line (BTL),1.03.05.06_AS Beam Transfer Line Procurement and Fabrication,1.03.05.06.02_BSY and EBD Area - Procurement & Fab,AS_EBD_MANF_1440_Vendor Effort - Class 5 Magnet - BTL - EBD
298899,1.03,1.03.05,1.03.05.06,1.03.05.06.02,1.03.05.06.02,BSY and EBD Area - Procurement & Fab,AS_BSY_MANF_1440,Vendor Effort - Magnet Stands - BTL - BSY,60.0,0.0,0.0,0.0,10-18-23,01-29-24,AS_BSY_MANF_1430: FS,AS_BSY_MANF_1450: FS,0,0,0,0,0,0,0.0,0.0,0,10-18-23,01-29-24,0,0.0h,0.0h,0%,$0,0.0h,145.0d,0,$0,$0,1.03_Accelerator Systems (AS),1.03.05_AS Beam Transfer Line (BTL),1.03.05.06_AS Beam Transfer Line Procurement and Fabrication,1.03.05.06.02_BSY and EBD Area - Procurement & Fab,AS_BSY_MANF_1440_Vendor Effort - Magnet Stands - BTL - BSY
298900,1.03,1.03.05,1.03.05.06,1.03.05.06.02,1.03.05.06.02,BSY and EBD Area - Procurement & Fab,AS_BSY_MANF_1640,Vendor Effort - Interface Vacuum Drift Tubes & Bellows - BTL - BSY,80.0,0.0,0.0,0.0,10-18-23,02-27-24,AS_BSY_MANF_1630: FS,AS_BSY_MANF_1650: FS,0,0,0,0,0,0,0.0,0.0,0,10-18-23,02-27-24,0,0.0h,0.0h,0%,$0,0.0h,135.0d,0,$0,$0,1.03_Accelerator Systems (AS),1.03.05_AS Beam Transfer Line (BTL),1.03.05.06_AS Beam Transfer Line Procurement and Fabrication,1.03.05.06.02_BSY and EBD Area - Procurement & Fab,AS_BSY_MANF_1640_Vendor Effort - Interface Vacuum Drift Tubes & Bellows - BTL - BSY
298901,1.03,1.03.05,1.03.05.06,1.03.05.06.02,1.03.05.06.02,BSY and EBD Area - Procurement & Fab,AS_BSY_MANF_1840,Vendor Effort - Misc Vacuum Hardware - BTL - BSY,40.0,0.0,0.0,0.0,10-18-23,12-14-23,AS_BSY_MANF_1830: FS,AS_BSY_MANF_1850: FS,0,0,0,0,0,0,0.0,0.0,0,10-18-23,12-14-23,0,0.0h,0.0h,0%,$0,0.0h,170.0d,0,$0,$0,1.03_Accelerator Systems (AS),1.03.05_AS Beam Transfer Line (BTL),1.03.05.06_AS Beam Transfer Line Procurement and Fabrication,1.03.05.06.02_BSY and EBD Area - Procurement & Fab,AS_BSY_MANF_1840_Vendor Effort - Misc Vacuum Hardware - BTL - BSY
298902,1.03,1.03.05,1.03.05.06,1.03.05.06.02,1.03.05.06.02,BSY and EBD Area - Procurement & Fab,AS_BSY_MANF_2040,Vendor Effort - Misc Mech Hardware - BTL - BSY,40.0,0.0,0.0,0.0,10-18-23,12-14-23,AS_BSY_MANF_2030: FS,AS_BSY_MANF_2050: FS,0,0,0,0,0,0,0.0,0.0,0,10-18-23,12-14-23,0,0.0h,0.0h,0%,$0,0.0h,160.0d,0,$0,$0,1.03_Accelerator Systems (AS),1.03.05_AS Beam Transfer Line (BTL),1.03.05.06_AS Beam Transfer Line Procurement and Fabrication,1.03.05.06.02_BSY and EBD Area - Procurement & Fab,AS_BSY_MANF_2040_Vendor Effort - Misc Mech Hardware - BTL - BSY
298903,1.03,1.03.05,1.03.05.06,1.03.05.06.02,1.03.05.06.02,BSY and EBD Area - Procurement & Fab,AS_EBD_MANF_1640,Vendor Effort - Magnet Stands - BTL - EBD,60.0,0.0,0.0,0.0,10-18-23,01-29-24,AS_EBD_MANF_1630: FS,AS_EBD_MANF_1650: FS,0,0,0,0,0,0,0.0,0.0,0,10-18-23,01-29-24,0,0.0h,0.0h,0%,$0,0.0h,124.0d,0,$0,$0,1.03_Accelerator Systems (AS),1.03.05_AS Beam Transfer Line (BTL),1.03.05.06_AS Beam Transfer Line Procurement and Fabrication,1.03.05.06.02_BSY and EBD Area - Procurement & Fab,AS_EBD_MANF_1640_Vendor Effort - Magnet Stands - BTL - EBD
298904,1.03,1.03.05,1.03.05.06,1.03.05.06.02,1.03.05.06.02,BSY and EBD Area - Procurement & Fab,AS_EBD_MANF_1840,Vendor Effort - Interface Vacuum Drift Tubes & Bellows - BTL - EBD,80.0,0.0,0.0,0.0,10-18-23,02-27-24,AS_EBD_MANF_1830: FS,AS_EBD_MANF_1850: FS,0,0,0,0,0,0,0.0,0.0,0,10-18-23,02-27-24,0,0.0h,0.0h,0%,$0,0.0h,129.0d,0,$0,$0,1.03_Accelerator Systems (AS),1.03.05_AS Beam Transfer Line (BTL),1.03.05.06_AS Beam Transfer Line Procurement and Fabrication,1.03.05.06.02_BSY and EBD Area - Procurement & Fab,AS_EBD_MANF_1840_Vendor Effort - Interface Vacuum Drift Tubes & Bellows - BTL - EBD
298905,1.03,1.03.05,1.03.05.06,1.03.05.06.02,1.03.05.06.02,BSY and EBD Area - Procurement & Fab,AS_EBD_MANF_2040,Vendor Effort - Misc Vacuum Hardware - BTL - EBD,40.0,0.0,0.0,0.0,10-18-23,12-14-23,AS_EBD_MANF_2030: FS,AS_EBD_MANF_2050: FS,0,0,0,0,0,0,0.0,0.0,0,10-18-23,12-14-23,0,0.0h,0.0h,0%,$0,0.0h,159.0d,0,$0,$0,1.03_Accelerator Systems (AS),1.03.05_AS Beam Transfer Line (BTL),1.03.05.06_AS Beam Transfer Line Procurement and Fabrication,1.03.05.06.02_BSY and EBD Area - Procurement & Fab,AS_EBD_MANF_2040_Vendor Effort - Misc Vacuum Hardware - BTL - EBD
298906,1.03,1.03.05,1.03.05.06,1.03.05.06.02,1.03.05.06.02,BSY and EBD Area - Procurement & Fab,AS_EBD_MANF_2240,Vendor Effort - Misc Mech Hardware - BTL - EBD,40.0,0.0,0.0,0.0,10-18-23,12-14-23,AS_EBD_MANF_2230: FS,AS_EBD_MANF_2250: FS,0,0,0,0,0,0,0.0,0.0,0,10-18-23,12-14-23,0,0.0h,0.0h,0%,$0,0.0h,169.0d,0,$0,$0,1.03_Accelerator Systems (AS),1.03.05_AS Beam Transfer Line (BTL),1.03.05.06_AS Beam Transfer Line Procurement and Fabrication,1.03.05.06.02_BSY and EBD Area - Procurement & Fab,AS_EBD_MANF_2240_Vendor Effort - Misc Mech Hardware - BTL - EBD
298907,1.03,1.03.05,1.03.05.06,1.03.05.06.02,1.03.05.06.02,BSY and EBD Area - Procurement & Fab,AS_BSY_MANF_1040,Vendor Effort - Rastering Magnets - BTL - BSY,130.0,0.0,0.0,0.0,11-01-23,05-21-24,AS_BSY_MANF_1030: FS,AS_BSY_MANF_1050: FS,0,0,0,0,0,0,0.0,0.0,0,11-01-23,05-21-24,0,0.0h,0.0h,0%,$0,0.0h,440.0d,0,$0,$0,1.03_Accelerator Systems (AS),1.03.05_AS Beam Transfer Line (BTL),1.03.05.06_AS Beam Transfer Line Procurement and Fabrication,1.03.05.06.02_BSY and EBD Area - Procurement & Fab,AS_BSY_MANF_1040_Vendor Effort - Rastering Magnets - BTL - BSY
298908,1.03,1.03.05,1.03.05.06,1.03.05.06.02,1.03.05.06.02,BSY and EBD Area - Procurement & Fab,AS_BSY_MANF_1240,Vendor Effort - Mtls for testing Rastering Magnets - BTL - BSY,80.0,0.0,0.0,0.0,11-01-23,03-12-24,AS_BSY_MANF_1230: FS,AS_BSY_MANF_1250: FS,0,0,0,0,0,0,0.0,0.0,0,11-01-23,03-12-24,0,0.0h,0.0h,0%,$0,0.0h,460.0d,0,$0,$0,1.03_Accelerator Systems (AS),1.03.05_AS Beam Transfer Line (BTL),1.03.05.06_AS Beam Transfer Line Procurement and Fabrication,1.03.05.06.02_BSY and EBD Area - Procurement & Fab,AS_BSY_MANF_1240_Vendor Effort - Mtls for testing Rastering Magnets - BTL - BSY
298909,1.03,1.03.05,1.03.05.06,1.03.05.06.02,1.03.05.06.02,BSY and EBD Area - Procurement & Fab,AS_BSY_MANF_2060,COMP: Misc Mech Hardware - BTL - BSY,0.0,0.0,0.0,0.0,0,12-15-23,AS_BSY_MANF_2050: FS,"AS_BTL_MANF_1010: FF, AS_BSY_INST_1020: FS, AS_BSY_INST_1040: FS, AS_BSY_MANF_4020: FS, AS_BSY_MANF_5020: FS",0,0,0,0,0,0,0.0,0.0,0,nn,12-15-23,0,0.0h,0.0h,0%,$0,0.0h,160.0d,0,$0,$0,1.03_Accelerator Systems (AS),1.03.05_AS Beam Transfer Line (BTL),1.03.05.06_AS Beam Transfer Line Procurement and Fabrication,1.03.05.06.02_BSY and EBD Area - Procurement & Fab,AS_BSY_MANF_2060_COMP: Misc Mech Hardware - BTL - BSY
298910,1.03,1.03.05,1.03.05.06,1.03.05.06.02,1.03.05.06.02,BSY and EBD Area - Procurement & Fab,AS_EBD_MANF_2260,COMP: Misc Mech Hardware - BTL - EBD,0.0,0.0,0.0,0.0,0,12-15-23,AS_EBD_MANF_2250: FS,"AS_BTL_MANF_1010: FF, AS_EBD_INST_1020: FS, AS_EBD_INST_1030: FS, AS_EBD_INST_1040: FS",0,0,0,0,0,0,0.0,0.0,0,nn,12-15-23,0,0.0h,0.0h,0%,$0,0.0h,169.0d,0,$0,$0,1.03_Accelerator Systems (AS),1.03.05_AS Beam Transfer Line (BTL),1.03.05.06_AS Beam Transfer Line Procurement and Fabrication,1.03.05.06.02_BSY and EBD Area - Procurement & Fab,AS_EBD_MANF_2260_COMP: Misc Mech Hardware - BTL - EBD
298911,1.03,1.03.05,1.03.05.06,1.03.05.06.02,1.03.05.06.02,BSY and EBD Area - Procurement & Fab,AS_EBD_MANF_2070,COMP: Misc Vacuum Hardware - BTL - EBD,0.0,0.0,0.0,0.0,0,01-16-24,AS_EBD_MANF_2060: FS,"AS_BTL_MANF_1010: FF, AS_EBD_MANF_1860: FS",0,0,0,0,0,0,0.0,0.0,0,nn,01-16-24,0,0.0h,0.0h,0%,$0,0.0h,159.0d,0,$0,$0,1.03_Accelerator Systems (AS),1.03.05_AS Beam Transfer Line (BTL),1.03.05.06_AS Beam Transfer Line Procurement and Fabrication,1.03.05.06.02_BSY and EBD Area - Procurement & Fab,AS_EBD_MANF_2070_COMP: Misc Vacuum Hardware - BTL - EBD
298912,1.03,1.03.05,1.03.05.06,1.03.05.06.02,1.03.05.06.02,BSY and EBD Area - Procurement & Fab,AS_BSY_MANF_1870,COMP: Misc Vacuum Hardware - BTL - BSY,0.0,0.0,0.0,0.0,0,01-23-24,AS_BSY_MANF_1860: FS,"AS_BTL_MANF_1010: FF, AS_BSY_INST_1050: FS",0,0,0,0,0,0,0.0,0.0,0,nn,01-23-24,0,0.0h,0.0h,0%,$0,0.0h,170.0d,0,$0,$0,1.03_Accelerator Systems (AS),1.03.05_AS Beam Transfer Line (BTL),1.03.05.06_AS Beam Transfer Line Procurement and Fabrication,1.03.05.06.02_BSY and EBD Area - Procurement & Fab,AS_BSY_MANF_1870_COMP: Misc Vacuum Hardware - BTL - BSY
298913,1.03,1.03.05,1.03.05.06,1.03.05.06.02,1.03.05.06.02,BSY and EBD Area - Procurement & Fab,AS_BSY_MANF_1470,COMP: Magnet Stands - BTL - BSY,0.0,0.0,0.0,0.0,0,02-13-24,AS_BSY_MANF_1460: FS,"AS_BTL_MANF_1010: FF, AS_BSY_INST_1030: FS",0,0,0,0,0,0,0.0,0.0,0,nn,02-13-24,0,0.0h,0.0h,0%,$0,0.0h,145.0d,0,$0,$0,1.03_Accelerator Systems (AS),1.03.05_AS Beam Transfer Line (BTL),1.03.05.06_AS Beam Transfer Line Procurement and Fabrication,1.03.05.06.02_BSY and EBD Area - Procurement & Fab,AS_BSY_MANF_1470_COMP: Magnet Stands - BTL - BSY
298914,1.03,1.03.05,1.03.05.06,1.03.05.06.02,1.03.05.06.02,BSY and EBD Area - Procurement & Fab,AS_EBD_MANF_1670,COMP: Magnet Stands - BTL - EBD,0.0,0.0,0.0,0.0,0,02-13-24,AS_EBD_MANF_1660: FS,"AS_BTL_MANF_1010: FF, AS_EBD_INST_1010: FS",0,0,0,0,0,0,0.0,0.0,0,nn,02-13-24,0,0.0h,0.0h,0%,$0,0.0h,124.0d,0,$0,$0,1.03_Accelerator Systems (AS),1.03.05_AS Beam Transfer Line (BTL),1.03.05.06_AS Beam Transfer Line Procurement and Fabrication,1.03.05.06.02_BSY and EBD Area - Procurement & Fab,AS_EBD_MANF_1670_COMP: Magnet Stands - BTL - EBD
298915,1.03,1.03.05,1.03.05.06,1.03.05.06.02,1.03.05.06.02,BSY and EBD Area - Procurement & Fab,AS_EBD_MANF_1470,COMP: Class 5 Magnet  Procurement - BTL - EBD,0.0,0.0,0.0,0.0,0,03-13-24,AS_EBD_MANF_1460: FS,"AS_BTL_MANF_1010: FF, AS_EBD_INST_1030: FS",0,0,0,0,0,0,0.0,0.0,0,nn,03-13-24,0,0.0h,0.0h,0%,$0,0.0h,124.0d,0,$0,$0,1.03_Accelerator Systems (AS),1.03.05_AS Beam Transfer Line (BTL),1.03.05.06_AS Beam Transfer Line Procurement and Fabrication,1.03.05.06.02_BSY and EBD Area - Procurement & Fab,AS_EBD_MANF_1470_COMP: Class 5 Magnet  Procurement - BTL - EBD
298916,1.03,1.03.05,1.03.05.06,1.03.05.06.02,1.03.05.06.02,BSY and EBD Area - Procurement & Fab,AS_BSY_MANF_1670,COMP: Interface Vacuum Drift Tubes & Bellows - BTL - BSY,0.0,0.0,0.0,0.0,0,03-13-24,AS_BSY_MANF_1660: FS,"AS_BTL_MANF_1010: FF, AS_BSY_INST_1050: FS",0,0,0,0,0,0,0.0,0.0,0,nn,03-13-24,0,0.0h,0.0h,0%,$0,0.0h,135.0d,0,$0,$0,1.03_Accelerator Systems (AS),1.03.05_AS Beam Transfer Line (BTL),1.03.05.06_AS Beam Transfer Line Procurement and Fabrication,1.03.05.06.02_BSY and EBD Area - Procurement & Fab,AS_BSY_MANF_1670_COMP: Interface Vacuum Drift Tubes & Bellows - BTL - BSY
298917,1.03,1.03.05,1.03.05.06,1.03.05.06.02,1.03.05.06.02,BSY and EBD Area - Procurement & Fab,AS_EBD_MANF_1870,COMP: Interface Vacuum Drift Tubes & Bellows - BTL - EBD,0.0,0.0,0.0,0.0,0,03-13-24,AS_EBD_MANF_1860: FS,"AS_BTL_MANF_1010: FF, AS_EBD_INST_1050: FS",0,0,0,0,0,0,0.0,0.0,0,nn,03-13-24,0,0.0h,0.0h,0%,$0,0.0h,129.0d,0,$0,$0,1.03_Accelerator Systems (AS),1.03.05_AS Beam Transfer Line (BTL),1.03.05.06_AS Beam Transfer Line Procurement and Fabrication,1.03.05.06.02_BSY and EBD Area - Procurement & Fab,AS_EBD_MANF_1870_COMP: Interface Vacuum Drift Tubes & Bellows - BTL - EBD
298918,1.03,1.03.05,1.03.05.06,1.03.05.06.02,1.03.05.06.02,BSY and EBD Area - Procurement & Fab,AS_BSY_MANF_1260,COMP: Mtls for testing  Rastering Magnets - BTL - BSY,0.0,0.0,0.0,0.0,0,03-13-24,AS_BSY_MANF_1250: FS,"AS_BTL_MANF_1010: FF, AS_BSY_MANF_6020: FS, AS_BSY_MANF_6000: FS",0,0,0,0,0,0,0.0,0.0,0,nn,03-13-24,0,0.0h,0.0h,0%,$0,0.0h,460.0d,0,$0,$0,1.03_Accelerator Systems (AS),1.03.05_AS Beam Transfer Line (BTL),1.03.05.06_AS Beam Transfer Line Procurement and Fabrication,1.03.05.06.02_BSY and EBD Area - Procurement & Fab,AS_BSY_MANF_1260_COMP: Mtls for testing  Rastering Magnets - BTL - BSY
298919,1.03,1.03.05,1.03.05.06,1.03.05.06.02,1.03.05.06.02,BSY and EBD Area - Procurement & Fab,AS_EBD_MANF_1160,COMP: Rastering Magnet  Procurement - BTL - RAS,0.0,0.0,0.0,0.0,0,04-23-24,AS_EBD_MANF_1150: FS,"AS_BTL_MANF_1010: FF, AS_EBD_INST_1040: FS",0,0,0,0,0,0,0.0,0.0,0,nn,04-23-24,0,0.0h,0.0h,0%,$0,0.0h,90.0d,0,$0,$0,1.03_Accelerator Systems (AS),1.03.05_AS Beam Transfer Line (BTL),1.03.05.06_AS Beam Transfer Line Procurement and Fabrication,1.03.05.06.02_BSY and EBD Area - Procurement & Fab,AS_EBD_MANF_1160_COMP: Rastering Magnet  Procurement - BTL - RAS
298920,1.03,1.03.05,1.03.05.06,1.03.05.06.02,1.03.05.06.02,BSY and EBD Area - Procurement & Fab,AS_BSY_MANF_6020,COMP: Rastering Magnets Procurement and testing - BTL - BSY,0.0,0.0,0.0,0.0,0,06-06-24,"AS_BSY_MANF_1070: FS, AS_BSY_MANF_1260: FS, AS_BSY_MANF_6000: FS",AS_BTL_MANF_1010: FF,0,0,0,0,0,0,0.0,0.0,0,nn,06-06-24,0,0.0h,0.0h,0%,$0,0.0h,440.0d,0,$0,$0,1.03_Accelerator Systems (AS),1.03.05_AS Beam Transfer Line (BTL),1.03.05.06_AS Beam Transfer Line Procurement and Fabrication,1.03.05.06.02_BSY and EBD Area - Procurement & Fab,AS_BSY_MANF_6020_COMP: Rastering Magnets Procurement and testing - BTL - BSY
298921,1.03,1.03.05,1.03.05.06,1.03.05.06.02,1.03.05.06.02,BSY and EBD Area - Procurement & Fab,AS_BSY_MANF_1070,COMP: Rastering Magnets Procurement - BTL - BSY,0.0,0.0,0.0,0.0,0,06-06-24,AS_BSY_MANF_1060: FS,"AS_BTL_MANF_1010: FF, AS_BSY_MANF_6020: FS",0,0,0,0,0,0,0.0,0.0,0,nn,06-06-24,0,0.0h,0.0h,0%,$0,0.0h,440.0d,0,$0,$0,1.03_Accelerator Systems (AS),1.03.05_AS Beam Transfer Line (BTL),1.03.05.06_AS Beam Transfer Line Procurement and Fabrication,1.03.05.06.02_BSY and EBD Area - Procurement & Fab,AS_BSY_MANF_1070_COMP: Rastering Magnets Procurement - BTL - BSY
298922,1.03,1.03.05,1.03.05.20,1.03.05.20.01,1.03.05.20.01,Dogleg and Spreader Area Installation,AS_BTL_INST_1030,COMP: IRR - BTL,0.0,0.0,0.0,0.0,0,05-23-23,AS_BTL_INST_1020: FF,"AS_DOG_INST_1000: FS, AS_DOG_INST_3000: FS, AS_DOG_INST_1010: FS, AS_DOG_INST_2010: FS, AS_SPD_INST_1000: FS, AS_SPD_INST_1010: FS, AS_SPD_INST_2000: FS, AS_BSY_INST_1000: FS, AS_BSY_INST_1010: FS, AS_EBD_INST_1000: FS, AS_EBD_INST_2000: FS",0,0,0,0,0,0,0.0,0.0,0,nn,05-23-23,0,0.0h,0.0h,0%,$0,0.0h,253.0d,0,$0,$0,1.03_Accelerator Systems (AS),1.03.05_AS Beam Transfer Line (BTL),1.03.05.20_AS Beam Transfer Line Installation,1.03.05.20.01_Dogleg and Spreader Area Installation,AS_BTL_INST_1030_COMP: IRR - BTL
298923,1.03,1.03.05,1.03.05.20,1.03.05.20.01,1.03.05.20.01,Dogleg and Spreader Area Installation,AS_DOG_INST_3000,Prepare Requisition (Specs/SOW/ETC) - Install new stands - BTL - DOG,10.0,0.0,0.0,0.0,05-24-23,06-07-23,AS_BTL_INST_1030: FS,AS_DOG_INST_3010: FS,0,0,0,0,0,0,0.0,0.0,0,05-24-23,06-07-23,0,0.0h,0.0h,0%,$0,0.0h,253.0d,0,$0,$0,1.03_Accelerator Systems (AS),1.03.05_AS Beam Transfer Line (BTL),1.03.05.20_AS Beam Transfer Line Installation,1.03.05.20.01_Dogleg and Spreader Area Installation,AS_DOG_INST_3000_Prepare Requisition (Specs/SOW/ETC) - Install new stands - BTL - DOG
298924,1.03,1.03.05,1.03.05.20,1.03.05.20.01,1.03.05.20.01,Dogleg and Spreader Area Installation,AS_DOG_INST_2030,Procurement Process - Vacuum hardware removal - BTL - DOG,5.0,0.0,0.0,0.0,06-09-23,06-15-23,AS_DOG_INST_2020: FS,AS_DOG_INST_2040: FS,0,0,0,0,0,0,0.0,0.0,0,06-09-23,06-15-23,0,0.0h,0.0h,0%,$0,0.0h,277.0d,0,$0,$0,1.03_Accelerator Systems (AS),1.03.05_AS Beam Transfer Line (BTL),1.03.05.20_AS Beam Transfer Line Installation,1.03.05.20.01_Dogleg and Spreader Area Installation,AS_DOG_INST_2030_Procurement Process - Vacuum hardware removal - BTL - DOG
298925,1.03,1.03.05,1.03.05.20,1.03.05.20.01,1.03.05.20.01,Dogleg and Spreader Area Installation,AS_DOG_INST_3020,Prepare RFP - Install new stands - BTL - DOG,10.0,0.0,0.0,0.0,06-09-23,06-22-23,AS_DOG_INST_3010: FS,AS_DOG_INST_3030: FS,0,0,0,0,0,0,0.0,0.0,0,06-09-23,06-22-23,0,0.0h,0.0h,0%,$0,0.0h,253.0d,0,$0,$0,1.03_Accelerator Systems (AS),1.03.05_AS Beam Transfer Line (BTL),1.03.05.20_AS Beam Transfer Line Installation,1.03.05.20.01_Dogleg and Spreader Area Installation,AS_DOG_INST_3020_Prepare RFP - Install new stands - BTL - DOG
298926,1.03,1.03.05,1.03.05.20,1.03.05.20.01,1.03.05.20.01,Dogleg and Spreader Area Installation,AS_SPD_INST_2020,Procurement Process - Install kicker magnet stands - BTL - SPD,5.0,0.0,0.0,0.0,06-09-23,06-15-23,AS_SPD_INST_2010: FS,AS_SPD_INST_2030: FS,0,0,0,0,0,0,0.0,0.0,0,06-09-23,06-15-23,0,0.0h,0.0h,0%,$0,0.0h,276.0d,0,$0,$0,1.03_Accelerator Systems (AS),1.03.05_AS Beam Transfer Line (BTL),1.03.05.20_AS Beam Transfer Line Installation,1.03.05.20.01_Dogleg and Spreader Area Installation,AS_SPD_INST_2020_Procurement Process - Install kicker magnet stands - BTL - SPD
298927,1.03,1.03.05,1.03.05.20,1.03.05.20.01,1.03.05.20.01,Dogleg and Spreader Area Installation,AS_DOG_INST_2050,Vendor Effort - Vacuum hardware removal - BTL - DOG,15.0,0.0,0.0,0.0,06-19-23,07-10-23,AS_DOG_INST_2040: FS,AS_DOG_INST_2060: FS,0,0,0,0,0,0,0.0,0.0,0,06-19-23,07-10-23,0,0.0h,0.0h,0%,$0,0.0h,277.0d,0,$0,$0,1.03_Accelerator Systems (AS),1.03.05_AS Beam Transfer Line (BTL),1.03.05.20_AS Beam Transfer Line Installation,1.03.05.20.01_Dogleg and Spreader Area Installation,AS_DOG_INST_2050_Vendor Effort - Vacuum hardware removal - BTL - DOG
298928,1.03,1.03.05,1.03.05.20,1.03.05.20.01,1.03.05.20.01,Dogleg and Spreader Area Installation,AS_SPD_INST_2040,Vendor Effort - Install kicker magnet stands - BTL - SPD,10.0,0.0,0.0,0.0,06-19-23,06-30-23,AS_SPD_INST_2030: FS,"AS_SPD_INST_2050: FS, AS_SPD_INST_1020: SS",0,0,0,0,0,0,0.0,0.0,0,06-19-23,06-30-23,0,0.0h,0.0h,0%,$0,0.0h,276.0d,0,$0,$0,1.03_Accelerator Systems (AS),1.03.05_AS Beam Transfer Line (BTL),1.03.05.20_AS Beam Transfer Line Installation,1.03.05.20.01_Dogleg and Spreader Area Installation,AS_SPD_INST_2040_Vendor Effort - Install kicker magnet stands - BTL - SPD
298929,1.03,1.03.05,1.03.05.20,1.03.05.20.01,1.03.05.20.01,Dogleg and Spreader Area Installation,AS_DOG_INST_3030,Release RFP - Install new stands - BTL - DOG,2.0,0.0,0.0,0.0,06-23-23,06-26-23,AS_DOG_INST_3020: FS,AS_DOG_INST_3040: FS,0,0,0,0,0,0,0.0,0.0,0,06-23-23,06-26-23,0,0.0h,0.0h,0%,$0,0.0h,253.0d,0,$0,$0,1.03_Accelerator Systems (AS),1.03.05_AS Beam Transfer Line (BTL),1.03.05.20_AS Beam Transfer Line Installation,1.03.05.20.01_Dogleg and Spreader Area Installation,AS_DOG_INST_3030_Release RFP - Install new stands - BTL - DOG
298930,1.03,1.03.05,1.03.05.20,1.03.05.20.01,1.03.05.20.01,Dogleg and Spreader Area Installation,AS_DOG_INST_3040,Vendor Proposal Effort - Install new stands - BTL - DOG,10.0,0.0,0.0,0.0,06-27-23,07-11-23,AS_DOG_INST_3030: FS,AS_DOG_INST_3050: FS,0,0,0,0,0,0,0.0,0.0,0,06-27-23,07-11-23,0,0.0h,0.0h,0%,$0,0.0h,253.0d,0,$0,$0,1.03_Accelerator Systems (AS),1.03.05_AS Beam Transfer Line (BTL),1.03.05.20_AS Beam Transfer Line Installation,1.03.05.20.01_Dogleg and Spreader Area Installation,AS_DOG_INST_3040_Vendor Proposal Effort - Install new stands - BTL - DOG
298931,1.03,1.03.05,1.03.05.20,1.03.05.20.01,1.03.05.20.01,Dogleg and Spreader Area Installation,AS_SPD_INST_2060,COMP: Install kicker magnet stands - BTL - SPD,0.0,0.0,0.0,0.0,0,07-03-23,AS_SPD_INST_2050: FS,AS_M4_3050: FS,0,0,0,0,0,0,0.0,0.0,0,nn,07-03-23,0,0.0h,0.0h,0%,$0,0.0h,1822.5d,0,$0,$0,1.03_Accelerator Systems (AS),1.03.05_AS Beam Transfer Line (BTL),1.03.05.20_AS Beam Transfer Line Installation,1.03.05.20.01_Dogleg and Spreader Area Installation,AS_SPD_INST_2060_COMP: Install kicker magnet stands - BTL - SPD
298932,1.03,1.03.05,1.03.05.20,1.03.05.20.01,1.03.05.20.01,Dogleg and Spreader Area Installation,AS_DOG_INST_2070,COMP: Vacuum hardware removal - BTL - DOG,0.0,0.0,0.0,0.0,0,07-11-23,AS_DOG_INST_2060: FS,"AS_DOG_INST_1020: FS, AS_DOG_INST_1030: FS",0,0,0,0,0,0,0.0,0.0,0,nn,07-11-23,0,0.0h,0.0h,0%,$0,0.0h,277.0d,0,$0,$0,1.03_Accelerator Systems (AS),1.03.05_AS Beam Transfer Line (BTL),1.03.05.20_AS Beam Transfer Line Installation,1.03.05.20.01_Dogleg and Spreader Area Installation,AS_DOG_INST_2070_COMP: Vacuum hardware removal - BTL - DOG
298933,1.03,1.03.05,1.03.05.20,1.03.05.20.01,1.03.05.20.01,Dogleg and Spreader Area Installation,AS_DOG_INST_3050,RCV: Vendor Proposal - Install new stands - BTL - DOG,0.0,0.0,0.0,0.0,0,07-11-23,AS_DOG_INST_3040: FS,AS_DOG_INST_3060: FS,0,0,0,0,0,0,0.0,0.0,0,nn,07-11-23,0,0.0h,0.0h,0%,$0,0.0h,253.0d,0,$0,$0,1.03_Accelerator Systems (AS),1.03.05_AS Beam Transfer Line (BTL),1.03.05.20_AS Beam Transfer Line Installation,1.03.05.20.01_Dogleg and Spreader Area Installation,AS_DOG_INST_3050_RCV: Vendor Proposal - Install new stands - BTL - DOG
298934,1.03,1.03.05,1.03.05.20,1.03.05.20.01,1.03.05.20.01,Dogleg and Spreader Area Installation,AS_DOG_INST_3060,Evaluations/Negotiations - Install new stands - BTL - DOG,20.0,0.0,0.0,0.0,07-12-23,08-08-23,AS_DOG_INST_3050: FS,AS_DOG_INST_3070: FS,0,0,0,0,0,0,0.0,0.0,0,07-12-23,08-08-23,0,0.0h,0.0h,0%,$0,0.0h,253.0d,0,$0,$0,1.03_Accelerator Systems (AS),1.03.05_AS Beam Transfer Line (BTL),1.03.05.20_AS Beam Transfer Line Installation,1.03.05.20.01_Dogleg and Spreader Area Installation,AS_DOG_INST_3060_Evaluations/Negotiations - Install new stands - BTL - DOG
298935,1.03,1.03.05,1.03.05.20,1.03.05.20.01,1.03.05.20.01,Dogleg and Spreader Area Installation,AS_DOG_INST_3070,Prepare Award Documents - Install new stands - BTL - DOG,5.0,0.0,0.0,0.0,08-09-23,08-15-23,AS_DOG_INST_3060: FS,AS_DOG_INST_3080: FS,0,0,0,0,0,0,0.0,0.0,0,08-09-23,08-15-23,0,0.0h,0.0h,0%,$0,0.0h,253.0d,0,$0,$0,1.03_Accelerator Systems (AS),1.03.05_AS Beam Transfer Line (BTL),1.03.05.20_AS Beam Transfer Line Installation,1.03.05.20.01_Dogleg and Spreader Area Installation,AS_DOG_INST_3070_Prepare Award Documents - Install new stands - BTL - DOG
298936,1.03,1.03.05,1.03.05.20,1.03.05.20.01,1.03.05.20.01,Dogleg and Spreader Area Installation,AS_SPD_INST_1105,Stage removed comp for storage - BTL - SPD,10.0,0.0,0.0,0.0,08-08-24,08-21-24,"AS_SPD_INST_1000: FS, AS_SPD_INST_1010: FS",AS_SPD_INST_1120: FS,0,0,0,0,0,0,0.0,0.0,0,08-08-24,08-21-24,0,0.0h,0.0h,0%,$0,0.0h,27.0d,0,$0,$0,1.03_Accelerator Systems (AS),1.03.05_AS Beam Transfer Line (BTL),1.03.05.20_AS Beam Transfer Line Installation,1.03.05.20.01_Dogleg and Spreader Area Installation,AS_SPD_INST_1105_Stage removed comp for storage - BTL - SPD
298937,1.03,1.03.05,1.03.05.20,1.03.05.20.01,1.03.05.20.01,Dogleg and Spreader Area Installation,AS_DOG_INST_3090,Vendor Effort - Install new stands - BTL - DOG,20.0,0.0,0.0,0.0,08-22-24,09-19-24,"AS_DOG_INST_3080: FS, AS_DOG_INST_1080: SS",AS_DOG_INST_3100: FS,0,0,0,0,0,0,0.0,0.0,0,08-22-24,09-19-24,0,0.0h,0.0h,0%,$0,0.0h,6.0d,0,$0,$0,1.03_Accelerator Systems (AS),1.03.05_AS Beam Transfer Line (BTL),1.03.05.20_AS Beam Transfer Line Installation,1.03.05.20.01_Dogleg and Spreader Area Installation,AS_DOG_INST_3090_Vendor Effort - Install new stands - BTL - DOG
298938,1.03,1.03.05,1.03.05.20,1.03.05.20.01,1.03.05.20.01,Dogleg and Spreader Area Installation,AS_DOG_INST_3110,COMP: Install new stands - BTL - DOG,0.0,0.0,0.0,0.0,0,09-20-24,AS_DOG_INST_3100: FS,AS_M4_DTS2_1030: FS,0,0,0,0,0,0,0.0,0.0,0,nn,09-20-24,0,0.0h,0.0h,0%,$0,0.0h,6.0d,0,$0,$0,1.03_Accelerator Systems (AS),1.03.05_AS Beam Transfer Line (BTL),1.03.05.20_AS Beam Transfer Line Installation,1.03.05.20.01_Dogleg and Spreader Area Installation,AS_DOG_INST_3110_COMP: Install new stands - BTL - DOG
298939,1.03,1.03.05,1.03.05.20,1.03.05.20.01,1.03.05.20.01,Dogleg and Spreader Area Installation,AS_SPD_INST_1120,COMP: SPD Installation - BTL - SPD,0.0,0.0,0.0,0.0,0,10-03-24,"AS_SPD_INST_1110: FS, AS_SPD_INST_1105: FS","AS_SPD_INST_1130: FS, AS_M4_DTS2_1030: FS",0,0,0,0,0,0,0.0,0.0,0,nn,10-03-24,0,0.0h,0.0h,0%,$0,0.0h,-3.0d,0,$0,$0,1.03_Accelerator Systems (AS),1.03.05_AS Beam Transfer Line (BTL),1.03.05.20_AS Beam Transfer Line Installation,1.03.05.20.01_Dogleg and Spreader Area Installation,AS_SPD_INST_1120_COMP: SPD Installation - BTL - SPD
298940,1.03,1.03.05,1.03.05.20,1.03.05.20.01,1.03.05.20.01,Dogleg and Spreader Area Installation,AS_SPD_INST_1130,RFI: Ready for Controls Installation - SPD,0.0,0.0,0.0,0.0,0,10-03-24,AS_SPD_INST_1120: FS,"AS_M4_DTS2_1030: FS, CS_M4_1435: FS",0,0,0,0,0,0,0.0,0.0,0,nn,10-03-24,0,0.0h,0.0h,0%,$0,0.0h,-3.0d,0,$0,$0,1.03_Accelerator Systems (AS),1.03.05_AS Beam Transfer Line (BTL),1.03.05.20_AS Beam Transfer Line Installation,1.03.05.20.01_Dogleg and Spreader Area Installation,AS_SPD_INST_1130_RFI: Ready for Controls Installation - SPD
298941,1.03,1.03.05,1.03.05.20,1.03.05.20.01,1.03.05.20.01,Dogleg and Spreader Area Installation,AS_DOG_INST_1120,COMP: Installation - BTL - DOG,0.0,0.0,0.0,0.0,0,11-21-24,"AS_DOG_INST_1040: FS, AS_DOG_INST_1050: FS, AS_DOG_INST_1060: FS, AS_DOG_INST_1070: FS, AS_DOG_INST_1090: FS, AS_DOG_INST_1110: FS","AS_DOG_INST_1130: FS, AS_M4_3050: FS",0,0,0,0,0,0,0.0,0.0,0,nn,11-21-24,0,0.0h,0.0h,0%,$0,0.0h,1479.5d,0,$0,$0,1.03_Accelerator Systems (AS),1.03.05_AS Beam Transfer Line (BTL),1.03.05.20_AS Beam Transfer Line Installation,1.03.05.20.01_Dogleg and Spreader Area Installation,AS_DOG_INST_1120_COMP: Installation - BTL - DOG
298942,1.03,1.03.05,1.03.05.20,1.03.05.20.01,1.03.05.20.01,Dogleg and Spreader Area Installation,AS_DOG_INST_1130,RFI: Ready for Controls Installation - DOG,0.0,0.0,0.0,0.0,0,11-21-24,AS_DOG_INST_1120: FS,"AS_M4_3050: FS, CS_M4_1435: FS",0,0,0,0,0,0,0.0,0.0,0,nn,11-21-24,0,0.0h,0.0h,0%,$0,0.0h,1479.5d,0,$0,$0,1.03_Accelerator Systems (AS),1.03.05_AS Beam Transfer Line (BTL),1.03.05.20_AS Beam Transfer Line Installation,1.03.05.20.01_Dogleg and Spreader Area Installation,AS_DOG_INST_1130_RFI: Ready for Controls Installation - DOG
298943,1.03,1.03.05,1.03.05.20,1.03.05.20.02,1.03.05.20.02,BSY and EBD Area Installation,AS_EBD_INST_2020,Procurement Process - Installation - BTL - EBD,10.0,0.0,0.0,0.0,06-09-23,06-22-23,AS_EBD_INST_2010: FS,AS_EBD_INST_2030: FS,0,0,0,0,0,0,0.0,0.0,0,06-09-23,06-22-23,0,0.0h,0.0h,0%,$0,0.0h,275.0d,0,$0,$0,1.03_Accelerator Systems (AS),1.03.05_AS Beam Transfer Line (BTL),1.03.05.20_AS Beam Transfer Line Installation,1.03.05.20.02_BSY and EBD Area Installation,AS_EBD_INST_2020_Procurement Process - Installation - BTL - EBD
298944,1.03,1.03.05,1.03.05.20,1.03.05.20.02,1.03.05.20.02,BSY and EBD Area Installation,AS_EBD_INST_2040,Vendor Effort - Installation - BTL - EBD,15.0,0.0,0.0,0.0,06-26-23,07-17-23,AS_EBD_INST_2030: FS,"AS_EBD_INST_1010: SS, AS_EBD_INST_2050: FS",0,0,0,0,0,0,0.0,0.0,0,06-26-23,07-17-23,0,0.0h,0.0h,0%,$0,0.0h,275.0d,0,$0,$0,1.03_Accelerator Systems (AS),1.03.05_AS Beam Transfer Line (BTL),1.03.05.20_AS Beam Transfer Line Installation,1.03.05.20.02_BSY and EBD Area Installation,AS_EBD_INST_2040_Vendor Effort - Installation - BTL - EBD
298945,1.03,1.03.05,1.03.05.20,1.03.05.20.02,1.03.05.20.02,BSY and EBD Area Installation,AS_EBD_INST_2060,COMP: Procurement - Installation - BTL - EBD,0.0,0.0,0.0,0.0,0,07-18-23,AS_EBD_INST_2050: FS,AS_M4_DTS2_1030: FS,0,0,0,0,0,0,0.0,0.0,0,nn,07-18-23,0,0.0h,0.0h,0%,$0,0.0h,295.0d,0,$0,$0,1.03_Accelerator Systems (AS),1.03.05_AS Beam Transfer Line (BTL),1.03.05.20_AS Beam Transfer Line Installation,1.03.05.20.02_BSY and EBD Area Installation,AS_EBD_INST_2060_COMP: Procurement - Installation - BTL - EBD
298946,1.03,1.03.05,1.03.05.20,1.03.05.20.02,1.03.05.20.02,BSY and EBD Area Installation,AS_BSY_INST_1070,COMP: Installation - BTL - BSY,0.0,0.0,0.0,0.0,0,08-28-24,AS_BSY_INST_1050: FS,AS_BSY_INST_1080: FS,0,0,0,0,0,0,0.0,0.0,0,nn,08-28-24,0,0.0h,0.0h,0%,$0,0.0h,22.0d,0,$0,$0,1.03_Accelerator Systems (AS),1.03.05_AS Beam Transfer Line (BTL),1.03.05.20_AS Beam Transfer Line Installation,1.03.05.20.02_BSY and EBD Area Installation,AS_BSY_INST_1070_COMP: Installation - BTL - BSY
298947,1.03,1.03.05,1.03.05.20,1.03.05.20.02,1.03.05.20.02,BSY and EBD Area Installation,AS_BSY_INST_1080,RFI: Ready for Controls Installation - BSY,0.0,0.0,0.0,0.0,0,08-28-24,AS_BSY_INST_1070: FS,"AS_M4_DTS2_1030: FS, AS_M4_DTS2_1030: FF",0,0,0,0,0,0,0.0,0.0,0,nn,08-28-24,0,0.0h,0.0h,0%,$0,0.0h,22.0d,0,$0,$0,1.03_Accelerator Systems (AS),1.03.05_AS Beam Transfer Line (BTL),1.03.05.20_AS Beam Transfer Line Installation,1.03.05.20.02_BSY and EBD Area Installation,AS_BSY_INST_1080_RFI: Ready for Controls Installation - BSY
298948,1.03,1.03.05,1.03.05.20,1.03.05.20.02,1.03.05.20.02,BSY and EBD Area Installation,AS_EBD_INST_1070,COMP: Installation - BTL - EBD,0.0,0.0,0.0,0.0,0,09-27-24,AS_EBD_INST_1050: FS,"AS_EBD_INST_1080: FS, AS_M4_DTS2_1030: FS",0,0,0,0,0,0,0.0,0.0,0,nn,09-27-24,0,0.0h,0.0h,0%,$0,0.0h,1.0d,0,$0,$0,1.03_Accelerator Systems (AS),1.03.05_AS Beam Transfer Line (BTL),1.03.05.20_AS Beam Transfer Line Installation,1.03.05.20.02_BSY and EBD Area Installation,AS_EBD_INST_1070_COMP: Installation - BTL - EBD
298949,1.03,1.03.05,1.03.05.20,1.03.05.20.02,1.03.05.20.02,BSY and EBD Area Installation,AS_EBD_INST_1080,RFI: Ready for Controls Installation - EBD,0.0,0.0,0.0,0.0,0,09-27-24,AS_EBD_INST_1070: FS,"AS_M4_DTS2_1030: FS, CS_M4_1435: FS",0,0,0,0,0,0,0.0,0.0,0,nn,09-27-24,0,0.0h,0.0h,0%,$0,0.0h,1.0d,0,$0,$0,1.03_Accelerator Systems (AS),1.03.05_AS Beam Transfer Line (BTL),1.03.05.20_AS Beam Transfer Line Installation,1.03.05.20.02_BSY and EBD Area Installation,AS_EBD_INST_1080_RFI: Ready for Controls Installation - EBD
298950,1.03,1.03.06,1.03.06,1.03.06,1.03.06,AS Soft X-Ray Undulator (SXR) - SLAC,AS_SXU_1000,COMP: SXR Ready for CD-2/3,0.0,0.0,0.0,0.0,0,08-09-22,AS_SXU_DE_1110: FS,AS_M4_3000: FS,0,0,0,0,0,0,0.0,0.0,0,nn,08-09-22,0,0.0h,0.0h,0%,$0,0.0h,227.0d,0,$0,$0,1.03_Accelerator Systems (AS),1.03.06_AS Soft X-Ray Undulator (SXR) - SLAC,,,AS_SXU_1000_COMP: SXR Ready for CD-2/3
298951,1.03,1.03.06,1.03.06,1.03.06,1.03.06,AS Soft X-Ray Undulator (SXR) - SLAC,AS_SXU_1010,COMP: SXR Ready for Commissioning,0.0,0.0,0.0,0.0,0,03-12-26,AS_SXU_INST_9000: FS,AS_M4_3020: FS,0,0,0,0,0,0,0.0,0.0,0,nn,03-12-26,0,0.0h,0.0h,0%,$0,0.0h,1170.5d,0,$0,$0,1.03_Accelerator Systems (AS),1.03.06_AS Soft X-Ray Undulator (SXR) - SLAC,,,AS_SXU_1010_COMP: SXR Ready for Commissioning
298952,1.03,1.03.06,1.03.06.05,1.03.06.05.01,1.03.06.05.01,SXR Undulator System Design,AS_SXU_DE_1030,COMP: Engineering Peer Review - SLAC Mechanical Scope - SXR Undulator,0.0,0.0,0.0,0.0,0,0,AS_SXU_DE_1020: FS,"AS_SXU_DE_2400: FS, AS_SXU_DE_2000: FS, AS_SXU_DE_4020: FF, AS_SXU_DE_2030: FS",0,0,0,0,0,0,0.0,0.0,0,nn,04-04-22,0,0.0h,0.0h,100%,$0,0.0h,0,0,$0,$0,1.03_Accelerator Systems (AS),1.03.06_AS Soft X-Ray Undulator (SXR) - SLAC,1.03.06.05_AS Soft X-Ray Undulator Engineering and Design - SLAC,1.03.06.05.01_SXR Undulator System Design,AS_SXU_DE_1030_COMP: Engineering Peer Review - SLAC Mechanical Scope - SXR Undulator
298953,1.03,1.03.06,1.03.06.05,1.03.06.05.01,1.03.06.05.01,SXR Undulator System Design,AS_SXU_DE_1630,COMP: EPR - SXU Upgrade Tooling / Plan / Proc - SXR Undulator - SXR Undulator,0.0,0.0,0.0,0.0,0,11-12-21,AS_SXU_DE_1620: FS,AS_SXU_MANF_5000: FS,0,0,0,0,0,0,0.0,0.0,0,nn,11-12-21,0,0.0h,0.0h,0%,$0,0.0h,1355.5d,0,$0,$0,1.03_Accelerator Systems (AS),1.03.06_AS Soft X-Ray Undulator (SXR) - SLAC,1.03.06.05_AS Soft X-Ray Undulator Engineering and Design - SLAC,1.03.06.05.01_SXR Undulator System Design,AS_SXU_DE_1630_COMP: EPR - SXU Upgrade Tooling / Plan / Proc - SXR Undulator - SXR Undulator
298954,1.03,1.03.06,1.03.06.05,1.03.06.05.01,1.03.06.05.01,SXR Undulator System Design,AS_SXU_DE_2440,COMP: Prelim. Design - SXRSS,0.0,0.0,0.0,0.0,0,12-08-21,AS_SXU_DE_2430: FS,"AS_SXU_DE_1040: FS, AS_SXU_MANF_5400: FS",0,0,0,0,0,0,0.0,0.0,0,nn,12-08-21,DM-C08-40%,0.0h,0.0h,0%,$0,0.0h,90.0d,0,$0,$0,1.03_Accelerator Systems (AS),1.03.06_AS Soft X-Ray Undulator (SXR) - SLAC,1.03.06.05_AS Soft X-Ray Undulator Engineering and Design - SLAC,1.03.06.05.01_SXR Undulator System Design,AS_SXU_DE_2440_COMP: Prelim. Design - SXRSS
298955,1.03,1.03.06,1.03.06.05,1.03.06.05.01,1.03.06.05.01,SXR Undulator System Design,AS_SXU_DE_1070,COMP: Prelim. Design - SLAC Mechanical Scope - SXR Undulator,0.0,0.0,0.0,0.0,0,01-28-22,AS_SXU_DE_1060: FS,"AS_SXU_DE_2050: FS, AS_SXU_DE_2040: FS",0,0,0,0,0,0,0.0,0.0,0,nn,01-28-22,0,0.0h,0.0h,0%,$0,0.0h,168.0d,0,$0,$0,1.03_Accelerator Systems (AS),1.03.06_AS Soft X-Ray Undulator (SXR) - SLAC,1.03.06.05_AS Soft X-Ray Undulator Engineering and Design - SLAC,1.03.06.05.01_SXR Undulator System Design,AS_SXU_DE_1070_COMP: Prelim. Design - SLAC Mechanical Scope - SXR Undulator
298956,1.03,1.03.06,1.03.06.05,1.03.06.05.01,1.03.06.05.01,SXR Undulator System Design,AS_SXU_DE_1110,COMP: Design - SLAC Mechanical Scope - SXR Undulator,0.0,0.0,0.0,0.0,0,08-09-22,AS_SXU_DE_1100: FS,"AS_SXU_1000: FS, AS_SXU_MANF_3600: FS, AS_SXU_MANF_3800: FS, AS_SXU_MANF_4000: FS, AS_SXU_MANF_4200: FS, AS_SXU_MANF_4400: FS, AS_SXU_MANF_4600: FS, AS_SXU_MANF_5200: FS, AS_SXU_MANF_3400: FS, AS_SXU_DE_6000: FS, AS_SXU_MANF_5515: FS, AS_SXU_MANF_3100: FS",0,0,0,0,0,0,0.0,0.0,0,nn,08-09-22,DM-A11-10%,0.0h,0.0h,0%,$0,0.0h,90.0d,0,$0,$0,1.03_Accelerator Systems (AS),1.03.06_AS Soft X-Ray Undulator (SXR) - SLAC,1.03.06.05_AS Soft X-Ray Undulator Engineering and Design - SLAC,1.03.06.05.01_SXR Undulator System Design,AS_SXU_DE_1110_COMP: Design - SLAC Mechanical Scope - SXR Undulator
298957,1.03,1.03.06,1.03.06.05,1.03.06.05.02,1.03.06.05.02,SXR Phase Shifter Design,AS_SXU_DE_4020,Prepare Requisition (Specs/SOW/ETC) - Phase Shifter Prototype Material - SXR Phase Shifter,45.0,0.0,0.0,0.0,0,0,"AS_SXU_DE_2200: SS, MS_FY_2021_Q3: FS, AS_SXU_DE_1030: FF",AS_SXU_DE_4030: FS,0,0,0,0,0,0,0.0,0.0,0,04-05-22,06-07-22,0,0.0h,0.0h,100%,$0,0.0h,0,0,$0,$0,1.03_Accelerator Systems (AS),1.03.06_AS Soft X-Ray Undulator (SXR) - SLAC,1.03.06.05_AS Soft X-Ray Undulator Engineering and Design - SLAC,1.03.06.05.02_SXR Phase Shifter Design,AS_SXU_DE_4020_Prepare Requisition (Specs/SOW/ETC) - Phase Shifter Prototype Material - SXR Phase Shifter
298958,1.03,1.03.06,1.03.06.05,1.03.06.05.02,1.03.06.05.02,SXR Phase Shifter Design,AS_SXU_DE_4040,Prepare RFP - Phase Shifter Prototype Material - SXR Phase Shifter,10.0,0.0,0.0,0.0,0,0,AS_SXU_DE_4030: FS,AS_SXU_DE_4050: FS,0,0,0,0,0,0,0.0,0.0,0,07-12-22,07-25-22,0,0.0h,0.0h,100%,$0,0.0h,0,0,$0,$0,1.03_Accelerator Systems (AS),1.03.06_AS Soft X-Ray Undulator (SXR) - SLAC,1.03.06.05_AS Soft X-Ray Undulator Engineering and Design - SLAC,1.03.06.05.02_SXR Phase Shifter Design,AS_SXU_DE_4040_Prepare RFP - Phase Shifter Prototype Material - SXR Phase Shifter
298959,1.03,1.03.06,1.03.06.05,1.03.06.05.02,1.03.06.05.02,SXR Phase Shifter Design,AS_SXU_DE_4110,Vendor Effort - Phase Shifter Prototype Material - SXR Phase Shifter,20.0,0.0,0.0,0.0,0,10-22-21,AS_SXU_DE_4100: FF,"AS_SXU_DE_4120: FS, AS_SXU_DE_4140: SS",0,0,0,0,0,0,0.0,0.0,0,09-02-22,09-30-22,0,0.0h,0.0h,75%,$0,0.0h,188.0d,0,$0,$0,1.03_Accelerator Systems (AS),1.03.06_AS Soft X-Ray Undulator (SXR) - SLAC,1.03.06.05_AS Soft X-Ray Undulator Engineering and Design - SLAC,1.03.06.05.02_SXR Phase Shifter Design,AS_SXU_DE_4110_Vendor Effort - Phase Shifter Prototype Material - SXR Phase Shifter
298960,1.03,1.03.06,1.03.06.05,1.03.06.05.02,1.03.06.05.02,SXR Phase Shifter Design,AS_SXU_DE_4050,Release RFP - Phase Shifter Prototype Material - SXR Phase Shifter,2.0,0.0,0.0,0.0,0,0,AS_SXU_DE_4040: FS,AS_SXU_DE_4060: FS,0,0,0,0,0,0,0.0,0.0,0,07-26-22,07-27-22,0,0.0h,0.0h,100%,$0,0.0h,0,0,$0,$0,1.03_Accelerator Systems (AS),1.03.06_AS Soft X-Ray Undulator (SXR) - SLAC,1.03.06.05_AS Soft X-Ray Undulator Engineering and Design - SLAC,1.03.06.05.02_SXR Phase Shifter Design,AS_SXU_DE_4050_Release RFP - Phase Shifter Prototype Material - SXR Phase Shifter
298961,1.03,1.03.06,1.03.06.05,1.03.06.05.02,1.03.06.05.02,SXR Phase Shifter Design,AS_SXU_DE_4060,Vendor Proposal Effort - Phase Shifter Prototype Material - SXR Phase Shifter,10.0,0.0,0.0,0.0,0,0,AS_SXU_DE_4050: FS,AS_SXU_DE_4070: FS,0,0,0,0,0,0,0.0,0.0,0,07-28-22,08-10-22,0,0.0h,0.0h,100%,$0,0.0h,0,0,$0,$0,1.03_Accelerator Systems (AS),1.03.06_AS Soft X-Ray Undulator (SXR) - SLAC,1.03.06.05_AS Soft X-Ray Undulator Engineering and Design - SLAC,1.03.06.05.02_SXR Phase Shifter Design,AS_SXU_DE_4060_Vendor Proposal Effort - Phase Shifter Prototype Material - SXR Phase Shifter
298962,1.03,1.03.06,1.03.06.05,1.03.06.05.02,1.03.06.05.02,SXR Phase Shifter Design,AS_SXU_DE_4070,RCV: Vendor Proposal - Phase Shifter Prototype Material - SXR Phase Shifter,0.0,0.0,0.0,0.0,0,0,AS_SXU_DE_4060: FS,AS_SXU_DE_4080: FS,0,0,0,0,0,0,0.0,0.0,0,nn,08-10-22,0,0.0h,0.0h,100%,$0,0.0h,0,0,$0,$0,1.03_Accelerator Systems (AS),1.03.06_AS Soft X-Ray Undulator (SXR) - SLAC,1.03.06.05_AS Soft X-Ray Undulator Engineering and Design - SLAC,1.03.06.05.02_SXR Phase Shifter Design,AS_SXU_DE_4070_RCV: Vendor Proposal - Phase Shifter Prototype Material - SXR Phase Shifter
298963,1.03,1.03.06,1.03.06.05,1.03.06.05.02,1.03.06.05.02,SXR Phase Shifter Design,AS_SXU_DE_4080,Evaluations/Negotiations - Phase Shifter Prototype Material - SXR Phase Shifter,10.0,0.0,0.0,0.0,0,0,AS_SXU_DE_4070: FS,AS_SXU_DE_4090: FS,0,0,0,0,0,0,0.0,0.0,0,08-11-22,08-24-22,0,0.0h,0.0h,100%,$0,0.0h,0,0,$0,$0,1.03_Accelerator Systems (AS),1.03.06_AS Soft X-Ray Undulator (SXR) - SLAC,1.03.06.05_AS Soft X-Ray Undulator Engineering and Design - SLAC,1.03.06.05.02_SXR Phase Shifter Design,AS_SXU_DE_4080_Evaluations/Negotiations - Phase Shifter Prototype Material - SXR Phase Shifter
298964,1.03,1.03.06,1.03.06.05,1.03.06.05.02,1.03.06.05.02,SXR Phase Shifter Design,AS_SXU_DE_4090,Prepare Award Documents - Phase Shifter Prototype Material - SXR Phase Shifter,5.0,0.0,0.0,0.0,0,0,AS_SXU_DE_4080: FS,AS_SXU_DE_4100: SS,0,0,0,0,0,0,0.0,0.0,0,08-25-22,08-31-22,0,0.0h,0.0h,100%,$0,0.0h,0,0,$0,$0,1.03_Accelerator Systems (AS),1.03.06_AS Soft X-Ray Undulator (SXR) - SLAC,1.03.06.05_AS Soft X-Ray Undulator Engineering and Design - SLAC,1.03.06.05.02_SXR Phase Shifter Design,AS_SXU_DE_4090_Prepare Award Documents - Phase Shifter Prototype Material - SXR Phase Shifter
298965,1.03,1.03.06,1.03.06.05,1.03.06.05.02,1.03.06.05.02,SXR Phase Shifter Design,AS_SXU_DE_4130,COMP: Phase Shifter Prototype Material - SXR Phase Shifter,0.0,0.0,0.0,0.0,0,10-25-21,AS_SXU_DE_4120: FS,AS_SXU_DE_4140: FF,0,0,0,0,0,0,0.0,0.0,0,nn,10-25-21,0,0.0h,0.0h,0%,$0,0.0h,188.0d,0,$0,$0,1.03_Accelerator Systems (AS),1.03.06_AS Soft X-Ray Undulator (SXR) - SLAC,1.03.06.05_AS Soft X-Ray Undulator Engineering and Design - SLAC,1.03.06.05.02_SXR Phase Shifter Design,AS_SXU_DE_4130_COMP: Phase Shifter Prototype Material - SXR Phase Shifter
298966,1.03,1.03.06,1.03.06.05,1.03.06.05.02,1.03.06.05.02,SXR Phase Shifter Design,AS_SXU_DE_1430,COMP: Design - SXR Phase Shifter,0.0,0.0,0.0,0.0,0,02-11-22,AS_SXU_DE_1420: FF,AS_SXU_DE_1080: FS,0,0,0,0,0,0,0.0,0.0,0,nn,02-11-22,DM-A10-90%,0.0h,0.0h,0%,$0,0.0h,188.0d,0,$0,$0,1.03_Accelerator Systems (AS),1.03.06_AS Soft X-Ray Undulator (SXR) - SLAC,1.03.06.05_AS Soft X-Ray Undulator Engineering and Design - SLAC,1.03.06.05.02_SXR Phase Shifter Design,AS_SXU_DE_1430_COMP: Design - SXR Phase Shifter
298967,1.03,1.03.06,1.03.06.05,1.03.06.05.03,1.03.06.05.03,SXR Prototype Tests,AS_SXU_DE_4185,REQD: Short Prototype Magnet Modules,0.0,0.0,0.0,0.0,0,0,AS_LBL_PROT_155: FS,AS_SXU_DE_4190: FS,0,0,0,0,0,0,0.0,0.0,0,nn,09-15-21,0,0.0h,0.0h,100%,$0,0.0h,0,0,$0,$0,1.03_Accelerator Systems (AS),1.03.06_AS Soft X-Ray Undulator (SXR) - SLAC,1.03.06.05_AS Soft X-Ray Undulator Engineering and Design - SLAC,1.03.06.05.03_SXR Prototype Tests,AS_SXU_DE_4185_REQD: Short Prototype Magnet Modules
298968,1.03,1.03.06,1.03.06.05,1.03.06.05.03,1.03.06.05.03,SXR Prototype Tests,AS_SXU_DE_4205,REQD: Completed Preliminary Short Prototype Measurements,0.0,0.0,0.0,0.0,0,10-08-21,AS_SXU_DE_4200: FS,AS_LBL_DE_125: FF,0,0,0,0,0,0,0.0,0.0,0,nn,10-08-21,0,0.0h,0.0h,0%,$0,0.0h,1628.5d,0,$0,$0,1.03_Accelerator Systems (AS),1.03.06_AS Soft X-Ray Undulator (SXR) - SLAC,1.03.06.05_AS Soft X-Ray Undulator Engineering and Design - SLAC,1.03.06.05.03_SXR Prototype Tests,AS_SXU_DE_4205_REQD: Completed Preliminary Short Prototype Measurements
298969,1.03,1.03.06,1.03.06.05,1.03.06.05.04,1.03.06.05.04,HXRSS Design,AS_SXU_DE_8040,COMP: Design - HXRSS,0.0,0.0,0.0,0.0,0,07-28-22,AS_SXU_DE_8030: FS,"AS_SXU_MANF_5800: FS, AS_SXU_MANF_5810: FS, AS_SXU_MANF_5820: FS, AS_SXU_MANF_5830: FS, AS_SXU_MANF_5840: FS, AS_SXU_MANF_5850: FS, AS_SXU_MANF_5860: FS, AS_SXU_MANF_5870: FS",0,0,0,0,0,0,0.0,0.0,0,nn,07-28-22,0,0.0h,0.0h,0%,$0,0.0h,1864.5d,0,$0,$0,1.03_Accelerator Systems (AS),1.03.06_AS Soft X-Ray Undulator (SXR) - SLAC,1.03.06.05_AS Soft X-Ray Undulator Engineering and Design - SLAC,1.03.06.05.04_HXRSS Design,AS_SXU_DE_8040_COMP: Design - HXRSS
298970,1.03,1.03.06,1.03.06.06,1.03.06.06.01,1.03.06.06.01,SXR Undulator Mechanical Components - Procurement & Fab,AS_SXU_MANF_5000,Prepare Requisition (Specs/SOW/ETC) - MMF Tooling - SXU,15.0,0.0,0.0,0.0,11-15-21,12-07-21,AS_SXU_DE_1630: FS,AS_SXU_MANF_5010: FS,0,0,0,0,0,0,0.0,0.0,0,11-15-21,12-07-21,0,0.0h,0.0h,0%,$0,0.0h,1355.5d,0,$0,$0,1.03_Accelerator Systems (AS),1.03.06_AS Soft X-Ray Undulator (SXR) - SLAC,1.03.06.06_AS Soft X-Ray Undulator Procurement and Fabrication - SLAC,1.03.06.06.01_SXR Undulator Mechanical Components - Procurement & Fab,AS_SXU_MANF_5000_Prepare Requisition (Specs/SOW/ETC) - MMF Tooling - SXU
298971,1.03,1.03.06,1.03.06.06,1.03.06.06.01,1.03.06.06.01,SXR Undulator Mechanical Components - Procurement & Fab,AS_SXU_MANF_5020,Procurement Process - MMF Tooling - SXU,20.0,0.0,0.0,0.0,12-09-21,01-20-22,AS_SXU_MANF_5010: FS,AS_SXU_MANF_5030: FS,0,0,0,0,0,0,0.0,0.0,0,12-09-21,01-20-22,0,0.0h,0.0h,0%,$0,0.0h,1355.5d,0,$0,$0,1.03_Accelerator Systems (AS),1.03.06_AS Soft X-Ray Undulator (SXR) - SLAC,1.03.06.06_AS Soft X-Ray Undulator Procurement and Fabrication - SLAC,1.03.06.06.01_SXR Undulator Mechanical Components - Procurement & Fab,AS_SXU_MANF_5020_Procurement Process - MMF Tooling - SXU
298972,1.03,1.03.06,1.03.06.06,1.03.06.06.01,1.03.06.06.01,SXR Undulator Mechanical Components - Procurement & Fab,AS_SXU_MANF_5400,Prepare Requisition (Specs/SOW/ETC) - SXRSS Chicane - SXU,15.0,0.0,0.0,0.0,12-09-21,01-12-22,AS_SXU_DE_2440: FS,AS_SXU_MANF_5410: FS,0,0,0,0,0,0,0.0,0.0,0,12-09-21,01-12-22,0,0.0h,0.0h,0%,$0,0.0h,90.0d,0,$0,$0,1.03_Accelerator Systems (AS),1.03.06_AS Soft X-Ray Undulator (SXR) - SLAC,1.03.06.06_AS Soft X-Ray Undulator Procurement and Fabrication - SLAC,1.03.06.06.01_SXR Undulator Mechanical Components - Procurement & Fab,AS_SXU_MANF_5400_Prepare Requisition (Specs/SOW/ETC) - SXRSS Chicane - SXU
298973,1.03,1.03.06,1.03.06.06,1.03.06.06.01,1.03.06.06.01,SXR Undulator Mechanical Components - Procurement & Fab,AS_SXU_MANF_5040,Vendor Effort - MMF Tooling - SXU,70.0,0.0,0.0,0.0,01-24-22,05-02-22,AS_SXU_MANF_5030: FS,AS_SXU_MANF_5050: FS,0,0,0,0,0,0,0.0,0.0,0,01-24-22,05-02-22,0,0.0h,0.0h,0%,$0,0.0h,1355.5d,0,$0,$0,1.03_Accelerator Systems (AS),1.03.06_AS Soft X-Ray Undulator (SXR) - SLAC,1.03.06.06_AS Soft X-Ray Undulator Procurement and Fabrication - SLAC,1.03.06.06.01_SXR Undulator Mechanical Components - Procurement & Fab,AS_SXU_MANF_5040_Vendor Effort - MMF Tooling - SXU
298974,1.03,1.03.06,1.03.06.06,1.03.06.06.01,1.03.06.06.01,SXR Undulator Mechanical Components - Procurement & Fab,AS_SXU_MANF_5430,Release RFP - SXRSS Chicane - SXU,2.0,0.0,0.0,0.0,01-31-22,02-01-22,AS_SXU_MANF_5420: FS,AS_SXU_MANF_5440: FS,0,0,0,0,0,0,0.0,0.0,0,01-31-22,02-01-22,0,0.0h,0.0h,0%,$0,0.0h,90.0d,0,$0,$0,1.03_Accelerator Systems (AS),1.03.06_AS Soft X-Ray Undulator (SXR) - SLAC,1.03.06.06_AS Soft X-Ray Undulator Procurement and Fabrication - SLAC,1.03.06.06.01_SXR Undulator Mechanical Components - Procurement & Fab,AS_SXU_MANF_5430_Release RFP - SXRSS Chicane - SXU
298975,1.03,1.03.06,1.03.06.06,1.03.06.06.01,1.03.06.06.01,SXR Undulator Mechanical Components - Procurement & Fab,AS_SXU_MANF_5440,Vendor Proposal Effort - SXRSS Chicane - SXU,20.0,0.0,0.0,0.0,02-02-22,03-02-22,AS_SXU_MANF_5430: FS,AS_SXU_MANF_5450: FS,0,0,0,0,0,0,0.0,0.0,0,02-02-22,03-02-22,0,0.0h,0.0h,0%,$0,0.0h,90.0d,0,$0,$0,1.03_Accelerator Systems (AS),1.03.06_AS Soft X-Ray Undulator (SXR) - SLAC,1.03.06.06_AS Soft X-Ray Undulator Procurement and Fabrication - SLAC,1.03.06.06.01_SXR Undulator Mechanical Components - Procurement & Fab,AS_SXU_MANF_5440_Vendor Proposal Effort - SXRSS Chicane - SXU
298976,1.03,1.03.06,1.03.06.06,1.03.06.06.01,1.03.06.06.01,SXR Undulator Mechanical Components - Procurement & Fab,AS_SXU_MANF_5450,RCV: Vendor Proposal - SXRSS Chicane - SXU,0.0,0.0,0.0,0.0,0,03-02-22,AS_SXU_MANF_5440: FS,AS_SXU_MANF_5460: FS,0,0,0,0,0,0,0.0,0.0,0,nn,03-02-22,0,0.0h,0.0h,0%,$0,0.0h,90.0d,0,$0,$0,1.03_Accelerator Systems (AS),1.03.06_AS Soft X-Ray Undulator (SXR) - SLAC,1.03.06.06_AS Soft X-Ray Undulator Procurement and Fabrication - SLAC,1.03.06.06.01_SXR Undulator Mechanical Components - Procurement & Fab,AS_SXU_MANF_5450_RCV: Vendor Proposal - SXRSS Chicane - SXU
298977,1.03,1.03.06,1.03.06.06,1.03.06.06.01,1.03.06.06.01,SXR Undulator Mechanical Components - Procurement & Fab,AS_SXU_MANF_5460,Evaluations/Negotiations - SXRSS Chicane - SXU,10.0,0.0,0.0,0.0,03-03-22,03-16-22,AS_SXU_MANF_5450: FS,AS_SXU_MANF_5470: FS,0,0,0,0,0,0,0.0,0.0,0,03-03-22,03-16-22,0,0.0h,0.0h,0%,$0,0.0h,90.0d,0,$0,$0,1.03_Accelerator Systems (AS),1.03.06_AS Soft X-Ray Undulator (SXR) - SLAC,1.03.06.06_AS Soft X-Ray Undulator Procurement and Fabrication - SLAC,1.03.06.06.01_SXR Undulator Mechanical Components - Procurement & Fab,AS_SXU_MANF_5460_Evaluations/Negotiations - SXRSS Chicane - SXU
298978,1.03,1.03.06,1.03.06.06,1.03.06.06.01,1.03.06.06.01,SXR Undulator Mechanical Components - Procurement & Fab,AS_SXU_MANF_5470,Prepare Award Documents - SXRSS Chicane - SXU,5.0,0.0,0.0,0.0,03-17-22,03-23-22,AS_SXU_MANF_5460: FS,AS_SXU_MANF_5480: FS,0,0,0,0,0,0,0.0,0.0,0,03-17-22,03-23-22,0,0.0h,0.0h,0%,$0,0.0h,90.0d,0,$0,$0,1.03_Accelerator Systems (AS),1.03.06_AS Soft X-Ray Undulator (SXR) - SLAC,1.03.06.06_AS Soft X-Ray Undulator Procurement and Fabrication - SLAC,1.03.06.06.01_SXR Undulator Mechanical Components - Procurement & Fab,AS_SXU_MANF_5470_Prepare Award Documents - SXRSS Chicane - SXU
298979,1.03,1.03.06,1.03.06.06,1.03.06.06.01,1.03.06.06.01,SXR Undulator Mechanical Components - Procurement & Fab,AS_SXU_MANF_5490,Vendor Effort - SXRSS Chicane Design - SXU,40.0,0.0,0.0,0.0,03-25-22,05-19-22,AS_SXU_MANF_5480: FS,AS_SXU_MANF_5495: FS,0,0,0,0,0,0,0.0,0.0,0,03-25-22,05-19-22,0,0.0h,0.0h,0%,$0,0.0h,90.0d,0,$0,$0,1.03_Accelerator Systems (AS),1.03.06_AS Soft X-Ray Undulator (SXR) - SLAC,1.03.06.06_AS Soft X-Ray Undulator Procurement and Fabrication - SLAC,1.03.06.06.01_SXR Undulator Mechanical Components - Procurement & Fab,AS_SXU_MANF_5490_Vendor Effort - SXRSS Chicane Design - SXU
298980,1.03,1.03.06,1.03.06.06,1.03.06.06.01,1.03.06.06.01,SXR Undulator Mechanical Components - Procurement & Fab,AS_SXU_MANF_5060,COMP: MMF Tooling Procurement - SXU,0.0,0.0,0.0,0.0,0,05-03-22,AS_SXU_MANF_5050: FS,AS_SXU_MANF_1000: FS,0,0,0,0,0,0,0.0,0.0,0,nn,05-03-22,0,0.0h,0.0h,0%,$0,0.0h,1355.5d,0,$0,$0,1.03_Accelerator Systems (AS),1.03.06_AS Soft X-Ray Undulator (SXR) - SLAC,1.03.06.06_AS Soft X-Ray Undulator Procurement and Fabrication - SLAC,1.03.06.06.01_SXR Undulator Mechanical Components - Procurement & Fab,AS_SXU_MANF_5060_COMP: MMF Tooling Procurement - SXU
298981,1.03,1.03.06,1.03.06.06,1.03.06.06.01,1.03.06.06.01,SXR Undulator Mechanical Components - Procurement & Fab,AS_SXU_MANF_3420,"Prepare RFP (ASP,PRR, TPRR,etc.) - Undulator Vacuum Chambers - SXU",10.0,0.0,0.0,0.0,03-17-23,03-30-23,AS_SXU_MANF_3410: FS,AS_SXU_MANF_3430: FS,0,0,0,0,0,0,0.0,0.0,0,03-17-23,03-30-23,0,0.0h,0.0h,0%,$0,0.0h,97.0d,0,$0,$0,1.03_Accelerator Systems (AS),1.03.06_AS Soft X-Ray Undulator (SXR) - SLAC,1.03.06.06_AS Soft X-Ray Undulator Procurement and Fabrication - SLAC,1.03.06.06.01_SXR Undulator Mechanical Components - Procurement & Fab,"AS_SXU_MANF_3420_Prepare RFP (ASP,PRR, TPRR,etc.) - Undulator Vacuum Chambers - SXU"
298982,1.03,1.03.06,1.03.06.06,1.03.06.06.01,1.03.06.06.01,SXR Undulator Mechanical Components - Procurement & Fab,AS_SXU_MANF_3620,Prepare RFP - RFBPMs - SXU,10.0,0.0,0.0,0.0,03-17-23,03-30-23,AS_SXU_MANF_3610: FS,AS_SXU_MANF_3630: FS,0,0,0,0,0,0,0.0,0.0,0,03-17-23,03-30-23,0,0.0h,0.0h,0%,$0,0.0h,-1.0d,0,$0,$0,1.03_Accelerator Systems (AS),1.03.06_AS Soft X-Ray Undulator (SXR) - SLAC,1.03.06.06_AS Soft X-Ray Undulator Procurement and Fabrication - SLAC,1.03.06.06.01_SXR Undulator Mechanical Components - Procurement & Fab,AS_SXU_MANF_3620_Prepare RFP - RFBPMs - SXU
298983,1.03,1.03.06,1.03.06.06,1.03.06.06.01,1.03.06.06.01,SXR Undulator Mechanical Components - Procurement & Fab,AS_SXU_MANF_3430,SLAC legal review/approve RFP - Undulator Vacuum Chambers - SXU,5.0,0.0,0.0,0.0,03-31-23,04-06-23,AS_SXU_MANF_3420: FS,AS_SXU_MANF_3440: FS,0,0,0,0,0,0,0.0,0.0,0,03-31-23,04-06-23,0,0.0h,0.0h,0%,$0,0.0h,97.0d,0,$0,$0,1.03_Accelerator Systems (AS),1.03.06_AS Soft X-Ray Undulator (SXR) - SLAC,1.03.06.06_AS Soft X-Ray Undulator Procurement and Fabrication - SLAC,1.03.06.06.01_SXR Undulator Mechanical Components - Procurement & Fab,AS_SXU_MANF_3430_SLAC legal review/approve RFP - Undulator Vacuum Chambers - SXU
298984,1.03,1.03.06,1.03.06.06,1.03.06.06.01,1.03.06.06.01,SXR Undulator Mechanical Components - Procurement & Fab,AS_SXU_MANF_3630,Release RFP - RFBPMs - SXU,2.0,0.0,0.0,0.0,03-31-23,04-03-23,AS_SXU_MANF_3620: FS,AS_SXU_MANF_3640: FS,0,0,0,0,0,0,0.0,0.0,0,03-31-23,04-03-23,0,0.0h,0.0h,0%,$0,0.0h,-1.0d,0,$0,$0,1.03_Accelerator Systems (AS),1.03.06_AS Soft X-Ray Undulator (SXR) - SLAC,1.03.06.06_AS Soft X-Ray Undulator Procurement and Fabrication - SLAC,1.03.06.06.01_SXR Undulator Mechanical Components - Procurement & Fab,AS_SXU_MANF_3630_Release RFP - RFBPMs - SXU
298985,1.03,1.03.06,1.03.06.06,1.03.06.06.01,1.03.06.06.01,SXR Undulator Mechanical Components - Procurement & Fab,AS_SXU_MANF_3640,Vendor Proposal Effort - RFBPMs - SXU,10.0,0.0,0.0,0.0,04-04-23,04-17-23,AS_SXU_MANF_3630: FS,AS_SXU_MANF_3650: FS,0,0,0,0,0,0,0.0,0.0,0,04-04-23,04-17-23,0,0.0h,0.0h,0%,$0,0.0h,-1.0d,0,$0,$0,1.03_Accelerator Systems (AS),1.03.06_AS Soft X-Ray Undulator (SXR) - SLAC,1.03.06.06_AS Soft X-Ray Undulator Procurement and Fabrication - SLAC,1.03.06.06.01_SXR Undulator Mechanical Components - Procurement & Fab,AS_SXU_MANF_3640_Vendor Proposal Effort - RFBPMs - SXU
298986,1.03,1.03.06,1.03.06.06,1.03.06.06.01,1.03.06.06.01,SXR Undulator Mechanical Components - Procurement & Fab,AS_SXU_MANF_3440,Release RFP - Undulator Vacuum Chambers - SXU,5.0,0.0,0.0,0.0,04-07-23,04-13-23,AS_SXU_MANF_3430: FS,AS_SXU_MANF_3450: FS,0,0,0,0,0,0,0.0,0.0,0,04-07-23,04-13-23,0,0.0h,0.0h,0%,$0,0.0h,97.0d,0,$0,$0,1.03_Accelerator Systems (AS),1.03.06_AS Soft X-Ray Undulator (SXR) - SLAC,1.03.06.06_AS Soft X-Ray Undulator Procurement and Fabrication - SLAC,1.03.06.06.01_SXR Undulator Mechanical Components - Procurement & Fab,AS_SXU_MANF_3440_Release RFP - Undulator Vacuum Chambers - SXU
298987,1.03,1.03.06,1.03.06.06,1.03.06.06.01,1.03.06.06.01,SXR Undulator Mechanical Components - Procurement & Fab,AS_SXU_MANF_4220,Prepare RFP - Quadrupole Magnets - SXU,10.0,0.0,0.0,0.0,04-07-23,04-20-23,AS_SXU_MANF_4210: FS,AS_SXU_MANF_4230: FS,0,0,0,0,0,0,0.0,0.0,0,04-07-23,04-20-23,0,0.0h,0.0h,0%,$0,0.0h,99.0d,0,$0,$0,1.03_Accelerator Systems (AS),1.03.06_AS Soft X-Ray Undulator (SXR) - SLAC,1.03.06.06_AS Soft X-Ray Undulator Procurement and Fabrication - SLAC,1.03.06.06.01_SXR Undulator Mechanical Components - Procurement & Fab,AS_SXU_MANF_4220_Prepare RFP - Quadrupole Magnets - SXU
298988,1.03,1.03.06,1.03.06.06,1.03.06.06.01,1.03.06.06.01,SXR Undulator Mechanical Components - Procurement & Fab,AS_SXU_MANF_3450,Vendor Proposal Effort - Undulator Vacuum Chambers - SXU,35.0,0.0,0.0,0.0,04-14-23,06-02-23,AS_SXU_MANF_3440: FS,AS_SXU_MANF_3460: FS,0,0,0,0,0,0,0.0,0.0,0,04-14-23,06-02-23,0,0.0h,0.0h,0%,$0,0.0h,97.0d,0,$0,$0,1.03_Accelerator Systems (AS),1.03.06_AS Soft X-Ray Undulator (SXR) - SLAC,1.03.06.06_AS Soft X-Ray Undulator Procurement and Fabrication - SLAC,1.03.06.06.01_SXR Undulator Mechanical Components - Procurement & Fab,AS_SXU_MANF_3450_Vendor Proposal Effort - Undulator Vacuum Chambers - SXU
298989,1.03,1.03.06,1.03.06.06,1.03.06.06.01,1.03.06.06.01,SXR Undulator Mechanical Components - Procurement & Fab,AS_SXU_MANF_3820,Prepare RFP - Pedestal / Cam Positioner - SXU,10.0,0.0,0.0,0.0,04-14-23,04-27-23,AS_SXU_MANF_3810: FS,AS_SXU_MANF_3830: FS,0,0,0,0,0,0,0.0,0.0,0,04-14-23,04-27-23,0,0.0h,0.0h,0%,$0,0.0h,204.0d,0,$0,$0,1.03_Accelerator Systems (AS),1.03.06_AS Soft X-Ray Undulator (SXR) - SLAC,1.03.06.06_AS Soft X-Ray Undulator Procurement and Fabrication - SLAC,1.03.06.06.01_SXR Undulator Mechanical Components - Procurement & Fab,AS_SXU_MANF_3820_Prepare RFP - Pedestal / Cam Positioner - SXU
298990,1.03,1.03.06,1.03.06.06,1.03.06.06.01,1.03.06.06.01,SXR Undulator Mechanical Components - Procurement & Fab,AS_SXU_MANF_3650,RCV: Vendor Proposal - RFBPMs - SXU,0.0,0.0,0.0,0.0,0,04-17-23,AS_SXU_MANF_3640: FS,AS_SXU_MANF_3660: FS,0,0,0,0,0,0,0.0,0.0,0,nn,04-17-23,0,0.0h,0.0h,0%,$0,0.0h,-1.0d,0,$0,$0,1.03_Accelerator Systems (AS),1.03.06_AS Soft X-Ray Undulator (SXR) - SLAC,1.03.06.06_AS Soft X-Ray Undulator Procurement and Fabrication - SLAC,1.03.06.06.01_SXR Undulator Mechanical Components - Procurement & Fab,AS_SXU_MANF_3650_RCV: Vendor Proposal - RFBPMs - SXU
298991,1.03,1.03.06,1.03.06.06,1.03.06.06.01,1.03.06.06.01,SXR Undulator Mechanical Components - Procurement & Fab,AS_SXU_MANF_3660,Evaluations/Negotiations - RFBPMs - SXU,20.0,0.0,0.0,0.0,04-18-23,05-15-23,AS_SXU_MANF_3650: FS,AS_SXU_MANF_3670: FS,0,0,0,0,0,0,0.0,0.0,0,04-18-23,05-15-23,0,0.0h,0.0h,0%,$0,0.0h,-1.0d,0,$0,$0,1.03_Accelerator Systems (AS),1.03.06_AS Soft X-Ray Undulator (SXR) - SLAC,1.03.06.06_AS Soft X-Ray Undulator Procurement and Fabrication - SLAC,1.03.06.06.01_SXR Undulator Mechanical Components - Procurement & Fab,AS_SXU_MANF_3660_Evaluations/Negotiations - RFBPMs - SXU
298992,1.03,1.03.06,1.03.06.06,1.03.06.06.01,1.03.06.06.01,SXR Undulator Mechanical Components - Procurement & Fab,AS_SXU_MANF_4230,Release RFP - Quadrupole Magnets - SXU,2.0,0.0,0.0,0.0,04-21-23,04-24-23,AS_SXU_MANF_4220: FS,AS_SXU_MANF_4240: FS,0,0,0,0,0,0,0.0,0.0,0,04-21-23,04-24-23,0,0.0h,0.0h,0%,$0,0.0h,99.0d,0,$0,$0,1.03_Accelerator Systems (AS),1.03.06_AS Soft X-Ray Undulator (SXR) - SLAC,1.03.06.06_AS Soft X-Ray Undulator Procurement and Fabrication - SLAC,1.03.06.06.01_SXR Undulator Mechanical Components - Procurement & Fab,AS_SXU_MANF_4230_Release RFP - Quadrupole Magnets - SXU
298993,1.03,1.03.06,1.03.06.06,1.03.06.06.01,1.03.06.06.01,SXR Undulator Mechanical Components - Procurement & Fab,AS_SXU_MANF_4240,Vendor Proposal Effort - Quadrupole Magnets - SXU,10.0,0.0,0.0,0.0,04-25-23,05-08-23,AS_SXU_MANF_4230: FS,AS_SXU_MANF_4250: FS,0,0,0,0,0,0,0.0,0.0,0,04-25-23,05-08-23,0,0.0h,0.0h,0%,$0,0.0h,99.0d,0,$0,$0,1.03_Accelerator Systems (AS),1.03.06_AS Soft X-Ray Undulator (SXR) - SLAC,1.03.06.06_AS Soft X-Ray Undulator Procurement and Fabrication - SLAC,1.03.06.06.01_SXR Undulator Mechanical Components - Procurement & Fab,AS_SXU_MANF_4240_Vendor Proposal Effort - Quadrupole Magnets - SXU
298994,1.03,1.03.06,1.03.06.06,1.03.06.06.01,1.03.06.06.01,SXR Undulator Mechanical Components - Procurement & Fab,AS_SXU_MANF_3830,Release RFP - Pedestal / Cam Positioner - SXU,2.0,0.0,0.0,0.0,04-28-23,05-01-23,AS_SXU_MANF_3820: FS,AS_SXU_MANF_3840: FS,0,0,0,0,0,0,0.0,0.0,0,04-28-23,05-01-23,0,0.0h,0.0h,0%,$0,0.0h,204.0d,0,$0,$0,1.03_Accelerator Systems (AS),1.03.06_AS Soft X-Ray Undulator (SXR) - SLAC,1.03.06.06_AS Soft X-Ray Undulator Procurement and Fabrication - SLAC,1.03.06.06.01_SXR Undulator Mechanical Components - Procurement & Fab,AS_SXU_MANF_3830_Release RFP - Pedestal / Cam Positioner - SXU
298995,1.03,1.03.06,1.03.06.06,1.03.06.06.01,1.03.06.06.01,SXR Undulator Mechanical Components - Procurement & Fab,AS_SXU_MANF_3840,Vendor Proposal Effort - Pedestal / Cam Positioner - SXU,10.0,0.0,0.0,0.0,05-02-23,05-15-23,AS_SXU_MANF_3830: FS,AS_SXU_MANF_3850: FS,0,0,0,0,0,0,0.0,0.0,0,05-02-23,05-15-23,0,0.0h,0.0h,0%,$0,0.0h,204.0d,0,$0,$0,1.03_Accelerator Systems (AS),1.03.06_AS Soft X-Ray Undulator (SXR) - SLAC,1.03.06.06_AS Soft X-Ray Undulator Procurement and Fabrication - SLAC,1.03.06.06.01_SXR Undulator Mechanical Components - Procurement & Fab,AS_SXU_MANF_3840_Vendor Proposal Effort - Pedestal / Cam Positioner - SXU
298996,1.03,1.03.06,1.03.06.06,1.03.06.06.01,1.03.06.06.01,SXR Undulator Mechanical Components - Procurement & Fab,AS_SXU_MANF_4250,RCV: Vendor Proposal - Quadrupole Magnets - SXU,0.0,0.0,0.0,0.0,0,05-08-23,AS_SXU_MANF_4240: FS,AS_SXU_MANF_4260: FS,0,0,0,0,0,0,0.0,0.0,0,nn,05-08-23,0,0.0h,0.0h,0%,$0,0.0h,99.0d,0,$0,$0,1.03_Accelerator Systems (AS),1.03.06_AS Soft X-Ray Undulator (SXR) - SLAC,1.03.06.06_AS Soft X-Ray Undulator Procurement and Fabrication - SLAC,1.03.06.06.01_SXR Undulator Mechanical Components - Procurement & Fab,AS_SXU_MANF_4250_RCV: Vendor Proposal - Quadrupole Magnets - SXU
298997,1.03,1.03.06,1.03.06.06,1.03.06.06.01,1.03.06.06.01,SXR Undulator Mechanical Components - Procurement & Fab,AS_SXU_MANF_4260,Evaluations/Negotiations - Quadrupole Magnets - SXU,20.0,0.0,0.0,0.0,05-09-23,06-06-23,AS_SXU_MANF_4250: FS,AS_SXU_MANF_4270: FS,0,0,0,0,0,0,0.0,0.0,0,05-09-23,06-06-23,0,0.0h,0.0h,0%,$0,0.0h,99.0d,0,$0,$0,1.03_Accelerator Systems (AS),1.03.06_AS Soft X-Ray Undulator (SXR) - SLAC,1.03.06.06_AS Soft X-Ray Undulator Procurement and Fabrication - SLAC,1.03.06.06.01_SXR Undulator Mechanical Components - Procurement & Fab,AS_SXU_MANF_4260_Evaluations/Negotiations - Quadrupole Magnets - SXU
298998,1.03,1.03.06,1.03.06.06,1.03.06.06.01,1.03.06.06.01,SXR Undulator Mechanical Components - Procurement & Fab,AS_SXU_MANF_4020,Prepare RFP - Interspace Vacuum System - SXU,5.0,0.0,0.0,0.0,05-12-23,05-18-23,AS_SXU_MANF_4010: FS,AS_SXU_MANF_4030: FS,0,0,0,0,0,0,0.0,0.0,0,05-12-23,05-18-23,0,0.0h,0.0h,0%,$0,0.0h,74.0d,0,$0,$0,1.03_Accelerator Systems (AS),1.03.06_AS Soft X-Ray Undulator (SXR) - SLAC,1.03.06.06_AS Soft X-Ray Undulator Procurement and Fabrication - SLAC,1.03.06.06.01_SXR Undulator Mechanical Components - Procurement & Fab,AS_SXU_MANF_4020_Prepare RFP - Interspace Vacuum System - SXU
298999,1.03,1.03.06,1.03.06.06,1.03.06.06.01,1.03.06.06.01,SXR Undulator Mechanical Components - Procurement & Fab,AS_SXU_MANF_3850,RCV: Vendor Proposal - Pedestal / Cam Positioner - SXU,0.0,0.0,0.0,0.0,0,05-15-23,AS_SXU_MANF_3840: FS,AS_SXU_MANF_3860: FS,0,0,0,0,0,0,0.0,0.0,0,nn,05-15-23,0,0.0h,0.0h,0%,$0,0.0h,204.0d,0,$0,$0,1.03_Accelerator Systems (AS),1.03.06_AS Soft X-Ray Undulator (SXR) - SLAC,1.03.06.06_AS Soft X-Ray Undulator Procurement and Fabrication - SLAC,1.03.06.06.01_SXR Undulator Mechanical Components - Procurement & Fab,AS_SXU_MANF_3850_RCV: Vendor Proposal - Pedestal / Cam Positioner - SXU
299000,1.03,1.03.06,1.03.06.06,1.03.06.06.01,1.03.06.06.01,SXR Undulator Mechanical Components - Procurement & Fab,AS_SXU_MANF_3670,Prepare Award Documents - RFBPMs - SXU,5.0,0.0,0.0,0.0,05-16-23,05-22-23,AS_SXU_MANF_3660: FS,AS_SXU_MANF_3680: FS,0,0,0,0,0,0,0.0,0.0,0,05-16-23,05-22-23,0,0.0h,0.0h,0%,$0,0.0h,-1.0d,0,$0,$0,1.03_Accelerator Systems (AS),1.03.06_AS Soft X-Ray Undulator (SXR) - SLAC,1.03.06.06_AS Soft X-Ray Undulator Procurement and Fabrication - SLAC,1.03.06.06.01_SXR Undulator Mechanical Components - Procurement & Fab,AS_SXU_MANF_3670_Prepare Award Documents - RFBPMs - SXU
299001,1.03,1.03.06,1.03.06.06,1.03.06.06.01,1.03.06.06.01,SXR Undulator Mechanical Components - Procurement & Fab,AS_SXU_MANF_3860,Evaluations/Negotiations - Pedestal / Cam Positioner - SXU,20.0,0.0,0.0,0.0,05-16-23,06-13-23,AS_SXU_MANF_3850: FS,AS_SXU_MANF_3870: FS,0,0,0,0,0,0,0.0,0.0,0,05-16-23,06-13-23,0,0.0h,0.0h,0%,$0,0.0h,204.0d,0,$0,$0,1.03_Accelerator Systems (AS),1.03.06_AS Soft X-Ray Undulator (SXR) - SLAC,1.03.06.06_AS Soft X-Ray Undulator Procurement and Fabrication - SLAC,1.03.06.06.01_SXR Undulator Mechanical Components - Procurement & Fab,AS_SXU_MANF_3860_Evaluations/Negotiations - Pedestal / Cam Positioner - SXU
299002,1.03,1.03.06,1.03.06.06,1.03.06.06.01,1.03.06.06.01,SXR Undulator Mechanical Components - Procurement & Fab,AS_SXU_MANF_4030,Release RFP - Interspace Vacuum System - SXU,2.0,0.0,0.0,0.0,05-19-23,05-22-23,AS_SXU_MANF_4020: FS,AS_SXU_MANF_4040: FS,0,0,0,0,0,0,0.0,0.0,0,05-19-23,05-22-23,0,0.0h,0.0h,0%,$0,0.0h,74.0d,0,$0,$0,1.03_Accelerator Systems (AS),1.03.06_AS Soft X-Ray Undulator (SXR) - SLAC,1.03.06.06_AS Soft X-Ray Undulator Procurement and Fabrication - SLAC,1.03.06.06.01_SXR Undulator Mechanical Components - Procurement & Fab,AS_SXU_MANF_4030_Release RFP - Interspace Vacuum System - SXU
299003,1.03,1.03.06,1.03.06.06,1.03.06.06.01,1.03.06.06.01,SXR Undulator Mechanical Components - Procurement & Fab,AS_SXU_MANF_4040,Vendor Proposal Effort - Interspace Vacuum System - SXU,10.0,0.0,0.0,0.0,05-23-23,06-06-23,AS_SXU_MANF_4030: FS,AS_SXU_MANF_4050: FS,0,0,0,0,0,0,0.0,0.0,0,05-23-23,06-06-23,0,0.0h,0.0h,0%,$0,0.0h,74.0d,0,$0,$0,1.03_Accelerator Systems (AS),1.03.06_AS Soft X-Ray Undulator (SXR) - SLAC,1.03.06.06_AS Soft X-Ray Undulator Procurement and Fabrication - SLAC,1.03.06.06.01_SXR Undulator Mechanical Components - Procurement & Fab,AS_SXU_MANF_4040_Vendor Proposal Effort - Interspace Vacuum System - SXU
299004,1.03,1.03.06,1.03.06.06,1.03.06.06.01,1.03.06.06.01,SXR Undulator Mechanical Components - Procurement & Fab,AS_SXU_MANF_5200,Prepare Requisition (Specs/SOW/ETC) - Radiation Monitoring System - SXU,30.0,0.0,0.0,0.0,05-25-23,07-07-23,"AS_SXU_DE_1110: FS, AS_SXU_MANF_4000: FS, AS_SXU_MANF_4400: FS",AS_SXU_MANF_5210: FS,0,0,0,0,0,0,0.0,0.0,0,05-25-23,07-07-23,0,0.0h,0.0h,0%,$0,0.0h,176.0d,0,$0,$0,1.03_Accelerator Systems (AS),1.03.06_AS Soft X-Ray Undulator (SXR) - SLAC,1.03.06.06_AS Soft X-Ray Undulator Procurement and Fabrication - SLAC,1.03.06.06.01_SXR Undulator Mechanical Components - Procurement & Fab,AS_SXU_MANF_5200_Prepare Requisition (Specs/SOW/ETC) - Radiation Monitoring System - SXU
299005,1.03,1.03.06,1.03.06.06,1.03.06.06.01,1.03.06.06.01,SXR Undulator Mechanical Components - Procurement & Fab,AS_SXU_MANF_4420,Procurement Process - Interspace supports and hardware - SXU,20.0,0.0,0.0,0.0,05-26-23,06-23-23,AS_SXU_MANF_4410: FS,AS_SXU_MANF_4430: FS,0,0,0,0,0,0,0.0,0.0,0,05-26-23,06-23-23,0,0.0h,0.0h,0%,$0,0.0h,161.0d,0,$0,$0,1.03_Accelerator Systems (AS),1.03.06_AS Soft X-Ray Undulator (SXR) - SLAC,1.03.06.06_AS Soft X-Ray Undulator Procurement and Fabrication - SLAC,1.03.06.06.01_SXR Undulator Mechanical Components - Procurement & Fab,AS_SXU_MANF_4420_Procurement Process - Interspace supports and hardware - SXU
299006,1.03,1.03.06,1.03.06.06,1.03.06.06.01,1.03.06.06.01,SXR Undulator Mechanical Components - Procurement & Fab,AS_SXU_MANF_3460,RCV: Vendor Proposal - Undulator Vacuum Chambers - SXU,0.0,0.0,0.0,0.0,0,06-02-23,AS_SXU_MANF_3450: FS,AS_SXU_MANF_3470: FS,0,0,0,0,0,0,0.0,0.0,0,nn,06-02-23,0,0.0h,0.0h,0%,$0,0.0h,97.0d,0,$0,$0,1.03_Accelerator Systems (AS),1.03.06_AS Soft X-Ray Undulator (SXR) - SLAC,1.03.06.06_AS Soft X-Ray Undulator Procurement and Fabrication - SLAC,1.03.06.06.01_SXR Undulator Mechanical Components - Procurement & Fab,AS_SXU_MANF_3460_RCV: Vendor Proposal - Undulator Vacuum Chambers - SXU
299007,1.03,1.03.06,1.03.06.06,1.03.06.06.01,1.03.06.06.01,SXR Undulator Mechanical Components - Procurement & Fab,AS_SXU_MANF_3470,Evaluations/Negotiations - Undulator Vacuum Chambers - SXU,55.0,0.0,0.0,0.0,06-05-23,08-21-23,AS_SXU_MANF_3460: FS,AS_SXU_MANF_3480: FS,0,0,0,0,0,0,0.0,0.0,0,06-05-23,08-21-23,0,0.0h,0.0h,0%,$0,0.0h,97.0d,0,$0,$0,1.03_Accelerator Systems (AS),1.03.06_AS Soft X-Ray Undulator (SXR) - SLAC,1.03.06.06_AS Soft X-Ray Undulator Procurement and Fabrication - SLAC,1.03.06.06.01_SXR Undulator Mechanical Components - Procurement & Fab,AS_SXU_MANF_3470_Evaluations/Negotiations - Undulator Vacuum Chambers - SXU
299008,1.03,1.03.06,1.03.06.06,1.03.06.06.01,1.03.06.06.01,SXR Undulator Mechanical Components - Procurement & Fab,AS_SXU_MANF_4050,RCV: Vendor Proposal - Interspace Vacuum System - SXU,0.0,0.0,0.0,0.0,0,06-06-23,AS_SXU_MANF_4040: FS,AS_SXU_MANF_4060: FS,0,0,0,0,0,0,0.0,0.0,0,nn,06-06-23,0,0.0h,0.0h,0%,$0,0.0h,74.0d,0,$0,$0,1.03_Accelerator Systems (AS),1.03.06_AS Soft X-Ray Undulator (SXR) - SLAC,1.03.06.06_AS Soft X-Ray Undulator Procurement and Fabrication - SLAC,1.03.06.06.01_SXR Undulator Mechanical Components - Procurement & Fab,AS_SXU_MANF_4050_RCV: Vendor Proposal - Interspace Vacuum System - SXU
299009,1.03,1.03.06,1.03.06.06,1.03.06.06.01,1.03.06.06.01,SXR Undulator Mechanical Components - Procurement & Fab,AS_SXU_MANF_4060,Evaluations/Negotiations - Interspace Vacuum System - SXU,20.0,0.0,0.0,0.0,06-07-23,07-05-23,AS_SXU_MANF_4050: FS,AS_SXU_MANF_4070: FS,0,0,0,0,0,0,0.0,0.0,0,06-07-23,07-05-23,0,0.0h,0.0h,0%,$0,0.0h,74.0d,0,$0,$0,1.03_Accelerator Systems (AS),1.03.06_AS Soft X-Ray Undulator (SXR) - SLAC,1.03.06.06_AS Soft X-Ray Undulator Procurement and Fabrication - SLAC,1.03.06.06.01_SXR Undulator Mechanical Components - Procurement & Fab,AS_SXU_MANF_4060_Evaluations/Negotiations - Interspace Vacuum System - SXU
299010,1.03,1.03.06,1.03.06.06,1.03.06.06.01,1.03.06.06.01,SXR Undulator Mechanical Components - Procurement & Fab,AS_SXU_MANF_4270,Prepare Award Documents - Quadrupole Magnets - SXU,5.0,0.0,0.0,0.0,06-07-23,06-13-23,AS_SXU_MANF_4260: FS,AS_SXU_MANF_4280: FS,0,0,0,0,0,0,0.0,0.0,0,06-07-23,06-13-23,0,0.0h,0.0h,0%,$0,0.0h,99.0d,0,$0,$0,1.03_Accelerator Systems (AS),1.03.06_AS Soft X-Ray Undulator (SXR) - SLAC,1.03.06.06_AS Soft X-Ray Undulator Procurement and Fabrication - SLAC,1.03.06.06.01_SXR Undulator Mechanical Components - Procurement & Fab,AS_SXU_MANF_4270_Prepare Award Documents - Quadrupole Magnets - SXU
299011,1.03,1.03.06,1.03.06.06,1.03.06.06.01,1.03.06.06.01,SXR Undulator Mechanical Components - Procurement & Fab,AS_SXU_MANF_3870,Prepare Award Documents - Pedestal / Cam Positioner - SXU,5.0,0.0,0.0,0.0,06-14-23,06-20-23,AS_SXU_MANF_3860: FS,AS_SXU_MANF_3880: FS,0,0,0,0,0,0,0.0,0.0,0,06-14-23,06-20-23,0,0.0h,0.0h,0%,$0,0.0h,204.0d,0,$0,$0,1.03_Accelerator Systems (AS),1.03.06_AS Soft X-Ray Undulator (SXR) - SLAC,1.03.06.06_AS Soft X-Ray Undulator Procurement and Fabrication - SLAC,1.03.06.06.01_SXR Undulator Mechanical Components - Procurement & Fab,AS_SXU_MANF_3870_Prepare Award Documents - Pedestal / Cam Positioner - SXU
299012,1.03,1.03.06,1.03.06.06,1.03.06.06.01,1.03.06.06.01,SXR Undulator Mechanical Components - Procurement & Fab,AS_SXU_MANF_4070,Prepare Award Documents - Interspace Vacuum System - SXU,5.0,0.0,0.0,0.0,07-06-23,07-12-23,AS_SXU_MANF_4060: FS,AS_SXU_MANF_4080: FS,0,0,0,0,0,0,0.0,0.0,0,07-06-23,07-12-23,0,0.0h,0.0h,0%,$0,0.0h,74.0d,0,$0,$0,1.03_Accelerator Systems (AS),1.03.06_AS Soft X-Ray Undulator (SXR) - SLAC,1.03.06.06_AS Soft X-Ray Undulator Procurement and Fabrication - SLAC,1.03.06.06.01_SXR Undulator Mechanical Components - Procurement & Fab,AS_SXU_MANF_4070_Prepare Award Documents - Interspace Vacuum System - SXU
299013,1.03,1.03.06,1.03.06.06,1.03.06.06.01,1.03.06.06.01,SXR Undulator Mechanical Components - Procurement & Fab,AS_SXU_MANF_5220,Procurement Process - Radiation Monitoring System - SXU,20.0,0.0,0.0,0.0,07-11-23,08-07-23,AS_SXU_MANF_5210: FS,AS_SXU_MANF_5230: FS,0,0,0,0,0,0,0.0,0.0,0,07-11-23,08-07-23,0,0.0h,0.0h,0%,$0,0.0h,176.0d,0,$0,$0,1.03_Accelerator Systems (AS),1.03.06_AS Soft X-Ray Undulator (SXR) - SLAC,1.03.06.06_AS Soft X-Ray Undulator Procurement and Fabrication - SLAC,1.03.06.06.01_SXR Undulator Mechanical Components - Procurement & Fab,AS_SXU_MANF_5220_Procurement Process - Radiation Monitoring System - SXU
299014,1.03,1.03.06,1.03.06.06,1.03.06.06.01,1.03.06.06.01,SXR Undulator Mechanical Components - Procurement & Fab,AS_SXU_MANF_4620,Procurement Process - Water Cooling Hardware - SXU,10.0,0.0,0.0,0.0,07-25-23,08-07-23,AS_SXU_MANF_4610: FS,AS_SXU_MANF_4630: FS,0,0,0,0,0,0,0.0,0.0,0,07-25-23,08-07-23,0,0.0h,0.0h,0%,$0,0.0h,277.0d,0,$0,$0,1.03_Accelerator Systems (AS),1.03.06_AS Soft X-Ray Undulator (SXR) - SLAC,1.03.06.06_AS Soft X-Ray Undulator Procurement and Fabrication - SLAC,1.03.06.06.01_SXR Undulator Mechanical Components - Procurement & Fab,AS_SXU_MANF_4620_Procurement Process - Water Cooling Hardware - SXU
299015,1.03,1.03.06,1.03.06.06,1.03.06.06.01,1.03.06.06.01,SXR Undulator Mechanical Components - Procurement & Fab,AS_SXU_MANF_3480,Prepare Award Documents - Undulator Vacuum Chambers - SXU,5.0,0.0,0.0,0.0,08-22-23,08-28-23,AS_SXU_MANF_3470: FS,AS_SXU_MANF_3500: FS,0,0,0,0,0,0,0.0,0.0,0,08-22-23,08-28-23,0,0.0h,0.0h,0%,$0,0.0h,97.0d,0,$0,$0,1.03_Accelerator Systems (AS),1.03.06_AS Soft X-Ray Undulator (SXR) - SLAC,1.03.06.06_AS Soft X-Ray Undulator Procurement and Fabrication - SLAC,1.03.06.06.01_SXR Undulator Mechanical Components - Procurement & Fab,AS_SXU_MANF_3480_Prepare Award Documents - Undulator Vacuum Chambers - SXU
299016,1.03,1.03.06,1.03.06.06,1.03.06.06.01,1.03.06.06.01,SXR Undulator Mechanical Components - Procurement & Fab,AS_SXU_MANF_3500,SLAC legal review/approve Award docs - SXU,5.0,0.0,0.0,0.0,08-29-23,09-05-23,AS_SXU_MANF_3480: FS,AS_SXU_MANF_3510: FS,0,0,0,0,0,0,0.0,0.0,0,08-29-23,09-05-23,0,0.0h,0.0h,0%,$0,0.0h,97.0d,0,$0,$0,1.03_Accelerator Systems (AS),1.03.06_AS Soft X-Ray Undulator (SXR) - SLAC,1.03.06.06_AS Soft X-Ray Undulator Procurement and Fabrication - SLAC,1.03.06.06.01_SXR Undulator Mechanical Components - Procurement & Fab,AS_SXU_MANF_3500_SLAC legal review/approve Award docs - SXU
299017,1.03,1.03.06,1.03.06.06,1.03.06.06.01,1.03.06.06.01,SXR Undulator Mechanical Components - Procurement & Fab,AS_SXU_MANF_3690,Vendor Effort - RFBPMs - SXU,200.0,0.0,0.0,0.0,10-03-23,07-31-24,AS_SXU_MANF_3680: FS,AS_SXU_MANF_3700: FS,0,0,0,0,0,0,0.0,0.0,0,10-03-23,07-31-24,0,0.0h,0.0h,0%,$0,0.0h,-92.0d,0,$0,$0,1.03_Accelerator Systems (AS),1.03.06_AS Soft X-Ray Undulator (SXR) - SLAC,1.03.06.06_AS Soft X-Ray Undulator Procurement and Fabrication - SLAC,1.03.06.06.01_SXR Undulator Mechanical Components - Procurement & Fab,AS_SXU_MANF_3690_Vendor Effort - RFBPMs - SXU
299018,1.03,1.03.06,1.03.06.06,1.03.06.06.01,1.03.06.06.01,SXR Undulator Mechanical Components - Procurement & Fab,AS_SXU_MANF_3890,Vendor Effort - Pedestal / Cam Positioner - SXU,100.0,0.0,0.0,0.0,10-03-23,03-11-24,AS_SXU_MANF_3880: FS,AS_SXU_MANF_3910: FS,0,0,0,0,0,0,0.0,0.0,0,10-03-23,03-11-24,0,0.0h,0.0h,0%,$0,0.0h,163.0d,0,$0,$0,1.03_Accelerator Systems (AS),1.03.06_AS Soft X-Ray Undulator (SXR) - SLAC,1.03.06.06_AS Soft X-Ray Undulator Procurement and Fabrication - SLAC,1.03.06.06.01_SXR Undulator Mechanical Components - Procurement & Fab,AS_SXU_MANF_3890_Vendor Effort - Pedestal / Cam Positioner - SXU
299019,1.03,1.03.06,1.03.06.06,1.03.06.06.01,1.03.06.06.01,SXR Undulator Mechanical Components - Procurement & Fab,AS_SXU_MANF_4090,Vendor Effort - Interspace Vacuum System - SXU,60.0,0.0,0.0,0.0,10-03-23,01-11-24,AS_SXU_MANF_4080: FS,AS_SXU_MANF_4100: FS,0,0,0,0,0,0,0.0,0.0,0,10-03-23,01-11-24,0,0.0h,0.0h,0%,$0,0.0h,18.0d,0,$0,$0,1.03_Accelerator Systems (AS),1.03.06_AS Soft X-Ray Undulator (SXR) - SLAC,1.03.06.06_AS Soft X-Ray Undulator Procurement and Fabrication - SLAC,1.03.06.06.01_SXR Undulator Mechanical Components - Procurement & Fab,AS_SXU_MANF_4090_Vendor Effort - Interspace Vacuum System - SXU
299020,1.03,1.03.06,1.03.06.06,1.03.06.06.01,1.03.06.06.01,SXR Undulator Mechanical Components - Procurement & Fab,AS_SXU_MANF_4290,Vendor Effort - Quadrupole Magnets - SXU,130.0,0.0,0.0,0.0,10-03-23,04-22-24,AS_SXU_MANF_4280: FS,AS_SXU_MANF_4300: FS,0,0,0,0,0,0,0.0,0.0,0,10-03-23,04-22-24,0,0.0h,0.0h,0%,$0,0.0h,23.0d,0,$0,$0,1.03_Accelerator Systems (AS),1.03.06_AS Soft X-Ray Undulator (SXR) - SLAC,1.03.06.06_AS Soft X-Ray Undulator Procurement and Fabrication - SLAC,1.03.06.06.01_SXR Undulator Mechanical Components - Procurement & Fab,AS_SXU_MANF_4290_Vendor Effort - Quadrupole Magnets - SXU
299021,1.03,1.03.06,1.03.06.06,1.03.06.06.01,1.03.06.06.01,SXR Undulator Mechanical Components - Procurement & Fab,AS_SXU_MANF_4440,Vendor Effort - Interspace base plate - SXU,65.0,0.0,0.0,0.0,10-03-23,01-19-24,AS_SXU_MANF_4430: FS,AS_SXU_MANF_4460: FS,0,0,0,0,0,0,0.0,0.0,0,10-03-23,01-19-24,0,0.0h,0.0h,0%,$0,0.0h,93.0d,0,$0,$0,1.03_Accelerator Systems (AS),1.03.06_AS Soft X-Ray Undulator (SXR) - SLAC,1.03.06.06_AS Soft X-Ray Undulator Procurement and Fabrication - SLAC,1.03.06.06.01_SXR Undulator Mechanical Components - Procurement & Fab,AS_SXU_MANF_4440_Vendor Effort - Interspace base plate - SXU
299022,1.03,1.03.06,1.03.06.06,1.03.06.06.01,1.03.06.06.01,SXR Undulator Mechanical Components - Procurement & Fab,AS_SXU_MANF_4640,Vendor Effort - Water Cooling Hardware - SXU,18.0,0.0,0.0,0.0,10-03-23,10-26-23,AS_SXU_MANF_4630: FS,AS_SXU_MANF_4650: FS,0,0,0,0,0,0,0.0,0.0,0,10-03-23,10-26-23,0,0.0h,0.0h,0%,$0,0.0h,239.0d,0,$0,$0,1.03_Accelerator Systems (AS),1.03.06_AS Soft X-Ray Undulator (SXR) - SLAC,1.03.06.06_AS Soft X-Ray Undulator Procurement and Fabrication - SLAC,1.03.06.06.01_SXR Undulator Mechanical Components - Procurement & Fab,AS_SXU_MANF_4640_Vendor Effort - Water Cooling Hardware - SXU
299023,1.03,1.03.06,1.03.06.06,1.03.06.06.01,1.03.06.06.01,SXR Undulator Mechanical Components - Procurement & Fab,AS_SXU_MANF_5240,Vendor Effort  - Radiation Monitoring System - SXU,130.0,0.0,0.0,0.0,10-03-23,04-22-24,AS_SXU_MANF_5230: FS,AS_SXU_MANF_5250: FS,0,0,0,0,0,0,0.0,0.0,0,10-03-23,04-22-24,0,0.0h,0.0h,0%,$0,0.0h,138.0d,0,$0,$0,1.03_Accelerator Systems (AS),1.03.06_AS Soft X-Ray Undulator (SXR) - SLAC,1.03.06.06_AS Soft X-Ray Undulator Procurement and Fabrication - SLAC,1.03.06.06.01_SXR Undulator Mechanical Components - Procurement & Fab,AS_SXU_MANF_5240_Vendor Effort  - Radiation Monitoring System - SXU
299024,1.03,1.03.06,1.03.06.06,1.03.06.06.01,1.03.06.06.01,SXR Undulator Mechanical Components - Procurement & Fab,AS_SXU_MANF_3900,Vendor Effort - Cam Positioner Only - SXU,100.0,0.0,0.0,0.0,10-03-23,03-11-24,AS_SXU_MANF_3880: FS,AS_SXU_MANF_3920: FS,0,0,0,0,0,0,0.0,0.0,0,10-03-23,03-11-24,0,0.0h,0.0h,0%,$0,0.0h,133.0d,0,$0,$0,1.03_Accelerator Systems (AS),1.03.06_AS Soft X-Ray Undulator (SXR) - SLAC,1.03.06.06_AS Soft X-Ray Undulator Procurement and Fabrication - SLAC,1.03.06.06.01_SXR Undulator Mechanical Components - Procurement & Fab,AS_SXU_MANF_3900_Vendor Effort - Cam Positioner Only - SXU
299025,1.03,1.03.06,1.03.06.06,1.03.06.06.01,1.03.06.06.01,SXR Undulator Mechanical Components - Procurement & Fab,AS_SXU_MANF_4450,Vendor Effort - Component Supports - SXU,65.0,0.0,0.0,0.0,10-03-23,01-19-24,AS_SXU_MANF_4430: FS,AS_SXU_MANF_4470: FS,0,0,0,0,0,0,0.0,0.0,0,10-03-23,01-19-24,0,0.0h,0.0h,0%,$0,0.0h,93.0d,0,$0,$0,1.03_Accelerator Systems (AS),1.03.06_AS Soft X-Ray Undulator (SXR) - SLAC,1.03.06.06_AS Soft X-Ray Undulator Procurement and Fabrication - SLAC,1.03.06.06.01_SXR Undulator Mechanical Components - Procurement & Fab,AS_SXU_MANF_4450_Vendor Effort - Component Supports - SXU
299026,1.03,1.03.06,1.03.06.06,1.03.06.06.01,1.03.06.06.01,SXR Undulator Mechanical Components - Procurement & Fab,AS_SXU_MANF_5520,Vendor Effort - SXRSS Chicane Magnets - SXU,80.0,0.0,0.0,0.0,10-04-23,02-12-24,AS_SXU_MANF_5515: FS,AS_SXU_MANF_5550: FS,0,0,0,0,0,0,0.0,0.0,0,10-04-23,02-12-24,0,0.0h,0.0h,0%,$0,0.0h,187.0d,0,$0,$0,1.03_Accelerator Systems (AS),1.03.06_AS Soft X-Ray Undulator (SXR) - SLAC,1.03.06.06_AS Soft X-Ray Undulator Procurement and Fabrication - SLAC,1.03.06.06.01_SXR Undulator Mechanical Components - Procurement & Fab,AS_SXU_MANF_5520_Vendor Effort - SXRSS Chicane Magnets - SXU
299027,1.03,1.03.06,1.03.06.06,1.03.06.06.01,1.03.06.06.01,SXR Undulator Mechanical Components - Procurement & Fab,AS_SXU_MANF_5530,Vendor Effort - SXRSS Dipole Stands - SXU,65.0,0.0,0.0,0.0,10-04-23,01-22-24,AS_SXU_MANF_5515: FS,AS_SXU_MANF_5560: FS,0,0,0,0,0,0,0.0,0.0,0,10-04-23,01-22-24,0,0.0h,0.0h,0%,$0,0.0h,202.0d,0,$0,$0,1.03_Accelerator Systems (AS),1.03.06_AS Soft X-Ray Undulator (SXR) - SLAC,1.03.06.06_AS Soft X-Ray Undulator Procurement and Fabrication - SLAC,1.03.06.06.01_SXR Undulator Mechanical Components - Procurement & Fab,AS_SXU_MANF_5530_Vendor Effort - SXRSS Dipole Stands - SXU
299028,1.03,1.03.06,1.03.06.06,1.03.06.06.01,1.03.06.06.01,SXR Undulator Mechanical Components - Procurement & Fab,AS_SXU_MANF_5540,Purchase - SXRSS Misc Hardware - SXU,30.0,0.0,0.0,0.0,10-04-23,11-14-23,AS_SXU_MANF_5515: FS,AS_SXU_MANF_5570: FS,0,0,0,0,0,0,0.0,0.0,0,10-04-23,11-14-23,0,0.0h,0.0h,0%,$0,0.0h,252.0d,0,$0,$0,1.03_Accelerator Systems (AS),1.03.06_AS Soft X-Ray Undulator (SXR) - SLAC,1.03.06.06_AS Soft X-Ray Undulator Procurement and Fabrication - SLAC,1.03.06.06.01_SXR Undulator Mechanical Components - Procurement & Fab,AS_SXU_MANF_5540_Purchase - SXRSS Misc Hardware - SXU
299029,1.03,1.03.06,1.03.06.06,1.03.06.06.01,1.03.06.06.01,SXR Undulator Mechanical Components - Procurement & Fab,AS_SXU_MANF_3520,Vendor Effort - Undulator Vacuum Chambers  - BATCH 1 - SXU,100.0,0.0,0.0,0.0,10-09-23,03-15-24,AS_SXU_MANF_3510: FS,"AS_SXU_MANF_3540: FS, AS_SXU_MANF_3530: FS",0,0,0,0,0,0,0.0,0.0,0,10-09-23,03-15-24,0,0.0h,0.0h,0%,$0,0.0h,79.0d,0,$0,$0,1.03_Accelerator Systems (AS),1.03.06_AS Soft X-Ray Undulator (SXR) - SLAC,1.03.06.06_AS Soft X-Ray Undulator Procurement and Fabrication - SLAC,1.03.06.06.01_SXR Undulator Mechanical Components - Procurement & Fab,AS_SXU_MANF_3520_Vendor Effort - Undulator Vacuum Chambers  - BATCH 1 - SXU
299030,1.03,1.03.06,1.03.06.06,1.03.06.06.01,1.03.06.06.01,SXR Undulator Mechanical Components - Procurement & Fab,AS_SXU_MANF_4670,COMP: Water Cooling Hardware Procurement - SXU,0.0,0.0,0.0,0.0,0,11-10-23,AS_SXU_MANF_4660: FS,AS_SXU_MANF_5250: FS,0,0,0,0,0,0,0.0,0.0,0,nn,11-10-23,0,0.0h,0.0h,0%,$0,0.0h,239.0d,0,$0,$0,1.03_Accelerator Systems (AS),1.03.06_AS Soft X-Ray Undulator (SXR) - SLAC,1.03.06.06_AS Soft X-Ray Undulator Procurement and Fabrication - SLAC,1.03.06.06.01_SXR Undulator Mechanical Components - Procurement & Fab,AS_SXU_MANF_4670_COMP: Water Cooling Hardware Procurement - SXU
299031,1.03,1.03.06,1.03.06.06,1.03.06.06.01,1.03.06.06.01,SXR Undulator Mechanical Components - Procurement & Fab,AS_SXU_MANF_4490,COMP: Interspace supports and hardware Procurement - SXU,0.0,0.0,0.0,0.0,0,02-12-24,AS_SXU_MANF_4480: FS,"AS_SXU_MANF_8016: FS, AS_SXU_MANF_8017: FS, AS_SXU_MANF_8018: FS, AS_SXU_MANF_8019: FS, AS_SXU_MANF_8020: FS, AS_SXU_MANF_8021: FS, AS_SXU_MANF_8022: FS, AS_SXU_MANF_8023: FS, AS_SXU_MANF_8024: FS",0,0,0,0,0,0,0.0,0.0,0,nn,02-12-24,0,0.0h,0.0h,0%,$0,0.0h,93.0d,0,$0,$0,1.03_Accelerator Systems (AS),1.03.06_AS Soft X-Ray Undulator (SXR) - SLAC,1.03.06.06_AS Soft X-Ray Undulator Procurement and Fabrication - SLAC,1.03.06.06.01_SXR Undulator Mechanical Components - Procurement & Fab,AS_SXU_MANF_4490_COMP: Interspace supports and hardware Procurement - SXU
299032,1.03,1.03.06,1.03.06.06,1.03.06.06.01,1.03.06.06.01,SXR Undulator Mechanical Components - Procurement & Fab,AS_SXU_MANF_4120,COMP: Interspace Vacuum System Procurement - SXU,0.0,0.0,0.0,0.0,0,02-27-24,AS_SXU_MANF_4110: FS,AS_SXU_MANF_4130: FS,0,0,0,0,0,0,0.0,0.0,0,nn,02-27-24,0,0.0h,0.0h,0%,$0,0.0h,18.0d,0,$0,$0,1.03_Accelerator Systems (AS),1.03.06_AS Soft X-Ray Undulator (SXR) - SLAC,1.03.06.06_AS Soft X-Ray Undulator Procurement and Fabrication - SLAC,1.03.06.06.01_SXR Undulator Mechanical Components - Procurement & Fab,AS_SXU_MANF_4120_COMP: Interspace Vacuum System Procurement - SXU
299033,1.03,1.03.06,1.03.06.06,1.03.06.06.01,1.03.06.06.01,SXR Undulator Mechanical Components - Procurement & Fab,AS_SXU_MANF_5590,COMP: SXRSS Chicane Procurement - SXU,0.0,0.0,0.0,0.0,0,03-06-24,"AS_SXU_MANF_5580: FS, AS_SXU_MANF_5570: FS",AS_SXU_INST_5300: FS,0,0,0,0,0,0,0.0,0.0,0,nn,03-06-24,0,0.0h,0.0h,0%,$0,0.0h,187.0d,0,$0,$0,1.03_Accelerator Systems (AS),1.03.06_AS Soft X-Ray Undulator (SXR) - SLAC,1.03.06.06_AS Soft X-Ray Undulator Procurement and Fabrication - SLAC,1.03.06.06.01_SXR Undulator Mechanical Components - Procurement & Fab,AS_SXU_MANF_5590_COMP: SXRSS Chicane Procurement - SXU
299034,1.03,1.03.06,1.03.06.06,1.03.06.06.01,1.03.06.06.01,SXR Undulator Mechanical Components - Procurement & Fab,AS_SXU_MANF_3530,Vendor Effort - Undulator Vacuum Chambers - BATCH 2 - SXU,40.0,0.0,0.0,0.0,03-18-24,05-10-24,AS_SXU_MANF_3520: FS,AS_SXU_MANF_3550: FS,0,0,0,0,0,0,0.0,0.0,0,03-18-24,05-10-24,0,0.0h,0.0h,0%,$0,0.0h,79.0d,0,$0,$0,1.03_Accelerator Systems (AS),1.03.06_AS Soft X-Ray Undulator (SXR) - SLAC,1.03.06.06_AS Soft X-Ray Undulator Procurement and Fabrication - SLAC,1.03.06.06.01_SXR Undulator Mechanical Components - Procurement & Fab,AS_SXU_MANF_3530_Vendor Effort - Undulator Vacuum Chambers - BATCH 2 - SXU
299035,1.03,1.03.06,1.03.06.06,1.03.06.06.01,1.03.06.06.01,SXR Undulator Mechanical Components - Procurement & Fab,AS_SXU_MANF_3940,COMP: Pedestal / Cam Positioner - SXU,0.0,0.0,0.0,0.0,0,04-23-24,"AS_SXU_MANF_3930: FS, AS_SXU_MANF_3910: FS","AS_SXU_MANF_9000: FS, AS_SXU_INST_5090: FS",0,0,0,0,0,0,0.0,0.0,0,nn,04-23-24,0,0.0h,0.0h,0%,$0,0.0h,133.0d,0,$0,$0,1.03_Accelerator Systems (AS),1.03.06_AS Soft X-Ray Undulator (SXR) - SLAC,1.03.06.06_AS Soft X-Ray Undulator Procurement and Fabrication - SLAC,1.03.06.06.01_SXR Undulator Mechanical Components - Procurement & Fab,AS_SXU_MANF_3940_COMP: Pedestal / Cam Positioner - SXU
299036,1.03,1.03.06,1.03.06.06,1.03.06.06.01,1.03.06.06.01,SXR Undulator Mechanical Components - Procurement & Fab,AS_SXU_MANF_4320,COMP: Quadrupole Magnets Procurement - SXU,0.0,0.0,0.0,0.0,0,05-21-24,AS_SXU_MANF_4310: FS,"AS_SXU_MANF_8016: FS, AS_SXU_MANF_8017: FS, AS_SXU_MANF_8018: FS, AS_SXU_MANF_8019: FS, AS_SXU_MANF_8020: FS, AS_SXU_MANF_8021: FS, AS_SXU_MANF_8022: FS, AS_SXU_MANF_8023: FS, AS_SXU_MANF_8024: FS",0,0,0,0,0,0,0.0,0.0,0,nn,05-21-24,0,0.0h,0.0h,0%,$0,0.0h,23.0d,0,$0,$0,1.03_Accelerator Systems (AS),1.03.06_AS Soft X-Ray Undulator (SXR) - SLAC,1.03.06.06_AS Soft X-Ray Undulator Procurement and Fabrication - SLAC,1.03.06.06.01_SXR Undulator Mechanical Components - Procurement & Fab,AS_SXU_MANF_4320_COMP: Quadrupole Magnets Procurement - SXU
299037,1.03,1.03.06,1.03.06.06,1.03.06.06.01,1.03.06.06.01,SXR Undulator Mechanical Components - Procurement & Fab,AS_SXU_MANF_5270,COMP: Radiation Monitoring System Procurement - SXU,0.0,0.0,0.0,0.0,0,06-05-24,AS_SXU_MANF_5260: FS,AS_SXU_INST_5400: FS,0,0,0,0,0,0,0.0,0.0,0,nn,06-05-24,0,0.0h,0.0h,0%,$0,0.0h,138.0d,0,$0,$0,1.03_Accelerator Systems (AS),1.03.06_AS Soft X-Ray Undulator (SXR) - SLAC,1.03.06.06_AS Soft X-Ray Undulator Procurement and Fabrication - SLAC,1.03.06.06.01_SXR Undulator Mechanical Components - Procurement & Fab,AS_SXU_MANF_5270_COMP: Radiation Monitoring System Procurement - SXU
299038,1.03,1.03.06,1.03.06.06,1.03.06.06.01,1.03.06.06.01,SXR Undulator Mechanical Components - Procurement & Fab,AS_SXU_MANF_3580,COMP: Undulator Vacuum Chambers Procurement - SXU,0.0,0.0,0.0,0.0,0,07-10-24,"AS_SXU_MANF_3560: FS, AS_SXU_MANF_3570: FS",AS_SXU_MANF_9000: FS,0,0,0,0,0,0,0.0,0.0,0,nn,07-10-24,0,0.0h,0.0h,0%,$0,0.0h,79.0d,0,$0,$0,1.03_Accelerator Systems (AS),1.03.06_AS Soft X-Ray Undulator (SXR) - SLAC,1.03.06.06_AS Soft X-Ray Undulator Procurement and Fabrication - SLAC,1.03.06.06.01_SXR Undulator Mechanical Components - Procurement & Fab,AS_SXU_MANF_3580_COMP: Undulator Vacuum Chambers Procurement - SXU
299039,1.03,1.03.06,1.03.06.06,1.03.06.06.01,1.03.06.06.01,SXR Undulator Mechanical Components - Procurement & Fab,AS_SXU_MANF_3720,COMP: RFBPMs Procurement - SXU,0.0,0.0,0.0,0.0,0,11-01-24,AS_SXU_MANF_3710: FS,"AS_SXU_MANF_8016: FS, AS_SXU_MANF_8017: FS, AS_SXU_MANF_8018: FS, AS_SXU_MANF_8019: FS, AS_SXU_MANF_8020: FS, AS_SXU_MANF_8021: FS, AS_SXU_MANF_8022: FS, AS_SXU_MANF_8023: FS, AS_SXU_MANF_8024: FS, AS_SXU_INST_5330: FS",0,0,0,0,0,0,0.0,0.0,0,nn,11-01-24,0,0.0h,0.0h,0%,$0,0.0h,-92.0d,0,$0,$0,1.03_Accelerator Systems (AS),1.03.06_AS Soft X-Ray Undulator (SXR) - SLAC,1.03.06.06_AS Soft X-Ray Undulator Procurement and Fabrication - SLAC,1.03.06.06.01_SXR Undulator Mechanical Components - Procurement & Fab,AS_SXU_MANF_3720_COMP: RFBPMs Procurement - SXU
299040,1.03,1.03.06,1.03.06.06,1.03.06.06.01,1.03.06.06.01,SXR Undulator Mechanical Components - Procurement & Fab,AS_SXU_MANF_9000,COMP:  Hardware ready for Upstream install,0.0,0.0,0.0,0.0,0,03-27-25,"AS_SXU_MANF_8024: FS, AS_SXU_MANF_3580: FS, AS_SXU_MANF_3940: FS",AS_SXU_INST_104: FS,0,0,0,0,0,0,0.0,0.0,0,nn,03-27-25,0,0.0h,0.0h,0%,$0,0.0h,-92.0d,0,$0,$0,1.03_Accelerator Systems (AS),1.03.06_AS Soft X-Ray Undulator (SXR) - SLAC,1.03.06.06_AS Soft X-Ray Undulator Procurement and Fabrication - SLAC,1.03.06.06.01_SXR Undulator Mechanical Components - Procurement & Fab,AS_SXU_MANF_9000_COMP:  Hardware ready for Upstream install
299041,1.03,1.03.06,1.03.06.06,1.03.06.06.02,1.03.06.06.02,SXR Phase Shifter Manufacturing and Testing,AS_SXU_MANF_3130,COMP: Phase shifter PRR,0.0,0.0,0.0,0.0,0,10-13-22,AS_SXU_MANF_3120: FF,AS_SXU_MANF_3200: FS,0,0,0,0,0,0,0.0,0.0,0,nn,10-13-22,0,0.0h,0.0h,0%,$0,0.0h,1519.5d,0,$0,$0,1.03_Accelerator Systems (AS),1.03.06_AS Soft X-Ray Undulator (SXR) - SLAC,1.03.06.06_AS Soft X-Ray Undulator Procurement and Fabrication - SLAC,1.03.06.06.02_SXR Phase Shifter Manufacturing and Testing,AS_SXU_MANF_3130_COMP: Phase shifter PRR
299042,1.03,1.03.06,1.03.06.06,1.03.06.06.02,1.03.06.06.02,SXR Phase Shifter Manufacturing and Testing,AS_SXU_MANF_3220,"Prepare RFP (ASP,PRR, TPRR,etc.) - Phase Shifters",35.0,0.0,0.0,0.0,11-30-22,02-01-23,AS_SXU_MANF_3210: FS,AS_SXU_MANF_3230: FS,0,0,0,0,0,0,0.0,0.0,0,11-30-22,02-01-23,0,0.0h,0.0h,0%,$0,0.0h,1519.5d,0,$0,$0,1.03_Accelerator Systems (AS),1.03.06_AS Soft X-Ray Undulator (SXR) - SLAC,1.03.06.06_AS Soft X-Ray Undulator Procurement and Fabrication - SLAC,1.03.06.06.02_SXR Phase Shifter Manufacturing and Testing,"AS_SXU_MANF_3220_Prepare RFP (ASP,PRR, TPRR,etc.) - Phase Shifters"
299043,1.03,1.03.06,1.03.06.06,1.03.06.06.02,1.03.06.06.02,SXR Phase Shifter Manufacturing and Testing,AS_SXU_MANF_3230,SLAC legal review/approve RFP - Phase Shifters,5.0,0.0,0.0,0.0,02-02-23,02-08-23,AS_SXU_MANF_3220: FS,AS_SXU_MANF_3240: FS,0,0,0,0,0,0,0.0,0.0,0,02-02-23,02-08-23,0,0.0h,0.0h,0%,$0,0.0h,1519.5d,0,$0,$0,1.03_Accelerator Systems (AS),1.03.06_AS Soft X-Ray Undulator (SXR) - SLAC,1.03.06.06_AS Soft X-Ray Undulator Procurement and Fabrication - SLAC,1.03.06.06.02_SXR Phase Shifter Manufacturing and Testing,AS_SXU_MANF_3230_SLAC legal review/approve RFP - Phase Shifters
299044,1.03,1.03.06,1.03.06.06,1.03.06.06.02,1.03.06.06.02,SXR Phase Shifter Manufacturing and Testing,AS_SXU_MANF_3240,Release RFP - Phase Shifters,5.0,0.0,0.0,0.0,02-09-23,02-15-23,AS_SXU_MANF_3230: FS,AS_SXU_MANF_3250: FS,0,0,0,0,0,0,0.0,0.0,0,02-09-23,02-15-23,0,0.0h,0.0h,0%,$0,0.0h,1519.5d,0,$0,$0,1.03_Accelerator Systems (AS),1.03.06_AS Soft X-Ray Undulator (SXR) - SLAC,1.03.06.06_AS Soft X-Ray Undulator Procurement and Fabrication - SLAC,1.03.06.06.02_SXR Phase Shifter Manufacturing and Testing,AS_SXU_MANF_3240_Release RFP - Phase Shifters
299045,1.03,1.03.06,1.03.06.06,1.03.06.06.02,1.03.06.06.02,SXR Phase Shifter Manufacturing and Testing,AS_SXU_MANF_3250,Vendor Proposal Effort - Phase Shifters,35.0,0.0,0.0,0.0,02-16-23,04-06-23,AS_SXU_MANF_3240: FS,AS_SXU_MANF_3260: FS,0,0,0,0,0,0,0.0,0.0,0,02-16-23,04-06-23,0,0.0h,0.0h,0%,$0,0.0h,1519.5d,0,$0,$0,1.03_Accelerator Systems (AS),1.03.06_AS Soft X-Ray Undulator (SXR) - SLAC,1.03.06.06_AS Soft X-Ray Undulator Procurement and Fabrication - SLAC,1.03.06.06.02_SXR Phase Shifter Manufacturing and Testing,AS_SXU_MANF_3250_Vendor Proposal Effort - Phase Shifters
299046,1.03,1.03.06,1.03.06.06,1.03.06.06.02,1.03.06.06.02,SXR Phase Shifter Manufacturing and Testing,AS_SXU_MANF_3260,RCV: Vendor Proposal - Phase Shifters,0.0,0.0,0.0,0.0,0,04-06-23,AS_SXU_MANF_3250: FS,AS_SXU_MANF_3270: FS,0,0,0,0,0,0,0.0,0.0,0,nn,04-06-23,0,0.0h,0.0h,0%,$0,0.0h,1519.5d,0,$0,$0,1.03_Accelerator Systems (AS),1.03.06_AS Soft X-Ray Undulator (SXR) - SLAC,1.03.06.06_AS Soft X-Ray Undulator Procurement and Fabrication - SLAC,1.03.06.06.02_SXR Phase Shifter Manufacturing and Testing,AS_SXU_MANF_3260_RCV: Vendor Proposal - Phase Shifters
299047,1.03,1.03.06,1.03.06.06,1.03.06.06.02,1.03.06.06.02,SXR Phase Shifter Manufacturing and Testing,AS_SXU_MANF_3280,Prepare Award Documents - Phase Shifters,5.0,0.0,0.0,0.0,06-26-23,06-30-23,AS_SXU_MANF_3270: FS,AS_SXU_MANF_3290: FS,0,0,0,0,0,0,0.0,0.0,0,06-26-23,06-30-23,0,0.0h,0.0h,0%,$0,0.0h,1519.5d,0,$0,$0,1.03_Accelerator Systems (AS),1.03.06_AS Soft X-Ray Undulator (SXR) - SLAC,1.03.06.06_AS Soft X-Ray Undulator Procurement and Fabrication - SLAC,1.03.06.06.02_SXR Phase Shifter Manufacturing and Testing,AS_SXU_MANF_3280_Prepare Award Documents - Phase Shifters
299048,1.03,1.03.06,1.03.06.06,1.03.06.06.02,1.03.06.06.02,SXR Phase Shifter Manufacturing and Testing,AS_SXU_MANF_3290,(Foreign Only) Buy American ACT Review,10.0,0.0,0.0,0.0,07-03-23,07-17-23,AS_SXU_MANF_3280: FS,AS_SXU_MANF_3300: FS,0,0,0,0,0,0,0.0,0.0,0,07-03-23,07-17-23,0,0.0h,0.0h,0%,$0,0.0h,1519.5d,0,$0,$0,1.03_Accelerator Systems (AS),1.03.06_AS Soft X-Ray Undulator (SXR) - SLAC,1.03.06.06_AS Soft X-Ray Undulator Procurement and Fabrication - SLAC,1.03.06.06.02_SXR Phase Shifter Manufacturing and Testing,AS_SXU_MANF_3290_(Foreign Only) Buy American ACT Review
299049,1.03,1.03.06,1.03.06.06,1.03.06.06.02,1.03.06.06.02,SXR Phase Shifter Manufacturing and Testing,AS_SXU_MANF_3300,SLAC legal review/approve Award docs - Phase Shifter,5.0,0.0,0.0,0.0,07-18-23,07-24-23,AS_SXU_MANF_3290: FS,AS_SXU_MANF_3310: FS,0,0,0,0,0,0,0.0,0.0,0,07-18-23,07-24-23,0,0.0h,0.0h,0%,$0,0.0h,1519.5d,0,$0,$0,1.03_Accelerator Systems (AS),1.03.06_AS Soft X-Ray Undulator (SXR) - SLAC,1.03.06.06_AS Soft X-Ray Undulator Procurement and Fabrication - SLAC,1.03.06.06.02_SXR Phase Shifter Manufacturing and Testing,AS_SXU_MANF_3300_SLAC legal review/approve Award docs - Phase Shifter
299050,1.03,1.03.06,1.03.06.06,1.03.06.06.02,1.03.06.06.02,SXR Phase Shifter Manufacturing and Testing,AS_SXU_MANF_3320,Vendor Effort - Phase Shifters,115.0,0.0,0.0,0.0,10-09-23,04-05-24,AS_SXU_MANF_3310: FS,AS_SXU_MANF_3340: FS,0,0,0,0,0,0,0.0,0.0,0,10-09-23,04-05-24,0,0.0h,0.0h,0%,$0,0.0h,1471.5d,0,$0,$0,1.03_Accelerator Systems (AS),1.03.06_AS Soft X-Ray Undulator (SXR) - SLAC,1.03.06.06_AS Soft X-Ray Undulator Procurement and Fabrication - SLAC,1.03.06.06.02_SXR Phase Shifter Manufacturing and Testing,AS_SXU_MANF_3320_Vendor Effort - Phase Shifters
299051,1.03,1.03.06,1.03.06.06,1.03.06.06.02,1.03.06.06.02,SXR Phase Shifter Manufacturing and Testing,AS_SXU_MANF_3330,Vendor Effort - Phase Shifter Magnets,115.0,0.0,0.0,0.0,10-09-23,04-05-24,AS_SXU_MANF_3310: FS,AS_SXU_MANF_3350: FS,0,0,0,0,0,0,0.0,0.0,0,10-09-23,04-05-24,0,0.0h,0.0h,0%,$0,0.0h,1471.5d,0,$0,$0,1.03_Accelerator Systems (AS),1.03.06_AS Soft X-Ray Undulator (SXR) - SLAC,1.03.06.06_AS Soft X-Ray Undulator Procurement and Fabrication - SLAC,1.03.06.06.02_SXR Phase Shifter Manufacturing and Testing,AS_SXU_MANF_3330_Vendor Effort - Phase Shifter Magnets
299052,1.03,1.03.06,1.03.06.06,1.03.06.06.02,1.03.06.06.02,SXR Phase Shifter Manufacturing and Testing,AS_SXU_MANF_3380,COMP: Phase Shifters Procurement,0.0,0.0,0.0,0.0,0,04-08-24,"AS_SXU_MANF_3340: FS, AS_SXU_MANF_3350: FS","AS_SXU_MANF_3370: FS, AS_SXU_MANF_3360: FS",0,0,0,0,0,0,0.0,0.0,0,nn,04-08-24,0,0.0h,0.0h,0%,$0,0.0h,1471.5d,0,$0,$0,1.03_Accelerator Systems (AS),1.03.06_AS Soft X-Ray Undulator (SXR) - SLAC,1.03.06.06_AS Soft X-Ray Undulator Procurement and Fabrication - SLAC,1.03.06.06.02_SXR Phase Shifter Manufacturing and Testing,AS_SXU_MANF_3380_COMP: Phase Shifters Procurement
299053,1.03,1.03.06,1.03.06.06,1.03.06.06.03,1.03.06.06.03,SXR Undulator Integration and Testing,AS_SXU_MANF_1001,REQD: Receive Pre-production Magnet Modules - SXU_REFB_A,0.0,0.0,0.0,0.0,0,04-25-22,AS_LBL_PROC_620: FS,AS_SXU_MANF_1011: FS,0,0,0,0,0,0,0.0,0.0,0,nn,04-25-22,0,0.0h,0.0h,0%,$0,0.0h,1383.5d,0,$0,$0,1.03_Accelerator Systems (AS),1.03.06_AS Soft X-Ray Undulator (SXR) - SLAC,1.03.06.06_AS Soft X-Ray Undulator Procurement and Fabrication - SLAC,1.03.06.06.03_SXR Undulator Integration and Testing,AS_SXU_MANF_1001_REQD: Receive Pre-production Magnet Modules - SXU_REFB_A
299054,1.03,1.03.06,1.03.06.06,1.03.06.06.03,1.03.06.06.03,SXR Undulator Integration and Testing,AS_SXU_MANF_1041,COMP: Magnet Retrofit - SXU_REFB_A (Pre-production),0.0,0.0,0.0,0.0,0,06-28-22,AS_SXU_MANF_1031: FS,AS_SXU_MANF_1046: FS,0,0,0,0,0,0,0.0,0.0,0,nn,06-28-22,0,0.0h,0.0h,0%,$0,0.0h,1436.5d,0,$0,$0,1.03_Accelerator Systems (AS),1.03.06_AS Soft X-Ray Undulator (SXR) - SLAC,1.03.06.06_AS Soft X-Ray Undulator Procurement and Fabrication - SLAC,1.03.06.06.03_SXR Undulator Integration and Testing,AS_SXU_MANF_1041_COMP: Magnet Retrofit - SXU_REFB_A (Pre-production)
299055,1.03,1.03.06,1.03.06.06,1.03.06.06.03,1.03.06.06.03,SXR Undulator Integration and Testing,AS_SXU_MANF_5755,COMP:  Data to LBNL for Production Readiness Review,0.0,0.0,0.0,0.0,0,07-27-22,AS_SXU_MANF_5750: FS,AS_LBL_DE_320: FS,0,0,0,0,0,0,0.0,0.0,0,nn,07-27-22,0,0.0h,0.0h,0%,$0,0.0h,1436.5d,0,$0,$0,1.03_Accelerator Systems (AS),1.03.06_AS Soft X-Ray Undulator (SXR) - SLAC,1.03.06.06_AS Soft X-Ray Undulator Procurement and Fabrication - SLAC,1.03.06.06.03_SXR Undulator Integration and Testing,AS_SXU_MANF_5755_COMP:  Data to LBNL for Production Readiness Review
299056,1.03,1.03.06,1.03.06.06,1.03.06.06.03,1.03.06.06.03,SXR Undulator Integration and Testing,AS_SXU_MANF_1056,RFI: Pre-production Undulator - SXU_HE_10,0.0,0.0,0.0,0.0,0,01-02-23,AS_SXU_MANF_5790: FS,"AS_SXU_INST_1005: FS, AS_SXU_INST_1010: FS",0,0,0,0,0,0,0.0,0.0,0,nn,01-02-23,0,0.0h,0.0h,0%,$0,0.0h,1926.5d,0,$0,$0,1.03_Accelerator Systems (AS),1.03.06_AS Soft X-Ray Undulator (SXR) - SLAC,1.03.06.06_AS Soft X-Ray Undulator Procurement and Fabrication - SLAC,1.03.06.06.03_SXR Undulator Integration and Testing,AS_SXU_MANF_1056_RFI: Pre-production Undulator - SXU_HE_10
299057,1.03,1.03.06,1.03.06.06,1.03.06.06.03,1.03.06.06.03,SXR Undulator Integration and Testing,AS_SXU_MANF_1101,REQD: Receive Magnet Modules - SXU_REFB_B,0.0,0.0,0.0,0.0,0,06-07-24,AS_LBL_PROD_615: FS,AS_SXU_MANF_1111: FS,0,0,0,0,0,0,0.0,0.0,0,nn,06-07-24,0,0.0h,0.0h,0%,$0,0.0h,1271.5d,0,$0,$0,1.03_Accelerator Systems (AS),1.03.06_AS Soft X-Ray Undulator (SXR) - SLAC,1.03.06.06_AS Soft X-Ray Undulator Procurement and Fabrication - SLAC,1.03.06.06.03_SXR Undulator Integration and Testing,AS_SXU_MANF_1101_REQD: Receive Magnet Modules - SXU_REFB_B
299058,1.03,1.03.06,1.03.06.06,1.03.06.06.03,1.03.06.06.03,SXR Undulator Integration and Testing,AS_SXU_MANF_1201,REQD: Receive Magnet Modules - SXU_REFB_C,0.0,0.0,0.0,0.0,0,06-19-24,AS_LBL_PROD_640: FS,AS_SXU_MANF_1211: FS,0,0,0,0,0,0,0.0,0.0,0,nn,06-19-24,0,0.0h,0.0h,0%,$0,0.0h,1278.5d,0,$0,$0,1.03_Accelerator Systems (AS),1.03.06_AS Soft X-Ray Undulator (SXR) - SLAC,1.03.06.06_AS Soft X-Ray Undulator Procurement and Fabrication - SLAC,1.03.06.06.03_SXR Undulator Integration and Testing,AS_SXU_MANF_1201_REQD: Receive Magnet Modules - SXU_REFB_C
299059,1.03,1.03.06,1.03.06.06,1.03.06.06.03,1.03.06.06.03,SXR Undulator Integration and Testing,AS_SXU_MANF_1141,COMP:  Magnet Retrofit - SXU_REFB_B,0.0,0.0,0.0,0.0,0,07-10-24,AS_SXU_MANF_1131: FS,AS_SXU_MANF_1146: FS,0,0,0,0,0,0,0.0,0.0,0,nn,07-10-24,0,0.0h,0.0h,0%,$0,0.0h,1271.5d,0,$0,$0,1.03_Accelerator Systems (AS),1.03.06_AS Soft X-Ray Undulator (SXR) - SLAC,1.03.06.06_AS Soft X-Ray Undulator Procurement and Fabrication - SLAC,1.03.06.06.03_SXR Undulator Integration and Testing,AS_SXU_MANF_1141_COMP:  Magnet Retrofit - SXU_REFB_B
299060,1.03,1.03.06,1.03.06.06,1.03.06.06.03,1.03.06.06.03,SXR Undulator Integration and Testing,AS_SXU_MANF_1241,COMP:  Magnet Retrofit - SXU_REFB_C,0.0,0.0,0.0,0.0,0,07-22-24,AS_SXU_MANF_1231: FS,AS_SXU_MANF_1246: FS,0,0,0,0,0,0,0.0,0.0,0,nn,07-22-24,0,0.0h,0.0h,0%,$0,0.0h,1278.5d,0,$0,$0,1.03_Accelerator Systems (AS),1.03.06_AS Soft X-Ray Undulator (SXR) - SLAC,1.03.06.06_AS Soft X-Ray Undulator Procurement and Fabrication - SLAC,1.03.06.06.03_SXR Undulator Integration and Testing,AS_SXU_MANF_1241_COMP:  Magnet Retrofit - SXU_REFB_C
299061,1.03,1.03.06,1.03.06.06,1.03.06.06.03,1.03.06.06.03,SXR Undulator Integration and Testing,AS_SXU_MANF_1301,REQD: Receive Magnet Modules - SXU_REFB_D,0.0,0.0,0.0,0.0,0,07-25-24,AS_LBL_PROD_665: FS,AS_SXU_MANF_1311: FS,0,0,0,0,0,0,0.0,0.0,0,nn,07-25-24,0,0.0h,0.0h,0%,$0,0.0h,1268.5d,0,$0,$0,1.03_Accelerator Systems (AS),1.03.06_AS Soft X-Ray Undulator (SXR) - SLAC,1.03.06.06_AS Soft X-Ray Undulator Procurement and Fabrication - SLAC,1.03.06.06.03_SXR Undulator Integration and Testing,AS_SXU_MANF_1301_REQD: Receive Magnet Modules - SXU_REFB_D
299062,1.03,1.03.06,1.03.06.06,1.03.06.06.03,1.03.06.06.03,SXR Undulator Integration and Testing,AS_SXU_MANF_1156,RFI: Undulator - SXU_HE_11,0.0,0.0,0.0,0.0,0,07-31-24,AS_SXU_MANF_1146: FS,"AS_SXU_INST_1105: FS, AS_SXU_INST_1110: FS",0,0,0,0,0,0,0.0,0.0,0,nn,07-31-24,0,0.0h,0.0h,0%,$0,0.0h,1556.5d,0,$0,$0,1.03_Accelerator Systems (AS),1.03.06_AS Soft X-Ray Undulator (SXR) - SLAC,1.03.06.06_AS Soft X-Ray Undulator Procurement and Fabrication - SLAC,1.03.06.06.03_SXR Undulator Integration and Testing,AS_SXU_MANF_1156_RFI: Undulator - SXU_HE_11
299063,1.03,1.03.06,1.03.06.06,1.03.06.06.03,1.03.06.06.03,SXR Undulator Integration and Testing,AS_SXU_MANF_1401,REQD: Receive Magnet Modules - SXU_REFB_E,0.0,0.0,0.0,0.0,0,08-01-24,AS_LBL_PROD_670: FS,AS_SXU_MANF_1411: FS,0,0,0,0,0,0,0.0,0.0,0,nn,08-01-24,0,0.0h,0.0h,0%,$0,0.0h,1170.5d,0,$0,$0,1.03_Accelerator Systems (AS),1.03.06_AS Soft X-Ray Undulator (SXR) - SLAC,1.03.06.06_AS Soft X-Ray Undulator Procurement and Fabrication - SLAC,1.03.06.06.03_SXR Undulator Integration and Testing,AS_SXU_MANF_1401_REQD: Receive Magnet Modules - SXU_REFB_E
299064,1.03,1.03.06,1.03.06.06,1.03.06.06.03,1.03.06.06.03,SXR Undulator Integration and Testing,AS_SXU_MANF_1256,RFI: Undulator - SXU_HE_12,0.0,0.0,0.0,0.0,0,08-21-24,AS_SXU_MANF_1246: FS,"AS_SXU_INST_1205: FS, AS_SXU_INST_1210: FS",0,0,0,0,0,0,0.0,0.0,0,nn,08-21-24,0,0.0h,0.0h,0%,$0,0.0h,1541.5d,0,$0,$0,1.03_Accelerator Systems (AS),1.03.06_AS Soft X-Ray Undulator (SXR) - SLAC,1.03.06.06_AS Soft X-Ray Undulator Procurement and Fabrication - SLAC,1.03.06.06.03_SXR Undulator Integration and Testing,AS_SXU_MANF_1256_RFI: Undulator - SXU_HE_12
299065,1.03,1.03.06,1.03.06.06,1.03.06.06.03,1.03.06.06.03,SXR Undulator Integration and Testing,AS_SXU_MANF_1341,COMP: Magnet Retrofit - SXU_REFB_D,0.0,0.0,0.0,0.0,0,08-26-24,AS_SXU_MANF_1331: FS,AS_SXU_MANF_1346: FS,0,0,0,0,0,0,0.0,0.0,0,nn,08-26-24,0,0.0h,0.0h,0%,$0,0.0h,1268.5d,0,$0,$0,1.03_Accelerator Systems (AS),1.03.06_AS Soft X-Ray Undulator (SXR) - SLAC,1.03.06.06_AS Soft X-Ray Undulator Procurement and Fabrication - SLAC,1.03.06.06.03_SXR Undulator Integration and Testing,AS_SXU_MANF_1341_COMP: Magnet Retrofit - SXU_REFB_D
299066,1.03,1.03.06,1.03.06.06,1.03.06.06.03,1.03.06.06.03,SXR Undulator Integration and Testing,AS_SXU_MANF_1441,COMP: Magnet Retrofit - SXU_REFB_E,0.0,0.0,0.0,0.0,0,09-03-24,AS_SXU_MANF_1431: FS,AS_SXU_MANF_1446: FS,0,0,0,0,0,0,0.0,0.0,0,nn,09-03-24,0,0.0h,0.0h,0%,$0,0.0h,1278.5d,0,$0,$0,1.03_Accelerator Systems (AS),1.03.06_AS Soft X-Ray Undulator (SXR) - SLAC,1.03.06.06_AS Soft X-Ray Undulator Procurement and Fabrication - SLAC,1.03.06.06.03_SXR Undulator Integration and Testing,AS_SXU_MANF_1441_COMP: Magnet Retrofit - SXU_REFB_E
299067,1.03,1.03.06,1.03.06.06,1.03.06.06.03,1.03.06.06.03,SXR Undulator Integration and Testing,AS_SXU_MANF_1501,REQD: Receive Magnet Modules - SXU_REFB_F,0.0,0.0,0.0,0.0,0,09-10-24,AS_LBL_PROD_690: FS,AS_SXU_MANF_1511: FS,0,0,0,0,0,0,0.0,0.0,0,nn,09-10-24,0,0.0h,0.0h,0%,$0,0.0h,1170.5d,0,$0,$0,1.03_Accelerator Systems (AS),1.03.06_AS Soft X-Ray Undulator (SXR) - SLAC,1.03.06.06_AS Soft X-Ray Undulator Procurement and Fabrication - SLAC,1.03.06.06.03_SXR Undulator Integration and Testing,AS_SXU_MANF_1501_REQD: Receive Magnet Modules - SXU_REFB_F
299068,1.03,1.03.06,1.03.06.06,1.03.06.06.03,1.03.06.06.03,SXR Undulator Integration and Testing,AS_SXU_MANF_1356,RFI: Undulator - SXU_HE_13,0.0,0.0,0.0,0.0,0,09-17-24,AS_SXU_MANF_1346: FS,"AS_SXU_INST_1305: FS, AS_SXU_INST_1310: FS",0,0,0,0,0,0,0.0,0.0,0,nn,09-17-24,0,0.0h,0.0h,0%,$0,0.0h,1523.5d,0,$0,$0,1.03_Accelerator Systems (AS),1.03.06_AS Soft X-Ray Undulator (SXR) - SLAC,1.03.06.06_AS Soft X-Ray Undulator Procurement and Fabrication - SLAC,1.03.06.06.03_SXR Undulator Integration and Testing,AS_SXU_MANF_1356_RFI: Undulator - SXU_HE_13
299069,1.03,1.03.06,1.03.06.06,1.03.06.06.03,1.03.06.06.03,SXR Undulator Integration and Testing,AS_SXU_MANF_1456,RFI: Undulator - SXU_HE_14,0.0,0.0,0.0,0.0,0,10-08-24,AS_SXU_MANF_1446: FS,"AS_SXU_INST_1410: FS, AS_SXU_INST_1405: FS",0,0,0,0,0,0,0.0,0.0,0,nn,10-08-24,0,0.0h,0.0h,0%,$0,0.0h,1508.5d,0,$0,$0,1.03_Accelerator Systems (AS),1.03.06_AS Soft X-Ray Undulator (SXR) - SLAC,1.03.06.06_AS Soft X-Ray Undulator Procurement and Fabrication - SLAC,1.03.06.06.03_SXR Undulator Integration and Testing,AS_SXU_MANF_1456_RFI: Undulator - SXU_HE_14
299070,1.03,1.03.06,1.03.06.06,1.03.06.06.03,1.03.06.06.03,SXR Undulator Integration and Testing,AS_SXU_MANF_1541,COMP:  Magnet Retrofit - SXU_REFB_F,0.0,0.0,0.0,0.0,0,10-10-24,AS_SXU_MANF_1531: FS,AS_SXU_MANF_1546: FS,0,0,0,0,0,0,0.0,0.0,0,nn,10-10-24,0,0.0h,0.0h,0%,$0,0.0h,1266.5d,0,$0,$0,1.03_Accelerator Systems (AS),1.03.06_AS Soft X-Ray Undulator (SXR) - SLAC,1.03.06.06_AS Soft X-Ray Undulator Procurement and Fabrication - SLAC,1.03.06.06.03_SXR Undulator Integration and Testing,AS_SXU_MANF_1541_COMP:  Magnet Retrofit - SXU_REFB_F
299071,1.03,1.03.06,1.03.06.06,1.03.06.06.03,1.03.06.06.03,SXR Undulator Integration and Testing,AS_SXU_MANF_1601,REQD: Receive Magnet Modules - SXU_REFB_G,0.0,0.0,0.0,0.0,0,10-17-24,AS_LBL_PROD_710: FS,AS_SXU_MANF_1611: FS,0,0,0,0,0,0,0.0,0.0,0,nn,10-17-24,0,0.0h,0.0h,0%,$0,0.0h,1170.5d,0,$0,$0,1.03_Accelerator Systems (AS),1.03.06_AS Soft X-Ray Undulator (SXR) - SLAC,1.03.06.06_AS Soft X-Ray Undulator Procurement and Fabrication - SLAC,1.03.06.06.03_SXR Undulator Integration and Testing,AS_SXU_MANF_1601_REQD: Receive Magnet Modules - SXU_REFB_G
299072,1.03,1.03.06,1.03.06.06,1.03.06.06.03,1.03.06.06.03,SXR Undulator Integration and Testing,AS_SXU_MANF_1556,RFI: Undulator - SXU_HE_15,0.0,0.0,0.0,0.0,0,10-31-24,AS_SXU_MANF_1546: FS,"AS_SXU_INST_1510: FS, AS_SXU_INST_1505: FS",0,0,0,0,0,0,0.0,0.0,0,nn,10-31-24,0,0.0h,0.0h,0%,$0,0.0h,1491.5d,0,$0,$0,1.03_Accelerator Systems (AS),1.03.06_AS Soft X-Ray Undulator (SXR) - SLAC,1.03.06.06_AS Soft X-Ray Undulator Procurement and Fabrication - SLAC,1.03.06.06.03_SXR Undulator Integration and Testing,AS_SXU_MANF_1556_RFI: Undulator - SXU_HE_15
299073,1.03,1.03.06,1.03.06.06,1.03.06.06.03,1.03.06.06.03,SXR Undulator Integration and Testing,AS_SXU_MANF_1641,COMP: Magnet Retrofit - SXU_REFB_G,0.0,0.0,0.0,0.0,0,11-18-24,AS_SXU_MANF_1631: FS,AS_SXU_MANF_1646: FS,0,0,0,0,0,0,0.0,0.0,0,nn,11-18-24,0,0.0h,0.0h,0%,$0,0.0h,1254.5d,0,$0,$0,1.03_Accelerator Systems (AS),1.03.06_AS Soft X-Ray Undulator (SXR) - SLAC,1.03.06.06_AS Soft X-Ray Undulator Procurement and Fabrication - SLAC,1.03.06.06.03_SXR Undulator Integration and Testing,AS_SXU_MANF_1641_COMP: Magnet Retrofit - SXU_REFB_G
299074,1.03,1.03.06,1.03.06.06,1.03.06.06.03,1.03.06.06.03,SXR Undulator Integration and Testing,AS_SXU_MANF_1701,REQD: Receive Magnet Modules - SXU_REFB_H,0.0,0.0,0.0,0.0,0,11-25-24,AS_LBL_PROD_730: FS,AS_SXU_MANF_1711: FS,0,0,0,0,0,0,0.0,0.0,0,nn,11-25-24,0,0.0h,0.0h,0%,$0,0.0h,1170.5d,0,$0,$0,1.03_Accelerator Systems (AS),1.03.06_AS Soft X-Ray Undulator (SXR) - SLAC,1.03.06.06_AS Soft X-Ray Undulator Procurement and Fabrication - SLAC,1.03.06.06.03_SXR Undulator Integration and Testing,AS_SXU_MANF_1701_REQD: Receive Magnet Modules - SXU_REFB_H
299075,1.03,1.03.06,1.03.06.06,1.03.06.06.03,1.03.06.06.03,SXR Undulator Integration and Testing,AS_SXU_MANF_1656,RFI: Undulator - SXU_HE_16,0.0,0.0,0.0,0.0,0,12-11-24,AS_SXU_MANF_1646: FS,"AS_SXU_INST_1605: FS, AS_SXU_INST_1610: FS",0,0,0,0,0,0,0.0,0.0,0,nn,12-11-24,0,0.0h,0.0h,0%,$0,0.0h,1464.5d,0,$0,$0,1.03_Accelerator Systems (AS),1.03.06_AS Soft X-Ray Undulator (SXR) - SLAC,1.03.06.06_AS Soft X-Ray Undulator Procurement and Fabrication - SLAC,1.03.06.06.03_SXR Undulator Integration and Testing,AS_SXU_MANF_1656_RFI: Undulator - SXU_HE_16
299076,1.03,1.03.06,1.03.06.06,1.03.06.06.03,1.03.06.06.03,SXR Undulator Integration and Testing,AS_SXU_MANF_1741,COMP: Magnet Retrofit - SXU_REFB_H,0.0,0.0,0.0,0.0,0,01-10-25,AS_SXU_MANF_1731: FS,AS_SXU_MANF_1746: FS,0,0,0,0,0,0,0.0,0.0,0,nn,01-10-25,0,0.0h,0.0h,0%,$0,0.0h,1242.5d,0,$0,$0,1.03_Accelerator Systems (AS),1.03.06_AS Soft X-Ray Undulator (SXR) - SLAC,1.03.06.06_AS Soft X-Ray Undulator Procurement and Fabrication - SLAC,1.03.06.06.03_SXR Undulator Integration and Testing,AS_SXU_MANF_1741_COMP: Magnet Retrofit - SXU_REFB_H
299077,1.03,1.03.06,1.03.06.06,1.03.06.06.03,1.03.06.06.03,SXR Undulator Integration and Testing,AS_SXU_MANF_0101,REQD: Receive Undulator - SXU_HE_01,0.0,0.0,0.0,0.0,0,01-16-25,"AS_LBL_PROD_380: FS, AS_SXU_DE_6000: FS",AS_SXU_MANF_0106: FS,0,0,0,0,0,0,0.0,0.0,0,nn,01-16-25,0,0.0h,0.0h,0%,$0,0.0h,1201.5d,0,$0,$0,1.03_Accelerator Systems (AS),1.03.06_AS Soft X-Ray Undulator (SXR) - SLAC,1.03.06.06_AS Soft X-Ray Undulator Procurement and Fabrication - SLAC,1.03.06.06.03_SXR Undulator Integration and Testing,AS_SXU_MANF_0101_REQD: Receive Undulator - SXU_HE_01
299078,1.03,1.03.06,1.03.06.06,1.03.06.06.03,1.03.06.06.03,SXR Undulator Integration and Testing,AS_SXU_MANF_1801,REQD: Receive Magnet Modules - SXU_REFB_I,0.0,0.0,0.0,0.0,0,01-17-25,AS_LBL_PROD_750: FS,AS_SXU_MANF_1811: FS,0,0,0,0,0,0,0.0,0.0,0,nn,01-17-25,0,0.0h,0.0h,0%,$0,0.0h,1170.5d,0,$0,$0,1.03_Accelerator Systems (AS),1.03.06_AS Soft X-Ray Undulator (SXR) - SLAC,1.03.06.06_AS Soft X-Ray Undulator Procurement and Fabrication - SLAC,1.03.06.06.03_SXR Undulator Integration and Testing,AS_SXU_MANF_1801_REQD: Receive Magnet Modules - SXU_REFB_I
299079,1.03,1.03.06,1.03.06.06,1.03.06.06.03,1.03.06.06.03,SXR Undulator Integration and Testing,AS_SXU_MANF_1756,RFI: Undulator - SXU_HE_17,0.0,0.0,0.0,0.0,0,02-03-25,AS_SXU_MANF_1746: FS,"AS_SXU_INST_1705: FS, AS_SXU_INST_1710: FS",0,0,0,0,0,0,0.0,0.0,0,nn,02-03-25,0,0.0h,0.0h,0%,$0,0.0h,1437.5d,0,$0,$0,1.03_Accelerator Systems (AS),1.03.06_AS Soft X-Ray Undulator (SXR) - SLAC,1.03.06.06_AS Soft X-Ray Undulator Procurement and Fabrication - SLAC,1.03.06.06.03_SXR Undulator Integration and Testing,AS_SXU_MANF_1756_RFI: Undulator - SXU_HE_17
299080,1.03,1.03.06,1.03.06.06,1.03.06.06.03,1.03.06.06.03,SXR Undulator Integration and Testing,AS_SXU_MANF_0156,RFI: Undulator - SXU_HE_01,0.0,0.0,0.0,0.0,0,02-14-25,AS_SXU_MANF_0146: FS,"AS_SXU_INST_0110: FS, AS_SXU_INST_0105: FS",0,0,0,0,0,0,0.0,0.0,0,nn,02-14-25,0,0.0h,0.0h,0%,$0,0.0h,1428.5d,0,$0,$0,1.03_Accelerator Systems (AS),1.03.06_AS Soft X-Ray Undulator (SXR) - SLAC,1.03.06.06_AS Soft X-Ray Undulator Procurement and Fabrication - SLAC,1.03.06.06.03_SXR Undulator Integration and Testing,AS_SXU_MANF_0156_RFI: Undulator - SXU_HE_01
299081,1.03,1.03.06,1.03.06.06,1.03.06.06.03,1.03.06.06.03,SXR Undulator Integration and Testing,AS_SXU_MANF_1841,COMP: Magnet Retrofit - SXU_REFB_I,0.0,0.0,0.0,0.0,0,02-20-25,AS_SXU_MANF_1831: FS,AS_SXU_MANF_1846: FS,0,0,0,0,0,0,0.0,0.0,0,nn,02-20-25,0,0.0h,0.0h,0%,$0,0.0h,1230.5d,0,$0,$0,1.03_Accelerator Systems (AS),1.03.06_AS Soft X-Ray Undulator (SXR) - SLAC,1.03.06.06_AS Soft X-Ray Undulator Procurement and Fabrication - SLAC,1.03.06.06.03_SXR Undulator Integration and Testing,AS_SXU_MANF_1841_COMP: Magnet Retrofit - SXU_REFB_I
299082,1.03,1.03.06,1.03.06.06,1.03.06.06.03,1.03.06.06.03,SXR Undulator Integration and Testing,AS_SXU_MANF_1901,REQD: Receive Magnet Modules - SXU_REFB_J,0.0,0.0,0.0,0.0,0,02-27-25,AS_LBL_PROD_770: FS,AS_SXU_MANF_1911: FS,0,0,0,0,0,0,0.0,0.0,0,nn,02-27-25,0,0.0h,0.0h,0%,$0,0.0h,1170.5d,0,$0,$0,1.03_Accelerator Systems (AS),1.03.06_AS Soft X-Ray Undulator (SXR) - SLAC,1.03.06.06_AS Soft X-Ray Undulator Procurement and Fabrication - SLAC,1.03.06.06.03_SXR Undulator Integration and Testing,AS_SXU_MANF_1901_REQD: Receive Magnet Modules - SXU_REFB_J
299083,1.03,1.03.06,1.03.06.06,1.03.06.06.03,1.03.06.06.03,SXR Undulator Integration and Testing,AS_SXU_MANF_1856,RFI: Undulator - SXU_HE_18,0.0,0.0,0.0,0.0,0,03-13-25,AS_SXU_MANF_1846: FS,"AS_SXU_INST_1805: FS, AS_SXU_INST_1810: FS",0,0,0,0,0,0,0.0,0.0,0,nn,03-13-25,0,0.0h,0.0h,0%,$0,0.0h,1410.5d,0,$0,$0,1.03_Accelerator Systems (AS),1.03.06_AS Soft X-Ray Undulator (SXR) - SLAC,1.03.06.06_AS Soft X-Ray Undulator Procurement and Fabrication - SLAC,1.03.06.06.03_SXR Undulator Integration and Testing,AS_SXU_MANF_1856_RFI: Undulator - SXU_HE_18
299084,1.03,1.03.06,1.03.06.06,1.03.06.06.03,1.03.06.06.03,SXR Undulator Integration and Testing,AS_SXU_MANF_0201,REQD: Receive Undulator - SXU_HE_02,0.0,0.0,0.0,0.0,0,03-25-25,AS_LBL_PROD_390: FS,AS_SXU_MANF_0206: FS,0,0,0,0,0,0,0.0,0.0,0,nn,03-25-25,0,0.0h,0.0h,0%,$0,0.0h,1273.5d,0,$0,$0,1.03_Accelerator Systems (AS),1.03.06_AS Soft X-Ray Undulator (SXR) - SLAC,1.03.06.06_AS Soft X-Ray Undulator Procurement and Fabrication - SLAC,1.03.06.06.03_SXR Undulator Integration and Testing,AS_SXU_MANF_0201_REQD: Receive Undulator - SXU_HE_02
299085,1.03,1.03.06,1.03.06.06,1.03.06.06.03,1.03.06.06.03,SXR Undulator Integration and Testing,AS_SXU_MANF_1941,COMP: Magnet Retrofit - SXU_REFB_J,0.0,0.0,0.0,0.0,0,03-31-25,AS_SXU_MANF_1931: FS,AS_SXU_MANF_1946: FS,0,0,0,0,0,0,0.0,0.0,0,nn,03-31-25,0,0.0h,0.0h,0%,$0,0.0h,1218.5d,0,$0,$0,1.03_Accelerator Systems (AS),1.03.06_AS Soft X-Ray Undulator (SXR) - SLAC,1.03.06.06_AS Soft X-Ray Undulator Procurement and Fabrication - SLAC,1.03.06.06.03_SXR Undulator Integration and Testing,AS_SXU_MANF_1941_COMP: Magnet Retrofit - SXU_REFB_J
299086,1.03,1.03.06,1.03.06.06,1.03.06.06.03,1.03.06.06.03,SXR Undulator Integration and Testing,AS_SXU_MANF_2001,REQD: Receive Magnet Modules - SXU_REFB_K,0.0,0.0,0.0,0.0,0,04-07-25,AS_LBL_PROD_790: FS,AS_SXU_MANF_2011: FS,0,0,0,0,0,0,0.0,0.0,0,nn,04-07-25,0,0.0h,0.0h,0%,$0,0.0h,1170.5d,0,$0,$0,1.03_Accelerator Systems (AS),1.03.06_AS Soft X-Ray Undulator (SXR) - SLAC,1.03.06.06_AS Soft X-Ray Undulator Procurement and Fabrication - SLAC,1.03.06.06.03_SXR Undulator Integration and Testing,AS_SXU_MANF_2001_REQD: Receive Magnet Modules - SXU_REFB_K
299087,1.03,1.03.06,1.03.06.06,1.03.06.06.03,1.03.06.06.03,SXR Undulator Integration and Testing,AS_SXU_MANF_1956,RFI: Undulator - SXU_HE_19,0.0,0.0,0.0,0.0,0,04-21-25,AS_SXU_MANF_1946: FS,"AS_SXU_INST_1905: FS, AS_SXU_INST_1910: FS",0,0,0,0,0,0,0.0,0.0,0,nn,04-21-25,0,0.0h,0.0h,0%,$0,0.0h,1383.5d,0,$0,$0,1.03_Accelerator Systems (AS),1.03.06_AS Soft X-Ray Undulator (SXR) - SLAC,1.03.06.06_AS Soft X-Ray Undulator Procurement and Fabrication - SLAC,1.03.06.06.03_SXR Undulator Integration and Testing,AS_SXU_MANF_1956_RFI: Undulator - SXU_HE_19
299088,1.03,1.03.06,1.03.06.06,1.03.06.06.03,1.03.06.06.03,SXR Undulator Integration and Testing,AS_SXU_MANF_0256,RFI: Undulator - SXU_HE_02,0.0,0.0,0.0,0.0,0,04-22-25,AS_SXU_MANF_0246: FS,"AS_SXU_INST_0205: FS, AS_SXU_INST_0210: FS",0,0,0,0,0,0,0.0,0.0,0,nn,04-22-25,0,0.0h,0.0h,0%,$0,0.0h,1382.5d,0,$0,$0,1.03_Accelerator Systems (AS),1.03.06_AS Soft X-Ray Undulator (SXR) - SLAC,1.03.06.06_AS Soft X-Ray Undulator Procurement and Fabrication - SLAC,1.03.06.06.03_SXR Undulator Integration and Testing,AS_SXU_MANF_0256_RFI: Undulator - SXU_HE_02
299089,1.03,1.03.06,1.03.06.06,1.03.06.06.03,1.03.06.06.03,SXR Undulator Integration and Testing,AS_SXU_MANF_0301,REQD: Receive Undulator - SXU_HE_03,0.0,0.0,0.0,0.0,0,04-29-25,AS_LBL_PROD_400: FS,AS_SXU_MANF_0306: FS,0,0,0,0,0,0,0.0,0.0,0,nn,04-29-25,0,0.0h,0.0h,0%,$0,0.0h,1249.5d,0,$0,$0,1.03_Accelerator Systems (AS),1.03.06_AS Soft X-Ray Undulator (SXR) - SLAC,1.03.06.06_AS Soft X-Ray Undulator Procurement and Fabrication - SLAC,1.03.06.06.03_SXR Undulator Integration and Testing,AS_SXU_MANF_0301_REQD: Receive Undulator - SXU_HE_03
299090,1.03,1.03.06,1.03.06.06,1.03.06.06.03,1.03.06.06.03,SXR Undulator Integration and Testing,AS_SXU_MANF_2041,COMP: Magnet Retrofit - SXU_REFB_K,0.0,0.0,0.0,0.0,0,05-07-25,AS_SXU_MANF_2031: FS,AS_SXU_MANF_2046: FS,0,0,0,0,0,0,0.0,0.0,0,nn,05-07-25,0,0.0h,0.0h,0%,$0,0.0h,1206.5d,0,$0,$0,1.03_Accelerator Systems (AS),1.03.06_AS Soft X-Ray Undulator (SXR) - SLAC,1.03.06.06_AS Soft X-Ray Undulator Procurement and Fabrication - SLAC,1.03.06.06.03_SXR Undulator Integration and Testing,AS_SXU_MANF_2041_COMP: Magnet Retrofit - SXU_REFB_K
299091,1.03,1.03.06,1.03.06.06,1.03.06.06.03,1.03.06.06.03,SXR Undulator Integration and Testing,AS_SXU_MANF_2101,REQD: Receive Magnet Modules - SXU_REFB_L,0.0,0.0,0.0,0.0,0,05-14-25,AS_LBL_PROD_810: FS,AS_SXU_MANF_2111: FS,0,0,0,0,0,0,0.0,0.0,0,nn,05-14-25,0,0.0h,0.0h,0%,$0,0.0h,1170.5d,0,$0,$0,1.03_Accelerator Systems (AS),1.03.06_AS Soft X-Ray Undulator (SXR) - SLAC,1.03.06.06_AS Soft X-Ray Undulator Procurement and Fabrication - SLAC,1.03.06.06.03_SXR Undulator Integration and Testing,AS_SXU_MANF_2101_REQD: Receive Magnet Modules - SXU_REFB_L
299092,1.03,1.03.06,1.03.06.06,1.03.06.06.03,1.03.06.06.03,SXR Undulator Integration and Testing,AS_SXU_MANF_0356,RFI: Undulator - SXU_HE_03,0.0,0.0,0.0,0.0,0,05-28-25,AS_SXU_MANF_0346: FS,"AS_SXU_INST_0305: FS, AS_SXU_INST_0310: FS",0,0,0,0,0,0,0.0,0.0,0,nn,05-28-25,0,0.0h,0.0h,0%,$0,0.0h,1357.5d,0,$0,$0,1.03_Accelerator Systems (AS),1.03.06_AS Soft X-Ray Undulator (SXR) - SLAC,1.03.06.06_AS Soft X-Ray Undulator Procurement and Fabrication - SLAC,1.03.06.06.03_SXR Undulator Integration and Testing,AS_SXU_MANF_0356_RFI: Undulator - SXU_HE_03
299093,1.03,1.03.06,1.03.06.06,1.03.06.06.03,1.03.06.06.03,SXR Undulator Integration and Testing,AS_SXU_MANF_2056,RFI: Undulator - SXU_HE_20,0.0,0.0,0.0,0.0,0,05-29-25,AS_SXU_MANF_2046: FS,"AS_SXU_INST_2005: FS, AS_SXU_INST_2010: FS",0,0,0,0,0,0,0.0,0.0,0,nn,05-29-25,0,0.0h,0.0h,0%,$0,0.0h,1356.5d,0,$0,$0,1.03_Accelerator Systems (AS),1.03.06_AS Soft X-Ray Undulator (SXR) - SLAC,1.03.06.06_AS Soft X-Ray Undulator Procurement and Fabrication - SLAC,1.03.06.06.03_SXR Undulator Integration and Testing,AS_SXU_MANF_2056_RFI: Undulator - SXU_HE_20
299094,1.03,1.03.06,1.03.06.06,1.03.06.06.03,1.03.06.06.03,SXR Undulator Integration and Testing,AS_SXU_MANF_0401,REQD: Receive Undulator - SXU_HE_04,0.0,0.0,0.0,0.0,0,06-04-25,AS_LBL_PROD_410: FS,AS_SXU_MANF_0406: FS,0,0,0,0,0,0,0.0,0.0,0,nn,06-04-25,0,0.0h,0.0h,0%,$0,0.0h,1225.5d,0,$0,$0,1.03_Accelerator Systems (AS),1.03.06_AS Soft X-Ray Undulator (SXR) - SLAC,1.03.06.06_AS Soft X-Ray Undulator Procurement and Fabrication - SLAC,1.03.06.06.03_SXR Undulator Integration and Testing,AS_SXU_MANF_0401_REQD: Receive Undulator - SXU_HE_04
299095,1.03,1.03.06,1.03.06.06,1.03.06.06.03,1.03.06.06.03,SXR Undulator Integration and Testing,AS_SXU_MANF_2141,COMP: Magnet Retrofit - SXU_REFB_L,0.0,0.0,0.0,0.0,0,06-16-25,AS_SXU_MANF_2131: FS,AS_SXU_MANF_2146: FS,0,0,0,0,0,0,0.0,0.0,0,nn,06-16-25,0,0.0h,0.0h,0%,$0,0.0h,1194.5d,0,$0,$0,1.03_Accelerator Systems (AS),1.03.06_AS Soft X-Ray Undulator (SXR) - SLAC,1.03.06.06_AS Soft X-Ray Undulator Procurement and Fabrication - SLAC,1.03.06.06.03_SXR Undulator Integration and Testing,AS_SXU_MANF_2141_COMP: Magnet Retrofit - SXU_REFB_L
299096,1.03,1.03.06,1.03.06.06,1.03.06.06.03,1.03.06.06.03,SXR Undulator Integration and Testing,AS_SXU_MANF_2201,REQD: Receive Magnet Modules - SXU_REFB_M,0.0,0.0,0.0,0.0,0,06-23-25,AS_LBL_PROD_830: FS,AS_SXU_MANF_2211: FS,0,0,0,0,0,0,0.0,0.0,0,nn,06-23-25,0,0.0h,0.0h,0%,$0,0.0h,1170.5d,0,$0,$0,1.03_Accelerator Systems (AS),1.03.06_AS Soft X-Ray Undulator (SXR) - SLAC,1.03.06.06_AS Soft X-Ray Undulator Procurement and Fabrication - SLAC,1.03.06.06.03_SXR Undulator Integration and Testing,AS_SXU_MANF_2201_REQD: Receive Magnet Modules - SXU_REFB_M
299097,1.03,1.03.06,1.03.06.06,1.03.06.06.03,1.03.06.06.03,SXR Undulator Integration and Testing,AS_SXU_MANF_0456,RFI: Undulator - SXU_HE_04,0.0,0.0,0.0,0.0,0,07-02-25,AS_SXU_MANF_0446: FS,"AS_SXU_INST_0405: FS, AS_SXU_INST_0410: FS",0,0,0,0,0,0,0.0,0.0,0,nn,07-02-25,0,0.0h,0.0h,0%,$0,0.0h,1332.5d,0,$0,$0,1.03_Accelerator Systems (AS),1.03.06_AS Soft X-Ray Undulator (SXR) - SLAC,1.03.06.06_AS Soft X-Ray Undulator Procurement and Fabrication - SLAC,1.03.06.06.03_SXR Undulator Integration and Testing,AS_SXU_MANF_0456_RFI: Undulator - SXU_HE_04
299098,1.03,1.03.06,1.03.06.06,1.03.06.06.03,1.03.06.06.03,SXR Undulator Integration and Testing,AS_SXU_MANF_2156,RFI: Undulator - SXU_HE_21,0.0,0.0,0.0,0.0,0,07-08-25,AS_SXU_MANF_2146: FS,"AS_SXU_INST_2105: FS, AS_SXU_INST_2110: FS",0,0,0,0,0,0,0.0,0.0,0,nn,07-08-25,0,0.0h,0.0h,0%,$0,0.0h,1329.5d,0,$0,$0,1.03_Accelerator Systems (AS),1.03.06_AS Soft X-Ray Undulator (SXR) - SLAC,1.03.06.06_AS Soft X-Ray Undulator Procurement and Fabrication - SLAC,1.03.06.06.03_SXR Undulator Integration and Testing,AS_SXU_MANF_2156_RFI: Undulator - SXU_HE_21
299099,1.03,1.03.06,1.03.06.06,1.03.06.06.03,1.03.06.06.03,SXR Undulator Integration and Testing,AS_SXU_MANF_0501,REQD: Receive Undulator - SXU_HE_05,0.0,0.0,0.0,0.0,0,07-10-25,AS_LBL_PROD_420: FS,AS_SXU_MANF_0506: FS,0,0,0,0,0,0,0.0,0.0,0,nn,07-10-25,0,0.0h,0.0h,0%,$0,0.0h,1201.5d,0,$0,$0,1.03_Accelerator Systems (AS),1.03.06_AS Soft X-Ray Undulator (SXR) - SLAC,1.03.06.06_AS Soft X-Ray Undulator Procurement and Fabrication - SLAC,1.03.06.06.03_SXR Undulator Integration and Testing,AS_SXU_MANF_0501_REQD: Receive Undulator - SXU_HE_05
299100,1.03,1.03.06,1.03.06.06,1.03.06.06.03,1.03.06.06.03,SXR Undulator Integration and Testing,AS_SXU_MANF_2241,COMP: Magnet Retrofit - SXU_REFB_M,0.0,0.0,0.0,0.0,0,07-24-25,AS_SXU_MANF_2231: FS,AS_SXU_MANF_2246: FS,0,0,0,0,0,0,0.0,0.0,0,nn,07-24-25,0,0.0h,0.0h,0%,$0,0.0h,1182.5d,0,$0,$0,1.03_Accelerator Systems (AS),1.03.06_AS Soft X-Ray Undulator (SXR) - SLAC,1.03.06.06_AS Soft X-Ray Undulator Procurement and Fabrication - SLAC,1.03.06.06.03_SXR Undulator Integration and Testing,AS_SXU_MANF_2241_COMP: Magnet Retrofit - SXU_REFB_M
299101,1.03,1.03.06,1.03.06.06,1.03.06.06.03,1.03.06.06.03,SXR Undulator Integration and Testing,AS_SXU_MANF_2301,REQD: Receive Magnet Modules - SXU_REFB_N,0.0,0.0,0.0,0.0,0,07-31-25,AS_LBL_PROD_850: FS,AS_SXU_MANF_2311: FS,0,0,0,0,0,0,0.0,0.0,0,nn,07-31-25,0,0.0h,0.0h,0%,$0,0.0h,1170.5d,0,$0,$0,1.03_Accelerator Systems (AS),1.03.06_AS Soft X-Ray Undulator (SXR) - SLAC,1.03.06.06_AS Soft X-Ray Undulator Procurement and Fabrication - SLAC,1.03.06.06.03_SXR Undulator Integration and Testing,AS_SXU_MANF_2301_REQD: Receive Magnet Modules - SXU_REFB_N
299102,1.03,1.03.06,1.03.06.06,1.03.06.06.03,1.03.06.06.03,SXR Undulator Integration and Testing,AS_SXU_MANF_0556,RFI: Undulator - SXU_HE_05,0.0,0.0,0.0,0.0,0,08-07-25,AS_SXU_MANF_0546: FS,"AS_SXU_INST_0505: FS, AS_SXU_INST_0510: FS",0,0,0,0,0,0,0.0,0.0,0,nn,08-07-25,0,0.0h,0.0h,0%,$0,0.0h,1307.5d,0,$0,$0,1.03_Accelerator Systems (AS),1.03.06_AS Soft X-Ray Undulator (SXR) - SLAC,1.03.06.06_AS Soft X-Ray Undulator Procurement and Fabrication - SLAC,1.03.06.06.03_SXR Undulator Integration and Testing,AS_SXU_MANF_0556_RFI: Undulator - SXU_HE_05
299103,1.03,1.03.06,1.03.06.06,1.03.06.06.03,1.03.06.06.03,SXR Undulator Integration and Testing,AS_SXU_MANF_2256,RFI: Undulator - SXU_HE_22,0.0,0.0,0.0,0.0,0,08-14-25,AS_SXU_MANF_2246: FS,"AS_SXU_INST_2205: FS, AS_SXU_INST_2210: FS",0,0,0,0,0,0,0.0,0.0,0,nn,08-14-25,0,0.0h,0.0h,0%,$0,0.0h,1302.5d,0,$0,$0,1.03_Accelerator Systems (AS),1.03.06_AS Soft X-Ray Undulator (SXR) - SLAC,1.03.06.06_AS Soft X-Ray Undulator Procurement and Fabrication - SLAC,1.03.06.06.03_SXR Undulator Integration and Testing,AS_SXU_MANF_2256_RFI: Undulator - SXU_HE_22
299104,1.03,1.03.06,1.03.06.06,1.03.06.06.03,1.03.06.06.03,SXR Undulator Integration and Testing,AS_SXU_MANF_2401,REQD: Receive Magnet Modules - SXU_REFB_O,0.0,0.0,0.0,0.0,0,08-21-25,AS_LBL_PROD_860: FS,AS_SXU_MANF_2411: FS,0,0,0,0,0,0,0.0,0.0,0,nn,08-21-25,0,0.0h,0.0h,0%,$0,0.0h,1170.5d,0,$0,$0,1.03_Accelerator Systems (AS),1.03.06_AS Soft X-Ray Undulator (SXR) - SLAC,1.03.06.06_AS Soft X-Ray Undulator Procurement and Fabrication - SLAC,1.03.06.06.03_SXR Undulator Integration and Testing,AS_SXU_MANF_2401_REQD: Receive Magnet Modules - SXU_REFB_O
299105,1.03,1.03.06,1.03.06.06,1.03.06.06.03,1.03.06.06.03,SXR Undulator Integration and Testing,AS_SXU_MANF_0601,REQD: Receive Undulator - SXU_HE_06,0.0,0.0,0.0,0.0,0,08-22-25,AS_LBL_PROD_430: FS,AS_SXU_MANF_0606: FS,0,0,0,0,0,0,0.0,0.0,0,nn,08-22-25,0,0.0h,0.0h,0%,$0,0.0h,1231.5d,0,$0,$0,1.03_Accelerator Systems (AS),1.03.06_AS Soft X-Ray Undulator (SXR) - SLAC,1.03.06.06_AS Soft X-Ray Undulator Procurement and Fabrication - SLAC,1.03.06.06.03_SXR Undulator Integration and Testing,AS_SXU_MANF_0601_REQD: Receive Undulator - SXU_HE_06
299106,1.03,1.03.06,1.03.06.06,1.03.06.06.03,1.03.06.06.03,SXR Undulator Integration and Testing,AS_SXU_MANF_2341,COMP: Magnet Retrofit - SXU_REFB_N,0.0,0.0,0.0,0.0,0,09-02-25,AS_SXU_MANF_2331: FS,AS_SXU_MANF_2346: FS,0,0,0,0,0,0,0.0,0.0,0,nn,09-02-25,0,0.0h,0.0h,0%,$0,0.0h,1170.5d,0,$0,$0,1.03_Accelerator Systems (AS),1.03.06_AS Soft X-Ray Undulator (SXR) - SLAC,1.03.06.06_AS Soft X-Ray Undulator Procurement and Fabrication - SLAC,1.03.06.06.03_SXR Undulator Integration and Testing,AS_SXU_MANF_2341_COMP: Magnet Retrofit - SXU_REFB_N
299107,1.03,1.03.06,1.03.06.06,1.03.06.06.03,1.03.06.06.03,SXR Undulator Integration and Testing,AS_SXU_MANF_2501,REQD: Receive Magnet Modules - SXU_REFB_P,0.0,0.0,0.0,0.0,0,09-12-25,AS_LBL_PROD_870: FS,AS_SXU_MANF_2511: FS,0,0,0,0,0,0,0.0,0.0,0,nn,09-12-25,0,0.0h,0.0h,0%,$0,0.0h,1170.5d,0,$0,$0,1.03_Accelerator Systems (AS),1.03.06_AS Soft X-Ray Undulator (SXR) - SLAC,1.03.06.06_AS Soft X-Ray Undulator Procurement and Fabrication - SLAC,1.03.06.06.03_SXR Undulator Integration and Testing,AS_SXU_MANF_2501_REQD: Receive Magnet Modules - SXU_REFB_P
299108,1.03,1.03.06,1.03.06.06,1.03.06.06.03,1.03.06.06.03,SXR Undulator Integration and Testing,AS_SXU_MANF_0656,RFI: Undulator - SXU_HE_06,0.0,0.0,0.0,0.0,0,09-22-25,AS_SXU_MANF_0646: FS,"AS_SXU_INST_0605: FS, AS_SXU_INST_0610: FS",0,0,0,0,0,0,0.0,0.0,0,nn,09-22-25,0,0.0h,0.0h,0%,$0,0.0h,1276.5d,0,$0,$0,1.03_Accelerator Systems (AS),1.03.06_AS Soft X-Ray Undulator (SXR) - SLAC,1.03.06.06_AS Soft X-Ray Undulator Procurement and Fabrication - SLAC,1.03.06.06.03_SXR Undulator Integration and Testing,AS_SXU_MANF_0656_RFI: Undulator - SXU_HE_06
299109,1.03,1.03.06,1.03.06.06,1.03.06.06.03,1.03.06.06.03,SXR Undulator Integration and Testing,AS_SXU_MANF_2356,RFI: Undulator - SXU_HE_23,0.0,0.0,0.0,0.0,0,09-23-25,AS_SXU_MANF_2346: FS,"AS_SXU_INST_2305: FS, AS_SXU_INST_2310: FS",0,0,0,0,0,0,0.0,0.0,0,nn,09-23-25,0,0.0h,0.0h,0%,$0,0.0h,1275.5d,0,$0,$0,1.03_Accelerator Systems (AS),1.03.06_AS Soft X-Ray Undulator (SXR) - SLAC,1.03.06.06_AS Soft X-Ray Undulator Procurement and Fabrication - SLAC,1.03.06.06.03_SXR Undulator Integration and Testing,AS_SXU_MANF_2356_RFI: Undulator - SXU_HE_23
299110,1.03,1.03.06,1.03.06.06,1.03.06.06.03,1.03.06.06.03,SXR Undulator Integration and Testing,AS_SXU_MANF_2441,COMP: Magnet Retrofit - SXU_REFB_O,0.0,0.0,0.0,0.0,0,09-23-25,AS_SXU_MANF_2431: FS,AS_SXU_MANF_2446: FS,0,0,0,0,0,0,0.0,0.0,0,nn,09-23-25,0,0.0h,0.0h,0%,$0,0.0h,1170.5d,0,$0,$0,1.03_Accelerator Systems (AS),1.03.06_AS Soft X-Ray Undulator (SXR) - SLAC,1.03.06.06_AS Soft X-Ray Undulator Procurement and Fabrication - SLAC,1.03.06.06.03_SXR Undulator Integration and Testing,AS_SXU_MANF_2441_COMP: Magnet Retrofit - SXU_REFB_O
299111,1.03,1.03.06,1.03.06.06,1.03.06.06.03,1.03.06.06.03,SXR Undulator Integration and Testing,AS_SXU_MANF_0701,REQD: Receive Undulator - SXU_HE_07,0.0,0.0,0.0,0.0,0,09-29-25,AS_LBL_PROD_440: FS,AS_SXU_MANF_0706: FS,0,0,0,0,0,0,0.0,0.0,0,nn,09-29-25,0,0.0h,0.0h,0%,$0,0.0h,1221.5d,0,$0,$0,1.03_Accelerator Systems (AS),1.03.06_AS Soft X-Ray Undulator (SXR) - SLAC,1.03.06.06_AS Soft X-Ray Undulator Procurement and Fabrication - SLAC,1.03.06.06.03_SXR Undulator Integration and Testing,AS_SXU_MANF_0701_REQD: Receive Undulator - SXU_HE_07
299112,1.03,1.03.06,1.03.06.06,1.03.06.06.03,1.03.06.06.03,SXR Undulator Integration and Testing,AS_SXU_MANF_2601,REQD: Receive Magnet Modules - SXU_REFB_Q,0.0,0.0,0.0,0.0,0,10-03-25,AS_LBL_PROD_880: FS,AS_SXU_MANF_2611: FS,0,0,0,0,0,0,0.0,0.0,0,nn,10-03-25,0,0.0h,0.0h,0%,$0,0.0h,1170.5d,0,$0,$0,1.03_Accelerator Systems (AS),1.03.06_AS Soft X-Ray Undulator (SXR) - SLAC,1.03.06.06_AS Soft X-Ray Undulator Procurement and Fabrication - SLAC,1.03.06.06.03_SXR Undulator Integration and Testing,AS_SXU_MANF_2601_REQD: Receive Magnet Modules - SXU_REFB_Q
299113,1.03,1.03.06,1.03.06.06,1.03.06.06.03,1.03.06.06.03,SXR Undulator Integration and Testing,AS_SXU_MANF_2456,RFI: Undulator - SXU_HE_24,0.0,0.0,0.0,0.0,0,10-14-25,AS_SXU_MANF_2446: FS,"AS_SXU_INST_2405: FS, AS_SXU_INST_2410: FS",0,0,0,0,0,0,0.0,0.0,0,nn,10-14-25,0,0.0h,0.0h,0%,$0,0.0h,1260.5d,0,$0,$0,1.03_Accelerator Systems (AS),1.03.06_AS Soft X-Ray Undulator (SXR) - SLAC,1.03.06.06_AS Soft X-Ray Undulator Procurement and Fabrication - SLAC,1.03.06.06.03_SXR Undulator Integration and Testing,AS_SXU_MANF_2456_RFI: Undulator - SXU_HE_24
299114,1.03,1.03.06,1.03.06.06,1.03.06.06.03,1.03.06.06.03,SXR Undulator Integration and Testing,AS_SXU_MANF_2541,COMP: Magnet Retrofit - SXU_REFB_P,0.0,0.0,0.0,0.0,0,10-14-25,AS_SXU_MANF_2531: FS,AS_SXU_MANF_2546: FS,0,0,0,0,0,0,0.0,0.0,0,nn,10-14-25,0,0.0h,0.0h,0%,$0,0.0h,1170.5d,0,$0,$0,1.03_Accelerator Systems (AS),1.03.06_AS Soft X-Ray Undulator (SXR) - SLAC,1.03.06.06_AS Soft X-Ray Undulator Procurement and Fabrication - SLAC,1.03.06.06.03_SXR Undulator Integration and Testing,AS_SXU_MANF_2541_COMP: Magnet Retrofit - SXU_REFB_P
299115,1.03,1.03.06,1.03.06.06,1.03.06.06.03,1.03.06.06.03,SXR Undulator Integration and Testing,AS_SXU_MANF_2701,REQD: Receive Magnet Modules - SXU_REFB_R,0.0,0.0,0.0,0.0,0,10-24-25,AS_LBL_PROD_890: FS,AS_SXU_MANF_2711: FS,0,0,0,0,0,0,0.0,0.0,0,nn,10-24-25,0,0.0h,0.0h,0%,$0,0.0h,1170.5d,0,$0,$0,1.03_Accelerator Systems (AS),1.03.06_AS Soft X-Ray Undulator (SXR) - SLAC,1.03.06.06_AS Soft X-Ray Undulator Procurement and Fabrication - SLAC,1.03.06.06.03_SXR Undulator Integration and Testing,AS_SXU_MANF_2701_REQD: Receive Magnet Modules - SXU_REFB_R
299116,1.03,1.03.06,1.03.06.06,1.03.06.06.03,1.03.06.06.03,SXR Undulator Integration and Testing,AS_SXU_MANF_0756,RFI: Undulator - SXU_HE_07,0.0,0.0,0.0,0.0,0,10-27-25,AS_SXU_MANF_0746: FS,"AS_SXU_INST_0705: FS, AS_SXU_INST_0710: FS",0,0,0,0,0,0,0.0,0.0,0,nn,10-27-25,0,0.0h,0.0h,0%,$0,0.0h,1251.5d,0,$0,$0,1.03_Accelerator Systems (AS),1.03.06_AS Soft X-Ray Undulator (SXR) - SLAC,1.03.06.06_AS Soft X-Ray Undulator Procurement and Fabrication - SLAC,1.03.06.06.03_SXR Undulator Integration and Testing,AS_SXU_MANF_0756_RFI: Undulator - SXU_HE_07
299117,1.03,1.03.06,1.03.06.06,1.03.06.06.03,1.03.06.06.03,SXR Undulator Integration and Testing,AS_SXU_MANF_0801,REQD: Receive Undulator - SXU_HE_08,0.0,0.0,0.0,0.0,0,11-03-25,AS_LBL_PROD_450: FS,"AS_SXU_MANF_0846: FS, AS_SXU_MANF_0806: FS",0,0,0,0,0,0,0.0,0.0,0,nn,11-03-25,0,0.0h,0.0h,0%,$0,0.0h,1211.5d,0,$0,$0,1.03_Accelerator Systems (AS),1.03.06_AS Soft X-Ray Undulator (SXR) - SLAC,1.03.06.06_AS Soft X-Ray Undulator Procurement and Fabrication - SLAC,1.03.06.06.03_SXR Undulator Integration and Testing,AS_SXU_MANF_0801_REQD: Receive Undulator - SXU_HE_08
299118,1.03,1.03.06,1.03.06.06,1.03.06.06.03,1.03.06.06.03,SXR Undulator Integration and Testing,AS_SXU_MANF_2556,RFI: Undulator - SXU_HE_25,0.0,0.0,0.0,0.0,0,11-04-25,AS_SXU_MANF_2546: FS,"AS_SXU_INST_2505: FS, AS_SXU_INST_2510: FS",0,0,0,0,0,0,0.0,0.0,0,nn,11-04-25,0,0.0h,0.0h,0%,$0,0.0h,1245.5d,0,$0,$0,1.03_Accelerator Systems (AS),1.03.06_AS Soft X-Ray Undulator (SXR) - SLAC,1.03.06.06_AS Soft X-Ray Undulator Procurement and Fabrication - SLAC,1.03.06.06.03_SXR Undulator Integration and Testing,AS_SXU_MANF_2556_RFI: Undulator - SXU_HE_25
299119,1.03,1.03.06,1.03.06.06,1.03.06.06.03,1.03.06.06.03,SXR Undulator Integration and Testing,AS_SXU_MANF_2641,COMP: Magnet Retrofit - SXU_REFB_Q,0.0,0.0,0.0,0.0,0,11-04-25,AS_SXU_MANF_2631: FS,AS_SXU_MANF_2646: FS,0,0,0,0,0,0,0.0,0.0,0,nn,11-04-25,0,0.0h,0.0h,0%,$0,0.0h,1170.5d,0,$0,$0,1.03_Accelerator Systems (AS),1.03.06_AS Soft X-Ray Undulator (SXR) - SLAC,1.03.06.06_AS Soft X-Ray Undulator Procurement and Fabrication - SLAC,1.03.06.06.03_SXR Undulator Integration and Testing,AS_SXU_MANF_2641_COMP: Magnet Retrofit - SXU_REFB_Q
299120,1.03,1.03.06,1.03.06.06,1.03.06.06.03,1.03.06.06.03,SXR Undulator Integration and Testing,AS_SXU_MANF_2801,REQD: Receive Magnet Modules - SXU_REFB_S,0.0,0.0,0.0,0.0,0,11-14-25,AS_LBL_PROD_900: FS,AS_SXU_MANF_2811: FS,0,0,0,0,0,0,0.0,0.0,0,nn,11-14-25,0,0.0h,0.0h,0%,$0,0.0h,1170.5d,0,$0,$0,1.03_Accelerator Systems (AS),1.03.06_AS Soft X-Ray Undulator (SXR) - SLAC,1.03.06.06_AS Soft X-Ray Undulator Procurement and Fabrication - SLAC,1.03.06.06.03_SXR Undulator Integration and Testing,AS_SXU_MANF_2801_REQD: Receive Magnet Modules - SXU_REFB_S
299121,1.03,1.03.06,1.03.06.06,1.03.06.06.03,1.03.06.06.03,SXR Undulator Integration and Testing,AS_SXU_MANF_2656,RFI: Undulator - SXU_HE_26,0.0,0.0,0.0,0.0,0,11-25-25,AS_SXU_MANF_2646: FS,"AS_SXU_INST_2605: FS, AS_SXU_INST_2610: FS",0,0,0,0,0,0,0.0,0.0,0,nn,11-25-25,0,0.0h,0.0h,0%,$0,0.0h,1230.5d,0,$0,$0,1.03_Accelerator Systems (AS),1.03.06_AS Soft X-Ray Undulator (SXR) - SLAC,1.03.06.06_AS Soft X-Ray Undulator Procurement and Fabrication - SLAC,1.03.06.06.03_SXR Undulator Integration and Testing,AS_SXU_MANF_2656_RFI: Undulator - SXU_HE_26
299122,1.03,1.03.06,1.03.06.06,1.03.06.06.03,1.03.06.06.03,SXR Undulator Integration and Testing,AS_SXU_MANF_2741,COMP: Magnet Retrofit - SXU_REFB_R,0.0,0.0,0.0,0.0,0,11-25-25,AS_SXU_MANF_2731: FS,AS_SXU_MANF_2746: FS,0,0,0,0,0,0,0.0,0.0,0,nn,11-25-25,0,0.0h,0.0h,0%,$0,0.0h,1170.5d,0,$0,$0,1.03_Accelerator Systems (AS),1.03.06_AS Soft X-Ray Undulator (SXR) - SLAC,1.03.06.06_AS Soft X-Ray Undulator Procurement and Fabrication - SLAC,1.03.06.06.03_SXR Undulator Integration and Testing,AS_SXU_MANF_2741_COMP: Magnet Retrofit - SXU_REFB_R
299123,1.03,1.03.06,1.03.06.06,1.03.06.06.03,1.03.06.06.03,SXR Undulator Integration and Testing,AS_SXU_MANF_0856,RFI: Undulator - SXU_HE_08,0.0,0.0,0.0,0.0,0,12-03-25,AS_SXU_MANF_0846: FS,"AS_SXU_INST_0805: FS, AS_SXU_INST_0810: FS",0,0,0,0,0,0,0.0,0.0,0,nn,12-03-25,0,0.0h,0.0h,0%,$0,0.0h,1226.5d,0,$0,$0,1.03_Accelerator Systems (AS),1.03.06_AS Soft X-Ray Undulator (SXR) - SLAC,1.03.06.06_AS Soft X-Ray Undulator Procurement and Fabrication - SLAC,1.03.06.06.03_SXR Undulator Integration and Testing,AS_SXU_MANF_0856_RFI: Undulator - SXU_HE_08
299124,1.03,1.03.06,1.03.06.06,1.03.06.06.03,1.03.06.06.03,SXR Undulator Integration and Testing,AS_SXU_MANF_2901,REQD: Receive Magnet Modules - SXU_REFB_T,0.0,0.0,0.0,0.0,0,12-09-25,AS_LBL_PROD_910: FS,AS_SXU_MANF_2911: FS,0,0,0,0,0,0,0.0,0.0,0,nn,12-09-25,0,0.0h,0.0h,0%,$0,0.0h,1170.5d,0,$0,$0,1.03_Accelerator Systems (AS),1.03.06_AS Soft X-Ray Undulator (SXR) - SLAC,1.03.06.06_AS Soft X-Ray Undulator Procurement and Fabrication - SLAC,1.03.06.06.03_SXR Undulator Integration and Testing,AS_SXU_MANF_2901_REQD: Receive Magnet Modules - SXU_REFB_T
299125,1.03,1.03.06,1.03.06.06,1.03.06.06.03,1.03.06.06.03,SXR Undulator Integration and Testing,AS_SXU_MANF_0901,REQD: Receive Undulator - SXU_HE_09,0.0,0.0,0.0,0.0,0,12-10-25,AS_LBL_PROD_460: FS,AS_SXU_MANF_0906: FS,0,0,0,0,0,0,0.0,0.0,0,nn,12-10-25,0,0.0h,0.0h,0%,$0,0.0h,1201.5d,0,$0,$0,1.03_Accelerator Systems (AS),1.03.06_AS Soft X-Ray Undulator (SXR) - SLAC,1.03.06.06_AS Soft X-Ray Undulator Procurement and Fabrication - SLAC,1.03.06.06.03_SXR Undulator Integration and Testing,AS_SXU_MANF_0901_REQD: Receive Undulator - SXU_HE_09
299126,1.03,1.03.06,1.03.06.06,1.03.06.06.03,1.03.06.06.03,SXR Undulator Integration and Testing,AS_SXU_MANF_2756,RFI: Undulator - SXU_HE_27,0.0,0.0,0.0,0.0,0,12-18-25,AS_SXU_MANF_2746: FS,"AS_SXU_INST_2705: FS, AS_SXU_INST_2710: FS",0,0,0,0,0,0,0.0,0.0,0,nn,12-18-25,0,0.0h,0.0h,0%,$0,0.0h,1215.5d,0,$0,$0,1.03_Accelerator Systems (AS),1.03.06_AS Soft X-Ray Undulator (SXR) - SLAC,1.03.06.06_AS Soft X-Ray Undulator Procurement and Fabrication - SLAC,1.03.06.06.03_SXR Undulator Integration and Testing,AS_SXU_MANF_2756_RFI: Undulator - SXU_HE_27
299127,1.03,1.03.06,1.03.06.06,1.03.06.06.03,1.03.06.06.03,SXR Undulator Integration and Testing,AS_SXU_MANF_2841,COMP: Magnet Retrofit - SXU_REFB_S,0.0,0.0,0.0,0.0,0,12-18-25,AS_SXU_MANF_2831: FS,AS_SXU_MANF_2846: FS,0,0,0,0,0,0,0.0,0.0,0,nn,12-18-25,0,0.0h,0.0h,0%,$0,0.0h,1170.5d,0,$0,$0,1.03_Accelerator Systems (AS),1.03.06_AS Soft X-Ray Undulator (SXR) - SLAC,1.03.06.06_AS Soft X-Ray Undulator Procurement and Fabrication - SLAC,1.03.06.06.03_SXR Undulator Integration and Testing,AS_SXU_MANF_2841_COMP: Magnet Retrofit - SXU_REFB_S
299128,1.03,1.03.06,1.03.06.06,1.03.06.06.03,1.03.06.06.03,SXR Undulator Integration and Testing,AS_SXU_MANF_3001,REQD: Receive Magnet Modules - SXU_REFB_U,0.0,0.0,0.0,0.0,0,01-13-26,AS_LBL_PROD_920: FS,AS_SXU_MANF_3011: FS,0,0,0,0,0,0,0.0,0.0,0,nn,01-13-26,0,0.0h,0.0h,0%,$0,0.0h,1170.5d,0,$0,$0,1.03_Accelerator Systems (AS),1.03.06_AS Soft X-Ray Undulator (SXR) - SLAC,1.03.06.06_AS Soft X-Ray Undulator Procurement and Fabrication - SLAC,1.03.06.06.03_SXR Undulator Integration and Testing,AS_SXU_MANF_3001_REQD: Receive Magnet Modules - SXU_REFB_U
299129,1.03,1.03.06,1.03.06.06,1.03.06.06.03,1.03.06.06.03,SXR Undulator Integration and Testing,AS_SXU_MANF_0956,RFI: Undulator - SXU_HE_09,0.0,0.0,0.0,0.0,0,01-22-26,AS_SXU_MANF_0946: FS,"AS_SXU_INST_0905: FS, AS_SXU_INST_0910: FS",0,0,0,0,0,0,0.0,0.0,0,nn,01-22-26,0,0.0h,0.0h,0%,$0,0.0h,1201.5d,0,$0,$0,1.03_Accelerator Systems (AS),1.03.06_AS Soft X-Ray Undulator (SXR) - SLAC,1.03.06.06_AS Soft X-Ray Undulator Procurement and Fabrication - SLAC,1.03.06.06.03_SXR Undulator Integration and Testing,AS_SXU_MANF_0956_RFI: Undulator - SXU_HE_09
299130,1.03,1.03.06,1.03.06.06,1.03.06.06.03,1.03.06.06.03,SXR Undulator Integration and Testing,AS_SXU_MANF_2856,RFI: Undulator - SXU_HE_28,0.0,0.0,0.0,0.0,0,01-23-26,AS_SXU_MANF_2846: FS,"AS_SXU_INST_2805: FS, AS_SXU_INST_2810: FS",0,0,0,0,0,0,0.0,0.0,0,nn,01-23-26,0,0.0h,0.0h,0%,$0,0.0h,1200.5d,0,$0,$0,1.03_Accelerator Systems (AS),1.03.06_AS Soft X-Ray Undulator (SXR) - SLAC,1.03.06.06_AS Soft X-Ray Undulator Procurement and Fabrication - SLAC,1.03.06.06.03_SXR Undulator Integration and Testing,AS_SXU_MANF_2856_RFI: Undulator - SXU_HE_28
299131,1.03,1.03.06,1.03.06.06,1.03.06.06.03,1.03.06.06.03,SXR Undulator Integration and Testing,AS_SXU_MANF_2941,COMP: Magnet Retrofit - SXU_REFB_T,0.0,0.0,0.0,0.0,0,01-23-26,AS_SXU_MANF_2931: FS,AS_SXU_MANF_2946: FS,0,0,0,0,0,0,0.0,0.0,0,nn,01-23-26,0,0.0h,0.0h,0%,$0,0.0h,1170.5d,0,$0,$0,1.03_Accelerator Systems (AS),1.03.06_AS Soft X-Ray Undulator (SXR) - SLAC,1.03.06.06_AS Soft X-Ray Undulator Procurement and Fabrication - SLAC,1.03.06.06.03_SXR Undulator Integration and Testing,AS_SXU_MANF_2941_COMP: Magnet Retrofit - SXU_REFB_T
299132,1.03,1.03.06,1.03.06.06,1.03.06.06.03,1.03.06.06.03,SXR Undulator Integration and Testing,AS_SXU_MANF_3057,REQD:  Last Receive Magnet Module,5.0,0.0,0.0,0.0,02-05-26,02-11-26,AS_LBL_PROD_930: FS,AS_SXU_MANF_3060: FS,0,0,0,0,0,0,0.0,0.0,0,02-05-26,02-11-26,0,0.0h,0.0h,0%,$0,0.0h,1183.5d,0,$0,$0,1.03_Accelerator Systems (AS),1.03.06_AS Soft X-Ray Undulator (SXR) - SLAC,1.03.06.06_AS Soft X-Ray Undulator Procurement and Fabrication - SLAC,1.03.06.06.03_SXR Undulator Integration and Testing,AS_SXU_MANF_3057_REQD:  Last Receive Magnet Module
299133,1.03,1.03.06,1.03.06.06,1.03.06.06.03,1.03.06.06.03,SXR Undulator Integration and Testing,AS_SXU_MANF_3060,Receiving Inspection - Last Magnet Module,5.0,0.0,0.0,0.0,02-12-26,02-19-26,AS_SXU_MANF_3057: FS,AS_LBL_PROD_935: FS,0,0,0,0,0,0,0.0,0.0,0,02-12-26,02-19-26,0,0.0h,0.0h,0%,$0,0.0h,1183.5d,0,$0,$0,1.03_Accelerator Systems (AS),1.03.06_AS Soft X-Ray Undulator (SXR) - SLAC,1.03.06.06_AS Soft X-Ray Undulator Procurement and Fabrication - SLAC,1.03.06.06.03_SXR Undulator Integration and Testing,AS_SXU_MANF_3060_Receiving Inspection - Last Magnet Module
299134,1.03,1.03.06,1.03.06.06,1.03.06.06.03,1.03.06.06.03,SXR Undulator Integration and Testing,AS_SXU_MANF_2956,RFI: Undulator - SXU_HE_29,0.0,0.0,0.0,0.0,0,02-13-26,AS_SXU_MANF_2946: FS,"AS_SXU_INST_2905: FS, AS_SXU_INST_2910: FS",0,0,0,0,0,0,0.0,0.0,0,nn,02-13-26,0,0.0h,0.0h,0%,$0,0.0h,1185.5d,0,$0,$0,1.03_Accelerator Systems (AS),1.03.06_AS Soft X-Ray Undulator (SXR) - SLAC,1.03.06.06_AS Soft X-Ray Undulator Procurement and Fabrication - SLAC,1.03.06.06.03_SXR Undulator Integration and Testing,AS_SXU_MANF_2956_RFI: Undulator - SXU_HE_29
299135,1.03,1.03.06,1.03.06.06,1.03.06.06.03,1.03.06.06.03,SXR Undulator Integration and Testing,AS_SXU_MANF_3041,COMP: Magnet Retrofit - SXU_REFB_U,0.0,0.0,0.0,0.0,0,02-13-26,AS_SXU_MANF_3031: FS,AS_SXU_MANF_3046: FS,0,0,0,0,0,0,0.0,0.0,0,nn,02-13-26,0,0.0h,0.0h,0%,$0,0.0h,1170.5d,0,$0,$0,1.03_Accelerator Systems (AS),1.03.06_AS Soft X-Ray Undulator (SXR) - SLAC,1.03.06.06_AS Soft X-Ray Undulator Procurement and Fabrication - SLAC,1.03.06.06.03_SXR Undulator Integration and Testing,AS_SXU_MANF_3041_COMP: Magnet Retrofit - SXU_REFB_U
299136,1.03,1.03.06,1.03.06.06,1.03.06.06.03,1.03.06.06.03,SXR Undulator Integration and Testing,AS_SXU_MANF_3056,RFI: Undulator - SXU_HE_30,0.0,0.0,0.0,0.0,0,03-09-26,AS_SXU_MANF_3046: FS,"AS_SXU_INST_3010: FS, AS_SXU_INST_3005: FS",0,0,0,0,0,0,0.0,0.0,0,nn,03-09-26,0,0.0h,0.0h,0%,$0,0.0h,1170.5d,0,$0,$0,1.03_Accelerator Systems (AS),1.03.06_AS Soft X-Ray Undulator (SXR) - SLAC,1.03.06.06_AS Soft X-Ray Undulator Procurement and Fabrication - SLAC,1.03.06.06.03_SXR Undulator Integration and Testing,AS_SXU_MANF_3056_RFI: Undulator - SXU_HE_30
299137,1.03,1.03.06,1.03.06.06,1.03.06.06.04,1.03.06.06.04,HXRSS Procurement and Fabrication,AS_SXU_MANF_5930,Ready for Installation - HXRSS,0.0,0.0,0.0,0.0,0,06-03-24,"AS_SXU_MANF_5890: FS, AS_SXU_MANF_5920: FS, AS_SXU_MANF_5910: FS, AS_SXU_MANF_5800: FS",AS_SXU_INST_8470: FS,0,0,0,0,0,0,0.0,0.0,0,nn,06-03-24,0,0.0h,0.0h,0%,$0,0.0h,1576.5d,0,$0,$0,1.03_Accelerator Systems (AS),1.03.06_AS Soft X-Ray Undulator (SXR) - SLAC,1.03.06.06_AS Soft X-Ray Undulator Procurement and Fabrication - SLAC,1.03.06.06.04_HXRSS Procurement and Fabrication,AS_SXU_MANF_5930_Ready for Installation - HXRSS
299138,1.03,1.03.06,1.03.06.20,1.03.06.20.01,1.03.06.20.01,SXR Undulator Components Installation,AS_SXU_INST_100,Prepare Requisition (Specs/SOW/ETC) - Construction support for SXR Undulator System Installation  SEE NOTEBOOK,10.0,0.0,0.0,0.0,07-05-23,07-18-23,AS_SXU_INST_4000: SS,AS_SXU_INST_101: FS,0,0,0,0,0,0,0.0,0.0,0,07-05-23,07-18-23,0,0.0h,0.0h,0%,$0,0.0h,295.0d,0,$0,$0,1.03_Accelerator Systems (AS),1.03.06_AS Soft X-Ray Undulator (SXR) - SLAC,1.03.06.20_AS Soft X-Ray Undulator Installation - SLAC,1.03.06.20.01_SXR Undulator Components Installation,AS_SXU_INST_100_Prepare Requisition (Specs/SOW/ETC) - Construction support for SXR Undulator System Installation  SEE NOTEBOOK
299139,1.03,1.03.06,1.03.06.20,1.03.06.20.01,1.03.06.20.01,SXR Undulator Components Installation,AS_SXU_INST_102,Procurement Process - Construction support for SXR Undulator System Installation,20.0,0.0,0.0,0.0,07-20-23,08-16-23,AS_SXU_INST_101: FS,AS_SXU_INST_103: FS,0,0,0,0,0,0,0.0,0.0,0,07-20-23,08-16-23,0,0.0h,0.0h,0%,$0,0.0h,295.0d,0,$0,$0,1.03_Accelerator Systems (AS),1.03.06_AS Soft X-Ray Undulator (SXR) - SLAC,1.03.06.20_AS Soft X-Ray Undulator Installation - SLAC,1.03.06.20.01_SXR Undulator Components Installation,AS_SXU_INST_102_Procurement Process - Construction support for SXR Undulator System Installation
299140,1.03,1.03.06,1.03.06.20,1.03.06.20.01,1.03.06.20.01,SXR Undulator Components Installation,AS_SXU_INST_4030,COMP: Close IRR - SXR Undulator System Installation,0.0,0.0,0.0,0.0,0,07-26-23,AS_SXU_INST_4020: FF,"AS_SXU_INST_5010: FS, AS_M4_DTS1_1020: FS",0,0,0,0,0,0,0.0,0.0,0,nn,07-26-23,0,0.0h,0.0h,0%,$0,0.0h,3.0d,0,$0,$0,1.03_Accelerator Systems (AS),1.03.06_AS Soft X-Ray Undulator (SXR) - SLAC,1.03.06.20_AS Soft X-Ray Undulator Installation - SLAC,1.03.06.20.01_SXR Undulator Components Installation,AS_SXU_INST_4030_COMP: Close IRR - SXR Undulator System Installation
299141,1.03,1.03.06,1.03.06.20,1.03.06.20.01,1.03.06.20.01,SXR Undulator Components Installation,AS_SXU_INST_5060,Drill and install undulator anchors - SXR Undulator System Installation,5.0,0.0,0.0,0.0,08-13-24,08-19-24,AS_SXU_INST_5050: FS,AS_SXU_INST_5080: FS,0,0,0,0,0,0,0.0,0.0,0,08-13-24,08-19-24,0,0.0h,0.0h,0%,$0,0.0h,1536.5d,0,$0,$0,1.03_Accelerator Systems (AS),1.03.06_AS Soft X-Ray Undulator (SXR) - SLAC,1.03.06.20_AS Soft X-Ray Undulator Installation - SLAC,1.03.06.20.01_SXR Undulator Components Installation,AS_SXU_INST_5060_Drill and install undulator anchors - SXR Undulator System Installation
299142,1.03,1.03.06,1.03.06.20,1.03.06.20.01,1.03.06.20.01,SXR Undulator Components Installation,AS_SXU_INST_5070,Drill and install interspace anchors - SXR Undulator System Installation,5.0,0.0,0.0,0.0,08-13-24,08-19-24,AS_SXU_INST_5050: FS,AS_SXU_INST_5090: FS,0,0,0,0,0,0,0.0,0.0,0,08-13-24,08-19-24,0,0.0h,0.0h,0%,$0,0.0h,62.0d,0,$0,$0,1.03_Accelerator Systems (AS),1.03.06_AS Soft X-Ray Undulator (SXR) - SLAC,1.03.06.20_AS Soft X-Ray Undulator Installation - SLAC,1.03.06.20.01_SXR Undulator Components Installation,AS_SXU_INST_5070_Drill and install interspace anchors - SXR Undulator System Installation
299143,1.03,1.03.06,1.03.06.20,1.03.06.20.01,1.03.06.20.01,SXR Undulator Components Installation,AS_SXU_INST_104,Vendor Effort - Construction support for SXR Undulator System Installation,20.0,0.0,0.0,0.0,03-28-25,04-24-25,"AS_SXU_INST_103: FS, AS_SXU_MANF_9000: FS",AS_SXU_INST_105: FS,0,0,0,0,0,0,0.0,0.0,0,03-28-25,04-24-25,0,0.0h,0.0h,0%,$0,0.0h,-92.0d,0,$0,$0,1.03_Accelerator Systems (AS),1.03.06_AS Soft X-Ray Undulator (SXR) - SLAC,1.03.06.20_AS Soft X-Ray Undulator Installation - SLAC,1.03.06.20.01_SXR Undulator Components Installation,AS_SXU_INST_104_Vendor Effort - Construction support for SXR Undulator System Installation
299144,1.03,1.03.06,1.03.06.20,1.03.06.20.01,1.03.06.20.01,SXR Undulator Components Installation,AS_SXU_INST_5100,Grout interspace stands - SXR Undulator System Installation,7.0,0.0,0.0,0.0,04-17-25,04-25-25,"AS_SXU_INST_5090: FS, AS_SXU_INST_106: FF","AS_SXU_INST_5116: FS, AS_SXU_INST_5117: FS, AS_SXU_INST_5118: FS, AS_SXU_INST_5119: FS, AS_SXU_INST_5120: FS, AS_SXU_INST_5121: FS, AS_SXU_INST_5122: FS, AS_SXU_INST_5123: FS, AS_SXU_INST_5124: FS",0,0,0,0,0,0,0.0,0.0,0,04-17-25,04-25-25,0,0.0h,0.0h,0%,$0,0.0h,-92.0d,0,$0,$0,1.03_Accelerator Systems (AS),1.03.06_AS Soft X-Ray Undulator (SXR) - SLAC,1.03.06.20_AS Soft X-Ray Undulator Installation - SLAC,1.03.06.20.01_SXR Undulator Components Installation,AS_SXU_INST_5100_Grout interspace stands - SXR Undulator System Installation
299145,1.03,1.03.06,1.03.06.20,1.03.06.20.01,1.03.06.20.01,SXR Undulator Components Installation,AS_SXU_INST_106,COMP: Construction support contract for SXR Undulator System Installation Procurement,0.0,0.0,0.0,0.0,0,04-25-25,AS_SXU_INST_105: FS,AS_SXU_INST_5100: FF,0,0,0,0,0,0,0.0,0.0,0,nn,04-25-25,0,0.0h,0.0h,0%,$0,0.0h,-92.0d,0,$0,$0,1.03_Accelerator Systems (AS),1.03.06_AS Soft X-Ray Undulator (SXR) - SLAC,1.03.06.20_AS Soft X-Ray Undulator Installation - SLAC,1.03.06.20.01_SXR Undulator Components Installation,AS_SXU_INST_106_COMP: Construction support contract for SXR Undulator System Installation Procurement
299146,1.03,1.03.06,1.03.06.20,1.03.06.20.01,1.03.06.20.01,SXR Undulator Components Installation,AS_SXU_INST_5400,COMP:  Upstream Cells Ready for Undulator,0.0,0.0,0.0,0.0,0,05-15-25,"AS_SXU_INST_5330: FS, AS_SXU_INST_5250: FS, AS_SXU_INST_5320: FS, AS_SXU_MANF_5270: FS",PM_PAMM_09: FS,0,0,0,0,0,0,0.0,0.0,0,nn,05-15-25,0,0.0h,0.0h,0%,$0,0.0h,-92.0d,0,$0,$0,1.03_Accelerator Systems (AS),1.03.06_AS Soft X-Ray Undulator (SXR) - SLAC,1.03.06.20_AS Soft X-Ray Undulator Installation - SLAC,1.03.06.20.01_SXR Undulator Components Installation,AS_SXU_INST_5400_COMP:  Upstream Cells Ready for Undulator
299147,1.03,1.03.06,1.03.06.20,1.03.06.20.02,1.03.06.20.02,SXR Phase Shifter Installation,AS_SXU_INST_1002,Remove Phase Shifter from Tunnel - PS_REFB_A,1.0,0.0,0.0,0.0,07-17-23,07-18-23,AS_SXU_INST_1100: FS,AS_SXU_MANF_6010: FS,0,0,0,0,0,0,0.0,0.0,0,07-17-23,07-18-23,0,0.0h,0.0h,0%,$0,0.0h,1704.6d,0,$0,$0,1.03_Accelerator Systems (AS),1.03.06_AS Soft X-Ray Undulator (SXR) - SLAC,1.03.06.20_AS Soft X-Ray Undulator Installation - SLAC,1.03.06.20.02_SXR Phase Shifter Installation,AS_SXU_INST_1002_Remove Phase Shifter from Tunnel - PS_REFB_A
299148,1.03,1.03.06,1.03.06.20,1.03.06.20.02,1.03.06.20.02,SXR Phase Shifter Installation,AS_SXU_INST_1102,Remove Phase Shifter from Tunnel - PS_REFB_B,1.0,0.0,0.0,0.0,07-17-23,07-18-23,AS_SXU_INST_1200: FS,AS_SXU_MANF_6011: FS,0,0,0,0,0,0,0.0,0.0,0,07-17-23,07-18-23,0,0.0h,0.0h,0%,$0,0.0h,1709.6d,0,$0,$0,1.03_Accelerator Systems (AS),1.03.06_AS Soft X-Ray Undulator (SXR) - SLAC,1.03.06.20_AS Soft X-Ray Undulator Installation - SLAC,1.03.06.20.02_SXR Phase Shifter Installation,AS_SXU_INST_1102_Remove Phase Shifter from Tunnel - PS_REFB_B
299149,1.03,1.03.06,1.03.06.20,1.03.06.20.02,1.03.06.20.02,SXR Phase Shifter Installation,AS_SXU_INST_1302,Remove Phase Shifter from Tunnel - PS_REFB_D,1.0,0.0,0.0,0.0,10-13-23,10-16-23,AS_SXU_INST_1400: FS,AS_SXU_MANF_6013: FS,0,0,0,0,0,0,0.0,0.0,0,10-13-23,10-16-23,0,0.0h,0.0h,0%,$0,0.0h,1656.6d,0,$0,$0,1.03_Accelerator Systems (AS),1.03.06_AS Soft X-Ray Undulator (SXR) - SLAC,1.03.06.20_AS Soft X-Ray Undulator Installation - SLAC,1.03.06.20.02_SXR Phase Shifter Installation,AS_SXU_INST_1302_Remove Phase Shifter from Tunnel - PS_REFB_D
299150,1.03,1.03.06,1.03.06.20,1.03.06.20.02,1.03.06.20.02,SXR Phase Shifter Installation,AS_SXU_INST_1402,Remove Phase Shifter from Tunnel - PS_REFB_E,1.0,0.0,0.0,0.0,10-13-23,10-16-23,AS_SXU_INST_1500: FS,AS_SXU_MANF_6014: FS,0,0,0,0,0,0,0.0,0.0,0,10-13-23,10-16-23,0,0.0h,0.0h,0%,$0,0.0h,1661.6d,0,$0,$0,1.03_Accelerator Systems (AS),1.03.06_AS Soft X-Ray Undulator (SXR) - SLAC,1.03.06.20_AS Soft X-Ray Undulator Installation - SLAC,1.03.06.20.02_SXR Phase Shifter Installation,AS_SXU_INST_1402_Remove Phase Shifter from Tunnel - PS_REFB_E
299151,1.03,1.03.06,1.03.06.20,1.03.06.20.02,1.03.06.20.02,SXR Phase Shifter Installation,AS_SXU_INST_1602,Remove Phase Shifter from Tunnel - PS_REFB_G,1.0,0.0,0.0,0.0,11-22-23,11-27-23,AS_SXU_INST_1700: FS,AS_SXU_MANF_6016: FS,0,0,0,0,0,0,0.0,0.0,0,11-22-23,11-27-23,0,0.0h,0.0h,0%,$0,0.0h,1643.6d,0,$0,$0,1.03_Accelerator Systems (AS),1.03.06_AS Soft X-Ray Undulator (SXR) - SLAC,1.03.06.20_AS Soft X-Ray Undulator Installation - SLAC,1.03.06.20.02_SXR Phase Shifter Installation,AS_SXU_INST_1602_Remove Phase Shifter from Tunnel - PS_REFB_G
299152,1.03,1.03.06,1.03.06.20,1.03.06.20.02,1.03.06.20.02,SXR Phase Shifter Installation,AS_SXU_INST_1702,Remove Phase Shifter from Tunnel - PS_REFB_H,1.0,0.0,0.0,0.0,01-03-24,01-03-24,AS_SXU_INST_1800: FS,AS_SXU_MANF_6017: FS,0,0,0,0,0,0,0.0,0.0,0,01-03-24,01-03-24,0,0.0h,0.0h,0%,$0,0.0h,1632.5d,0,$0,$0,1.03_Accelerator Systems (AS),1.03.06_AS Soft X-Ray Undulator (SXR) - SLAC,1.03.06.20_AS Soft X-Ray Undulator Installation - SLAC,1.03.06.20.02_SXR Phase Shifter Installation,AS_SXU_INST_1702_Remove Phase Shifter from Tunnel - PS_REFB_H
299153,1.03,1.03.06,1.03.06.20,1.03.06.20.02,1.03.06.20.02,SXR Phase Shifter Installation,AS_SXU_INST_1902,Remove Phase Shifter from Tunnel - PS_REFB_J,1.0,0.0,0.0,0.0,04-18-24,04-19-24,AS_SXU_INST_2000: FS,AS_SXU_MANF_6019: FS,0,0,0,0,0,0,0.0,0.0,0,04-18-24,04-19-24,0,0.0h,0.0h,0%,$0,0.0h,1567.6d,0,$0,$0,1.03_Accelerator Systems (AS),1.03.06_AS Soft X-Ray Undulator (SXR) - SLAC,1.03.06.20_AS Soft X-Ray Undulator Installation - SLAC,1.03.06.20.02_SXR Phase Shifter Installation,AS_SXU_INST_1902_Remove Phase Shifter from Tunnel - PS_REFB_J
299154,1.03,1.03.06,1.03.06.20,1.03.06.20.02,1.03.06.20.02,SXR Phase Shifter Installation,AS_SXU_INST_2002,Remove Phase Shifter from Tunnel - PS_REFB_K,1.0,0.0,0.0,0.0,06-21-24,06-24-24,AS_SXU_INST_2100: FS,AS_SXU_MANF_6020: FS,0,0,0,0,0,0,0.0,0.0,0,06-21-24,06-24-24,0,0.0h,0.0h,0%,$0,0.0h,1527.6d,0,$0,$0,1.03_Accelerator Systems (AS),1.03.06_AS Soft X-Ray Undulator (SXR) - SLAC,1.03.06.20_AS Soft X-Ray Undulator Installation - SLAC,1.03.06.20.02_SXR Phase Shifter Installation,AS_SXU_INST_2002_Remove Phase Shifter from Tunnel - PS_REFB_K
299155,1.03,1.03.06,1.03.06.20,1.03.06.20.02,1.03.06.20.02,SXR Phase Shifter Installation,AS_SXU_INST_2202,Remove Phase Shifter from Tunnel - PS_REFB_M,1.0,0.0,0.0,0.0,08-27-24,08-28-24,AS_SXU_INST_2300: FS,AS_SXU_MANF_6022: FS,0,0,0,0,0,0,0.0,0.0,0,08-27-24,08-28-24,0,0.0h,0.0h,0%,$0,0.0h,1491.6d,0,$0,$0,1.03_Accelerator Systems (AS),1.03.06_AS Soft X-Ray Undulator (SXR) - SLAC,1.03.06.20_AS Soft X-Ray Undulator Installation - SLAC,1.03.06.20.02_SXR Phase Shifter Installation,AS_SXU_INST_2202_Remove Phase Shifter from Tunnel - PS_REFB_M
299156,1.03,1.03.06,1.03.06.20,1.03.06.20.02,1.03.06.20.02,SXR Phase Shifter Installation,AS_SXU_INST_2302,Remove Phase Shifter from Tunnel - PS_REFB_N,1.0,0.0,0.0,0.0,08-27-24,08-28-24,AS_SXU_INST_2400: FS,AS_SXU_MANF_6023: FS,0,0,0,0,0,0,0.0,0.0,0,08-27-24,08-28-24,0,0.0h,0.0h,0%,$0,0.0h,1496.6d,0,$0,$0,1.03_Accelerator Systems (AS),1.03.06_AS Soft X-Ray Undulator (SXR) - SLAC,1.03.06.20_AS Soft X-Ray Undulator Installation - SLAC,1.03.06.20.02_SXR Phase Shifter Installation,AS_SXU_INST_2302_Remove Phase Shifter from Tunnel - PS_REFB_N
299157,1.03,1.03.06,1.03.06.20,1.03.06.20.02,1.03.06.20.02,SXR Phase Shifter Installation,AS_SXU_INST_2502,Remove Phase Shifter from Tunnel - PS_REFB_P,1.0,0.0,0.0,0.0,11-06-24,11-07-24,AS_SXU_INST_2600: FS,AS_SXU_MANF_6025: FS,0,0,0,0,0,0,0.0,0.0,0,11-06-24,11-07-24,0,0.0h,0.0h,0%,$0,0.0h,1456.6d,0,$0,$0,1.03_Accelerator Systems (AS),1.03.06_AS Soft X-Ray Undulator (SXR) - SLAC,1.03.06.20_AS Soft X-Ray Undulator Installation - SLAC,1.03.06.20.02_SXR Phase Shifter Installation,AS_SXU_INST_2502_Remove Phase Shifter from Tunnel - PS_REFB_P
299158,1.03,1.03.06,1.03.06.20,1.03.06.20.02,1.03.06.20.02,SXR Phase Shifter Installation,AS_SXU_INST_2602,Remove Phase Shifter from Tunnel - PS_REFB_Q,1.0,0.0,0.0,0.0,01-07-25,01-07-25,AS_SXU_INST_2700: FS,AS_SXU_MANF_6026: FS,0,0,0,0,0,0,0.0,0.0,0,01-07-25,01-07-25,0,0.0h,0.0h,0%,$0,0.0h,1430.5d,0,$0,$0,1.03_Accelerator Systems (AS),1.03.06_AS Soft X-Ray Undulator (SXR) - SLAC,1.03.06.20_AS Soft X-Ray Undulator Installation - SLAC,1.03.06.20.02_SXR Phase Shifter Installation,AS_SXU_INST_2602_Remove Phase Shifter from Tunnel - PS_REFB_Q
299159,1.03,1.03.06,1.03.06.20,1.03.06.20.02,1.03.06.20.02,SXR Phase Shifter Installation,AS_SXU_INST_2802,Remove Phase Shifter from Tunnel - PS_REFB_S,1.0,0.0,0.0,0.0,02-11-25,02-12-25,AS_SXU_INST_2900: FS,AS_SXU_MANF_6028: FS,0,0,0,0,0,0,0.0,0.0,0,02-11-25,02-12-25,0,0.0h,0.0h,0%,$0,0.0h,1415.6d,0,$0,$0,1.03_Accelerator Systems (AS),1.03.06_AS Soft X-Ray Undulator (SXR) - SLAC,1.03.06.20_AS Soft X-Ray Undulator Installation - SLAC,1.03.06.20.02_SXR Phase Shifter Installation,AS_SXU_INST_2802_Remove Phase Shifter from Tunnel - PS_REFB_S
